# CSD-LKO_Revised Baseline

Schedule from Primavera P6, 2026-02-14 to 2029-06-07, data date 2026-09-30, costs in INR, A marks actual dates.

## Calendars

- CSD-LKO Calender (6 day + Holiday + Monsoon)-25: Mon-Sat 09:00-13:00, 14:00-20:00; Sun off. Exceptions (off unless hours are given): 2026-03-04, 2026-03-21, 2026-04-03, 2026-05-01, 2026-05-27, 2026-07-01, 2026-07-03, 2026-07-08, 2026-07-10, 2026-07-15, 2026-07-17, 2026-07-22, 2026-07-24, 2026-07-29, 2026-07-31, 2026-08-04, 2026-08-06, 2026-08-08, 2026-08-11, 2026-08-13, 2026-08-15, 2026-08-18, 2026-08-20, 2026-08-22, 2026-08-25, 2026-08-27, 2026-08-29, 2026-09-02, 2026-09-04, 2026-09-09, 2026-09-11, 2026-09-14, 2026-09-16, 2026-09-18, 2026-09-23, 2026-09-25, 2026-10-02, 2026-10-20, 2026-12-25, 2027-01-01, 2027-01-26, 2027-03-10, 2027-03-22, 2027-03-26, 2027-05-01, 2027-07-06, 2027-07-08, 2027-07-13, 2027-07-15, 2027-07-20, 2027-07-22, 2027-07-27, 2027-07-29, 2027-08-03, 2027-08-05, 2027-08-10, 2027-08-12, 2027-08-17, 2027-08-19, 2027-08-24, 2027-08-26, 2027-08-31 to 2027-09-01, 2027-09-08, 2027-09-15, 2027-09-22, 2027-09-29, 2027-10-02, 2027-10-09, 2027-10-29, 2027-12-25, 2028-01-01, 2028-01-26, 2028-02-26, 2028-03-11, 2028-04-14, 2028-05-01, 2028-05-04, 2028-07-05, 2028-07-12, 2028-07-19, 2028-07-26, 2028-08-01, 2028-08-08, 2028-08-15, 2028-08-22 to 2028-08-23, 2028-08-29, 2028-09-07, 2028-09-14, 2028-09-21, 2028-09-27 to 2028-09-28, 2028-10-02, 2028-10-17, 2028-12-25, 2029-01-01, 2029-01-26, 2029-02-14, 2029-03-01, 2029-03-30, 2029-04-24, 2029-05-01.
- CSD-LKO Calender (6 day + Holiday)-25: Mon-Sat 09:00-13:00, 14:00-20:00; Sun off. Exceptions (off unless hours are given): 2026-03-04, 2026-03-21, 2026-04-03, 2026-05-01, 2026-05-27, 2026-08-15, 2026-09-14, 2026-10-02, 2026-10-20, 2026-12-25, 2027-01-01, 2027-01-26, 2027-03-10, 2027-03-22, 2027-03-26, 2027-05-01, 2027-09-04, 2027-10-02, 2027-10-09, 2027-10-29, 2027-12-25, 2028-01-01, 2028-01-26, 2028-03-11, 2028-04-14, 2028-05-01, 2028-05-04, 2028-08-15, 2028-08-23, 2028-09-27, 2028-10-02, 2028-10-17, 2028-12-25, 2029-01-01, 2029-01-26, 2029-02-14, 2029-03-01, 2029-03-30, 2029-04-24, 2029-05-01.
- CSD-LKO-Design (5 Day + Holiday)-25: Mon-Fri 09:00-13:00, 14:00-20:00; Sat-Sun off. Exceptions (off unless hours are given): 2026-03-04, 2026-03-21, 2026-04-03, 2026-05-01, 2026-05-27, 2026-08-08, 2026-08-15, 2026-08-22, 2026-08-29, 2026-09-14, 2026-10-02, 2026-10-20, 2026-12-25, 2027-01-01, 2027-01-26, 2027-03-10, 2027-03-22, 2027-03-26, 2027-05-01, 2027-10-02, 2027-10-09, 2027-10-29, 2027-12-25, 2028-01-01, 2028-01-26, 2028-03-11, 2028-04-14, 2028-05-01, 2028-05-04, 2028-08-15, 2028-08-23, 2028-09-27, 2028-10-02, 2028-10-17, 2028-12-25, 2029-01-01, 2029-01-26, 2029-02-14, 2029-03-01, 2029-03-30, 2029-04-24.
- CSD-LKO Calender ( 6Day + Holyday + Monsoon): Mon-Sat 09:00-13:00, 14:00-20:00; Sun off. Exceptions (off unless hours are given): 2026-03-04, 2026-03-21, 2026-04-03, 2026-05-01, 2026-05-27, 2026-07-01, 2026-07-03, 2026-07-08, 2026-07-10, 2026-07-15, 2026-07-17, 2026-07-22, 2026-07-24, 2026-07-29, 2026-07-31, 2026-08-04, 2026-08-06, 2026-08-08, 2026-08-11, 2026-08-13, 2026-08-15, 2026-08-18, 2026-08-20, 2026-08-22, 2026-08-25, 2026-08-27, 2026-08-29, 2026-09-02, 2026-09-04, 2026-09-09, 2026-09-11, 2026-09-14, 2026-09-16, 2026-09-18, 2026-09-23, 2026-09-25, 2026-10-02, 2026-10-20, 2026-12-25, 2027-01-01, 2027-01-26, 2027-03-10, 2027-03-22, 2027-03-26, 2027-05-01, 2027-07-06, 2027-07-08, 2027-07-13, 2027-07-15, 2027-07-20, 2027-07-22, 2027-07-27, 2027-07-29, 2027-08-03, 2027-08-05, 2027-08-10, 2027-08-12, 2027-08-17, 2027-08-19, 2027-08-24, 2027-08-26, 2027-08-31 to 2027-09-01, 2027-09-08, 2027-09-15, 2027-09-22, 2027-09-29, 2027-10-02, 2027-10-09, 2027-10-29, 2027-12-25, 2028-01-01, 2028-01-26, 2028-02-26, 2028-03-11, 2028-04-14, 2028-05-01, 2028-05-04, 2028-07-05, 2028-07-12, 2028-07-19, 2028-07-26, 2028-08-01, 2028-08-08, 2028-08-15, 2028-08-22 to 2028-08-23, 2028-08-29, 2028-09-07, 2028-09-14, 2028-09-21, 2028-09-27 to 2028-09-28, 2028-10-02, 2028-10-17, 2028-12-25, 2029-01-01, 2029-01-26, 2029-02-14, 2029-03-01, 2029-03-30, 2029-04-24, 2029-05-01.

## Resources

| Resource | Group | Unit | Rate | Notes |
| --- | --- | --- | --- | --- |
| Physical Progress | equipment |  |  | ï»¿ |
| Pocket Excavation | material | m3 | 190 | ï»¿ |
| Helper | labor |  |  | ï»¿ |
| Surface Dressing | material | Sq m | 45 | ï»¿ |
| ATT | material | Sq m | 137 | ï»¿ |
| Mason | labor |  |  | ï»¿ |
| Concrete M10 | material | m3 | 8639 | ï»¿ |
| Waterproofing (Raft/Grade Slab) | material | Sq m | 624 | ï»¿ |
| Waterprrofing Mason | labor |  |  | ï»¿ |
| Barbender | labor |  |  | ï»¿ |
| Reinforcement Steel | material | MT1 | 96512.5 | ï»¿ |
| Carpenter | labor |  |  | ï»¿ |
| Formwork | material | Sq m | 1165.16 | ï»¿ |
| Concrete M40 | material | m3 | 9867 | ï»¿ |
| Brickwork for the footing | material | CuM |  | ï»¿ |
| PT | material | MT1 | 190000 | ï»¿ |
| PT Fitter | labor |  |  | ï»¿ |
| LPS | material | INR | 1 | ï»¿ |
| Additional for scaff above 4.5m Height | material | LP | 180800 | ï»¿ |
| Masonry | material | CuM | 9535.36 | ï»¿ |
| Flooring | material | INR | 1 | ï»¿ |
| Flooring Mason | labor |  |  | ï»¿ |
| Plaster | material | Sqr Mtr | 553.91 | ï»¿ |
| Electrical | material | INR | 1 | ï»¿ |
| Facade | material | INR | 1 | ï»¿ |
| HVAC | material | INR | 1 | ï»¿ |
| Plumbing | material | INR | 1 | ï»¿ |
| Firefighting | material | INR | 1 | ï»¿ |
| ELV | material | INR | 1 | ï»¿ |
| ID Work | material | INR | 1 | ï»¿ |
| Painting | material | Sq m | 228.62 | ï»¿ |
| Painter | labor |  |  | ï»¿ |
| Line / Arrow Marking | material | INR | 1 | ï»¿ |
| Wheel Stopper | material | INR | 1 | ï»¿ |
| Waterproofing | material | INR | 1 | ï»¿ |
| Plum Concrete | material | m3 | 6800 | ï»¿ |
| Soil Filling | material | m3 | 200 | ï»¿ |
| Sand Filling | material | m3 | 2799 | ï»¿ |
| Kitchen | material | INR | 1 | ï»¿ |
| Str. Steel Fitter | labor |  |  | ï»¿ |
| Rigger | labor |  |  | ï»¿ |
| Welder | labor |  |  | ï»¿ |
| Khalasi Helper | labor |  |  | ï»¿ |
| Structural Steel | material | MT1 | 172812 | ï»¿ |
| Vermiculite Paint | material | Sq m | 1550 | ï»¿ |
| Intumescent Paint | material | Sq m | 5800 | ï»¿ |
| Composite Slab Metal Deck | material | MT1 | 204984 | ï»¿ |
| Shear Studs | material | MT1 | 235000 | ï»¿ |
| Rungs | material | INR | 1 | ï»¿ |
| Testing & Commissioing | material | INR | 1 | ï»¿ |
| MEP Equipments on Terrace | material | INR | 1 | ï»¿ |
| Preliminaries | material | INR |  | ï»¿ |
| Design review coordination shop drawing BIM charges | material | INR | 1 | ï»¿ |
| Design Consultnacy Charges | material | INR | 1 | ï»¿ |
| Softscape | material | INR | 1 | ï»¿ |
| Hardscape | material | INR | 1 | ï»¿ |
| ACO Drain | material | INR | 1 | ï»¿ |
| Grating of Drain | material | INR | 1 | ï»¿ |
| Expansion Joint | material | INR | 1 | ï»¿ |
| Lift | material | INR | 1 | ï»¿ |
| Water Body | material | INR | 1 | ï»¿ |
| Structural Misc Works | material | INR | 1 | ï»¿ |
| Fire Seal Works | material | INR | 1 | ï»¿ |
| Civil Misc Works | material | INR | 1 | ï»¿ |

## Schedule

| ID | WBS | Activity | Type | Duration | Start | Finish | Predecessors | Complete | Planned start | Planned finish | Constraint | Resources |
| --- | --- | --- | --- | --- | --- | --- | --- | --- | --- | --- | --- | --- |
|  | 2 | **Milestones** |  |  | 2026-02-14 | 2029-06-07 |  |  |  |  |  |  |
|  | 2 | **Key Milestones** |  |  | 2026-02-14 | 2029-06-07 |  |  |  |  |  |  |
| Milestones-10 |  | Issue of LOI | milestone | 0d | 2026-02-14 A | 2026-02-14 A |  | 100% |  |  |  |  |
| Milestones-25 |  | Kick Off Meeting | milestone | 0d | 2026-02-27 A | 2026-02-27 A | Milestones-10 FS+11d | 100% |  |  |  |  |
| Milestones-30 |  | Required documents submission for issuing of PO and SO |  | 0d | 2026-03-10 A | 2026-03-10 A | Milestones-25 | 100% |  |  |  | TATA Projects Ltd-25 |
| Milestones-45 |  | Issue of SITC Order | milestone | 0d | 2026-03-20 A | 2026-03-20 A | Milestones-30 FS+6d | 100% |  |  |  |  |
| Milestones-35 |  | Issue of Service Order | milestone | 0d | 2026-03-24 A | 2026-03-24 A | Milestones-30 FS+6d | 100% |  |  |  |  |
| Milestones-40 |  | Issue of Supply Order | milestone | 0d | 2026-03-27 A | 2026-03-27 A | Milestones-30 FS+6d | 100% |  |  |  |  |
| Milestones-50 |  | Project Commencement Date | milestone | 0d | 2026-04-16 A | 2026-04-16 A | Milestones-10 | 100% |  |  |  |  |
| Milestones-135 |  | Completion of Site Handover By client | milestone | 0d | 2026-11-06 | 2026-11-06 | Milestones-55, Milestones-80, Milestones-90, Milestones-95, Milestones-130 |  |  |  |  |  |
| Milestones-150 |  | Completion of Mobilisation | milestone | 0d | 2026-12-11 | 2026-12-11 | Mob-SO-30, Mob-SO-25, Mob-WC-25, Mob-WC-30, Mob-WC-35, Mob-P&M-TC35, Mob-P&M-TC55, Mob-P&M-TC75, Mob-P&M-TC95, Mob-P&M-TC115, Mob-P&M-OE10, Mob-P&M-OE15, Mob-P&M-OE20, Mob-P&M-OE25, Mob-P&M-OE30, Mob-P&M-OE35, Mob-P&M-OE40, Mob-P&M-OE45, Mob-P&M-OE50, Mob-P&M-OE55, Mob-P&M-OE60, Mob-P&M-OE65, Mob-P&M-OE70, Mob-WC-50, Mob-SO-45, Mob-SO-40 |  |  |  |  |  |
| Milestones-495 |  | Project Completion Date | milestone | 0d | 2029-06-07 | 2029-06-07 | Milestones-470 FF, Milestones-485 FF, Milestones-480 FF, Milestones-505 FF, Milestones-500 FF, PC70 FF, PC80 FF, PC75 FF, MISC10, MISC15, E-As Built-AR-10, E-As Built-AR-15, E-As Built-AR-30, E-As Built-AR-20 FF, E-As Built-AR-25, E-As Built-AR-35, E-As Built-ST-10, E-As Built-ST-30, E-As Built-ST-25, E-As Built-ST-20, E-As Built-ST-35, E-As Built-ST-15, E-As Built-MEP-15, E-As Built-MEP-35, E-As Built-MEP-20, E-As Built-MEP-30, E-As Built-MEP-25, E-As Built-MEP-10, E-As Built-F-15, E-As Built-F-20, E-As Built-F-10, E-As Built-F-30, E-As Built-F-25, E-As Built-ID-10, E-As Built-ID-15, E-As Built-ID-20, E-As Built-Misc-15, E-As Built-Misc-10, E-As Built-Misc-30, E-As Built-Misc-25, E-As Built-Misc-20, E-As Built-Misc-35, E-As Built-Misc-45, E-As Built-Misc-50, Milestones-135, 4S-F-GF55, 4S-F-GF60, 4S-F-GF65, 4S-F-2nd60, 4S-F-2nd65, 4S-F-2nd55, 4S-F-3rd60, 4S-F-3rd65, 4S-F-3rd55, 4S-F-4th55, 4S-F-4th65, 4S-F-4th60, 4S-F-5th55, 4S-F-5th65, 4S-F-5th60, 4S-F-6th55, 4S-F-6th60, 4S-F-6th65, 4S-F-Terrace80, 3S-F-GF55 FF, 3S-F-GF60 FF, 3S-F-GF65, 3S-F-2nd55, 3S-F-2nd60, 3S-F-2nd65, 3S-F-3rd55, 3S-F-3rd60, 3S-F-3rd65, 3S-F-4th55, 3S-F-4th60, 3S-F-4th65, 3S-F-5th55, 3S-F-5th60, 3S-F-5th65, 3S-F-6th55, 3S-F-6th65, 3S-F-6th60, 3S-F-7th60, 3S-F-7th65, 3S-F-7th55, 3S-F-Terrace75, 3S-F-Terrace80, RB2-F-(GF-2nd)55, RB2-F-(GF-2nd)60, RB2-F-(GF-2nd)65, RB2-F-(2nd-5th)55, RB2-F-(2nd-5th)60, RB2-F-(2nd-5th)65, RB2-F-5th55, RB2-F-5th60, RB2-F-5th65, RB2-F-6th55, RB2-F-6th60, RB2-F-6th65, RB2-F-Terrace70, RB2-F-Terrace80, RB1-F-(GF-2nd)55, RB1-F-(GF-2nd)60, RB1-F-(GF-2nd)65, RB1-F-(GF-Terrace)55, RB1-F-(GF-Terrace)60, RB1-F-(GF-Terrace)65, RB1-F-Terrace75, RB1-F-Terrace80, CC-F-GF20, CC-F-GF40, CC-F-GF60, CC-F-(1stM-3rdM)20, CC-F-(1stM-3rdM)40, CC-F-(1stM-3rdM)60, CC-F-(3rdM-Terrace)20, CC-F-(3rdM-Terrace)40, CC-F-(3rdM-Terrace)60, CB-T&C15 FF, ED-HO10, PC110, PC135, PC150, PC165, PC15, PC30, PC45, PC60, PC90, E-As Built-Misc-40 FF, Milestones-165, Milestones-175, Milestones-265, Milestones-305, Milestones-335, Milestones-60, Milestones-170, Milestones-190, Milestones-295, Milestones-330, Milestones-365, Milestones-85, Milestones-100, Milestones-180, Milestones-230, Milestones-275, Milestones-315, Milestones-360, Milestones-140, Milestones-195, Milestones-240, Milestones-310, Milestones-350, Milestones-370, Milestones-105, Milestones-185, Milestones-205, Milestones-285, Milestones-340, Milestones-375, Milestones-225, Milestones-355, Milestones-260, Milestones-270, Milestones-280, Milestones-290, Milestones-300, Milestones-390, Milestones-395, Milestones-400, Milestones-405, Milestones-420, Milestones-520, Milestones-530, Milestones-200, Milestones-210, Milestones-220, Milestones-235, Milestones-250, Milestones-410, Milestones-430, Milestones-435, Milestones-440, Milestones-320, Milestones-325, Milestones-345, Milestones-380, Milestones-385, Milestones-425, Milestones-450, Milestones-460, Milestones-465, Milestones-475, Milestones-415, Milestones-445, Milestones-490, Milestones-510 |  |  |  |  |  |
|  | 1 | **Site Handover By Client** |  |  | 2026-04-16 | 2026-11-06 |  |  |  |  |  |  |
| Milestones-55 |  | Hotel 4 Star | milestone | 0d | 2026-04-16 A | 2026-04-16 A | Milestones-10 FS+49d | 100% |  |  |  |  |
| Milestones-80 |  | Hotel 3 Star | milestone | 0d | 2026-06-25 A | 2026-06-25 A | Milestones-55 FS+25d | 100% |  |  |  |  |
| Milestones-90 |  | Convention Center | milestone | 0d | 2026-06-30 A | 2026-06-30 A | Milestones-80 FS+3d | 100% |  |  |  |  |
| Milestones-95 |  | Retail Block 1 | milestone | 0d | 2026-10-12 | 2026-10-12 | Milestones-80 FS+25d |  |  |  | start on or after 2026-10-12 |  |
| Milestones-130 |  | Retail Block 2 | milestone | 0d | 2026-11-06 | 2026-11-06 | Milestones-95 FS+21d |  |  |  | start on or after 2026-09-21 |  |
|  | 4 | **Design** |  |  | 2026-02-16 | 2027-12-16 |  |  |  |  |  |  |
|  | 1 | **Concept Design** |  |  | 2026-11-27 | 2026-11-27 |  |  |  |  |  |  |
| Milestones-115 |  | Hotel ID Concept finalization | milestone | 0d | 2026-11-27 | 2026-11-27 | E-CD-60 FF |  |  |  |  |  |
| Milestones-120 |  | Convention ID Concept finalization | milestone | 0d | 2026-11-27 | 2026-11-27 | E-CD-60 FF |  |  |  |  |  |
| Milestones-125 |  | Accoustic & AV Concept finalization | milestone | 0d | 2026-11-27 | 2026-11-27 | E-CD-45 FF |  |  |  |  |  |
|  | 2 | **Schematic Design** |  |  | 2026-02-16 | 2027-02-24 |  |  |  |  |  |  |
| Milestones-15 |  | Schematic design (Civil core & shell) Sign off | milestone | 0d | 2026-02-16 A | 2026-02-16 A | E-SD-AR10 FF, E-SD-AR15 FF, E-SD-AR20 FF, E-SD-AR25 FF, E-SD-AR30 FF, E-SD-AR35 FF | 100% |  |  |  |  |
| Milestones-20 |  | Schematic design (MEP & FF) Sign off | milestone | 0d | 2026-02-16 A | 2026-02-16 A | E-SD-MEP10 FF, E-SD-MEP15 FF, E-SD-MEP20 FF, E-SD-MEP25 FF, E-SD-MEP30 FF, E-SD-MEP35 FF | 100% |  |  |  |  |
| Milestones-65 |  | Schematic design (Façade & landscape) Sign off | milestone | 0d | 2026-08-08 A | 2026-08-08 A | E-SD-F10 FF, E-SD-F15 FF, E-SD-F20 FF, E-SD-F25 FF, E-SD-F30 FF | 100% | 2026-08-07 | 2026-08-07 |  |  |
| Milestones-155 |  | Schematic design (Interior design) Sign off | milestone | 0d | 2027-02-24 | 2027-02-24 | E-SD-ID10 FF, E-SD-ID15 FF |  |  |  |  |  |

| ID | WBS | Activity | Type | Duration | Start | Finish | Predecessors | Complete | Calendar |
| --- | --- | --- | --- | --- | --- | --- | --- | --- | --- |
|  | 3 | **Design Development** |  |  | 2026-06-25 | 2027-09-09 |  |  |  |
| Milestones-70 |  | DD-1 (Civil core & shell) Sign off | milestone | 0d | 2026-06-25 A | 2026-06-25 A | E-DD-ST-FN-15 FF, E-DD-ST-CB-15 FF, E-DD-ST-4S-15 FF, E-DD-ST-3S-15 FF, E-DD-ST-RB1-15 FF, E-DD-ST-RB2-15 FF, E-DD-ST-CC-15 FF | 100% |  |
| Milestones-75 |  | DD-2 (MEP & FF) Sign off | milestone | 0d | 2026-10-05 | 2026-10-05 | E-DD-MEP-CB-15 FF, E-DD-MEP-4S-15 FF, E-DD-MEP-3S-15 FF, E-DD-MEP-RB1-15 FF, E-DD-MEP-RB2-15 FF, E-DD-MEP-CC-15 FF |  |  |
| Milestones-110 |  | DD-3A (Façade & landscape) Sign off | milestone | 0d | 2027-01-14 | 2027-01-14 | E-DD-F-CC-30 FF, E-DD-F-RB2-30 FF, E-DD-F-RB1-30 FF, E-DD-F-3S-30 FF, E-DD-F-4S-30 FF |  |  |
| Milestones-215 |  | DD-3B (Interior design) Sign off | milestone | 0d | 2027-09-09 | 2027-09-09 | E-DD-ID-R&O-30 FF, E-DD-ID-H&CC-30 FF |  |  |
|  | 4 | **GFC** |  |  | 2027-03-29 | 2027-12-16 |  |  |  |
| Milestones-160 |  | GFC Issuance - Civil core & shell Sign Off | milestone | 0d | 2027-03-29 | 2027-03-29 | E-GFC-AR-CC-215 FF, E-GFC-AR-RB1-185 FF, E-GFC-AR-RB2-245 FF, E-GFC-AR-3S-300 FF, E-GFC-AR-4S-275 FF, E-GFC-AR-CB-95 FF |  |  |
| Milestones-145 |  | GFC Issuance -MEP & FF Sign Off | milestone | 0d | 2027-05-03 | 2027-05-03 | E-GFC-MEP-CC-210 FF, E-GFC-MEP-RB1-185 FF, E-GFC-MEP-RB2-245 FF, E-GFC-MEP-3S-305 FF, E-GFC-MEP-4S-275 FF, E-GFC-MEP-CB-95 FF |  |  |
| Milestones-255 |  | GFC Issuance - Interior design Sign off | milestone | 0d | 2027-12-16 | 2027-12-16 | E-GFC-ID-H&CC-35 FF, E-GFC-ID-R&O-35 FF |  |  |
|  | 5 | **Tender (Revised BOQ)** |  |  | 2027-10-20 | 2027-10-20 |  |  |  |
| Milestones-245 |  | Tender (Revised BOQ) | milestone | 0d | 2027-10-20 | 2027-10-20 | E-Tender-15 FF, E-Tender-20 FF, E-Tender-25 FF, E-Tender-10 FF, E-Tender-35 FF, E-Tender-30 FF, E-Tender-40 FF, E-Tender-45 FF, E-Tender-50 FF, E-Tender-55 FF, E-Tender-60 FF, E-Tender-65 FF, E-Tender-70 FF |  | CSD-LKO-Design (5 Day + Holiday)-25 |
|  | 5 | **Construction** |  |  | 2026-04-21 | 2029-05-16 |  |  |  |
|  | 6 | **Core & Shell Works** |  |  | 2026-04-21 | 2028-06-02 |  |  |  |
|  | 1 | **4 Star Hotel** |  |  | 2026-04-21 | 2028-04-05 |  |  |  |
| Milestones-60 |  | 4 Star Sub Structure Commencement | milestone | 0d | 2026-04-21 A | 2026-04-21 A | 4S-SS-FN10 SS | 100% |  |
| Milestones-165 |  | 4 Star Super Structure Commencement | milestone | 0d | 2027-02-18 | 2027-02-18 | 4S-SS-GF.20 SS |  |  |
| Milestones-175 |  | 4 Star Sub Structure Completion | milestone | 0d | 2027-03-04 | 2027-03-04 | 4S-SS-B-01.595 FF, 4S-SS-B-01.715 FF, 4S-SS-B-01.710 FF, 4S-SS-B-01.355 FF, 4S-SS-GS125 FF |  |  |
| Milestones-265 |  | 4 Star Super Structure Completion | milestone | 0d | 2027-11-13 | 2027-11-13 | 4S-SS-Roof40 FF |  |  |
| Milestones-305 |  | 4 Star Wet Works Completion | milestone | 0d | 2028-02-05 | 2028-02-05 | 4S-WMI-6th80 FF |  |  |
| Milestones-335 |  | 4 Star Structural Steel Completion | milestone | 0d | 2028-04-05 | 2028-04-05 | 4S-F-SS35 FF |  |  |
|  | 2 | **3 Star Hotel** |  |  | 2026-09-30 | 2028-04-18 |  |  |  |
| Milestones-85 |  | 3 Star Sub Structure Commencement | milestone | 0d | 2026-09-30 | 2026-09-30 | 3S-SS-FN10 SS |  |  |
| Milestones-170 |  | 3 Star Super Structure Commencement | milestone | 0d | 2027-02-25 | 2027-02-25 | 3S-SS-GF10 SS |  |  |
| Milestones-190 |  | 3 Star Sub Structure Completion | milestone | 0d | 2027-03-12 | 2027-03-12 | 3S-SS-B01.555 FF, 3S-SS-B01.460 FF, 3S-SS-GS65 FF |  |  |
| Milestones-295 |  | 3 Star Super Structure Completion | milestone | 0d | 2028-01-10 | 2028-01-10 | 3S-SS-Roof40 FF |  |  |
| Milestones-330 |  | 3 Star Wet Works Completion | milestone | 0d | 2028-03-03 | 2028-03-03 | 3S-WMI-7th80 FF |  |  |
| Milestones-365 |  | 3 Star Structural Steel Completion | milestone | 0d | 2028-04-18 | 2028-04-18 | 3S-F-SS40 FF |  |  |

| ID | WBS | Activity | Type | Duration | Start | Finish | Predecessors | Complete |
| --- | --- | --- | --- | --- | --- | --- | --- | --- |
|  | 3 | **Retail - 1** |  |  | 2026-10-12 | 2028-05-29 |  |  |
| Milestones-100 |  | Retail- 1 Sub Structure Commencement | milestone | 0d | 2026-10-12 | 2026-10-12 | RB1-SS-FN10 SS |  |
| Milestones-180 |  | Retail- 1 Super Structure Commencement | milestone | 0d | 2027-04-17 | 2027-04-17 | RB1-SS-GF.10 SS |  |
| Milestones-230 |  | Retail- 1 Sub Structure Completion | milestone | 0d | 2027-06-14 | 2027-06-14 | RB1-SS-B01.1085 FF, RB1-SS-B01.1065 FF, RB1-SS-B01.1030 FF, RB1-SS-GS215 FF |  |
| Milestones-275 |  | Retail- 1 Super Structure Completion | milestone | 0d | 2028-01-24 | 2028-01-24 | RB1-SS-Roof40 FF |  |
| Milestones-315 |  | Retail- 1 Wet Works Completion | milestone | 0d | 2028-03-29 | 2028-03-29 | RB1-WMI-4th80 FF |  |
| Milestones-360 |  | Retail- 1 Structural Steel Completion | milestone | 0d | 2028-05-29 | 2028-05-29 | RB1-F-SS15 FF |  |
|  | 4 | **Retail - 2** |  |  | 2026-11-06 | 2028-06-02 |  |  |
| Milestones-140 |  | Retail- 2 Sub Structure Commencement | milestone | 0d | 2026-11-06 | 2026-11-06 | RB2-SS-FN10 SS |  |
| Milestones-195 |  | Retail- 2 Super Structure Commencement | milestone | 0d | 2027-05-20 | 2027-05-20 | RB2-SS-GF.10 SS |  |
| Milestones-240 |  | Retail- 2 Sub Structure Completion | milestone | 0d | 2027-06-02 | 2027-06-02 | RB2-SS-B-01.980 FF, RB2-SS-B-01.940 FF, RB2-SS-B-01.1005 FF, RB2-SS-GS185 FF |  |
| Milestones-310 |  | Retail- 2 Super Structure Completion | milestone | 0d | 2028-01-22 | 2028-01-22 | RB2-SS-Roof40 FF |  |
| Milestones-350 |  | Retail- 2 Wet Works Completion | milestone | 0d | 2028-03-17 | 2028-03-17 | RB2-WMI-6th95 FF |  |
| Milestones-370 |  | Retail- 2 Structural Steel Completion | milestone | 0d | 2028-06-02 | 2028-06-02 | RB2-F-SS25 FF |  |
|  | 5 | **Conventional Centre** |  |  | 2026-05-13 | 2028-04-28 |  |  |
| Milestones-105 |  | Conventional Centre Sub Structure Commencement | milestone | 0d | 2026-05-13 A | 2026-05-13 A | CC-SS-FN10 SS | 100% |
| Milestones-185 |  | Conventional Centre Super Structure Commencement | milestone | 0d | 2027-03-31 | 2027-03-31 | CC-SS-GF115 SS |  |
| Milestones-205 |  | Conventional Centre Sub Structure Completion | milestone | 0d | 2027-05-06 | 2027-05-06 | CC-SS-B01.1085 FF, CC-SS-B01.1080 FF, CC-SS-B01.1040 FF, CC-SS-GS215 FF |  |
| Milestones-285 |  | Conventional Centre Super Structure Completion | milestone | 0d | 2028-01-13 | 2028-01-13 | CC-SS-Roof35 FF |  |
| Milestones-340 |  | Conventional Centre Structural Steel Completion | milestone | 0d | 2028-04-06 | 2028-04-06 | CC-F-SS20 FF, CC-SS-2ndF.250 FF |  |
| Milestones-375 |  | Conventional Centre Wet Works Completion | milestone | 0d | 2028-04-28 | 2028-04-28 | CC-WMI-2ndF20 FF |  |
|  | 6 | **Bridge Between RB1 & RB2** |  |  | 2027-06-17 | 2028-04-13 |  |  |
| Milestones-225 |  | Bridge Structure Commencement | milestone | 0d | 2027-06-17 | 2027-06-17 | Bridge-SS-GF.475 SS |  |
| Milestones-355 |  | Bridge Structure Completion | milestone | 0d | 2028-04-13 | 2028-04-13 | Bridge-SS-4th.575 FF |  |

| ID | WBS | Activity | Type | Duration | Start | Finish | Predecessors |
| --- | --- | --- | --- | --- | --- | --- | --- |
|  | 1 | **Facade** |  |  | 2027-11-02 | 2029-01-15 |  |
| Milestones-260 |  | 4 Star Hotel Commencement | milestone | 0d | 2027-11-02 | 2027-11-02 | 4S-F-2nd10 SS |
| Milestones-280 |  | 3 Star Hotel Commencement | milestone | 0d | 2027-12-01 | 2027-12-01 | 3S-F-2nd10 SS |
| Milestones-270 |  | Convention Centre Commencement | milestone | 0d | 2027-12-11 | 2027-12-11 | CC-F-GF25 SS |
| Milestones-300 |  | Retail -2 Commencement | milestone | 0d | 2028-01-13 | 2028-01-13 | RB2-F-(GF-2nd)10 SS |
| Milestones-290 |  | Retail -1 Commencement | milestone | 0d | 2028-02-12 | 2028-02-12 | RB1-F-(GF-2nd)10 SS |
| Milestones-520 |  | Bridge Commencement | milestone | 0d | 2028-04-13 | 2028-04-13 | Bridge-Facade-5 SS |
| Milestones-390 |  | Convention Centre Completion | milestone | 0d | 2028-11-08 | 2028-11-08 | CC-F-Terrace20 FF |
| Milestones-530 |  | Bridge Completion | milestone | 0d | 2028-11-27 | 2028-11-27 | Bridge-Facade-45 FF |
| Milestones-420 |  | 3 Star Hotel Completion | milestone | 0d | 2028-12-06 | 2028-12-06 | 3S-F-Terrace85 FF |
| Milestones-405 |  | 4 Star Hotel Completion | milestone | 0d | 2028-12-22 | 2028-12-22 | 4S-F-Terrace85 FF |
| Milestones-395 |  | Retail -1 Completion | milestone | 0d | 2029-01-09 | 2029-01-09 | RB1-F-Terrace70 FF |
| Milestones-400 |  | Retail -2 Completion | milestone | 0d | 2029-01-15 | 2029-01-15 | RB2-F-Terrace25 FF |
|  | 2 | **MEP** |  |  | 2027-04-28 | 2029-04-12 |  |
| Milestones-210 |  | 3 Star Hotel Commencement | milestone | 0d | 2027-04-28 | 2027-04-28 | 3S-WMI-GF20 SS |
| Milestones-220 |  | Convention Centre Commencement | milestone | 0d | 2027-06-10 | 2027-06-10 | CC-WMI-GF385 SS |
| Milestones-250 |  | Retail -2 Commencement | milestone | 0d | 2027-07-14 | 2027-07-14 | RB2-WMI-GF20 SS |
| Milestones-235 |  | Retail -1 Commencement | milestone | 0d | 2027-08-11 | 2027-08-11 | RB1-WMI-GF20 SS |
| Milestones-200 |  | 4 Star Hotel Commencement | milestone | 0d | 2027-10-13 | 2027-10-13 | 4S-WMI-GF20 SS |
| Milestones-435 |  | 3 Star Hotel Completion | milestone | 0d | 2029-03-13 | 2029-03-13 | 3S-WMI-7th310 FF, 3S-WMI-7th455 FF, 3S-WMI-7th405 FF, 3S-WMI-7th615 FF, 3S-WMI-7th410 FF, 3S-WMI-7th460 FF, 3S-WMI-7th525 FF, 3S-WMI-7th420 FF, 3S-WMI-7th415 FF, 3S-WMI-7th620 FF, 3S-WMI-7th530 FF, 3S-WMI-7th535 FF, 3S-WMI-7th540 FF, 3S-WMI-7th545 FF, 3S-WMI-7th625 FF, 3S-WMI-7th630 FF, 3S-WMI-7th635 FF, 3S-WMI-7th640 FF, 3S-WMI-7th670 FF |
| Milestones-430 |  | 4 Star Hotel Completion | milestone | 0d | 2029-03-15 | 2029-03-15 | 4S-WMI-6th290 FF, 4S-WMI-6th435 FF, 4S-WMI-6th350 FF, 4S-WMI-6th555 FF, 4S-WMI-6th355 FF, 4S-WMI-6th440 FF, 4S-WMI-6th465 FF, 4S-WMI-6th365 FF, 4S-WMI-6th360 FF, 4S-WMI-6th570 FF, 4S-WMI-6th470 FF, 4S-WMI-6th475 FF, 4S-WMI-6th480 FF, 4S-WMI-6th485 FF, 4S-WMI-6th575 FF, 4S-WMI-6th580 FF, 4S-WMI-6th585 FF, 4S-WMI-6th590 FF, 4S-WMI-6th645 FF |
| Milestones-410 |  | Retail -1 Completion | milestone | 0d | 2029-03-17 | 2029-03-17 | RB1-WMI-4th385 FF, RB1-WMI-4th325 FF |
| Milestones-455 |  | Retail -2 Completion | milestone | 0d | 2029-04-03 | 2029-04-03 | RB2-WMI-6th380 FF, RB2-WMI-6th320 FF |
| Milestones-440 |  | Convention Centre Completion | milestone | 0d | 2029-04-12 | 2029-04-12 | CC-WMI-2ndF300 FF, CC-WMI-2ndF260 FF |

| ID | WBS | Activity | Type | Duration | Start | Finish | Predecessors | Complete | Remaining | Planned start | Planned finish | Resources |
| --- | --- | --- | --- | --- | --- | --- | --- | --- | --- | --- | --- | --- |
|  | 3 | **Interior Decoration** |  |  | 2028-06-06 | 2029-05-16 |  |  |  |  |  |  |
| Milestones-385 |  | Retail -2 Commencement | milestone | 0d | 2028-06-06 | 2028-06-06 | RB2-WMI-GF240 SS |  |  |  |  |  |
| Milestones-380 |  | Retail -1 Commencement | milestone | 0d | 2028-06-09 | 2028-06-09 | RB1-WMI-GF250 SS |  |  |  |  |  |
| Milestones-320 |  | 4 Star Hotel Commencement | milestone | 0d | 2028-06-12 | 2028-06-12 | 4S-WMI-2nd570 SS |  |  |  |  |  |
| Milestones-325 |  | 3 Star Hotel Commencement | milestone | 0d | 2028-06-12 | 2028-06-12 | 3S-WMI-2nd210 SS |  |  |  |  |  |
| Milestones-345 |  | Convention Centre Commencement | milestone | 0d | 2028-06-12 | 2028-06-12 | CC-WMI-GF320 SS |  |  |  |  |  |
| Milestones-425 |  | Retail -1 Completion | milestone | 0d | 2029-04-17 | 2029-04-17 | RB1-WMI-4th395 FF, RB1-WMI-4th400 FF |  |  |  |  |  |
| Milestones-465 |  | 3 Star Hotel Completion | milestone | 0d | 2029-04-19 | 2029-04-19 | 3S-WMI-7th700 FF, 3S-WMI-7th705 FF, 3S-WMI-7th710 FF, 3S-WMI-7th715 FF, 3S-WMI-7th695 FF, 3S-WMI-7th690 FF |  |  |  |  |  |
| Milestones-450 |  | 4 Star Hotel Completion | milestone | 0d | 2029-04-20 | 2029-04-20 | 4S-WMI-6th715 FF, 4S-WMI-6th710 FF, 4S-WMI-6th690 FF, 4S-WMI-6th695 FF, 4S-WMI-6th700 FF, 4S-WMI-6th705 FF |  |  |  |  |  |
| Milestones-460 |  | Convention Centre Completion | milestone | 0d | 2029-05-11 | 2029-05-11 | CC-WMI-2ndF335 FF, CC-WMI-2ndF345 FF |  |  |  |  |  |
| Milestones-475 |  | Retail -2 Completion | milestone | 0d | 2029-05-16 | 2029-05-16 | RB2-WMI-6th400 FF, RB2-WMI-6th395 FF |  |  |  |  |  |
|  | 4 | **Landscape & External Works** |  |  | 2029-01-09 | 2029-05-14 |  |  |  |  |  |  |
| Milestones-415 |  | External Works Commencement | milestone | 0d | 2029-01-09 | 2029-01-09 | ED-R10 SS |  |  |  |  |  |
| Milestones-445 |  | Land Scape Commencement | milestone | 0d | 2029-02-27 | 2029-02-27 | ED-LS10 SS |  |  |  |  |  |
| Milestones-490 |  | Land Scape Completion | milestone | 0d | 2029-05-02 | 2029-05-02 | ED-LS15 FF, 4S-SP45 FF |  |  |  |  |  |
| Milestones-510 |  | External Works Completion | milestone | 0d | 2029-05-14 | 2029-05-14 | ED-HO10 FF |  |  |  |  |  |
|  | 3 | **Handovers of Buildings** |  |  | 2029-05-15 | 2029-06-07 |  |  |  |  |  |  |
| Milestones-470 |  | Hotel 4 Star | milestone | 0d | 2029-05-15 | 2029-05-15 | 4S-T&C-6th20, 4S-WMI-GF415, 4S-WMI-1st395, 4S-WMI-Serv.F385, 4S-WMI-2nd710, 4S-WMI-2nd560, 4S-WMI-2nd550, 4S-WMI-3rd710, 4S-WMI-3rd570, 4S-WMI-3rd555, 4S-WMI-4th710, 4S-WMI-4th590, 4S-WMI-4th570, 4S-WMI-5th710, 4S-WMI-5th655, 4S-WMI-5th645, 4S-WMI-6th710, 4S-WMI-6th690, 4S-WMI-6th700, 4S-WMI-GF420, 4S-WMI-1st400, 4S-WMI-Serv.F390, 4S-WMI-2nd715, 4S-WMI-2nd565, 4S-WMI-2nd555, 4S-WMI-3rd715, 4S-WMI-3rd575, 4S-WMI-3rd560, 4S-WMI-4th715, 4S-WMI-4th595, 4S-WMI-4th575, 4S-WMI-5th715, 4S-WMI-5th660, 4S-WMI-5th650, 4S-WMI-6th715, 4S-WMI-6th695, 4S-WMI-6th705, 4S-T&C-GF20, 4S-T&C-1st20, 4S-T&C-Serv.F20, 4S-T&C-2nd20, 4S-T&C-3rd20, 4S-T&C-4th20, 4S-T&C-5th20, 4S-T&C-7th20 |  |  |  |  |  |
| Milestones-485 |  | Hotel 3 Star | milestone | 0d | 2029-05-16 | 2029-05-16 | 3S-T&C-7th20, 3S-WMI-GF415, 3S-WMI-1st395, 3S-WMI-Serv.F.385, 3S-WMI-2nd710, 3S-WMI-2nd680, 3S-WMI-2nd690, 3S-WMI-3rd710, 3S-WMI-3rd680, 3S-WMI-4th710, 3S-WMI-4th680, 3S-WMI-4th690, 3S-WMI-5th710, 3S-WMI-5th685, 3S-WMI-5th695, 3S-WMI-6th700, 3S-WMI-6th710, 3S-WMI-6th690, 3S-WMI-7th700, 3S-WMI-7th710, 3S-WMI-7th690, 3S-WMI-GF420, 3S-WMI-1st400, 3S-WMI-Serv.F.390, 3S-WMI-2nd715, 3S-WMI-2nd685, 3S-WMI-2nd695, 3S-WMI-3rd715, 3S-WMI-3rd685, 3S-WMI-4th715, 3S-WMI-4th685, 3S-WMI-4th695, 3S-WMI-5th715, 3S-WMI-5th690, 3S-WMI-5th700, 3S-WMI-6th705, 3S-WMI-6th715, 3S-WMI-6th695, 3S-WMI-7th705, 3S-WMI-7th715, 3S-WMI-7th695, 3S-T&C-GF20, 3S-T&C-1st20, 3S-T&C-Serv.F20, 3S-T&C-2nd20, 3S-T&C-3rd20, 3S-T&C-4th20, 3S-T&C-5th20, 3S-T&C-6th20, 3S-T&C-Terrace20 |  |  |  |  |  |
| Milestones-500 |  | Convention Center | milestone | 0d | 2029-05-18 | 2029-05-18 | CC-T&C-2ndF15, CC-WMI-GF330, CC-WMI-1stM330, CC-WMI-2ndM330, CC-WMI-1stF335, CC-WMI-3rdM335, CC-WMI-2ndF335, CC-WMI-GF340, CC-WMI-1stM340, CC-WMI-2ndM340, CC-WMI-1stF345, CC-WMI-3rdM345, CC-WMI-2ndF345, CC-T&C-GF15, CC-T&C-1stM15, CC-T&C-2ndM15, CC-T&C-1stF15, CC-T&C-3rdM15, CC-T&C-Terrace15 |  |  |  |  |  |
| Milestones-480 |  | Retail Block 1 | milestone | 0d | 2029-06-06 | 2029-06-06 | RB1-T&C-4th20, RB1-WMI-GF395, RB1-WMI-1st395, RB1-WMI-2nd395, RB1-WMI-3rd395, RB1-WMI-4th395, RB1-WMI-GF400, RB1-WMI-1st400, RB1-WMI-2nd400, RB1-WMI-3rd400, RB1-WMI-4th400, RB1-T&C-GF20, RB1-T&C-1st20, RB1-T&C-2nd20, RB1-T&C-3rd20, RB1-T&C-Terrace20 |  |  |  |  |  |
| Milestones-505 |  | Retail Block 2 | milestone | 0d | 2029-06-07 | 2029-06-07 | RB2-T&C-6th20, RB2-WMI-GF395, RB2-WMI-1st395, RB2-WMI-2nd395, RB2-WMI-3rd395, RB2-WMI-4th395, RB2-WMI-5th395, RB2-WMI-6th395, RB2-WMI-GF400, RB2-WMI-1st400, RB2-WMI-2nd400, RB2-WMI-3rd400, RB2-WMI-4th400, RB2-WMI-5th400, RB2-WMI-6th400, RB2-T&C-GF20, RB2-T&C-1st20, RB2-T&C-2nd20, RB2-T&C-3rd20, RB2-T&C-4th20, RB2-T&C-5th20, RB2-T&C-Terrace20 |  |  |  |  |  |
|  | 10 | **Mobilisation** |  |  | 2026-03-14 | 2026-12-11 |  |  |  |  |  |  |
|  | 1 | **Site Office Setup** |  |  | 2026-03-14 | 2026-12-11 |  |  |  |  |  |  |
| Mob-SO-10 |  | Layout Preparation & Submission By TPL |  | 6d | 2026-03-14 A | 2026-03-20 A | Milestones-10 | 100% |  |  |  | Preliminaries; TATA Projects Ltd-25 |
| Mob-SO-15 |  | Approval by Adani Team |  | 3d | 2026-03-21 A | 2026-03-25 A | Mob-SO-10 | 100% |  | 2026-03-23 | 2026-03-25 | Preliminaries; Adani Airport Holding Ltd.-25 |
| Mob-SO-35 |  | Site Office Area Clearance |  | 102d | 2026-03-24 A | 2026-08-06 A | Mob-SO-10 | 100% |  | 2026-03-24 | 2026-08-05 | Preliminaries; Adani Airport Holding Ltd.-25 |
| Mob-SO-20 |  | Temporary Site Office along with utilities |  | 25d | 2026-04-06 A | 2026-05-05 A | Mob-SO-15, Milestones-35 | 100% |  |  |  | Preliminaries; TATA Projects Ltd-25 |
| Mob-SO-40 |  | Worker Site access with barrication |  | 13d | 2026-04-18 A | 2026-05-04 A | Mob-SO-35 | 100% |  |  |  | Preliminaries; TATA Projects Ltd-25 |
| Mob-SO-25 |  | Stores, QA/QC Park, Safety Park & Other Utilities |  | 104.4d | 2026-04-29 A | 2026-10-07 | Mob-SO-15, Milestones-35, Mob-SO-35 |  | 4.5d |  |  | Preliminaries; TATA Projects Ltd-25 |
| Mob-SO-45 |  | HSE Monitoring Board |  | 2d | 2026-04-30 A | 2026-05-03 A | Mob-SO-35 | 100% |  | 2026-04-30 | 2026-05-02 | Preliminaries; TATA Projects Ltd-25 |
| Mob-SO-30 |  | Permanent Site Office along with utilities |  | 60d | 2026-09-30 | 2026-12-11 | Mob-SO-15, Milestones-35, Mob-SO-35 |  |  |  |  | Preliminaries; TATA Projects Ltd-25 |

| ID | WBS | Activity | Duration | Start | Finish | Predecessors | Complete | Remaining | Planned start | Planned finish | Resources |
| --- | --- | --- | --- | --- | --- | --- | --- | --- | --- | --- | --- |
|  | 2 | **Workforce Camp** |  | 2026-03-19 | 2026-11-03 |  |  |  |  |  |  |
| Mob-WC-10 |  | Layout Preparation & Submission By TPL | 0d | 2026-03-19 A | 2026-03-19 A | Milestones-10 | 100% |  |  |  | Preliminaries; TATA Projects Ltd-25 |
| Mob-WC-15 |  | Approval by Adani Team | 0d | 2026-03-20 A | 2026-03-20 A | Mob-WC-10 | 100% |  |  |  | Preliminaries; Adani Airport Holding Ltd.-25 |
| Mob-WC-20 |  | Issue of work order | 55d | 2026-03-24 A | 2026-05-29 A | Mob-WC-15, Milestones-35 | 100% |  |  |  | Preliminaries; TATA Projects Ltd-25 |
| Mob-WC-40 |  | Labour camp Area Clerance | 2d | 2026-04-11 A | 2026-04-13 A | Mob-WC-10 | 100% |  |  |  | Preliminaries; Adani Airport Holding Ltd.-25 |
| Mob-WC-25 |  | Block 1 construction | 79.9d | 2026-05-28 A | 2026-10-05 | Mob-WC-20, Milestones-35, Mob-WC-40 |  | 3d |  |  | Preliminaries; TATA Projects Ltd-25 |
| Mob-WC-30 |  | Block 2 construction | 85.9d | 2026-06-08 A | 2026-10-23 | Milestones-35, Mob-WC-25 SS |  | 18d |  |  | Preliminaries; TATA Projects Ltd-25 |
| Mob-WC-35 |  | Block 3 construction | 83.9d | 2026-06-13 A | 2026-10-27 | Milestones-35, Mob-WC-30 SS |  | 21d |  |  | Preliminaries; TATA Projects Ltd-25 |
| Mob-WC-50 |  | Open Storage Yard | 60.9d | 2026-06-25 A | 2026-10-10 | Mob-WC-45 SS |  | 8d |  |  | Preliminaries; TATA Projects Ltd-25 |
| Mob-WC-45 |  | Closed Storage Yard | 74.9d | 2026-07-01 A | 2026-11-03 | Mob-WC-25 SS |  | 27d | 2026-07-02 | 2026-11-03 | Preliminaries; TATA Projects Ltd-25 |
|  | 3 | **Plant & Machinary** |  | 2026-03-25 | 2026-12-04 |  |  |  |  |  |  |
|  | 4 | **Tower Crane** |  | 2026-04-09 | 2026-12-04 |  |  |  |  |  |  |
| Mob-P&M-TC10 |  | Layout Preparation & Submission By TPL | 0d | 2026-04-09 A | 2026-04-09 A | Milestones-25 | 100% |  |  |  | Preliminaries; TATA Projects Ltd-25 |
| Mob-P&M-TC120 |  | Foundation Drawings of Towercrane | 8d | 2026-04-22 A | 2026-04-30 A | Mob-P&M-TC10 | 100% |  |  |  | Preliminaries; TATA Projects Ltd-25 |
| Mob-P&M-TC15 |  | Design coordination with consultant | 16d | 2026-05-02 A | 2026-05-20 A | Mob-P&M-TC10, Mob-P&M-TC120 | 100% |  |  |  | Preliminaries; TATA Projects Ltd-25 |
| Mob-P&M-TC125 |  | Peer Review Approval | 8d | 2026-05-21 A | 2026-05-30 A | Mob-P&M-TC15 | 100% |  |  |  | Preliminaries; Peer Reviewer-25 |
|  | 1 | **TC - 5, Hotel 4 Star** |  | 2026-04-10 | 2026-07-25 |  |  |  |  |  |  |
| Mob-P&M-TC20 |  | Mobilisation | 22d | 2026-04-10 A | 2026-05-06 A | Milestones-35, Mob-P&M-TC10 | 100% |  |  |  | Preliminaries; TATA Projects Ltd-25 |
| Mob-P&M-TC25 |  | Foundation | 20d | 2026-06-08 A | 2026-06-30 A | Milestones-55, Mob-P&M-TC125 | 100% |  |  |  | Preliminaries; TATA Projects Ltd-25 |
| Mob-P&M-TC30 |  | Erection | 5d | 2026-07-16 A | 2026-07-24 A | Mob-P&M-TC25, Mob-P&M-TC20 | 100% |  | 2026-07-16 | 2026-07-23 | Preliminaries; TATA Projects Ltd-25 |
| Mob-P&M-TC35 |  | Testing and Commissioning | 2d | 2026-07-23 A | 2026-07-25 A | Mob-P&M-TC30 | 100% |  |  |  | Preliminaries; TATA Projects Ltd-25 |
|  | 3 | **TC - 4, Hotel 3 Star** |  | 2026-04-10 | 2026-10-27 |  |  |  |  |  |  |
| Mob-P&M-TC40 |  | Mobilisation | 26d | 2026-04-10 A | 2026-05-11 A | Milestones-35 | 100% |  |  |  | Preliminaries; TATA Projects Ltd-25 |
| Mob-P&M-TC45 |  | Foundation | 15d | 2026-09-30 | 2026-10-19 | Milestones-80, 3S-SS-FN80 FF |  |  |  |  | Preliminaries; TATA Projects Ltd-25 |
| Mob-P&M-TC50 |  | Erection | 3d | 2026-10-19 | 2026-10-23 | Mob-P&M-TC45, Mob-P&M-TC40 |  |  |  |  | Preliminaries; TATA Projects Ltd-25 |
| Mob-P&M-TC55 |  | Testing and Commissioning | 3d | 2026-10-23 | 2026-10-27 | Mob-P&M-TC50 |  |  |  |  | Preliminaries; TATA Projects Ltd-25 |

| ID | WBS | Activity | Duration | Start | Finish | Predecessors | Complete | Planned start | Planned finish | Resources |
| --- | --- | --- | --- | --- | --- | --- | --- | --- | --- | --- |
|  | 4 | **TC - 2, Retail Block 2** |  | 2026-11-06 | 2026-12-04 |  |  |  |  |  |
| Mob-P&M-TC60 |  | Mobilisation | 15d | 2026-11-06 | 2026-11-23 | Milestones-35, Mob-P&M-TC65 FF |  |  |  | Preliminaries; TATA Projects Ltd-25 |
| Mob-P&M-TC65 |  | Foundation | 15d | 2026-11-06 | 2026-11-23 | Milestones-130 |  |  |  | Preliminaries; TATA Projects Ltd-25 |
| Mob-P&M-TC70 |  | Erection | 6d | 2026-11-24 | 2026-11-30 | Mob-P&M-TC65, Mob-P&M-TC60 |  |  |  | Preliminaries; TATA Projects Ltd-25 |
| Mob-P&M-TC75 |  | Testing and Commissioning | 4d | 2026-12-01 | 2026-12-04 | Mob-P&M-TC70 |  |  |  | Preliminaries; TATA Projects Ltd-25 |
|  | 5 | **TC - 1, Retail Block 1** |  | 2026-10-12 | 2026-11-10 |  |  |  |  |  |
| Mob-P&M-TC80 |  | Mobilisation | 15d | 2026-10-12 | 2026-10-29 | Milestones-35, Mob-P&M-TC85 FF |  |  |  | Preliminaries; TATA Projects Ltd-25 |
| Mob-P&M-TC85 |  | Foundation | 15d | 2026-10-12 | 2026-10-29 | Milestones-95 |  |  |  | Preliminaries; TATA Projects Ltd-25 |
| Mob-P&M-TC90 |  | Erection | 6d | 2026-10-30 | 2026-11-05 | Mob-P&M-TC85, Mob-P&M-TC80 |  |  |  | Preliminaries; TATA Projects Ltd-25 |
| Mob-P&M-TC95 |  | Testing and Commissioning | 4d | 2026-11-06 | 2026-11-10 | Mob-P&M-TC90 |  |  |  | Preliminaries; TATA Projects Ltd-25 |
|  | 6 | **TC - 3, Convention Center** |  | 2026-09-30 | 2026-10-31 |  |  |  |  |  |
| Mob-P&M-TC100 |  | Mobilisation | 15d | 2026-09-30 | 2026-10-19 | Milestones-35, Mob-P&M-TC105 FF |  |  |  | Preliminaries; TATA Projects Ltd-25 |
| Mob-P&M-TC105 |  | Foundation | 15d | 2026-09-30 | 2026-10-19 | Milestones-90 |  |  |  | Preliminaries; TATA Projects Ltd-25 |
| Mob-P&M-TC110 |  | Erection | 6d | 2026-10-19 | 2026-10-27 | Mob-P&M-TC105, Mob-P&M-TC100 |  |  |  | Preliminaries; TATA Projects Ltd-25 |
| Mob-P&M-TC115 |  | Testing and Commissioning | 4d | 2026-10-27 | 2026-10-31 | Mob-P&M-TC110 |  |  |  | Preliminaries; TATA Projects Ltd-25 |
|  | 2 | **Other Equipments** |  | 2026-03-25 | 2026-11-06 |  |  |  |  |  |
| Mob-P&M-OE25 |  | Welding Machine | 6d | 2026-03-25 A | 2026-03-31 A | Milestones-35 | 100% |  |  | Preliminaries; TATA Projects Ltd-25 |
| Mob-P&M-OE60 |  | Anti Smog Gun | 30d | 2026-03-25 A | 2026-04-29 A | Milestones-35 | 100% |  |  | Preliminaries; TATA Projects Ltd-25 |
| Mob-P&M-OE15 |  | Backhoe Loader | 21d | 2026-03-30 A | 2026-04-23 A | Milestones-35 | 100% |  |  | Preliminaries; TATA Projects Ltd-25 |
| Mob-P&M-OE35 |  | Total Station | 19d | 2026-04-03 A | 2026-04-26 A | Milestones-35 | 100% | 2026-04-04 | 2026-04-25 | Preliminaries; TATA Projects Ltd-25 |
| Mob-P&M-OE10 |  | Cut-Bend Machine | 0d | 2026-04-04 A | 2026-04-04 A | Milestones-35 | 100% |  |  | Preliminaries; TATA Projects Ltd-25 |
| Mob-P&M-OE20 |  | Vibratory Roller | 0d | 2026-04-04 A | 2026-04-04 A | Milestones-35 | 100% |  |  | Preliminaries; TATA Projects Ltd-25 |
| Mob-P&M-OE40 |  | DG Set | 20d | 2026-04-04 A | 2026-04-27 A | Milestones-35 | 100% |  |  | Preliminaries; TATA Projects Ltd-25 |
| Mob-P&M-OE45 |  | Concrete Pump | 50d | 2026-04-18 A | 2026-06-17 A | Milestones-35 | 100% |  |  | Preliminaries; TATA Projects Ltd-25 |
| Mob-P&M-OE65 |  | Weigh Bridge | 14d | 2026-04-23 A | 2026-05-09 A | Milestones-35 | 100% |  |  | Preliminaries; TATA Projects Ltd-25 |
| Mob-P&M-OE50 |  | Trailer | 28d | 2026-05-02 A | 2026-06-04 A | Milestones-35 | 100% |  |  | Preliminaries; TATA Projects Ltd-25 |
| Mob-P&M-OE55 |  | Mini Truck | 0d | 2026-05-02 A | 2026-05-02 A | Milestones-35 | 100% |  |  | Preliminaries; TATA Projects Ltd-25 |
| Mob-P&M-OE30 |  | Air Compressor | 7d | 2026-05-27 A | 2026-06-04 A | Milestones-35 | 100% | 2026-05-28 | 2026-06-04 | Preliminaries; TATA Projects Ltd-25 |
| Mob-P&M-OE70 |  | Concrete Boom Placer | 30d | 2026-09-30 | 2026-11-06 | Milestones-35, Mob-P&M-OE45 |  |  |  | Preliminaries; TATA Projects Ltd-25 |

| ID | WBS | Activity | Duration | Start | Finish | Predecessors | Complete | Remaining | Planned start | Planned finish | Calendar | Resources |
| --- | --- | --- | --- | --- | --- | --- | --- | --- | --- | --- | --- | --- |
|  | 11 | **Procurement** |  | 2026-02-27 | 2029-02-19 |  |  |  |  |  |  |  |
|  | 1 | **Key Vendor Mobilisation** |  | 2026-02-27 | 2029-02-19 |  |  |  |  |  |  |  |
|  | 12 | **Civil work** |  | 2026-03-28 | 2028-03-21 |  |  |  |  |  |  |  |
|  | 1 | **ATT** |  | 2026-03-28 | 2026-05-09 |  |  |  |  |  |  |  |
| P-Civil-ATT-10 |  | Vendor Finalisation | 20d | 2026-03-28 A | 2026-04-21 A | Milestones-40 | 100% |  |  |  | CSD-LKO Calender (6 day + Holiday)-25 | Physical Progress [67230 h]; TATA Projects Ltd-25 |
| P-Civil-ATT-15 |  | Issue of PO to vendor | 6d | 2026-04-22 A | 2026-04-28 A | P-Civil-ATT-10 | 100% |  |  |  | CSD-LKO Calender (6 day + Holiday)-25 | Physical Progress [20180 h]; TATA Projects Ltd-25 |
| P-Civil-ATT-25 |  | Delivery of Material - First Lot | 8d | 2026-04-29 A | 2026-05-08 A | P-Civil-ATT-15 | 100% |  |  |  | CSD-LKO Calender (6 day + Holiday)-25 | Physical Progress [26890 h]; TATA Projects Ltd-25 |
| P-Civil-ATT-20 |  | Vendor on Site | 0d | 2026-05-09 A | 2026-05-09 A | P-Civil-ATT-25 | 100% |  |  |  | CSD-LKO Calender (6 day + Holiday)-25 | Physical Progress; TATA Projects Ltd-25 |
|  | 2 | **Waterproofing** |  | 2026-03-28 | 2026-06-14 |  |  |  |  |  |  |  |
| P-Civil-WP-20 |  | Vendor Finalisation | 56d | 2026-03-28 A | 2026-06-04 A | Milestones-40, E-DD-ST-FN-10 | 100% |  |  |  | CSD-LKO Calender (6 day + Holiday)-25 | Physical Progress [67230 h]; TATA Projects Ltd-25 |
| P-Civil-WP-10 |  | Issue of PO to vendor | 8d | 2026-06-04 A | 2026-06-12 A | P-Civil-WP-20 | 100% |  |  |  | CSD-LKO Calender (6 day + Holiday)-25 | Physical Progress [10080 h]; TATA Projects Ltd-25 |
| P-Civil-WP-15 |  | Vendor on Site | 9d | 2026-06-04 A | 2026-06-14 A | P-Civil-WP-25 | 100% |  | 2026-06-04 | 2026-06-13 | CSD-LKO Calender (6 day + Holiday)-25 | Physical Progress [3360 h]; TATA Projects Ltd-25 |
| P-Civil-WP-25 |  | Delivery of Material - First Lot | 9d | 2026-06-04 A | 2026-06-14 A | P-Civil-WP-10, E-ShopD-Civil-WP-15 | 100% |  | 2026-06-04 | 2026-06-13 | CSD-LKO Calender (6 day + Holiday)-25 | Physical Progress [20170 h]; TATA Projects Ltd-25 |
|  | 4 | **PT Works** |  | 2026-04-10 | 2026-08-20 |  |  |  |  |  |  |  |
| P-Civil-PT-15 |  | Vendor Finalisation | 26d | 2026-04-10 A | 2026-05-11 A | Milestones-40, E-DD-ST-CB-15 | 100% |  |  |  | CSD-LKO Calender (6 day + Holiday)-25 | Physical Progress [84030 h]; TATA Projects Ltd-25 |
| P-Civil-PT-10 |  | Issue of PO to vendor | 7d | 2026-05-11 A | 2026-05-18 A | P-Civil-PT-15 | 100% |  |  |  | CSD-LKO Calender (6 day + Holiday)-25 | Physical Progress [20170 h]; TATA Projects Ltd-25 |
| P-Civil-PT-20 |  | Vendor on Site | 0d | 2026-08-14 A | 2026-08-14 A | P-Civil-PT-25 | 100% |  |  |  | CSD-LKO Calender (6 day + Holiday)-25 | Physical Progress; TATA Projects Ltd-25 |
| P-Civil-PT-25 |  | Delivery of Material - First Lot | 4d | 2026-08-17 A | 2026-08-20 A | P-Civil-PT-10 | 100% |  |  |  | CSD-LKO Calender (6 day + Holiday)-25 | Physical Progress [67230 h]; TATA Projects Ltd-25 |
|  | 7 | **Structural Steel** |  | 2026-08-07 | 2027-04-19 |  |  |  |  |  |  |  |
| P-Civil-SS-20 |  | Vendor Finalisation | 84.9d | 2026-08-07 A | 2026-11-18 | E-DD-ST-CC-15 |  | 40d |  |  | CSD-LKO Calender (6 day + Holiday)-25 | Physical Progress [84030 h]; TATA Projects Ltd-25 |
| P-Civil-SS-10 |  | Issue of PO to vendor | 6d | 2026-11-18 | 2026-11-25 | P-Civil-SS-20 |  |  |  |  | CSD-LKO Calender (6 day + Holiday)-25 | Physical Progress [20170 h]; TATA Projects Ltd-25 |
| P-Civil-SS-15 |  | Vendor on Site | 3d | 2027-04-15 | 2027-04-19 | P-Delivery-SS10 |  |  |  |  | CSD-LKO Calender (6 day + Holiday)-25 | Physical Progress [10080 h]; TATA Projects Ltd-25 |
|  | 3 | **Expansion Joint** |  | 2027-01-29 | 2028-03-21 |  |  |  |  |  |  |  |
| P-Civil-EP-15 |  | Issue of Package from consultant | 18d | 2027-01-29 | 2027-02-19 | Milestones-10, E-GFC-ST-4S-210 |  |  |  |  | CSD-LKO Calender (6 day + Holiday)-25 | Physical Progress [33610 h]; TATA Projects Ltd-25 |
| P-Civil-EP-25 |  | Vendor Finalisation | 53d | 2027-02-19 | 2027-04-26 | Milestones-35, P-Civil-EP-15 |  |  |  |  | CSD-LKO Calender (6 day + Holiday)-25 | Physical Progress [151260 h]; TATA Projects Ltd-25 |
| P-Civil-EP-10 |  | Issue of PO to vendor | 6d | 2027-04-26 | 2027-05-04 | P-Civil-EP-25 |  |  |  |  | CSD-LKO Calender (6 day + Holiday)-25 | Physical Progress [20170 h]; TATA Projects Ltd-25 |
| P-Civil-EP-30 |  | Delivery of Material - First Lot | 46d | 2028-01-22 | 2028-03-18 | P-Civil-EP-10, E-ShopD-Civil-EP-15, CC-SS-Roof35, RB2-SS-Roof40, 3S-SS-Roof40, Mock Up-Civil-15 |  |  |  |  | CSD-LKO Calender (6 day + Holiday)-25 | Physical Progress [151260 h]; TATA Projects Ltd-25 |
| P-Civil-EP-20 |  | Vendor on Site | 2d | 2028-03-18 | 2028-03-21 | P-Civil-EP-30 |  |  |  |  | CSD-LKO Calender (6 day + Holiday)-25 | Physical Progress [6720 h]; TATA Projects Ltd-25 |

| ID | WBS | Activity | Duration | Start | Finish | Predecessors | Complete | Calendar | Resources |
| --- | --- | --- | --- | --- | --- | --- | --- | --- | --- |
|  | 5 | **Flooring (PU/Kota Stone)** |  | 2027-04-29 | 2027-09-02 |  |  |  |  |
| P-Civil-Flooring-20 |  | Vendor Finalisation | 45d | 2027-04-29 | 2027-06-22 | Milestones-35, CB-B03-4S-WMI-30, E-DD-AR-4S-15 |  | CSD-LKO Calender (6 day + Holiday)-25 | Physical Progress [151260 h]; TATA Projects Ltd-25 |
| P-Civil-Flooring-10 |  | Issue of PO to vendor | 6d | 2027-06-22 | 2027-06-29 | P-Civil-Flooring-20 |  | CSD-LKO Calender (6 day + Holiday)-25 | Physical Progress [20170 h]; TATA Projects Ltd-25 |
| P-Civil-Flooring-25 |  | Delivery of Material - First Lot | 53d | 2027-06-29 | 2027-08-30 | P-Civil-Flooring-10, 4S-WMI-GF15 |  | CSD-LKO Calender (6 day + Holiday)-25 | Physical Progress [151260 h]; TATA Projects Ltd-25 |
| P-Civil-Flooring-15 |  | Vendor on Site | 3d | 2027-08-30 | 2027-09-02 | P-Civil-Flooring-25 |  | CSD-LKO Calender (6 day + Holiday)-25 | Physical Progress [6720 h]; TATA Projects Ltd-25 |
|  | 1 | **MEP Work** |  | 2026-03-02 | 2028-05-05 |  |  |  |  |
|  | 10 | **LPS** |  | 2026-04-10 | 2026-06-29 |  |  |  |  |
| P-MEP-LPS-25 |  | Issue of Package from consultant | 11d | 2026-04-10 A | 2026-04-22 A | Milestones-35, E-DD-ST-CB-15 | 100% | CSD-LKO Calender (6 day + Holiday)-25 | Physical Progress [14340 h]; TATA Projects Ltd-25 |
| P-MEP-LPS-15 |  | Vendor Finalisation | 16d | 2026-04-22 A | 2026-05-11 A | Milestones-40, P-MEP-LPS-25 | 100% | CSD-LKO Calender (6 day + Holiday)-25 | Physical Progress [21170 h]; TATA Projects Ltd-25 |
| P-MEP-LPS-10 |  | Issue of PO to vendor | 7d | 2026-05-11 A | 2026-05-18 A | P-MEP-LPS-15 | 100% | CSD-LKO Calender (6 day + Holiday)-25 | Physical Progress [8610 h]; TATA Projects Ltd-25 |
| P-MEP-LPS-20 |  | Vendor on Site | 0d | 2026-06-25 A | 2026-06-25 A | P-MEP-LPS-30 | 100% | CSD-LKO Calender (6 day + Holiday)-25 | Physical Progress; TATA Projects Ltd-25 |
| P-MEP-LPS-30 |  | Delivery of Material - First Lot | 3d | 2026-06-26 A | 2026-06-29 A | P-MEP-LPS-10 | 100% | CSD-LKO Calender (6 day + Holiday)-25 | Physical Progress [21510 h]; TATA Projects Ltd-25 |
|  | 9 | **Electrical** |  | 2026-10-05 | 2027-10-12 |  |  |  |  |
| P-MEP-Elec-25 |  | Issue of Package from consultant | 30d | 2026-10-05 | 2026-11-10 | Milestones-45, E-DD-MEP-CB-15 |  | CSD-LKO Calender (6 day + Holiday)-25 | Physical Progress [43030 h]; TATA Projects Ltd-25 |
| P-MEP-Elec-15 |  | Vendor Finalisation | 89d | 2026-12-21 | 2027-04-10 | Milestones-45, E-GFC-MEP-CB-95, P-MEP-Elec-25 |  | CSD-LKO Calender (6 day + Holiday)-25 | Physical Progress [86060 h]; TATA Projects Ltd-25; Adani Airport Holding Ltd.-25 |
| P-MEP-Elec-10 |  | Issue of PO to vendor | 6d | 2027-04-10 | 2027-04-17 | P-MEP-Elec-15 |  | CSD-LKO Calender (6 day + Holiday)-25 | Physical Progress [8610 h]; TATA Projects Ltd-25 |
| P-MEP-Elec-30 |  | Delivery of Material - First Lot | 20d | 2027-09-15 | 2027-10-08 | P-MEP-Elec-10, Mock Up-MEP-55 |  | CSD-LKO Calender (6 day + Holiday)-25 | Physical Progress [28690 h]; TATA Projects Ltd-25 |
| P-MEP-Elec-20 |  | Vendor on Site | 2d | 2027-10-11 | 2027-10-12 | P-MEP-Elec-30 |  | CSD-LKO Calender (6 day + Holiday)-25 | Physical Progress [2870 h]; TATA Projects Ltd-25 |
|  | 8 | **HVAC** |  | 2026-07-10 | 2027-10-12 |  |  |  |  |
| P-MEP-HVAC-25 |  | Issue of Package from consultant | 0d | 2026-07-10 A | 2026-07-10 A | Milestones-45, E-DD-MEP-CB-15 SS | 100% | CSD-LKO Calender (6 day + Holiday)-25 | Physical Progress; TATA Projects Ltd-25 |
| P-MEP-HVAC-15 |  | Vendor Finalisation | 89d | 2026-12-21 | 2027-04-10 | Milestones-45, E-GFC-MEP-CB-95, P-MEP-HVAC-25 |  | CSD-LKO Calender (6 day + Holiday)-25 | Physical Progress [86060 h]; TATA Projects Ltd-25; Adani Airport Holding Ltd.-25 |
| P-MEP-HVAC-10 |  | Issue of PO to vendor | 6d | 2027-04-10 | 2027-04-17 | P-MEP-HVAC-15 |  | CSD-LKO Calender (6 day + Holiday)-25 | Physical Progress [8610 h]; TATA Projects Ltd-25 |
| P-MEP-HVAC-30 |  | Delivery of Material - First Lot | 20d | 2027-09-15 | 2027-10-08 | P-MEP-HVAC-10, Mock Up-MEP-50 |  | CSD-LKO Calender (6 day + Holiday)-25 | Physical Progress [28690 h]; TATA Projects Ltd-25 |
| P-MEP-HVAC-20 |  | Vendor on Site | 2d | 2027-10-11 | 2027-10-12 | P-MEP-HVAC-30 |  | CSD-LKO Calender (6 day + Holiday)-25 | Physical Progress [2870 h]; TATA Projects Ltd-25 |

| ID | WBS | Activity | Duration | Start | Finish | Predecessors | Complete | Remaining | Calendar | Resources |
| --- | --- | --- | --- | --- | --- | --- | --- | --- | --- | --- |
|  | 7 | **Firefighting** |  | 2026-06-01 | 2027-10-12 |  |  |  |  |  |
| P-MEP-FF-25 |  | Issue of Package from consultant | 29d | 2026-06-01 A | 2026-07-03 A | Milestones-45, E-DD-MEP-CB-15 SS | 100% |  | CSD-LKO Calender (6 day + Holiday)-25 | Physical Progress [43030 h]; TATA Projects Ltd-25 |
| P-MEP-FF-15 |  | Vendor Finalisation | 89d | 2026-12-21 | 2027-04-10 | Milestones-45, E-GFC-MEP-CB-95, P-MEP-FF-25 |  |  | CSD-LKO Calender (6 day + Holiday)-25 | Physical Progress [86060 h]; TATA Projects Ltd-25; Adani Airport Holding Ltd.-25 |
| P-MEP-FF-10 |  | Issue of PO to vendor | 6d | 2027-04-10 | 2027-04-17 | P-MEP-FF-15 |  |  | CSD-LKO Calender (6 day + Holiday)-25 | Physical Progress [8610 h]; TATA Projects Ltd-25 |
| P-MEP-FF-30 |  | Delivery of Material - First Lot | 20d | 2027-09-15 | 2027-10-08 | P-MEP-FF-10, Mock Up-MEP-45 |  |  | CSD-LKO Calender (6 day + Holiday)-25 | Physical Progress [28690 h]; TATA Projects Ltd-25 |
| P-MEP-FF-20 |  | Vendor on Site | 2d | 2027-10-11 | 2027-10-12 | P-MEP-FF-30 |  |  | CSD-LKO Calender (6 day + Holiday)-25 | Physical Progress [2870 h]; TATA Projects Ltd-25 |
|  | 4 | **Plumbing** |  | 2026-06-01 | 2027-10-12 |  |  |  |  |  |
| P-MEP-Plumb-25 |  | Issue of Package from consultant | 12d | 2026-06-01 A | 2026-06-13 A | Milestones-45, E-DD-MEP-CB-15 SS | 100% |  | CSD-LKO Calender (6 day + Holiday)-25 | Physical Progress [43030 h]; TATA Projects Ltd-25 |
| P-MEP-Plumb-15 |  | Vendor Finalisation | 89d | 2026-12-21 | 2027-04-10 | Milestones-45, E-GFC-MEP-CB-95, P-MEP-Plumb-25 |  |  | CSD-LKO Calender (6 day + Holiday)-25 | Physical Progress [86060 h]; TATA Projects Ltd-25; Adani Airport Holding Ltd.-25 |
| P-MEP-Plumb-10 |  | Issue of PO to vendor | 6d | 2027-04-10 | 2027-04-17 | P-MEP-Plumb-15 |  |  | CSD-LKO Calender (6 day + Holiday)-25 | Physical Progress [8610 h]; TATA Projects Ltd-25 |
| P-MEP-Plumb-30 |  | Delivery of Material - First Lot | 20d | 2027-09-15 | 2027-10-08 | P-MEP-Plumb-10, Mock Up-MEP-40 |  |  | CSD-LKO Calender (6 day + Holiday)-25 | Physical Progress [28690 h]; TATA Projects Ltd-25 |
| P-MEP-Plumb-20 |  | Vendor on Site | 2d | 2027-10-11 | 2027-10-12 | P-MEP-Plumb-30 |  |  | CSD-LKO Calender (6 day + Holiday)-25 | Physical Progress [2870 h]; TATA Projects Ltd-25 |
|  | 16 | **Pump & Other Supporting Equipments** |  | 2026-08-07 | 2027-06-24 |  |  |  |  |  |
| P-MEP-Pump-25 |  | Issue of Package from consultant | 47.4d | 2026-08-07 A | 2026-10-05 | Milestones-45, E-DD-MEP-CB-15 SS | 75% | 2.5d | CSD-LKO Calender (6 day + Holiday)-25 | Physical Progress [43030 h]; TATA Projects Ltd-25 |
| P-MEP-Pump-15 |  | Vendor Finalisation | 110.9d | 2026-08-10 A | 2026-12-21 | P-MEP-Pump-25 SS, E-GFC-MEP-CB-95 FF | 15% | 51d | CSD-LKO Calender (6 day + Holiday)-25 | Physical Progress [86060 h]; TATA Projects Ltd-25; Adani Airport Holding Ltd.-25 |
| P-MEP-Pump-10 |  | Issue of PO to vendor | 6d | 2026-12-21 | 2026-12-29 | P-MEP-Pump-15 |  |  | CSD-LKO Calender (6 day + Holiday)-25 | Physical Progress [8610 h]; TATA Projects Ltd-25 |
| P-MEP-Pump-20 |  | Vendor on Site | 9d | 2027-06-14 | 2027-06-24 | P-MEP-Pump-10, P-Delivery-60 |  |  | CSD-LKO Calender (6 day + Holiday)-25 | Physical Progress [8610 h]; TATA Projects Ltd-25 |
|  | 3 | **ELV** |  | 2026-10-05 | 2027-10-12 |  |  |  |  |  |
| P-MEP-ELV-25 |  | Issue of Package from consultant | 30d | 2026-10-05 | 2026-11-10 | Milestones-45, E-DD-MEP-CB-15 |  |  | CSD-LKO Calender (6 day + Holiday)-25 | Physical Progress [43030 h]; TATA Projects Ltd-25 |
| P-MEP-ELV-15 |  | Vendor Finalisation | 89d | 2026-12-21 | 2027-04-10 | Milestones-45, E-GFC-MEP-CB-95, P-MEP-ELV-25 |  |  | CSD-LKO Calender (6 day + Holiday)-25 | Physical Progress [86060 h]; TATA Projects Ltd-25; Adani Airport Holding Ltd.-25 |
| P-MEP-ELV-10 |  | Issue of PO to vendor | 6d | 2027-04-10 | 2027-04-17 | P-MEP-ELV-15 |  |  | CSD-LKO Calender (6 day + Holiday)-25 | Physical Progress [8610 h]; TATA Projects Ltd-25 |
| P-MEP-ELV-30 |  | Delivery of Material - First Lot | 20d | 2027-09-15 | 2027-10-08 | P-MEP-ELV-10, Mock Up-MEP-35 |  |  | CSD-LKO Calender (6 day + Holiday)-25 | Physical Progress [28690 h]; TATA Projects Ltd-25 |
| P-MEP-ELV-20 |  | Vendor on Site | 2d | 2027-10-11 | 2027-10-12 | P-MEP-ELV-30 |  |  | CSD-LKO Calender (6 day + Holiday)-25 | Physical Progress [2870 h]; TATA Projects Ltd-25 |
|  | 12 | **UPS and Battery Bank Setups** |  | 2026-09-16 | 2027-10-15 |  |  |  |  |  |
| P-MEP-UPS-25 |  | Issue of Package from consultant | 0d | 2026-09-16 A | 2026-09-16 A | Milestones-45 | 100% |  | CSD-LKO Calender (6 day + Holiday)-25 | Physical Progress; TATA Projects Ltd-25 |
| P-MEP-UPS-15 |  | Vendor Finalisation | 80.9d | 2026-09-16 A | 2026-12-21 | Milestones-45, P-MEP-UPS-25, E-GFC-MEP-CB-95 FF | 25% | 57d | CSD-LKO Calender (6 day + Holiday)-25 | Physical Progress [86060 h]; TATA Projects Ltd-25; Adani Airport Holding Ltd.-25 |
| P-MEP-UPS-10 |  | Issue of PO to vendor | 6d | 2026-12-21 | 2026-12-29 | P-MEP-UPS-15 |  |  | CSD-LKO Calender (6 day + Holiday)-25 | Physical Progress [8610 h]; TATA Projects Ltd-25 |
| P-MEP-UPS-20 |  | Vendor on Site | 6d | 2027-10-07 | 2027-10-15 | P-Delivery-35, P-MEP-UPS-10 |  |  | CSD-LKO Calender (6 day + Holiday)-25 | Physical Progress [8610 h]; TATA Projects Ltd-25 |

| ID | WBS | Activity | Duration | Start | Finish | Predecessors | Complete | Remaining | Calendar | Resources |
| --- | --- | --- | --- | --- | --- | --- | --- | --- | --- | --- |
|  | 19 | **DG/STP Stack** |  | 2026-04-30 | 2027-08-09 |  |  |  |  |  |
| P-MEP-Stack-15 |  | Vendor Finalisation | 344.9d | 2026-04-30 A | 2027-06-21 | Milestones-45, P-Delivery-40 FF | 14% | 50d | CSD-LKO Calender (6 day + Holiday)-25 | Physical Progress [64540 h]; TATA Projects Ltd-25; Adani Airport Holding Ltd.-25 |
| P-MEP-Stack-10 |  | Issue of PO to vendor | 6d | 2027-06-21 | 2027-06-28 | P-MEP-Stack-15 |  |  | CSD-LKO Calender (6 day + Holiday)-25 | Physical Progress [8610 h]; TATA Projects Ltd-25 |
| P-MEP-Stack-25 |  | Delivery of Material | 30d | 2027-06-28 | 2027-08-02 | P-Delivery-40 FF, P-MEP-Stack-10 |  |  | CSD-LKO Calender (6 day + Holiday)-25 | Physical Progress [43030 h]; TATA Projects Ltd-25 |
| P-MEP-Stack-20 |  | Vendor on Site | 6d | 2027-08-02 | 2027-08-09 | P-MEP-Stack-25 |  |  | CSD-LKO Calender (6 day + Holiday)-25 | Physical Progress [8610 h]; TATA Projects Ltd-25 |
|  | 2 | **STP/ETP/WTP** |  | 2026-03-24 | 2027-06-30 |  |  |  |  |  |
| P-MEP-STP-25 |  | Issue of Package from consultant | 3d | 2026-03-24 A | 2026-03-26 A | Milestones-45, E-DD-ST-FN-15 | 100% |  | CSD-LKO Calender (6 day + Holiday)-25 | Physical Progress [43030 h]; TATA Projects Ltd-25 |
| P-MEP-STP-15 |  | Vendor Finalisation | 166.9d | 2026-04-01 A | 2026-10-19 | Milestones-45, P-MEP-STP-25 | 50% | 15d | CSD-LKO Calender (6 day + Holiday)-25 | Physical Progress [86060 h]; TATA Projects Ltd-25; Adani Airport Holding Ltd.-25 |
| P-MEP-STP-10 |  | Issue of PO to vendor | 6d | 2026-10-19 | 2026-10-27 | P-MEP-STP-15 |  |  | CSD-LKO Calender (6 day + Holiday)-25 | Physical Progress [8610 h]; TATA Projects Ltd-25 |
| P-MEP-STP-20 |  | Vendor on Site | 8d | 2027-06-21 | 2027-06-30 | P-MEP-STP-10, P-Delivery-40 |  |  | CSD-LKO Calender (6 day + Holiday)-25 | Physical Progress [8610 h]; TATA Projects Ltd-25 |
|  | 15 | **ACO Drain** |  | 2027-04-29 | 2027-08-30 |  |  |  |  |  |
| P-MEP-ACO-15 |  | Vendor Finalisation | 60d | 2027-04-29 | 2027-07-09 | CB-B03-4S-WMI-30, Milestones-45, E-DD-ST-CB-15 |  |  | CSD-LKO Calender (6 day + Holiday)-25 | Physical Progress [86060 h]; TATA Projects Ltd-25; Adani Airport Holding Ltd.-25 |
| P-MEP-ACO-10 |  | Issue of PO to vendor | 6d | 2027-07-09 | 2027-07-16 | P-MEP-ACO-15 |  |  | CSD-LKO Calender (6 day + Holiday)-25 | Physical Progress [8610 h]; TATA Projects Ltd-25 |
| P-MEP-ACO-25 |  | Delivery of Material - First Lot | 24d | 2027-07-16 | 2027-08-13 | P-MEP-ACO-10 |  |  | CSD-LKO Calender (6 day + Holiday)-25 | Physical Progress [28690 h]; TATA Projects Ltd-25 |
| P-MEP-ACO-20 |  | Vendor on Site | 2d | 2027-08-27 | 2027-08-30 | P-MEP-ACO-25, E-ShopD-MEP-ACO-15 |  |  | CSD-LKO Calender (6 day + Holiday)-25 | Physical Progress [2870 h]; TATA Projects Ltd-25 |
|  | 6 | **Chiller** |  | 2026-03-02 | 2027-06-17 |  |  |  |  |  |
| P-MEP-Chiller-25 |  | Issue of Package from consultant | 10d | 2026-03-02 A | 2026-03-13 A | Milestones-45, E-DD-MEP-CB-15 SS | 100% |  | CSD-LKO Calender (6 day + Holiday)-25 | Physical Progress [43030 h]; TATA Projects Ltd-25 |
| P-MEP-Chiller-15 |  | Vendor Finalisation | 60.15d | 2026-08-25 A | 2026-11-06 | Milestones-45, P-MEP-Chiller-25 | 25% | 29.25d | CSD-LKO Calender (6 day + Holiday)-25 | Physical Progress [86060 h]; TATA Projects Ltd-25; Adani Airport Holding Ltd.-25 |
| P-MEP-Chiller-10 |  | Issue of PO to vendor | 6d | 2026-11-06 | 2026-11-13 | P-MEP-Chiller-15 |  |  | CSD-LKO Calender (6 day + Holiday)-25 | Physical Progress [8610 h]; TATA Projects Ltd-25 |
| P-MEP-Chiller-20 |  | Vendor on Site | 6d | 2027-06-10 | 2027-06-17 | P-MEP-Chiller-10, P-Delivery-45 |  |  | CSD-LKO Calender (6 day + Holiday)-25 | Physical Progress [8610 h]; TATA Projects Ltd-25 |
|  | 21 | **HT/LT Panel** |  | 2026-05-08 | 2026-11-20 |  |  |  |  |  |
| P-MEP-HT/LT Panel-25 |  | Issue of Package from consultant | 17d | 2026-05-08 A | 2026-05-28 A | Milestones-45, E-DD-MEP-CB-15 SS | 100% |  | CSD-LKO Calender (6 day + Holiday)-25 | Physical Progress [43030 h]; TATA Projects Ltd-25 |
| P-MEP-HT/LT Panel-15 |  | Vendor Finalisation | 43.15d | 2026-09-15 A | 2026-11-06 | P-MEP-HT/LT Panel-25 | 25% | 29.25d | CSD-LKO Calender (6 day + Holiday)-25 | Physical Progress [86060 h]; TATA Projects Ltd-25; Adani Airport Holding Ltd.-25 |
| P-MEP-HT/LT Panel-10 |  | Issue of PO to vendor | 6d | 2026-11-06 | 2026-11-13 | P-MEP-HT/LT Panel-15 |  |  | CSD-LKO Calender (6 day + Holiday)-25 | Physical Progress [8610 h]; TATA Projects Ltd-25 |
| P-MEP-HT/LT Panel-20 |  | Vendor on Site | 6d | 2026-11-13 | 2026-11-20 | P-MEP-HT/LT Panel-10 |  |  | CSD-LKO Calender (6 day + Holiday)-25 | Physical Progress [8610 h]; TATA Projects Ltd-25 |

| ID | WBS | Activity | Duration | Start | Finish | Predecessors | Complete | Remaining | Planned start | Planned finish | Calendar | Resources |
| --- | --- | --- | --- | --- | --- | --- | --- | --- | --- | --- | --- | --- |
|  | 20 | **DG** |  | 2026-04-01 | 2026-11-19 |  |  |  |  |  |  |  |
| P-MEP-DG-25 |  | Issue of Package from consultant | 19d | 2026-04-01 A | 2026-04-23 A | Milestones-45, E-DD-Misc-LS-25 SS | 100% |  |  |  | CSD-LKO Calender (6 day + Holiday)-25 | Physical Progress [43030 h]; TATA Projects Ltd-25 |
| P-MEP-DG-15 |  | Vendor Finalisation | 153.9d | 2026-04-30 A | 2026-11-02 | P-MEP-DG-25 | 69% | 26d |  |  | CSD-LKO Calender (6 day + Holiday)-25 | Physical Progress [86060 h]; TATA Projects Ltd-25; Adani Airport Holding Ltd.-25 |
| P-MEP-DG-10 |  | Issue of PO to vendor | 9d | 2026-11-02 | 2026-11-12 | P-MEP-DG-15 |  |  |  |  | CSD-LKO Calender (6 day + Holiday)-25 | Physical Progress [8610 h]; TATA Projects Ltd-25 |
| P-MEP-DG-20 |  | Vendor on Site | 6d | 2026-11-12 | 2026-11-19 | P-MEP-DG-10 |  |  |  |  | CSD-LKO Calender (6 day + Holiday)-25 | Physical Progress [8610 h]; TATA Projects Ltd-25 |
|  | 22 | **Bus duct and Riser** |  | 2026-05-08 | 2027-02-01 |  |  |  |  |  |  |  |
| P-MEP-Bus Duct -25 |  | Issue of Package from consultant | 17d | 2026-05-08 A | 2026-05-28 A | Milestones-45, E-DD-MEP-CB-15 SS | 100% |  |  |  | CSD-LKO Calender (6 day + Holiday)-25 | Physical Progress [43030 h]; TATA Projects Ltd-25 |
| P-MEP-Bus Duct -15 |  | Vendor Finalisation | 89d | 2026-09-30 | 2027-01-16 | P-MEP-Bus Duct -25 |  |  |  |  | CSD-LKO Calender (6 day + Holiday)-25 | Physical Progress [86060 h]; TATA Projects Ltd-25; Adani Airport Holding Ltd.-25 |
| P-MEP-Bus Duct -10 |  | Issue of PO to vendor | 6d | 2027-01-16 | 2027-01-23 | P-MEP-Bus Duct -15 |  |  |  |  | CSD-LKO Calender (6 day + Holiday)-25 | Physical Progress [8610 h]; TATA Projects Ltd-25 |
| P-MEP-Bus Duct -20 |  | Vendor on Site | 6d | 2027-01-23 | 2027-02-01 | P-MEP-Bus Duct -10 |  |  |  |  | CSD-LKO Calender (6 day + Holiday)-25 | Physical Progress [8610 h]; TATA Projects Ltd-25 |
|  | 24 | **HT & LT Cables** |  | 2026-05-08 | 2027-02-01 |  |  |  |  |  |  |  |
| P-MEP-HT/LT Cables - 25 |  | Issue of Package from consultant | 17d | 2026-05-08 A | 2026-05-28 A | Milestones-45, E-DD-MEP-CB-15 SS | 100% |  |  |  | CSD-LKO Calender (6 day + Holiday)-25 | Physical Progress [43030 h]; TATA Projects Ltd-25 |
| P-MEP-HT/LT Cables - 15 |  | Vendor Finalisation | 89d | 2026-09-30 | 2027-01-16 | P-MEP-HT/LT Cables - 25 |  |  |  |  | CSD-LKO Calender (6 day + Holiday)-25 | Physical Progress [86060 h]; TATA Projects Ltd-25; Adani Airport Holding Ltd.-25 |
| P-MEP-HT/LT Cables - 10 |  | Issue of PO to vendor | 6d | 2027-01-16 | 2027-01-23 | P-MEP-HT/LT Cables - 15 |  |  |  |  | CSD-LKO Calender (6 day + Holiday)-25 | Physical Progress [8610 h]; TATA Projects Ltd-25 |
| P-MEP-HT/LT Cables - 20 |  | Vendor on Site | 6d | 2027-01-23 | 2027-02-01 | P-MEP-HT/LT Cables - 10 |  |  |  |  | CSD-LKO Calender (6 day + Holiday)-25 | Physical Progress [8610 h]; TATA Projects Ltd-25 |
|  | 23 | **Cooling tower and ventilation system** |  | 2026-08-07 | 2027-01-05 |  |  |  |  |  |  |  |
| P-MEP-Cooling Tower-25 |  | Issue of Package from consultant | 0d | 2026-08-07 A | 2026-08-07 A | Milestones-45, E-DD-MEP-4S-15 SS | 100% |  |  |  | CSD-LKO Calender (6 day + Holiday)-25 | Physical Progress; TATA Projects Ltd-25 |
| P-MEP-Cooling Tower-15 |  | Vendor Finalisation | 109.65d | 2026-08-10 A | 2026-12-19 | P-MEP-Cooling Tower-25 | 25% | 66.75d |  |  | CSD-LKO Calender (6 day + Holiday)-25 | Physical Progress [86060 h]; TATA Projects Ltd-25; Adani Airport Holding Ltd.-25 |
| P-MEP-Cooling Tower-10 |  | Issue of PO to vendor | 6d | 2026-12-19 | 2026-12-28 | P-MEP-Cooling Tower-15 |  |  |  |  | CSD-LKO Calender (6 day + Holiday)-25 | Physical Progress [8610 h]; TATA Projects Ltd-25 |
| P-MEP-Cooling Tower-20 |  | Vendor on Site | 6d | 2026-12-28 | 2027-01-05 | P-MEP-Cooling Tower-10 |  |  |  |  | CSD-LKO Calender (6 day + Holiday)-25 | Physical Progress [8610 h]; TATA Projects Ltd-25 |
|  | 5 | **Vertical Transport** |  | 2026-05-01 | 2027-11-02 |  |  |  |  |  |  |  |
| P-MEP-VT-25 |  | Issue of Package from consultant | 28d | 2026-05-01 A | 2026-06-04 A | Milestones-45, E-DD-MEP-CB-15 SS | 100% |  | 2026-05-02 | 2026-06-04 | CSD-LKO Calender (6 day + Holiday)-25 | Physical Progress [57370 h]; TATA Projects Ltd-25 |
| P-MEP-VT-15 |  | Vendor Finalisation | 166.9d | 2026-06-05 A | 2026-12-21 | Milestones-45, P-MEP-VT-25, E-GFC-MEP-CB-95 FF | 66% | 30d |  |  | CSD-LKO Calender (6 day + Holiday)-25 | Physical Progress [86060 h]; TATA Projects Ltd-25; Adani Airport Holding Ltd.-25 |
| P-MEP-VT-10 |  | Issue of PO to vendor | 6d | 2026-12-21 | 2026-12-29 | P-MEP-VT-15 |  |  |  |  | CSD-LKO Calender (6 day + Holiday)-25 | Physical Progress [8610 h]; TATA Projects Ltd-25 |
| P-MEP-VT-20 |  | Vendor on Site | 6d | 2027-10-25 | 2027-11-02 | P-MEP-VT-10, P-Delivery-50 |  |  |  |  | CSD-LKO Calender (6 day + Holiday)-25 | Physical Progress [8610 h]; TATA Projects Ltd-25 |

| ID | WBS | Activity | Duration | Start | Finish | Predecessors | Complete | Remaining | Calendar | Resources |
| --- | --- | --- | --- | --- | --- | --- | --- | --- | --- | --- |
|  | 11 | **Transformer** |  | 2026-08-14 | 2027-05-25 |  |  |  |  |  |
| P-MEP-Transformer-25 |  | Issue of Package from consultant | 0d | 2026-08-14 A | 2026-08-14 A | Milestones-45, E-DD-MEP-CB-15 SS | 100% |  | CSD-LKO Calender (6 day + Holiday)-25 | Physical Progress; TATA Projects Ltd-25 |
| P-MEP-Transformer-15 |  | Vendor Finalisation | 82.4d | 2026-08-17 A | 2026-11-24 | Milestones-45, P-MEP-Transformer-25 | 50% | 44.5d | CSD-LKO Calender (6 day + Holiday)-25 | Physical Progress [86060 h]; TATA Projects Ltd-25; Adani Airport Holding Ltd.-25 |
| P-MEP-Transformer-10 |  | Issue of PO to vendor | 6d | 2026-11-24 | 2026-12-01 | P-MEP-Transformer-15 |  |  | CSD-LKO Calender (6 day + Holiday)-25 | Physical Progress [8610 h]; TATA Projects Ltd-25 |
| P-MEP-Transformer-20 |  | Vendor on Site | 6d | 2027-05-18 | 2027-05-25 | P-MEP-Transformer-10, P-Delivery-30 |  |  | CSD-LKO Calender (6 day + Holiday)-25 | Physical Progress [8610 h]; TATA Projects Ltd-25 |
|  | 1 | **AHU** |  | 2026-10-05 | 2027-06-12 |  |  |  |  |  |
| P-MEP-AHU-25 |  | Issue of Package from consultant | 10d | 2026-10-05 | 2026-10-16 | Milestones-45, E-DD-MEP-CB-15 |  |  | CSD-LKO Calender (6 day + Holiday)-25 | Physical Progress [43030 h]; TATA Projects Ltd-25 |
| P-MEP-AHU-15 |  | Vendor Finalisation | 45d | 2026-10-16 | 2026-12-09 | P-MEP-AHU-25 |  |  | CSD-LKO Calender (6 day + Holiday)-25 | Physical Progress [86060 h]; TATA Projects Ltd-25; Adani Airport Holding Ltd.-25 |
| P-MEP-AHU-10 |  | Issue of PO to vendor | 6d | 2026-12-09 | 2026-12-16 | P-MEP-AHU-15 |  |  | CSD-LKO Calender (6 day + Holiday)-25 | Physical Progress [8610 h]; TATA Projects Ltd-25 |
| P-MEP-AHU-20 |  | Vendor on Site | 9d | 2027-06-02 | 2027-06-12 | P-MEP-AHU-10, P-Delivery-55 |  |  | CSD-LKO Calender (6 day + Holiday)-25 | Physical Progress [8610 h]; TATA Projects Ltd-25 |
|  | 14 | **ICT/Security** |  | 2026-10-05 | 2028-04-28 |  |  |  |  |  |
| P-MEP-ICT/Security-25 |  | Issue of Package from consultant | 68d | 2026-10-05 | 2026-12-24 | Milestones-45, E-DD-MEP-CB-15 |  |  | CSD-LKO Calender (6 day + Holiday)-25 | Physical Progress [86060 h]; TATA Projects Ltd-25 |
| P-MEP-ICT/Security-15 |  | Vendor Finalisation | 67d | 2026-12-30 | 2027-03-23 | Milestones-45, P-MEP-ICT/Security-25, E-GFC-MEP-CC-185 |  |  | CSD-LKO Calender (6 day + Holiday)-25 | Physical Progress [86060 h]; TATA Projects Ltd-25; Adani Airport Holding Ltd.-25 |
| P-MEP-ICT/Security-10 |  | Issue of PO to vendor | 6d | 2027-03-23 | 2027-03-31 | P-MEP-ICT/Security-15 |  |  | CSD-LKO Calender (6 day + Holiday)-25 | Physical Progress [8610 h]; TATA Projects Ltd-25 |
| P-MEP-ICT/Security-20 |  | Vendor on Site | 6d | 2028-04-21 | 2028-04-28 | P-MEP-ICT/Security-10, P-Delivery-15 |  |  | CSD-LKO Calender (6 day + Holiday)-25 | Physical Progress [8610 h]; TATA Projects Ltd-25 |
|  | 17 | **Solar PV System** |  | 2027-02-08 | 2028-05-05 |  |  |  |  |  |
| P-MEP-Solar-20 |  | Issue of Package from consultant | 50d | 2027-02-08 | 2027-04-10 | E-GFC-Misc-LS-35, E-DD-MEP-4S-15, Milestones-45 |  |  | CSD-LKO Calender (6 day + Holiday)-25 | Physical Progress [64540 h]; TATA Projects Ltd-25 |
| P-MEP-Solar-15 |  | Vendor Finalisation | 60d | 2027-04-10 | 2027-06-21 | P-MEP-Solar-20, Milestones-45 |  |  | CSD-LKO Calender (6 day + Holiday)-25 | Physical Progress [86060 h]; TATA Projects Ltd-25; Adani Airport Holding Ltd.-25 |
| P-MEP-Solar-10 |  | Issue of PO to vendor | 6d | 2027-06-21 | 2027-06-28 | P-MEP-Solar-15 |  |  | CSD-LKO Calender (6 day + Holiday)-25 | Physical Progress [8610 h]; TATA Projects Ltd-25 |
| P-MEP-Solar-25 |  | Vendor on Site | 6d | 2028-04-26 | 2028-05-05 | P-MEP-Solar-10, P-Delivery-20 |  |  | CSD-LKO Calender (6 day + Holiday)-25 | Physical Progress [8610 h]; TATA Projects Ltd-25 |
|  | 13 | **BMS** |  | 2026-10-05 | 2028-04-28 |  |  |  |  |  |
| P-MEP-BMS-25 |  | Issue of Package from consultant | 30d | 2026-10-05 | 2026-11-10 | Milestones-45, E-DD-MEP-4S-15 |  |  | CSD-LKO Calender (6 day + Holiday)-25 | Physical Progress [43030 h]; TATA Projects Ltd-25 |
| P-MEP-BMS-15 |  | Vendor Finalisation | 67d | 2026-12-30 | 2027-03-23 | Milestones-45, P-MEP-BMS-25, E-GFC-MEP-CC-185 |  |  | CSD-LKO Calender (6 day + Holiday)-25 | Physical Progress [86060 h]; TATA Projects Ltd-25; Adani Airport Holding Ltd.-25 |
| P-MEP-BMS-10 |  | Issue of PO to vendor | 6d | 2027-03-23 | 2027-03-31 | P-MEP-BMS-15 |  |  | CSD-LKO Calender (6 day + Holiday)-25 | Physical Progress [8610 h]; TATA Projects Ltd-25 |
| P-MEP-BMS-20 |  | Vendor on Site | 6d | 2028-04-21 | 2028-04-28 | P-MEP-BMS-10, P-Delivery-25 |  |  | CSD-LKO Calender (6 day + Holiday)-25 | Physical Progress [8610 h]; TATA Projects Ltd-25 |

| ID | WBS | Activity | Duration | Start | Finish | Predecessors | Calendar | Resources |
| --- | --- | --- | --- | --- | --- | --- | --- | --- |
|  | 18 | **Kitchen Equipments** |  | 2026-10-29 | 2028-04-28 |  |  |  |
| P-MEP-KE-20 |  | Issue of Package from consultant | 30d | 2026-10-29 | 2026-12-03 | E-DD-Misc-Kitchen-30, Milestones-45 | CSD-LKO Calender (6 day + Holiday)-25 | Physical Progress [43030 h]; TATA Projects Ltd-25 |
| P-MEP-KE-15 |  | Vendor Finalisation | 89d | 2026-12-03 | 2027-03-23 | P-MEP-KE-20, Milestones-45 | CSD-LKO Calender (6 day + Holiday)-25 | Physical Progress [86060 h]; TATA Projects Ltd-25; Adani Airport Holding Ltd.-25 |
| P-MEP-KE-10 |  | Issue of PO to vendor | 6d | 2027-03-23 | 2027-03-31 | P-MEP-KE-15 | CSD-LKO Calender (6 day + Holiday)-25 | Physical Progress [8610 h]; TATA Projects Ltd-25 |
| P-MEP-KE-25 |  | Vendor on Site | 6d | 2028-04-21 | 2028-04-28 | P-MEP-KE-10, P-Delivery-10 | CSD-LKO Calender (6 day + Holiday)-25 | Physical Progress [8610 h]; TATA Projects Ltd-25 |
|  | 2 | **Finishes/ID Work - Retail & Offices** |  | 2026-09-30 | 2028-06-01 |  |  |  |
|  | 8 | **Furniture** |  | 2026-09-30 | 2028-06-01 |  |  |  |
| P-R&O_ID-Fur-15 |  | Issue of Package from consultant | 45d | 2026-09-30 | 2026-11-24 | Milestones-10, E-SD-ID10 | CSD-LKO Calender (6 day + Holiday)-25 | Physical Progress [104050 h]; TATA Projects Ltd-25 |
| P-R&O_ID-Fur-25 |  | Vendor Finalisation | 74d | 2026-11-24 | 2027-02-22 | P-R&O_ID-Fur-15, Milestones-35 | CSD-LKO Calender (6 day + Holiday)-25 | Physical Progress [138730 h]; TATA Projects Ltd-25; Adani Airport Holding Ltd.-25 |
| P-R&O_ID-Fur-10 |  | Issue of PO to vendor | 10d | 2027-02-22 | 2027-03-05 | P-R&O_ID-Fur-25 | CSD-LKO Calender (6 day + Holiday)-25 | Physical Progress [13870 h]; TATA Projects Ltd-25 |
| P-R&O_ID-Fur-30 |  | Delivery of Material - First Lot | 102d | 2028-01-27 | 2028-05-30 | P-R&O_ID-Fur-10, E-ShopD-ID_R&O-Fur-15, E-GFC-ID-R&O-35 | CSD-LKO Calender (6 day + Holiday)-25 | Physical Progress [208090 h]; TATA Projects Ltd-25 |
| P-R&O_ID-Fur-20 |  | Vendor on Site | 2d | 2028-05-30 | 2028-06-01 | P-R&O_ID-Fur-30 | CSD-LKO Calender (6 day + Holiday)-25 | Physical Progress [4620 h]; TATA Projects Ltd-25 |
|  | 7 | **Wall Cladding** |  | 2026-09-30 | 2028-04-25 |  |  |  |
| P-R&O_ID-Wall-15 |  | Issue of Package from consultant | 45d | 2026-09-30 | 2026-11-24 | Milestones-10, E-SD-ID10 | CSD-LKO Calender (6 day + Holiday)-25 | Physical Progress [104050 h]; TATA Projects Ltd-25 |
| P-R&O_ID-Wall-25 |  | Vendor Finalisation | 74d | 2026-11-24 | 2027-02-22 | P-R&O_ID-Wall-15, Milestones-35 | CSD-LKO Calender (6 day + Holiday)-25 | Physical Progress [138730 h]; TATA Projects Ltd-25; Adani Airport Holding Ltd.-25 |
| P-R&O_ID-Wall-10 |  | Issue of PO to vendor | 10d | 2027-02-22 | 2027-03-05 | P-R&O_ID-Wall-25 | CSD-LKO Calender (6 day + Holiday)-25 | Physical Progress [13870 h]; TATA Projects Ltd-25 |
| P-R&O_ID-Wall-30 |  | Delivery of Material - First Lot | 72d | 2028-01-27 | 2028-04-22 | P-R&O_ID-Wall-10, E-ShopD-ID_R&O-Wall-15, E-GFC-ID-R&O-35 | CSD-LKO Calender (6 day + Holiday)-25 | Physical Progress [138730 h]; TATA Projects Ltd-25 |
| P-R&O_ID-Wall-20 |  | Vendor on Site | 2d | 2028-04-22 | 2028-04-25 | P-R&O_ID-Wall-30 | CSD-LKO Calender (6 day + Holiday)-25 | Physical Progress [4620 h]; TATA Projects Ltd-25 |
|  | 6 | **ID Flooring** |  | 2026-09-30 | 2028-04-25 |  |  |  |
| P-R&O_ID-Floor-15 |  | Issue of Package from consultant | 45d | 2026-09-30 | 2026-11-24 | Milestones-10, E-SD-ID10 | CSD-LKO Calender (6 day + Holiday)-25 | Physical Progress [104050 h]; TATA Projects Ltd-25 |
| P-R&O_ID-Floor-25 |  | Vendor Finalisation | 74d | 2026-11-24 | 2027-02-22 | P-R&O_ID-Floor-15, Milestones-35 | CSD-LKO Calender (6 day + Holiday)-25 | Physical Progress [138730 h]; TATA Projects Ltd-25; Adani Airport Holding Ltd.-25 |
| P-R&O_ID-Floor-10 |  | Issue of PO to vendor | 10d | 2027-02-22 | 2027-03-05 | P-R&O_ID-Floor-25 | CSD-LKO Calender (6 day + Holiday)-25 | Physical Progress [13870 h]; TATA Projects Ltd-25 |
| P-R&O_ID-Floor-30 |  | Delivery of Material - First Lot | 72d | 2028-01-27 | 2028-04-22 | P-R&O_ID-Floor-10, E-ShopD-ID_R&O-Floor-15, E-GFC-ID-R&O-35 | CSD-LKO Calender (6 day + Holiday)-25 | Physical Progress [138730 h]; TATA Projects Ltd-25 |
| P-R&O_ID-Floor-20 |  | Vendor on Site | 2d | 2028-04-22 | 2028-04-25 | P-R&O_ID-Floor-30 | CSD-LKO Calender (6 day + Holiday)-25 | Physical Progress [4620 h]; TATA Projects Ltd-25 |

| ID | WBS | Activity | Duration | Start | Finish | Predecessors | Calendar | Resources |
| --- | --- | --- | --- | --- | --- | --- | --- | --- |
|  | 4 | **Soft Furnishing** |  | 2026-09-30 | 2028-06-01 |  |  |  |
| P-R&O_ID-SF-15 |  | Issue of Package from consultant | 45d | 2026-09-30 | 2026-11-24 | Milestones-10, E-SD-ID10 | CSD-LKO Calender (6 day + Holiday)-25 | Physical Progress [104050 h]; TATA Projects Ltd-25 |
| P-R&O_ID-SF-25 |  | Vendor Finalisation | 74d | 2026-11-24 | 2027-02-22 | P-R&O_ID-SF-15, Milestones-35 | CSD-LKO Calender (6 day + Holiday)-25 | Physical Progress [138730 h]; TATA Projects Ltd-25; Adani Airport Holding Ltd.-25 |
| P-R&O_ID-SF-10 |  | Issue of PO to vendor | 10d | 2027-02-22 | 2027-03-05 | P-R&O_ID-SF-25 | CSD-LKO Calender (6 day + Holiday)-25 | Physical Progress [13870 h]; TATA Projects Ltd-25 |
| P-R&O_ID-SF-30 |  | Delivery of Material - First Lot | 102d | 2028-01-27 | 2028-05-30 | P-R&O_ID-SF-10, E-ShopD-ID_R&O-SF-15, E-GFC-ID-R&O-35 | CSD-LKO Calender (6 day + Holiday)-25 | Physical Progress [208090 h]; TATA Projects Ltd-25 |
| P-R&O_ID-SF-20 |  | Vendor on Site | 2d | 2028-05-30 | 2028-06-01 | P-R&O_ID-SF-30 | CSD-LKO Calender (6 day + Holiday)-25 | Physical Progress [4620 h]; TATA Projects Ltd-25 |
|  | 3 | **False Ceiling** |  | 2026-09-30 | 2028-03-18 |  |  |  |
| P-R&O_ID-FC-15 |  | Issue of Package from consultant | 45d | 2026-09-30 | 2026-11-24 | Milestones-10, E-SD-ID10 | CSD-LKO Calender (6 day + Holiday)-25 | Physical Progress [104050 h]; TATA Projects Ltd-25 |
| P-R&O_ID-FC-25 |  | Vendor Finalisation | 74d | 2026-11-24 | 2027-02-22 | P-R&O_ID-FC-15, Milestones-35 | CSD-LKO Calender (6 day + Holiday)-25 | Physical Progress [138730 h]; TATA Projects Ltd-25; Adani Airport Holding Ltd.-25 |
| P-R&O_ID-FC-10 |  | Issue of PO to vendor | 10d | 2027-02-22 | 2027-03-05 | P-R&O_ID-FC-25 | CSD-LKO Calender (6 day + Holiday)-25 | Physical Progress [13870 h]; TATA Projects Ltd-25 |
| P-R&O_ID-FC-30 |  | Delivery of Material - First Lot | 40d | 2028-01-27 | 2028-03-15 | P-R&O_ID-FC-10, E-ShopD-ID_R&O-FC-15, E-GFC-ID-R&O-35 | CSD-LKO Calender (6 day + Holiday)-25 | Physical Progress [69360 h]; TATA Projects Ltd-25 |
| P-R&O_ID-FC-20 |  | Vendor on Site | 3d | 2028-03-15 | 2028-03-18 | P-R&O_ID-FC-30 | CSD-LKO Calender (6 day + Holiday)-25 | Physical Progress [4620 h]; TATA Projects Ltd-25 |
|  | 2 | **Doors** |  | 2026-09-30 | 2028-03-18 |  |  |  |
| P-R&O_ID-Doors-15 |  | Issue of Package from consultant | 45d | 2026-09-30 | 2026-11-24 | Milestones-10, E-SD-ID10 | CSD-LKO Calender (6 day + Holiday)-25 | Physical Progress [104050 h]; TATA Projects Ltd-25 |
| P-R&O_ID-Doors-25 |  | Vendor Finalisation | 74d | 2026-11-24 | 2027-02-22 | P-R&O_ID-Doors-15, Milestones-35 | CSD-LKO Calender (6 day + Holiday)-25 | Physical Progress [138730 h]; TATA Projects Ltd-25; Adani Airport Holding Ltd.-25 |
| P-R&O_ID-Doors-10 |  | Issue of PO to vendor | 10d | 2027-02-22 | 2027-03-05 | P-R&O_ID-Doors-25 | CSD-LKO Calender (6 day + Holiday)-25 | Physical Progress [13890 h]; TATA Projects Ltd-25 |
| P-R&O_ID-Doors-30 |  | Delivery of Material - First Lot | 40d | 2028-01-27 | 2028-03-15 | P-R&O_ID-Doors-10, E-ShopD-ID_R&O-Doors-15, E-GFC-ID-R&O-35 | CSD-LKO Calender (6 day + Holiday)-25 | Physical Progress [69360 h]; TATA Projects Ltd-25 |
| P-R&O_ID-Doors-20 |  | Vendor on Site | 3d | 2028-03-15 | 2028-03-18 | P-R&O_ID-Doors-30 | CSD-LKO Calender (6 day + Holiday)-25 | Physical Progress [4620 h]; TATA Projects Ltd-25 |
|  | 5 | **Finishes/ID Work - Hotels & CC** |  | 2027-02-24 | 2028-06-10 |  |  |  |
|  | 8 | **Furniture** |  | 2027-02-24 | 2028-06-10 |  |  |  |
| P-H&CC_ID-Fur-15 |  | Issue of Package from consultant | 47d | 2027-02-24 | 2027-04-23 | E-SD-ID15 | CSD-LKO Calender (6 day + Holiday)-25 | Physical Progress [104050 h]; TATA Projects Ltd-25 |
| P-H&CC_ID-Fur-25 |  | Vendor Finalisation | 60d | 2027-04-23 | 2027-07-03 | P-H&CC_ID-Fur-15 | CSD-LKO Calender (6 day + Holiday)-25 | Physical Progress [138730 h]; TATA Projects Ltd-25; Adani Airport Holding Ltd.-25 |
| P-H&CC_ID-Fur-10 |  | Issue of PO to vendor | 6d | 2027-07-03 | 2027-07-10 | P-H&CC_ID-Fur-25 | CSD-LKO Calender (6 day + Holiday)-25 | Physical Progress [13870 h]; TATA Projects Ltd-25 |
| P-H&CC_ID-Fur-30 |  | Delivery of Material - First Lot | 91d | 2028-02-19 | 2028-06-08 | P-H&CC_ID-Fur-10, E-GFC-ID-H&CC-35, E-ShopD-ID_H&CC-Fur-15 | CSD-LKO Calender (6 day + Holiday)-25 | Physical Progress [208090 h]; TATA Projects Ltd-25 |
| P-H&CC_ID-Fur-20 |  | Vendor on Site | 2d | 2028-06-09 | 2028-06-10 | P-H&CC_ID-Fur-30 | CSD-LKO Calender (6 day + Holiday)-25 | Physical Progress [4620 h]; TATA Projects Ltd-25 |

| ID | WBS | Activity | Duration | Start | Finish | Predecessors | Calendar | Resources |
| --- | --- | --- | --- | --- | --- | --- | --- | --- |
|  | 7 | **Wall Cladding** |  | 2027-02-24 | 2028-05-06 |  |  |  |
| P-H&CC_ID-Wall-15 |  | Issue of Package from consultant | 47d | 2027-02-24 | 2027-04-23 | E-SD-ID15 | CSD-LKO Calender (6 day + Holiday)-25 | Physical Progress [104050 h]; TATA Projects Ltd-25 |
| P-H&CC_ID-Wall-25 |  | Vendor Finalisation | 60d | 2027-04-23 | 2027-07-03 | P-H&CC_ID-Wall-15 | CSD-LKO Calender (6 day + Holiday)-25 | Physical Progress [138730 h]; TATA Projects Ltd-25; Adani Airport Holding Ltd.-25 |
| P-H&CC_ID-Wall-10 |  | Issue of PO to vendor | 6d | 2027-07-03 | 2027-07-10 | P-H&CC_ID-Wall-25 | CSD-LKO Calender (6 day + Holiday)-25 | Physical Progress [13870 h]; TATA Projects Ltd-25 |
| P-H&CC_ID-Wall-30 |  | Delivery of Material - First Lot | 61d | 2028-02-19 | 2028-05-03 | P-H&CC_ID-Wall-10, E-GFC-ID-H&CC-35, E-ShopD-ID_H&CC-Wall-15 | CSD-LKO Calender (6 day + Holiday)-25 | Physical Progress [138730 h]; TATA Projects Ltd-25 |
| P-H&CC_ID-Wall-20 |  | Vendor on Site | 2d | 2028-05-05 | 2028-05-06 | P-H&CC_ID-Wall-30 | CSD-LKO Calender (6 day + Holiday)-25 | Physical Progress [4620 h]; TATA Projects Ltd-25 |
|  | 6 | **ID Flooring** |  | 2027-02-24 | 2028-05-06 |  |  |  |
| P-H&CC_ID-Floor-15 |  | Issue of Package from consultant | 47d | 2027-02-24 | 2027-04-23 | E-SD-ID15 | CSD-LKO Calender (6 day + Holiday)-25 | Physical Progress [104050 h]; TATA Projects Ltd-25 |
| P-H&CC_ID-Floor-25 |  | Vendor Finalisation | 60d | 2027-04-23 | 2027-07-03 | P-H&CC_ID-Floor-15 | CSD-LKO Calender (6 day + Holiday)-25 | Physical Progress [138730 h]; TATA Projects Ltd-25; Adani Airport Holding Ltd.-25 |
| P-H&CC_ID-Floor-10 |  | Issue of PO to vendor | 6d | 2027-07-03 | 2027-07-10 | P-H&CC_ID-Floor-25 | CSD-LKO Calender (6 day + Holiday)-25 | Physical Progress [13870 h]; TATA Projects Ltd-25 |
| P-H&CC_ID-Floor-30 |  | Delivery of Material - First Lot | 61d | 2028-02-19 | 2028-05-03 | P-H&CC_ID-Floor-10, E-GFC-ID-H&CC-35, E-ShopD-ID_H&CC-Floor-15 | CSD-LKO Calender (6 day + Holiday)-25 | Physical Progress [138730 h]; TATA Projects Ltd-25 |
| P-H&CC_ID-Floor-20 |  | Vendor on Site | 2d | 2028-05-05 | 2028-05-06 | P-H&CC_ID-Floor-30 | CSD-LKO Calender (6 day + Holiday)-25 | Physical Progress [4620 h]; TATA Projects Ltd-25 |
|  | 4 | **Soft Furnishing** |  | 2027-02-24 | 2028-06-10 |  |  |  |
| P-H&CC_ID-SF-15 |  | Issue of Package from consultant | 47d | 2027-02-24 | 2027-04-23 | E-SD-ID15 | CSD-LKO Calender (6 day + Holiday)-25 | Physical Progress [104050 h]; TATA Projects Ltd-25 |
| P-H&CC_ID-SF-25 |  | Vendor Finalisation | 60d | 2027-04-23 | 2027-07-03 | P-H&CC_ID-SF-15 | CSD-LKO Calender (6 day + Holiday)-25 | Physical Progress [138730 h]; TATA Projects Ltd-25; Adani Airport Holding Ltd.-25 |
| P-H&CC_ID-SF-10 |  | Issue of PO to vendor | 6d | 2027-07-03 | 2027-07-10 | P-H&CC_ID-SF-25 | CSD-LKO Calender (6 day + Holiday)-25 | Physical Progress [13870 h]; TATA Projects Ltd-25 |
| P-H&CC_ID-SF-30 |  | Delivery of Material - First Lot | 91d | 2028-02-19 | 2028-06-08 | P-H&CC_ID-SF-10, E-GFC-ID-H&CC-35, E-ShopD-ID_H&CC-SF-15 | CSD-LKO Calender (6 day + Holiday)-25 | Physical Progress [208090 h]; TATA Projects Ltd-25 |
| P-H&CC_ID-SF-20 |  | Vendor on Site | 2d | 2028-06-09 | 2028-06-10 | P-H&CC_ID-SF-30 | CSD-LKO Calender (6 day + Holiday)-25 | Physical Progress [4620 h]; TATA Projects Ltd-25 |
|  | 3 | **False Ceiling** |  | 2027-02-24 | 2028-03-29 |  |  |  |
| P-H&CC_ID-FC-15 |  | Issue of Package from consultant | 47d | 2027-02-24 | 2027-04-23 | E-SD-ID15 | CSD-LKO Calender (6 day + Holiday)-25 | Physical Progress [104050 h]; TATA Projects Ltd-25 |
| P-H&CC_ID-FC-25 |  | Vendor Finalisation | 60d | 2027-04-23 | 2027-07-03 | P-H&CC_ID-FC-15 | CSD-LKO Calender (6 day + Holiday)-25 | Physical Progress [138730 h]; TATA Projects Ltd-25; Adani Airport Holding Ltd.-25 |
| P-H&CC_ID-FC-10 |  | Issue of PO to vendor | 6d | 2027-07-03 | 2027-07-10 | P-H&CC_ID-FC-25 | CSD-LKO Calender (6 day + Holiday)-25 | Physical Progress [13870 h]; TATA Projects Ltd-25 |
| P-H&CC_ID-FC-30 |  | Delivery of Material - First Lot | 31d | 2028-02-19 | 2028-03-27 | P-H&CC_ID-FC-10, E-GFC-ID-H&CC-35, E-ShopD-ID_H&CC-FC-15 | CSD-LKO Calender (6 day + Holiday)-25 | Physical Progress [69360 h]; TATA Projects Ltd-25 |
| P-H&CC_ID-FC-20 |  | Vendor on Site | 2d | 2028-03-28 | 2028-03-29 | P-H&CC_ID-FC-30 | CSD-LKO Calender (6 day + Holiday)-25 | Physical Progress [4620 h]; TATA Projects Ltd-25 |

| ID | WBS | Activity | Duration | Start | Finish | Predecessors | Calendar | Resources |
| --- | --- | --- | --- | --- | --- | --- | --- | --- |
|  | 2 | **Doors** |  | 2027-02-24 | 2028-03-29 |  |  |  |
| P-H&CC_ID-Doors-15 |  | Issue of Package from consultant | 47d | 2027-02-24 | 2027-04-23 | E-SD-ID15 | CSD-LKO Calender (6 day + Holiday)-25 | Physical Progress [104050 h]; TATA Projects Ltd-25 |
| P-H&CC_ID-Doors-25 |  | Vendor Finalisation | 60d | 2027-04-23 | 2027-07-03 | P-H&CC_ID-Doors-15 | CSD-LKO Calender (6 day + Holiday)-25 | Physical Progress [138730 h]; TATA Projects Ltd-25; Adani Airport Holding Ltd.-25 |
| P-H&CC_ID-Doors-10 |  | Issue of PO to vendor | 6d | 2027-07-03 | 2027-07-10 | P-H&CC_ID-Doors-25 | CSD-LKO Calender (6 day + Holiday)-25 | Physical Progress [13890 h]; TATA Projects Ltd-25 |
| P-H&CC_ID-Doors-30 |  | Delivery of Material - First Lot | 31d | 2028-02-19 | 2028-03-27 | P-H&CC_ID-Doors-10, E-GFC-ID-H&CC-35, E-ShopD-ID_H&CC-Doors-15 | CSD-LKO Calender (6 day + Holiday)-25 | Physical Progress [69360 h]; TATA Projects Ltd-25 |
| P-H&CC_ID-Doors-20 |  | Vendor on Site | 2d | 2028-03-28 | 2028-03-29 | P-H&CC_ID-Doors-30 | CSD-LKO Calender (6 day + Holiday)-25 | Physical Progress [4620 h]; TATA Projects Ltd-25 |
|  | 7 | **Facade** |  | 2026-10-19 | 2028-03-18 |  |  |  |
|  | 7 | **Glass Facade** |  | 2026-10-19 | 2027-12-11 |  |  |  |
| P-F-Glass-20 |  | Glass Facade Vendor Finalisation | 75d | 2026-10-19 | 2027-01-18 | E-Tender-45 | CSD-LKO Calender (6 day + Holiday)-25 | Physical Progress [203380 h]; TATA Projects Ltd-25 |
| P-F-Glass-10 |  | Issue of PO to vendor | 6d | 2027-01-18 | 2027-01-25 | P-F-Glass-20 | CSD-LKO Calender (6 day + Holiday)-25 | Physical Progress [20340 h]; TATA Projects Ltd-25 |
| P-F-Glass-25 |  | Delivery of Material - First Lot | 75d | 2027-09-06 | 2027-12-04 | P-F-Glass-10, E-ShopD-F-Glass-15 | CSD-LKO Calender (6 day + Holiday)-25 | Physical Progress [305090 h]; TATA Projects Ltd-25 |
| P-F-Glass-15 |  | Glass Facade Vendor on Site | 6d | 2027-12-06 | 2027-12-11 | P-F-Glass-25 | CSD-LKO Calender (6 day + Holiday)-25 | Physical Progress [20340 h]; TATA Projects Ltd-25 |
|  | 1 | **FRP Facade** |  | 2026-10-19 | 2028-03-18 |  |  |  |
| P-F-FRP-20 |  | FPR Facade Vendor Finalisation | 89d | 2026-10-19 | 2027-02-04 | E-Tender-45 | CSD-LKO Calender (6 day + Holiday)-25 | Physical Progress [203390 h]; TATA Projects Ltd-25 |
| P-F-FRP-10 |  | Issue of PO to vendor | 6d | 2027-02-04 | 2027-02-11 | P-F-FRP-20 | CSD-LKO Calender (6 day + Holiday)-25 | Physical Progress [20340 h]; TATA Projects Ltd-25 |
| P-F-FRP-25 |  | Delivery of Material - First Lot | 141d | 2027-09-21 | 2028-03-10 | P-F-FRP-10, E-ShopD-F-FRP-15 | CSD-LKO Calender (6 day + Holiday)-25 | Physical Progress [406780 h]; TATA Projects Ltd-25 |
| P-F-FRP-15 |  | FRP Facade Vendor on Site | 6d | 2028-03-10 | 2028-03-18 | P-F-FRP-25 | CSD-LKO Calender (6 day + Holiday)-25 | Physical Progress [20340 h]; TATA Projects Ltd-25 |
|  | 3 | **Misc** |  | 2027-02-08 | 2029-02-19 |  |  |  |
|  | 1 | **Landscape** |  | 2027-02-08 | 2028-11-16 |  |  |  |
| P-Misc-LS-15 |  | Issue of Package from consultant | 35d | 2027-02-08 | 2027-03-23 | E-GFC-Misc-LS-35, Milestones-45 | CSD-LKO Calender (6 day + Holiday)-25 | Physical Progress [28100 h]; TATA Projects Ltd-25 |
| P-Misc-LS-25 |  | Vendor Finalisation | 60d | 2027-09-16 | 2027-11-29 | P-Misc-LS-15 FS+149d | CSD-LKO Calender (6 day + Holiday)-25 | Physical Progress [56200 h]; TATA Projects Ltd-25; Adani Airport Holding Ltd.-25 |
| P-Misc-LS-10 |  | Issue of PO to vendor | 8d | 2027-11-29 | 2027-12-08 | P-Misc-LS-25 | CSD-LKO Calender (6 day + Holiday)-25 | Physical Progress [5620 h]; TATA Projects Ltd-25 |
| P-Misc-LS-30 |  | Delivery of Material - First Lot | 194d | 2028-03-17 | 2028-11-08 | P-Misc-LS-10, 3S-SS-Roof40, RB2-SS-Roof40, CC-SS-Roof35, CC-SS-2ndF.675, E-ShopD-LS-15 | CSD-LKO Calender (6 day + Holiday)-25 | Physical Progress [171410 h]; TATA Projects Ltd-25 |
| P-Misc-LS-20 |  | Vendor on Site | 7d | 2028-11-08 | 2028-11-16 | P-Misc-LS-30 | CSD-LKO Calender (6 day + Holiday)-25 | Physical Progress [5620 h]; TATA Projects Ltd-25 |

| ID | WBS | Activity | Duration | Start | Finish | Predecessors | Calendar | Resources |
| --- | --- | --- | --- | --- | --- | --- | --- | --- |
|  | 5 | **Swiming Pool/Water Body** |  | 2027-02-16 | 2028-05-11 |  |  |  |
| P-Misc-SP/WB-15 |  | Issue of Package from consultant | 2d | 2027-02-16 | 2027-02-18 | E-DD-SP/WB-20, Milestones-45 | CSD-LKO Calender (6 day + Holiday)-25 | Physical Progress [1870 h]; TATA Projects Ltd-25 |
| P-Misc-SP/WB-25 |  | Vendor Finalisation | 62d | 2027-02-18 | 2027-05-06 | P-Misc-SP/WB-15 | CSD-LKO Calender (6 day + Holiday)-25 | Physical Progress [56200 h]; TATA Projects Ltd-25; Adani Airport Holding Ltd.-25 |
| P-Misc-SP/WB-10 |  | Issue of PO to vendor | 6d | 2027-05-06 | 2027-05-13 | P-Misc-SP/WB-25 | CSD-LKO Calender (6 day + Holiday)-25 | Physical Progress [5620 h]; TATA Projects Ltd-25 |
| P-Misc-SP/WB-30 |  | Delivery of Material - First Lot | 91d | 2028-01-13 | 2028-05-03 | P-Misc-SP/WB-10, CC-SS-Roof35, 4S-SS-Serv.F.415, E-ShopD-SP/WB-15 | CSD-LKO Calender (6 day + Holiday)-25 | Physical Progress [84300 h]; TATA Projects Ltd-25 |
| P-Misc-SP/WB-20 |  | Vendor on Site | 6d | 2028-05-03 | 2028-05-11 | P-Misc-SP/WB-30 | CSD-LKO Calender (6 day + Holiday)-25 | Physical Progress [5620 h]; TATA Projects Ltd-25 |
|  | 4 | **Accoustic/AV** |  | 2027-12-17 | 2029-02-19 |  |  |  |
| P-Misc-Accoustic/AV-15 |  | Issue of Package from consultant | 2d | 2027-12-17 | 2027-12-18 | E-GFC-Misc-Accoustic/AV-35, Milestones-45 | CSD-LKO Calender (6 day + Holiday)-25 | Physical Progress [1870 h]; TATA Projects Ltd-25 |
| P-Misc-Accoustic/AV-25 |  | Vendor Finalisation | 74d | 2027-12-20 | 2028-03-18 | P-Misc-Accoustic/AV-15 | CSD-LKO Calender (6 day + Holiday)-25 | Physical Progress [56200 h]; TATA Projects Ltd-25; Adani Airport Holding Ltd.-25 |
| P-Misc-Accoustic/AV-10 |  | Issue of PO to vendor | 6d | 2028-03-20 | 2028-03-25 | P-Misc-Accoustic/AV-25 | CSD-LKO Calender (6 day + Holiday)-25 | Physical Progress [5620 h]; TATA Projects Ltd-25 |
| P-Misc-Accoustic/AV-30 |  | Delivery of Material - First Lot | 99d | 2028-10-13 | 2029-02-09 | P-Misc-Accoustic/AV-10, E-ShopD-Accoustic/AV-15, 3S-SS-Roof40, RB2-SS-Roof40, CC-SS-Roof35, Mock Up-Accoustic/AV-15 | CSD-LKO Calender (6 day + Holiday)-25 | Physical Progress [84300 h]; TATA Projects Ltd-25 |
| P-Misc-Accoustic/AV-20 |  | Vendor on Site | 7d | 2029-02-10 | 2029-02-19 | P-Misc-Accoustic/AV-30 | CSD-LKO Calender (6 day + Holiday)-25 | Physical Progress [5620 h]; TATA Projects Ltd-25 |
|  | 3 | **Lighting** |  | 2027-12-17 | 2029-02-19 |  |  |  |
| P-Misc-Lightining-15 |  | Issue of Package from consultant | 2d | 2027-12-17 | 2027-12-18 | Milestones-10, E-GFC-Misc-Lighting-35 | CSD-LKO Calender (6 day + Holiday)-25 | Physical Progress [1870 h]; TATA Projects Ltd-25 |
| P-Misc-Lightining-25 |  | Vendor Finalisation | 74d | 2027-12-20 | 2028-03-18 | P-Misc-Lightining-15 | CSD-LKO Calender (6 day + Holiday)-25 | Physical Progress [56200 h]; TATA Projects Ltd-25; Adani Airport Holding Ltd.-25 |
| P-Misc-Lightining-10 |  | Issue of PO to vendor | 6d | 2028-03-20 | 2028-03-25 | P-Misc-Lightining-25 | CSD-LKO Calender (6 day + Holiday)-25 | Physical Progress [5620 h]; TATA Projects Ltd-25 |
| P-Misc-Lightining-30 |  | Delivery of Material - First Lot | 99d | 2028-10-13 | 2029-02-09 | P-Misc-Lightining-10, E-ShopD-Lighting-15, 3S-SS-Roof40, RB2-SS-Roof40, CC-SS-Roof35, Mock Up-Lighting-15 | CSD-LKO Calender (6 day + Holiday)-25 | Physical Progress [84300 h]; TATA Projects Ltd-25 |
| P-Misc-Lightining-20 |  | Vendor on Site | 7d | 2029-02-10 | 2029-02-19 | P-Misc-Lightining-30 | CSD-LKO Calender (6 day + Holiday)-25 | Physical Progress [5620 h]; TATA Projects Ltd-25 |
|  | 2 | **Fire Doors** |  | 2027-11-24 | 2028-11-27 |  |  |  |
| P-Misc-FD-15 |  | Issue of Package from consultant | 15d | 2027-11-24 | 2027-12-11 | Milestones-10, E-GFC-ID-R&O-35 | CSD-LKO Calender (6 day + Holiday)-25 | Physical Progress [42150 h]; TATA Projects Ltd-25 |
| P-Misc-FD-25 |  | Vendor Finalisation | 61d | 2027-12-11 | 2028-02-24 | P-Misc-FD-15, Milestones-35 | CSD-LKO Calender (6 day + Holiday)-25 | Physical Progress [56200 h]; TATA Projects Ltd-25; Adani Airport Holding Ltd.-25 |
| P-Misc-FD-10 |  | Issue of PO to vendor | 7d | 2028-02-24 | 2028-03-03 | P-Misc-FD-25 | CSD-LKO Calender (6 day + Holiday)-25 | Physical Progress [5620 h]; TATA Projects Ltd-25 |
| P-Misc-FD-30 |  | Delivery of Material - First Lot | 45d | 2028-09-30 | 2028-11-24 | P-Misc-FD-10, Mock Up-FD-15, E-ShopD-FD-15 | CSD-LKO Calender (6 day + Holiday)-25 | Physical Progress [56200 h]; TATA Projects Ltd-25 |
| P-Misc-FD-20 |  | Vendor on Site | 2d | 2028-11-24 | 2028-11-27 | P-Misc-FD-30 | CSD-LKO Calender (6 day + Holiday)-25 | Physical Progress [1870 h]; TATA Projects Ltd-25 |

| ID | WBS | Activity | Duration | Start | Finish | Predecessors | Complete | Calendar | Resources |
| --- | --- | --- | --- | --- | --- | --- | --- | --- | --- |
|  | 6 | **Signage** |  | 2027-11-24 | 2028-11-30 |  |  |  |  |
| P-Misc-Signage-15 |  | Issue of Package from consultant | 15d | 2027-11-24 | 2027-12-11 | Milestones-10, E-GFC-ID-R&O-35 |  | CSD-LKO Calender (6 day + Holiday)-25 | Physical Progress [42150 h]; TATA Projects Ltd-25 |
| P-Misc-Signage-25 |  | Vendor Finalisation | 79d | 2027-12-11 | 2028-03-17 | P-Misc-Signage-15, Milestones-35 |  | CSD-LKO Calender (6 day + Holiday)-25 | Physical Progress [56200 h]; TATA Projects Ltd-25; Adani Airport Holding Ltd.-25 |
| P-Misc-Signage-10 |  | Issue of PO to vendor | 7d | 2028-03-17 | 2028-03-25 | P-Misc-Signage-25 |  | CSD-LKO Calender (6 day + Holiday)-25 | Physical Progress [5620 h]; TATA Projects Ltd-25 |
| P-Misc-Signage-30 |  | Delivery of Material - First Lot | 30d | 2028-10-25 | 2028-11-28 | P-Misc-Signage-10, Mock Up-Signage-15, E-ShopD-Signage-15 |  | CSD-LKO Calender (6 day + Holiday)-25 | Physical Progress [84300 h]; TATA Projects Ltd-25 |
| P-Misc-Signage-20 |  | Vendor on Site | 2d | 2028-11-29 | 2028-11-30 | P-Misc-Signage-30 |  | CSD-LKO Calender (6 day + Holiday)-25 | Physical Progress [1870 h]; TATA Projects Ltd-25 |
|  | 4 | **Mix Design of Concrete** |  | 2026-02-27 | 2026-05-22 |  |  |  |  |
| P-MDC10 |  | Raw Material Source Approval | 12d | 2026-02-27 A | 2026-03-13 A | Milestones-10, Milestones-25 | 100% | CSD-LKO Calender (6 day + Holiday)-25 | Physical Progress [19200 h]; TATA Projects Ltd-25 |
| P-MDC15 |  | Third Party Raw Material Testing | 28d | 2026-03-24 A | 2026-04-25 A | P-MDC10 | 100% | CSD-LKO Calender (6 day + Holiday)-25 | Physical Progress [11200 h]; TATA Projects Ltd-25 |
| P-MDC20 |  | Mix Design trial & Cube test | 28d | 2026-03-24 A | 2026-04-25 A | P-MDC15 | 100% | CSD-LKO Calender (6 day + Holiday)-25 | Physical Progress [3200 h]; TATA Projects Ltd-25 |
| P-MDC25 |  | Wait for 28 Day Strength test | 28d | 2026-03-24 A | 2026-04-25 A | P-MDC20 | 100% | CSD-LKO Calender (6 day + Holiday)-25 | Physical Progress [44800 h]; TATA Projects Ltd-25 |
| P-MDC30 |  | Wait for 7 Day Strength test | 9d | 2026-03-24 A | 2026-04-02 A | P-MDC20 | 100% | CSD-LKO Calender (6 day + Holiday)-25 | Physical Progress [11200 h]; TATA Projects Ltd-25 |
| P-MDC35 |  | Ice Source Approval | 3d | 2026-04-22 A | 2026-04-24 A | Milestones-10, Milestones-25 | 100% | CSD-LKO Calender (6 day + Holiday)-25 | Physical Progress [19200 h]; TATA Projects Ltd-25 |
| P-MDC40 |  | Temperature Control Concrete Mockup | 18d | 2026-05-02 A | 2026-05-22 A | P-MDC35 | 100% | CSD-LKO Calender (6 day + Holiday)-25 | Physical Progress [11200 h]; TATA Projects Ltd-25 |
|  | 2 | **Delivery of Critical Items** |  | 2026-11-13 | 2028-04-26 |  |  |  |  |
|  | 4 | **Structure Steel** |  | 2027-03-08 | 2027-06-04 |  |  |  |  |
| P-Delivery-SS10 |  | Structure steel for trusses and Column | 30d | 2027-03-08 | 2027-04-15 | P-Civil-SS-10, E-ShopD-Civil-SS-15 |  | CSD-LKO Calender (6 day + Holiday)-25 | Physical Progress [172410 h]; TATA Projects Ltd-25 |
| P-Delivery-SS15 |  | Structure steel for FRP Facade Support | 72d | 2027-03-08 | 2027-06-04 | P-Civil-SS-10, E-ShopD-Civil-SS-15 |  | CSD-LKO Calender (6 day + Holiday)-25 | Physical Progress [413790 h]; TATA Projects Ltd-25 |
| P-Delivery-SS20 |  | Structure steel for Glass Facade Support | 72d | 2027-03-08 | 2027-06-04 | P-Civil-SS-10, E-ShopD-Civil-SS-15 |  | CSD-LKO Calender (6 day + Holiday)-25 | Physical Progress [413790 h]; TATA Projects Ltd-25 |
|  | 1 | **Manufacturing** |  | 2026-11-13 | 2028-02-24 |  |  |  |  |
| P-Mnf-45 |  | Chiller | 120d | 2026-11-13 | 2027-04-09 | P-MEP-Chiller-10 |  | CSD-LKO Calender (6 day + Holiday)-25 | Physical Progress [270270 h]; TATA Projects Ltd-25 |
| P-Mnf-40 |  | STP/ETP | 120d | 2026-11-17 | 2027-04-13 | E-ShopD-MEP-STP-15 |  | CSD-LKO Calender (6 day + Holiday)-25 | Physical Progress [270270 h]; TATA Projects Ltd-25 |
| P-Mnf-30 |  | Transformer | 90d | 2026-12-01 | 2027-03-20 | P-MEP-Transformer-10 |  | CSD-LKO Calender (6 day + Holiday)-25 | Physical Progress [270270 h]; TATA Projects Ltd-25 |
| P-Mnf-55 |  | AHU | 90d | 2026-12-16 | 2027-04-07 | P-MEP-AHU-10 |  | CSD-LKO Calender (6 day + Holiday)-25 | Physical Progress [202700 h]; TATA Projects Ltd-25 |
| P-Mnf-35 |  | UPS and Battery Bank Setups | 184d | 2026-12-29 | 2027-08-07 | P-MEP-UPS-10, E-GFC-MEP-CB-85 |  | CSD-LKO Calender (6 day + Holiday)-25 | Physical Progress [202700 h]; TATA Projects Ltd-25 |
| P-Mnf-60 |  | Pumps ( FF, Plumbing etc.) & Other Equipments | 90d | 2026-12-29 | 2027-04-19 | P-MEP-Pump-10 |  | CSD-LKO Calender (6 day + Holiday)-25 | Physical Progress [202700 h]; TATA Projects Ltd-25 |
| P-Mnf-50 |  | Vertical Transport (Lift/Escalator) | 150d | 2027-02-25 | 2027-08-24 | E-ShopD-MEP-VT-15, P-MEP-VT-10 |  | CSD-LKO Calender (6 day + Holiday)-25 | Physical Progress [270270 h]; TATA Projects Ltd-25 |
| P-Mnf-15 |  | ICT/Security | 201d | 2027-06-23 | 2028-02-21 | E-ShopD-MEP-ICT/Security-15 |  | CSD-LKO Calender (6 day + Holiday)-25 | Physical Progress [202700 h]; TATA Projects Ltd-25 |
| P-Mnf-25 |  | BMS | 201d | 2027-06-23 | 2028-02-21 | E-ShopD-MEP-BMS-15 |  | CSD-LKO Calender (6 day + Holiday)-25 | Physical Progress [202700 h]; TATA Projects Ltd-25 |
| P-Mnf-10 |  | Kitchen Equipments | 196d | 2027-06-23 | 2028-02-15 | E-ShopD-MEP-Kitchen-15 |  | CSD-LKO Calender (6 day + Holiday)-25 | Physical Progress [202700 h]; TATA Projects Ltd-25 |
| P-Mnf-20 |  | Solar PV System | 200d | 2027-06-28 | 2028-02-24 | P-MEP-Solar-10, E-GFC-MEP-CB-85 |  | CSD-LKO Calender (6 day + Holiday)-25 | Physical Progress [202700 h]; TATA Projects Ltd-25 |

| ID | WBS | Activity | Duration | Start | Finish | Predecessors | Calendar | Resources |
| --- | --- | --- | --- | --- | --- | --- | --- | --- |
|  | 2 | **Factory Inspection & Approval** |  | 2027-03-20 | 2028-04-01 |  |  |  |
| P-FI&A-30 |  | Transformer | 25d | 2027-03-20 | 2027-04-21 | P-Mnf-30 | CSD-LKO Calender (6 day + Holiday)-25 | Physical Progress [90910 h]; TATA Projects Ltd-25 |
| P-FI&A-55 |  | AHU | 25d | 2027-04-07 | 2027-05-07 | P-Mnf-55 | CSD-LKO Calender (6 day + Holiday)-25 | Physical Progress [90910 h]; TATA Projects Ltd-25 |
| P-FI&A-45 |  | Chiller | 30d | 2027-04-09 | 2027-05-15 | P-Mnf-45 | CSD-LKO Calender (6 day + Holiday)-25 | Physical Progress [90910 h]; TATA Projects Ltd-25 |
| P-FI&A-40 |  | STP/ETP | 30d | 2027-04-13 | 2027-05-19 | P-Mnf-40 | CSD-LKO Calender (6 day + Holiday)-25 | Physical Progress [90910 h]; TATA Projects Ltd-25 |
| P-FI&A-60 |  | Pumps ( FF, Plumbing etc.) & Other Equipments | 25d | 2027-04-19 | 2027-05-19 | P-Mnf-60 | CSD-LKO Calender (6 day + Holiday)-25 | Physical Progress [90910 h]; TATA Projects Ltd-25 |
| P-FI&A-35 |  | UPS and Battery Bank Setups | 30d | 2027-08-07 | 2027-09-13 | P-Mnf-35 | CSD-LKO Calender (6 day + Holiday)-25 | Physical Progress [90910 h]; TATA Projects Ltd-25 |
| P-FI&A-50 |  | Vertical Transport (Lift/Escalator) | 30d | 2027-08-24 | 2027-09-29 | P-Mnf-50 | CSD-LKO Calender (6 day + Holiday)-25 | Physical Progress [90910 h]; TATA Projects Ltd-25 |
| P-FI&A-10 |  | Kitchen Equipments | 35d | 2028-02-15 | 2028-03-28 | P-Mnf-10 | CSD-LKO Calender (6 day + Holiday)-25 | Physical Progress [90910 h]; TATA Projects Ltd-25 |
| P-FI&A-15 |  | ICT/Security | 30d | 2028-02-21 | 2028-03-28 | P-Mnf-15 | CSD-LKO Calender (6 day + Holiday)-25 | Physical Progress [90910 h]; TATA Projects Ltd-25 |
| P-FI&A-25 |  | BMS | 30d | 2028-02-21 | 2028-03-28 | P-Mnf-25 | CSD-LKO Calender (6 day + Holiday)-25 | Physical Progress [90910 h]; TATA Projects Ltd-25 |
| P-FI&A-20 |  | Solar PV System | 31d | 2028-02-24 | 2028-04-01 | P-Mnf-20 | CSD-LKO Calender (6 day + Holiday)-25 | Physical Progress [90910 h]; TATA Projects Ltd-25 |
|  | 3 | **Delivery** |  | 2027-04-21 | 2028-04-26 |  |  |  |
| P-Delivery-30 |  | Transformer | 22d | 2027-04-21 | 2027-05-18 | P-FI&A-30 | CSD-LKO Calender (6 day + Holiday)-25 | Physical Progress [45460 h]; TATA Projects Ltd-25 |
| P-Delivery-55 |  | AHU | 22d | 2027-05-07 | 2027-06-02 | P-FI&A-55 | CSD-LKO Calender (6 day + Holiday)-25 | Physical Progress [45460 h]; TATA Projects Ltd-25 |
| P-Delivery-45 |  | Chiller | 22d | 2027-05-15 | 2027-06-10 | P-FI&A-45 | CSD-LKO Calender (6 day + Holiday)-25 | Physical Progress [45460 h]; TATA Projects Ltd-25 |
| P-Delivery-40 |  | STP/ETP | 28d | 2027-05-19 | 2027-06-21 | P-FI&A-40 | CSD-LKO Calender (6 day + Holiday)-25 | Physical Progress [45460 h]; TATA Projects Ltd-25 |
| P-Delivery-60 |  | Pumps ( FF, Plumbing etc.) & Other Equipments | 22d | 2027-05-19 | 2027-06-14 | P-FI&A-60 | CSD-LKO Calender (6 day + Holiday)-25 | Physical Progress [45460 h]; TATA Projects Ltd-25 |
| P-Delivery-35 |  | UPS and Battery Bank Setups | 20d | 2027-09-13 | 2027-10-07 | P-FI&A-35 | CSD-LKO Calender (6 day + Holiday)-25 | Physical Progress [45460 h]; TATA Projects Ltd-25 |
| P-Delivery-50 |  | Vertical Transport (Lift/Escalator) | 20d | 2027-09-29 | 2027-10-25 | P-FI&A-50 | CSD-LKO Calender (6 day + Holiday)-25 | Physical Progress [45460 h]; TATA Projects Ltd-25 |
| P-Delivery-15 |  | ICT/Security | 20d | 2028-03-28 | 2028-04-21 | P-FI&A-15 | CSD-LKO Calender (6 day + Holiday)-25 | Physical Progress [45460 h]; TATA Projects Ltd-25 |
| P-Delivery-25 |  | BMS | 20d | 2028-03-28 | 2028-04-21 | P-FI&A-25 | CSD-LKO Calender (6 day + Holiday)-25 | Physical Progress [45460 h]; TATA Projects Ltd-25 |
| P-Delivery-10 |  | Kitchen Equipments | 20d | 2028-03-28 | 2028-04-21 | P-FI&A-10 | CSD-LKO Calender (6 day + Holiday)-25 | Physical Progress [45460 h]; TATA Projects Ltd-25 |
| P-Delivery-20 |  | Solar PV System | 20d | 2028-04-01 | 2028-04-26 | P-FI&A-20 | CSD-LKO Calender (6 day + Holiday)-25 | Physical Progress [45460 h]; TATA Projects Ltd-25 |

| ID | WBS | Activity | Duration | Start | Finish | Predecessors | Complete | Remaining | Calendar | Resources | Cost | Actual cost |
| --- | --- | --- | --- | --- | --- | --- | --- | --- | --- | --- | --- | --- |
|  | 14 | **Design & Drawings** |  | 2026-02-16 | 2029-06-06 |  |  |  |  |  |  |  |
|  | 4 | **Consultant Onboarding** |  | 2026-02-16 | 2026-02-16 |  |  |  |  |  |  |  |
| E-Consultant-10 |  | Landscape | 0d | 2026-02-16 A | 2026-02-16 A | Milestones-10 | 100% |  | CSD-LKO-Design (5 Day + Holiday)-25 | Design Consultnacy Charges; Physical Progress; Adani Airport Holding Ltd.-25 |  |  |
| E-Consultant-15 |  | Traffic | 0d | 2026-02-16 A | 2026-02-16 A | Milestones-10 | 100% |  | CSD-LKO-Design (5 Day + Holiday)-25 | Design Consultnacy Charges; Physical Progress; Adani Airport Holding Ltd.-25 |  |  |
| E-Consultant-20 |  | Kitchen/BOH | 0d | 2026-02-16 A | 2026-02-16 A | Milestones-10 | 100% |  | CSD-LKO-Design (5 Day + Holiday)-25 | Design Consultnacy Charges; Physical Progress; Adani Airport Holding Ltd.-25 |  |  |
| E-Consultant-25 |  | Vertical Transport | 0d | 2026-02-16 A | 2026-02-16 A | Milestones-10 | 100% |  | CSD-LKO-Design (5 Day + Holiday)-25 | Design Consultnacy Charges; Physical Progress; Adani Airport Holding Ltd.-25 |  |  |
| E-Consultant-30 |  | Lighting | 0d | 2026-02-16 A | 2026-02-16 A | Milestones-10 | 100% |  | CSD-LKO-Design (5 Day + Holiday)-25 | Design Consultnacy Charges; Physical Progress; Adani Airport Holding Ltd.-25 |  |  |
| E-Consultant-35 |  | Signage | 0d | 2026-02-16 A | 2026-02-16 A | Milestones-10 | 100% |  | CSD-LKO-Design (5 Day + Holiday)-25 | Design Consultnacy Charges; Physical Progress; Adani Airport Holding Ltd.-25 |  |  |
| E-Consultant-40 |  | IT/Secutity | 0d | 2026-02-16 A | 2026-02-16 A | Milestones-10 | 100% |  | CSD-LKO-Design (5 Day + Holiday)-25 | Design Consultnacy Charges; Physical Progress; Adani Airport Holding Ltd.-25 |  |  |
| E-Consultant-45 |  | Accoustic & AV | 0d | 2026-02-16 A | 2026-02-16 A | Milestones-10 | 100% |  | CSD-LKO-Design (5 Day + Holiday)-25 | Design Consultnacy Charges; Physical Progress; Adani Airport Holding Ltd.-25 |  |  |
| E-Consultant-50 |  | Swiming Pool/Water Body | 0d | 2026-02-16 A | 2026-02-16 A | Milestones-10 | 100% |  | CSD-LKO-Design (5 Day + Holiday)-25 | Design Consultnacy Charges; Physical Progress; Adani Airport Holding Ltd.-25 |  |  |
| E-Consultant-55 |  | Facade | 0d | 2026-02-16 A | 2026-02-16 A | Milestones-10 | 100% |  | CSD-LKO-Design (5 Day + Holiday)-25 | Design Consultnacy Charges; Physical Progress; Adani Airport Holding Ltd.-25 |  |  |
| E-Consultant-60 |  | ID - Office & Retail | 0d | 2026-02-16 A | 2026-02-16 A | Milestones-10 | 100% |  | CSD-LKO-Design (5 Day + Holiday)-25 | Design Consultnacy Charges; Physical Progress; Adani Airport Holding Ltd.-25 |  |  |
| E-Consultant-65 |  | ID - Hotel & Convention center | 0d | 2026-02-16 A | 2026-02-16 A | Milestones-10 | 100% |  | CSD-LKO-Design (5 Day + Holiday)-25 | Design Consultnacy Charges; Physical Progress; Adani Airport Holding Ltd.-25 |  |  |
| E-Consultant-70 |  | Architecture | 0d | 2026-02-16 A | 2026-02-16 A | Milestones-10 | 100% |  | CSD-LKO-Design (5 Day + Holiday)-25 | Design Consultnacy Charges; Physical Progress; Adani Airport Holding Ltd.-25 |  |  |
| E-Consultant-75 |  | Structure | 0d | 2026-02-16 A | 2026-02-16 A | Milestones-10 | 100% |  | CSD-LKO-Design (5 Day + Holiday)-25 | Design Consultnacy Charges; Physical Progress; Adani Airport Holding Ltd.-25 |  |  |
| E-Consultant-80 |  | MEPF | 0d | 2026-02-16 A | 2026-02-16 A | Milestones-10 | 100% |  | CSD-LKO-Design (5 Day + Holiday)-25 | Design Consultnacy Charges; Physical Progress; Adani Airport Holding Ltd.-25 |  |  |
| E-Consultant-85 |  | Green Building | 0d | 2026-02-16 A | 2026-02-16 A | Milestones-10 | 100% |  | CSD-LKO-Design (5 Day + Holiday)-25 | Design Consultnacy Charges; Physical Progress; Adani Airport Holding Ltd.-25 |  |  |
|  | 6 | **Concept Design** |  | 2026-02-16 | 2026-11-27 |  |  |  |  |  |  |  |
| E-CD-10 |  | Landscape | 0d | 2026-02-16 A | 2026-02-16 A | E-Consultant-10 | 100% |  | CSD-LKO-Design (5 Day + Holiday)-25 | Design Consultnacy Charges; Physical Progress; Adani Airport Holding Ltd.-25 |  |  |
| E-CD-15 |  | Traffic | 0d | 2026-02-16 A | 2026-02-16 A | E-Consultant-15 | 100% |  | CSD-LKO-Design (5 Day + Holiday)-25 | Design Consultnacy Charges; Physical Progress; Adani Airport Holding Ltd.-25 |  |  |
| E-CD-20 |  | Kitchen/BOH | 0d | 2026-02-16 A | 2026-02-16 A | E-Consultant-20 | 100% |  | CSD-LKO-Design (5 Day + Holiday)-25 | Design Consultnacy Charges; Physical Progress; Adani Airport Holding Ltd.-25 |  |  |
| E-CD-25 |  | Vertical Transport | 0d | 2026-02-16 A | 2026-02-16 A | E-Consultant-25 | 100% |  | CSD-LKO-Design (5 Day + Holiday)-25 | Design Consultnacy Charges; Physical Progress; Adani Airport Holding Ltd.-25 |  |  |
| E-CD-30 |  | Lighting | 0d | 2026-02-16 A | 2026-02-16 A | E-Consultant-30 | 100% |  | CSD-LKO-Design (5 Day + Holiday)-25 | Design Consultnacy Charges; Physical Progress; Adani Airport Holding Ltd.-25 |  |  |
| E-CD-35 |  | Signage | 0d | 2026-02-16 A | 2026-02-16 A | E-Consultant-35 | 100% |  | CSD-LKO-Design (5 Day + Holiday)-25 | Design Consultnacy Charges; Physical Progress; Adani Airport Holding Ltd.-25 |  |  |
| E-CD-40 |  | IT/Secutity | 0d | 2026-02-16 A | 2026-02-16 A | E-Consultant-40 | 100% |  | CSD-LKO-Design (5 Day + Holiday)-25 | Design Consultnacy Charges; Physical Progress; Adani Airport Holding Ltd.-25 |  |  |
| E-CD-50 |  | Facade | 0d | 2026-02-16 A | 2026-02-16 A | E-Consultant-55 | 100% |  | CSD-LKO-Design (5 Day + Holiday)-25 | Design Consultnacy Charges; Physical Progress; Adani Airport Holding Ltd.-25 |  |  |
| E-CD-55 |  | ID - Office & Retail | 0d | 2026-02-16 A | 2026-02-16 A | E-Consultant-60 | 100% |  | CSD-LKO-Design (5 Day + Holiday)-25 | Design Consultnacy Charges; Physical Progress; Adani Airport Holding Ltd.-25 |  |  |
| E-CD-65 |  | Architecture | 0d | 2026-02-16 A | 2026-02-16 A | E-Consultant-70 | 100% |  | CSD-LKO-Design (5 Day + Holiday)-25 | Design Consultnacy Charges; Physical Progress; Adani Airport Holding Ltd.-25 |  |  |
| E-CD-70 |  | Structure | 0d | 2026-02-16 A | 2026-02-16 A | E-Consultant-75 | 100% |  | CSD-LKO-Design (5 Day + Holiday)-25 | Design Consultnacy Charges; Physical Progress; Adani Airport Holding Ltd.-25 |  |  |
| E-CD-75 |  | MEPF | 0d | 2026-02-16 A | 2026-02-16 A | E-Consultant-80 | 100% |  | CSD-LKO-Design (5 Day + Holiday)-25 | Design Consultnacy Charges; Physical Progress; Adani Airport Holding Ltd.-25 |  |  |
| E-CD-45 |  | Accoustic & AV | 147.9d | 2026-04-29 A | 2026-11-27 | E-Consultant-45, E-CD-60 FF | 75% | 10d | CSD-LKO-Design (5 Day + Holiday)-25 | Design Consultnacy Charges [130927 INR]; Physical Progress [500000 h]; Adani Airport Holding Ltd.-25 | 130,927 | 122,074.6 |
| E-CD-60 |  | ID - Hotel & Convention center | 40d | 2026-09-30 | 2026-11-27 | E-Consultant-65 |  |  | CSD-LKO-Design (5 Day + Holiday)-25 | Design Consultnacy Charges; Physical Progress [500000 h]; Adani Airport Holding Ltd.-25 |  |  |

| ID | WBS | Activity | Duration | Start | Finish | Predecessors | Complete | Planned start | Planned finish | Calendar | Resources | Cost | Actual cost |
| --- | --- | --- | --- | --- | --- | --- | --- | --- | --- | --- | --- | --- | --- |
|  | 1 | **Schematic Design** |  | 2026-02-16 | 2027-02-24 |  |  |  |  |  |  |  |  |
|  | 1 | **Architectural** |  | 2026-02-16 | 2026-02-16 |  |  |  |  |  |  |  |  |
| E-SD-AR10 |  | Hotel 4 Star | 0d | 2026-02-16 A | 2026-02-16 A | Milestones-10, E-CD-65 | 100% |  |  | CSD-LKO-Design (5 Day + Holiday)-25 | Design Consultnacy Charges; Physical Progress; Adani Airport Holding Ltd.-25 |  |  |
| E-SD-AR15 |  | Hotel 3 Star | 0d | 2026-02-16 A | 2026-02-16 A | Milestones-10, E-CD-65 | 100% |  |  | CSD-LKO-Design (5 Day + Holiday)-25 | Design Consultnacy Charges; Physical Progress; Adani Airport Holding Ltd.-25 |  |  |
| E-SD-AR20 |  | Retail Block 2 | 0d | 2026-02-16 A | 2026-02-16 A | Milestones-10, E-CD-65 | 100% |  |  | CSD-LKO-Design (5 Day + Holiday)-25 | Design Consultnacy Charges; Physical Progress; Adani Airport Holding Ltd.-25 |  |  |
| E-SD-AR25 |  | Retail Block 1 | 0d | 2026-02-16 A | 2026-02-16 A | Milestones-10, E-CD-65 | 100% |  |  | CSD-LKO-Design (5 Day + Holiday)-25 | Design Consultnacy Charges; Physical Progress; Adani Airport Holding Ltd.-25 |  |  |
| E-SD-AR30 |  | Convention center | 0d | 2026-02-16 A | 2026-02-16 A | Milestones-10, E-CD-65 | 100% |  |  | CSD-LKO-Design (5 Day + Holiday)-25 | Design Consultnacy Charges; Physical Progress; Adani Airport Holding Ltd.-25 |  |  |
| E-SD-AR35 |  | Common Basements | 0d | 2026-02-16 A | 2026-02-16 A | Milestones-10, E-CD-65 | 100% |  |  | CSD-LKO-Design (5 Day + Holiday)-25 | Design Consultnacy Charges; Physical Progress; Adani Airport Holding Ltd.-25 |  |  |
|  | 2 | **Structural** |  | 2026-02-16 | 2026-02-16 |  |  |  |  |  |  |  |  |
| E-SD-ST10 |  | Hotel 4 Star | 0d | 2026-02-16 A | 2026-02-16 A | Milestones-10, E-CD-70 | 100% |  |  | CSD-LKO-Design (5 Day + Holiday)-25 | Design Consultnacy Charges; Physical Progress; Adani Airport Holding Ltd.-25 |  |  |
| E-SD-ST15 |  | Hotel 3 Star | 0d | 2026-02-16 A | 2026-02-16 A | Milestones-10, E-CD-70 | 100% |  |  | CSD-LKO-Design (5 Day + Holiday)-25 | Design Consultnacy Charges; Physical Progress; Adani Airport Holding Ltd.-25 |  |  |
| E-SD-ST20 |  | Retail Block 2 | 0d | 2026-02-16 A | 2026-02-16 A | Milestones-10, E-CD-70 | 100% |  |  | CSD-LKO-Design (5 Day + Holiday)-25 | Design Consultnacy Charges; Physical Progress; Adani Airport Holding Ltd.-25 |  |  |
| E-SD-ST25 |  | Retail Block 1 | 0d | 2026-02-16 A | 2026-02-16 A | Milestones-10, E-CD-70 | 100% |  |  | CSD-LKO-Design (5 Day + Holiday)-25 | Design Consultnacy Charges; Physical Progress; Adani Airport Holding Ltd.-25 |  |  |
| E-SD-ST30 |  | Convention center | 0d | 2026-02-16 A | 2026-02-16 A | Milestones-10, E-CD-70 | 100% |  |  | CSD-LKO-Design (5 Day + Holiday)-25 | Design Consultnacy Charges; Physical Progress; Adani Airport Holding Ltd.-25 |  |  |
| E-SD-ST35 |  | Common Basements | 0d | 2026-02-16 A | 2026-02-16 A | Milestones-10, E-CD-70 | 100% |  |  | CSD-LKO-Design (5 Day + Holiday)-25 | Design Consultnacy Charges; Physical Progress; Adani Airport Holding Ltd.-25 |  |  |
| E-SD-ST40 |  | Foundation | 0d | 2026-02-16 A | 2026-02-16 A | Milestones-10 | 100% |  |  | CSD-LKO-Design (5 Day + Holiday)-25 | Design Consultnacy Charges; Physical Progress; Adani Airport Holding Ltd.-25 |  |  |
|  | 3 | **MEPF** |  | 2026-02-16 | 2026-02-16 |  |  |  |  |  |  |  |  |
| E-SD-MEP10 |  | Hotel 4 Star | 0d | 2026-02-16 A | 2026-02-16 A | Milestones-10, E-CD-75 | 100% |  |  | CSD-LKO-Design (5 Day + Holiday)-25 | Design Consultnacy Charges; Physical Progress; Adani Airport Holding Ltd.-25 |  |  |
| E-SD-MEP15 |  | Hotel 3 Star | 0d | 2026-02-16 A | 2026-02-16 A | Milestones-10, E-CD-75 | 100% |  |  | CSD-LKO-Design (5 Day + Holiday)-25 | Design Consultnacy Charges; Physical Progress; Adani Airport Holding Ltd.-25 |  |  |
| E-SD-MEP20 |  | Retail Block 2 | 0d | 2026-02-16 A | 2026-02-16 A | Milestones-10, E-CD-75 | 100% |  |  | CSD-LKO-Design (5 Day + Holiday)-25 | Design Consultnacy Charges; Physical Progress; Adani Airport Holding Ltd.-25 |  |  |
| E-SD-MEP25 |  | Retail Block 1 | 0d | 2026-02-16 A | 2026-02-16 A | Milestones-10, E-CD-75 | 100% |  |  | CSD-LKO-Design (5 Day + Holiday)-25 | Design Consultnacy Charges; Physical Progress; Adani Airport Holding Ltd.-25 |  |  |
| E-SD-MEP30 |  | Convention center | 0d | 2026-02-16 A | 2026-02-16 A | Milestones-10, E-CD-75 | 100% |  |  | CSD-LKO-Design (5 Day + Holiday)-25 | Design Consultnacy Charges; Physical Progress; Adani Airport Holding Ltd.-25 |  |  |
| E-SD-MEP35 |  | Common Basements | 0d | 2026-02-16 A | 2026-02-16 A | Milestones-10, E-CD-75 | 100% |  |  | CSD-LKO-Design (5 Day + Holiday)-25 | Design Consultnacy Charges; Physical Progress; Adani Airport Holding Ltd.-25 |  |  |
|  | 5 | **Facade** |  | 2026-02-16 | 2026-08-08 |  |  |  |  |  |  |  |  |
| E-SD-F40 |  | Hotel 4 Star | 112d | 2026-02-16 A | 2026-07-27 A | E-CD-50 | 100% |  |  | CSD-LKO-Design (5 Day + Holiday)-25 | Design Consultnacy Charges; Physical Progress [103230 h]; Adani Airport Holding Ltd.-25 |  |  |
| E-SD-F50 |  | Hotel 3 Star | 112d | 2026-02-16 A | 2026-07-27 A | E-CD-50 | 100% |  |  | CSD-LKO-Design (5 Day + Holiday)-25 | Design Consultnacy Charges; Physical Progress [103230 h]; Adani Airport Holding Ltd.-25 |  |  |
| E-SD-F60 |  | Retail Block 2 | 112d | 2026-02-16 A | 2026-07-27 A | E-CD-50 | 100% |  |  | CSD-LKO-Design (5 Day + Holiday)-25 | Design Consultnacy Charges; Physical Progress [103230 h]; Adani Airport Holding Ltd.-25 |  |  |
| E-SD-F70 |  | Retail Block 1 | 112d | 2026-02-16 A | 2026-07-27 A | E-CD-50 | 100% |  |  | CSD-LKO-Design (5 Day + Holiday)-25 | Design Consultnacy Charges; Physical Progress [103230 h]; Adani Airport Holding Ltd.-25 |  |  |
| E-SD-F80 |  | Convention center | 112d | 2026-02-16 A | 2026-07-27 A | E-CD-50 | 100% |  |  | CSD-LKO-Design (5 Day + Holiday)-25 | Design Consultnacy Charges; Physical Progress [103230 h]; Adani Airport Holding Ltd.-25 |  |  |
| E-SD-F10 |  | Peer Review Approval Hotel 4 Star | 9d | 2026-07-28 A | 2026-08-08 A | E-SD-F40 | 100% | 2026-07-28 | 2026-08-07 | CSD-LKO-Design (5 Day + Holiday)-25 | Design Consultnacy Charges [134470 INR]; Physical Progress [4300 h]; Peer Reviewer-25 | 134,470 | 134,470 |
| E-SD-F15 |  | Peer Review Approval Hotel 3 Star | 9d | 2026-07-28 A | 2026-08-08 A | E-SD-F50 | 100% | 2026-07-28 | 2026-08-07 | CSD-LKO-Design (5 Day + Holiday)-25 | Design Consultnacy Charges [134470 INR]; Physical Progress [4300 h]; Peer Reviewer-25 | 134,470 | 134,470 |
| E-SD-F20 |  | Peer Review Approval Retail Block 2 | 9d | 2026-07-28 A | 2026-08-08 A | E-SD-F60 | 100% | 2026-07-28 | 2026-08-07 | CSD-LKO-Design (5 Day + Holiday)-25 | Design Consultnacy Charges [134470 INR]; Physical Progress [4300 h]; Peer Reviewer-25 | 134,470 | 134,470 |
| E-SD-F25 |  | Peer Review Approval Retail Block 1 | 9d | 2026-07-28 A | 2026-08-08 A | E-SD-F70 | 100% | 2026-07-28 | 2026-08-07 | CSD-LKO-Design (5 Day + Holiday)-25 | Design Consultnacy Charges [134470 INR]; Physical Progress [4300 h]; Peer Reviewer-25 | 134,470 | 134,470 |
| E-SD-F30 |  | Peer Review Approval Convention center | 9d | 2026-07-28 A | 2026-08-08 A | E-SD-F80 | 100% | 2026-07-28 | 2026-08-07 | CSD-LKO-Design (5 Day + Holiday)-25 | Design Consultnacy Charges [134470 INR]; Physical Progress [4300 h]; Peer Reviewer-25 | 134,470 | 134,470 |

| ID | WBS | Activity | Duration | Start | Finish | Predecessors | Complete | Remaining | Calendar | Resources | Cost | Actual cost |
| --- | --- | --- | --- | --- | --- | --- | --- | --- | --- | --- | --- | --- |
|  | 4 | **ID** |  | 2026-02-16 | 2027-02-24 |  |  |  |  |  |  |  |
| E-SD-ID10 |  | Office & Retail | 25d | 2026-02-16 A | 2026-03-23 A | Milestones-10, E-CD-55 | 100% |  | CSD-LKO-Design (5 Day + Holiday)-25 | Design Consultnacy Charges; Physical Progress [53760 h]; Adani Airport Holding Ltd.-25 |  |  |
| E-SD-ID15 |  | Hotel & Convention center | 60d | 2026-11-27 | 2027-02-24 | Milestones-10, E-CD-60 |  |  | CSD-LKO-Design (5 Day + Holiday)-25 | Design Consultnacy Charges [76389 INR]; Physical Progress [129000 h]; Adani Airport Holding Ltd.-25 | 76,389 |  |
|  | 6 | **Misc** |  | 2026-03-02 | 2027-02-24 |  |  |  |  |  |  |  |
| E-SD-Misc10 |  | Landscape | 7d | 2026-03-02 A | 2026-03-11 A | Milestones-10, E-CD-10 | 100% |  | CSD-LKO-Design (5 Day + Holiday)-25 | Design Consultnacy Charges; Physical Progress [43010 h]; Adani Airport Holding Ltd.-25 |  |  |
| E-SD-Misc15 |  | Traffic | 7d | 2026-03-02 A | 2026-03-11 A | Milestones-10, E-CD-15 | 100% |  | CSD-LKO-Design (5 Day + Holiday)-25 | Design Consultnacy Charges; Physical Progress [21510 h]; Adani Airport Holding Ltd.-25 |  |  |
| E-SD-Misc20 |  | Kitchen/BOH | 7d | 2026-03-02 A | 2026-03-11 A | Milestones-10, E-CD-20 | 100% |  | CSD-LKO-Design (5 Day + Holiday)-25 | Design Consultnacy Charges; Physical Progress [21510 h]; Adani Airport Holding Ltd.-25 |  |  |
| E-SD-Misc25 |  | Vertical Transport | 7d | 2026-03-02 A | 2026-03-11 A | Milestones-10, E-CD-25 | 100% |  | CSD-LKO-Design (5 Day + Holiday)-25 | Design Consultnacy Charges; Physical Progress [21510 h]; Adani Airport Holding Ltd.-25 |  |  |
| E-SD-Misc30 |  | Lighting | 7d | 2026-03-02 A | 2026-03-11 A | Milestones-10, E-CD-30 | 100% |  | CSD-LKO-Design (5 Day + Holiday)-25 | Design Consultnacy Charges [294618 INR]; Physical Progress [43010 h]; Adani Airport Holding Ltd.-25 | 294,618 | 294,618 |
| E-SD-Misc35 |  | Signage | 7d | 2026-03-02 A | 2026-03-11 A | Milestones-10, E-CD-35 | 100% |  | CSD-LKO-Design (5 Day + Holiday)-25 | Design Consultnacy Charges [257247 INR]; Physical Progress [43010 h]; Adani Airport Holding Ltd.-25 | 257,247 | 257,247 |
| E-SD-Misc40 |  | IT/Secutity | 7d | 2026-03-02 A | 2026-03-11 A | Milestones-10, E-CD-40 | 100% |  | CSD-LKO-Design (5 Day + Holiday)-25 | Design Consultnacy Charges; Physical Progress [21510 h]; Adani Airport Holding Ltd.-25 |  |  |
| E-SD-Misc45 |  | Accoustic & AV | 241.9d | 2026-03-11 A | 2027-02-24 | Milestones-10, E-SD-ID15 FF, E-CD-45 SS | 50% | 15d | CSD-LKO-Design (5 Day + Holiday)-25 | Design Consultnacy Charges [261854 INR]; Physical Progress [64520 h]; Adani Airport Holding Ltd.-25 | 261,854 | 245,616.67 |
|  | 3 | **Design Development** |  | 2026-02-16 | 2027-09-08 |  |  |  |  |  |  |  |
|  | 1 | **Architectural** |  | 2026-02-27 | 2026-06-25 |  |  |  |  |  |  |  |
|  | 6 | **Common Basement** |  | 2026-02-27 | 2026-06-25 |  |  |  |  |  |  |  |
| E-DD-AR-CB-10 |  | Drawings Preparation& Submission | 77d | 2026-02-27 A | 2026-06-19 A | Milestones-25, E-SD-AR35 | 100% |  | CSD-LKO-Design (5 Day + Holiday)-25 | Design Consultnacy Charges; Physical Progress [48400 h]; TATA Projects Ltd-25 |  |  |
| E-DD-AR-CB-15 |  | Peer Review Approval | 4d | 2026-06-22 A | 2026-06-25 A | E-DD-AR-CB-10 | 100% |  | CSD-LKO-Design (5 Day + Holiday)-25 | Design Consultnacy Charges [483386 INR]; Physical Progress [4960 h]; Peer Reviewer-25 | 483,386 | 483,386 |
|  | 1 | **Hotel 4 Star** |  | 2026-02-27 | 2026-06-25 |  |  |  |  |  |  |  |
| E-DD-AR-4S-10 |  | Drawings Preparation& Submission | 77d | 2026-02-27 A | 2026-06-19 A | Milestones-25, E-SD-AR10 | 100% |  | CSD-LKO-Design (5 Day + Holiday)-25 | Design Consultnacy Charges; Physical Progress [48400 h]; TATA Projects Ltd-25 |  |  |
| E-DD-AR-4S-15 |  | Peer Review Approval | 4d | 2026-06-22 A | 2026-06-25 A | E-DD-AR-4S-10 | 100% |  | CSD-LKO-Design (5 Day + Holiday)-25 | Design Consultnacy Charges [1392694 INR]; Physical Progress [4960 h]; Peer Reviewer-25 | 1,392,694 | 1,392,694 |
|  | 2 | **Hotel 3 Star** |  | 2026-02-27 | 2026-06-25 |  |  |  |  |  |  |  |
| E-DD-AR-3S-10 |  | Drawings Preparation& Submission | 77d | 2026-02-27 A | 2026-06-19 A | Milestones-25, E-SD-AR15 | 100% |  | CSD-LKO-Design (5 Day + Holiday)-25 | Design Consultnacy Charges; Physical Progress [48400 h]; TATA Projects Ltd-25 |  |  |
| E-DD-AR-3S-15 |  | Peer Review Approval | 4d | 2026-06-22 A | 2026-06-25 A | E-DD-AR-3S-10 | 100% |  | CSD-LKO-Design (5 Day + Holiday)-25 | Design Consultnacy Charges [1392694 INR]; Physical Progress [4960 h]; Peer Reviewer-25 | 1,392,694 | 1,392,694 |
|  | 3 | **Retail Block 1** |  | 2026-02-27 | 2026-06-25 |  |  |  |  |  |  |  |
| E-DD-AR-RB1-10 |  | Drawings Preparation& Submission | 77d | 2026-02-27 A | 2026-06-19 A | Milestones-25, E-SD-AR25 | 100% |  | CSD-LKO-Design (5 Day + Holiday)-25 | Design Consultnacy Charges; Physical Progress [48400 h]; TATA Projects Ltd-25 |  |  |
| E-DD-AR-RB1-15 |  | Peer Review Approval | 4d | 2026-06-22 A | 2026-06-25 A | E-DD-AR-RB1-10 | 100% |  | CSD-LKO-Design (5 Day + Holiday)-25 | Design Consultnacy Charges [1392694 INR]; Physical Progress [4960 h]; Peer Reviewer-25 | 1,392,694 | 1,392,694 |

| ID | WBS | Activity | Duration | Start | Finish | Predecessors | Complete | Planned start | Planned finish | Calendar | Resources | Cost | Actual cost |
| --- | --- | --- | --- | --- | --- | --- | --- | --- | --- | --- | --- | --- | --- |
|  | 4 | **Retail Block 2** |  | 2026-02-27 | 2026-06-25 |  |  |  |  |  |  |  |  |
| E-DD-AR-RB2-10 |  | Drawings Preparation& Submission | 77d | 2026-02-27 A | 2026-06-19 A | Milestones-25, E-SD-AR20 | 100% |  |  | CSD-LKO-Design (5 Day + Holiday)-25 | Design Consultnacy Charges; Physical Progress [48400 h]; TATA Projects Ltd-25 |  |  |
| E-DD-AR-RB2-15 |  | Peer Review Approval | 4d | 2026-06-22 A | 2026-06-25 A | E-DD-AR-RB2-10 | 100% |  |  | CSD-LKO-Design (5 Day + Holiday)-25 | Design Consultnacy Charges [1392694 INR]; Physical Progress [4960 h]; Peer Reviewer-25 | 1,392,694 | 1,392,694 |
|  | 5 | **Convention Center** |  | 2026-02-27 | 2026-06-25 |  |  |  |  |  |  |  |  |
| E-DD-AR-CC-10 |  | Drawings Preparation& Submission | 77d | 2026-02-27 A | 2026-06-19 A | Milestones-25, E-SD-AR30 | 100% |  |  | CSD-LKO-Design (5 Day + Holiday)-25 | Design Consultnacy Charges; Physical Progress [48400 h]; TATA Projects Ltd-25 |  |  |
| E-DD-AR-CC-15 |  | Peer Review Approval | 4d | 2026-06-22 A | 2026-06-25 A | E-DD-AR-CC-10 | 100% |  |  | CSD-LKO-Design (5 Day + Holiday)-25 | Design Consultnacy Charges [1392694 INR]; Physical Progress [4960 h]; Peer Reviewer-25 | 1,392,694 | 1,392,694 |
|  | 2 | **Structural** |  | 2026-02-27 | 2026-06-25 |  |  |  |  |  |  |  |  |
|  | 7 | **Foundation** |  | 2026-02-27 | 2026-05-22 |  |  |  |  |  |  |  |  |
| E-DD-ST-FN-10 |  | Drawings Preparation& Submission | 53d | 2026-02-27 A | 2026-05-16 A | Milestones-25, E-SD-ST40 | 100% | 2026-02-27 | 2026-05-15 | CSD-LKO-Design (5 Day + Holiday)-25 | Design Consultnacy Charges; Physical Progress [9930 h]; TATA Projects Ltd-25 |  |  |
| E-DD-ST-FN-15 |  | Peer Review Approval | 4d | 2026-05-19 A | 2026-05-22 A | E-DD-ST-FN-10 | 100% |  |  | CSD-LKO-Design (5 Day + Holiday)-25 | Design Consultnacy Charges; Physical Progress [9930 h]; Peer Reviewer-25 |  |  |
|  | 6 | **Common Basements** |  | 2026-02-27 | 2026-06-25 |  |  |  |  |  |  |  |  |
| E-DD-ST-CB-10 |  | Drawings Preparation& Submission | 77d | 2026-02-27 A | 2026-06-19 A | Milestones-25, E-SD-ST35 | 100% |  |  | CSD-LKO-Design (5 Day + Holiday)-25 | Design Consultnacy Charges; Physical Progress [18600 h]; TATA Projects Ltd-25 |  |  |
| E-DD-ST-CB-15 |  | Peer Review Approval | 4d | 2026-06-22 A | 2026-06-25 A | E-DD-ST-CB-10 | 100% |  |  | CSD-LKO-Design (5 Day + Holiday)-25 | Design Consultnacy Charges [422483 INR]; Physical Progress [9930 h]; Peer Reviewer-25 | 422,483 | 422,483 |
|  | 1 | **Hotel 4 Star** |  | 2026-02-27 | 2026-06-25 |  |  |  |  |  |  |  |  |
| E-DD-ST-4S-10 |  | Drawings Preparation& Submission | 77d | 2026-02-27 A | 2026-06-19 A | Milestones-25, E-SD-ST10 | 100% |  |  | CSD-LKO-Design (5 Day + Holiday)-25 | Design Consultnacy Charges; Physical Progress [48400 h]; TATA Projects Ltd-25 |  |  |
| E-DD-ST-4S-15 |  | Peer Review Approval | 4d | 2026-06-22 A | 2026-06-25 A | E-DD-ST-4S-10 | 100% |  |  | CSD-LKO-Design (5 Day + Holiday)-25 | Design Consultnacy Charges [483386 INR]; Physical Progress [4960 h]; Peer Reviewer-25 | 483,386 | 483,386 |
|  | 2 | **Hotel 3 Star** |  | 2026-02-27 | 2026-06-25 |  |  |  |  |  |  |  |  |
| E-DD-ST-3S-10 |  | Drawings Preparation& Submission | 77d | 2026-02-27 A | 2026-06-19 A | Milestones-25, E-SD-ST15 | 100% |  |  | CSD-LKO-Design (5 Day + Holiday)-25 | Design Consultnacy Charges; Physical Progress [48400 h]; TATA Projects Ltd-25 |  |  |
| E-DD-ST-3S-15 |  | Peer Review Approval | 4d | 2026-06-22 A | 2026-06-25 A | E-DD-ST-3S-10 | 100% |  |  | CSD-LKO-Design (5 Day + Holiday)-25 | Design Consultnacy Charges [483386 INR]; Physical Progress [4960 h]; Peer Reviewer-25 | 483,386 | 483,386 |
|  | 3 | **Retail Block 1** |  | 2026-02-27 | 2026-06-25 |  |  |  |  |  |  |  |  |
| E-DD-ST-RB1-10 |  | Drawings Preparation& Submission | 77d | 2026-02-27 A | 2026-06-19 A | Milestones-25, E-SD-ST25 | 100% |  |  | CSD-LKO-Design (5 Day + Holiday)-25 | Design Consultnacy Charges; Physical Progress [48400 h]; TATA Projects Ltd-25 |  |  |
| E-DD-ST-RB1-15 |  | Peer Review Approval | 4d | 2026-06-22 A | 2026-06-25 A | E-DD-ST-RB1-10 | 100% |  |  | CSD-LKO-Design (5 Day + Holiday)-25 | Design Consultnacy Charges [483386 INR]; Physical Progress [4960 h]; Peer Reviewer-25 | 483,386 | 483,386 |
|  | 4 | **Retail Block 2** |  | 2026-02-27 | 2026-06-25 |  |  |  |  |  |  |  |  |
| E-DD-ST-RB2-10 |  | Drawings Preparation& Submission | 77d | 2026-02-27 A | 2026-06-19 A | Milestones-25, E-SD-ST20 | 100% |  |  | CSD-LKO-Design (5 Day + Holiday)-25 | Design Consultnacy Charges; Physical Progress [48400 h]; TATA Projects Ltd-25 |  |  |
| E-DD-ST-RB2-15 |  | Peer Review Approval | 4d | 2026-06-22 A | 2026-06-25 A | E-DD-ST-RB2-10 | 100% |  |  | CSD-LKO-Design (5 Day + Holiday)-25 | Design Consultnacy Charges [483386 INR]; Physical Progress [4960 h]; Peer Reviewer-25 | 483,386 | 483,386 |

| ID | WBS | Activity | Duration | Start | Finish | Predecessors | Complete | Remaining | Planned start | Planned finish | Calendar | Resources | Cost | Actual cost |
| --- | --- | --- | --- | --- | --- | --- | --- | --- | --- | --- | --- | --- | --- | --- |
|  | 5 | **Convention Center** |  | 2026-02-27 | 2026-06-25 |  |  |  |  |  |  |  |  |  |
| E-DD-ST-CC-10 |  | Drawings Preparation& Submission | 77d | 2026-02-27 A | 2026-06-19 A | Milestones-25, E-SD-ST30 | 100% |  |  |  | CSD-LKO-Design (5 Day + Holiday)-25 | Design Consultnacy Charges; Physical Progress [48400 h]; TATA Projects Ltd-25 |  |  |
| E-DD-ST-CC-15 |  | Peer Review Approval | 4d | 2026-06-22 A | 2026-06-25 A | E-DD-ST-CC-10 | 100% |  |  |  | CSD-LKO-Design (5 Day + Holiday)-25 | Design Consultnacy Charges [483386 INR]; Physical Progress [4960 h]; Peer Reviewer-25 | 483,386 | 483,386 |
|  | 3 | **MEPF** |  | 2026-02-27 | 2026-10-06 |  |  |  |  |  |  |  |  |  |
|  | 6 | **Common Basement** |  | 2026-02-27 | 2026-10-06 |  |  |  |  |  |  |  |  |  |
| E-DD-MEP-CB-10 |  | Drawings Preparation& Submission | 151.05d | 2026-02-27 A | 2026-10-06 | Milestones-25, E-SD-MEP35 | 95% | 2.15d |  |  | CSD-LKO-Design (5 Day + Holiday)-25 | Design Consultnacy Charges; Physical Progress [53350 h]; TATA Projects Ltd-25 |  |  |
| E-DD-MEP-CB-15 |  | Peer Review Approval | 73.9d | 2026-06-20 A | 2026-10-05 | E-DD-MEP-CB-10 SS | 50% | 2d | 2026-06-22 | 2026-10-05 | CSD-LKO-Design (5 Day + Holiday)-25 | Design Consultnacy Charges [483386 INR]; Physical Progress [4960 h]; Peer Reviewer-25 | 483,386 | 470,303.83 |
|  | 1 | **Hotel 4 Star** |  | 2026-02-27 | 2026-10-06 |  |  |  |  |  |  |  |  |  |
| E-DD-MEP-4S-10 |  | Drawings Preparation& Submission | 151.05d | 2026-02-27 A | 2026-10-06 | Milestones-25, E-SD-MEP10 | 95% | 2.15d |  |  | CSD-LKO-Design (5 Day + Holiday)-25 | Design Consultnacy Charges; Physical Progress [53350 h]; TATA Projects Ltd-25 |  |  |
| E-DD-MEP-4S-15 |  | Peer Review Approval | 73.9d | 2026-06-20 A | 2026-10-05 | E-DD-MEP-4S-10 SS | 50% | 2d | 2026-06-22 | 2026-10-05 | CSD-LKO-Design (5 Day + Holiday)-25 | Design Consultnacy Charges [422483 INR]; Physical Progress [4960 h]; Peer Reviewer-25 | 422,483 | 411,049.09 |
|  | 2 | **Hotel 3 Star** |  | 2026-02-27 | 2026-10-06 |  |  |  |  |  |  |  |  |  |
| E-DD-MEP-3S-10 |  | Drawings Preparation& Submission | 151.05d | 2026-02-27 A | 2026-10-06 | Milestones-25, E-SD-MEP15 | 95% | 2.15d |  |  | CSD-LKO-Design (5 Day + Holiday)-25 | Design Consultnacy Charges; Physical Progress [53350 h]; TATA Projects Ltd-25 |  |  |
| E-DD-MEP-3S-15 |  | Peer Review Approval | 73.9d | 2026-06-20 A | 2026-10-05 | E-DD-MEP-3S-10 SS | 50% | 2d | 2026-06-22 | 2026-10-05 | CSD-LKO-Design (5 Day + Holiday)-25 | Design Consultnacy Charges [422483 INR]; Physical Progress [4960 h]; Peer Reviewer-25 | 422,483 | 411,049.09 |
|  | 3 | **Retail Block 1** |  | 2026-02-27 | 2026-10-06 |  |  |  |  |  |  |  |  |  |
| E-DD-MEP-RB1-10 |  | Drawings Preparation& Submission | 151.05d | 2026-02-27 A | 2026-10-06 | Milestones-25, E-SD-MEP25 | 95% | 2.15d |  |  | CSD-LKO-Design (5 Day + Holiday)-25 | Design Consultnacy Charges; Physical Progress [53350 h]; TATA Projects Ltd-25 |  |  |
| E-DD-MEP-RB1-15 |  | Peer Review Approval | 73.9d | 2026-06-20 A | 2026-10-05 | E-DD-MEP-RB1-10 SS | 50% | 2d | 2026-06-22 | 2026-10-05 | CSD-LKO-Design (5 Day + Holiday)-25 | Design Consultnacy Charges [422483 INR]; Physical Progress [4960 h]; Peer Reviewer-25 | 422,483 | 411,049.09 |
|  | 4 | **Retail Block 2** |  | 2026-02-27 | 2026-10-06 |  |  |  |  |  |  |  |  |  |
| E-DD-MEP-RB2-10 |  | Drawings Preparation& Submission | 151.05d | 2026-02-27 A | 2026-10-06 | Milestones-25, E-SD-MEP20 | 95% | 2.15d |  |  | CSD-LKO-Design (5 Day + Holiday)-25 | Design Consultnacy Charges; Physical Progress [53350 h]; TATA Projects Ltd-25 |  |  |
| E-DD-MEP-RB2-15 |  | Peer Review Approval | 73.9d | 2026-06-20 A | 2026-10-05 | E-DD-MEP-RB2-10 SS | 50% | 2d | 2026-06-22 | 2026-10-05 | CSD-LKO-Design (5 Day + Holiday)-25 | Design Consultnacy Charges [422483 INR]; Physical Progress [4960 h]; Peer Reviewer-25 | 422,483 | 411,049.09 |
|  | 5 | **Convention Center** |  | 2026-02-27 | 2026-10-06 |  |  |  |  |  |  |  |  |  |
| E-DD-MEP-CC-10 |  | Drawings Preparation& Submission | 151.05d | 2026-02-27 A | 2026-10-06 | Milestones-25, E-SD-MEP30 | 95% | 2.15d |  |  | CSD-LKO-Design (5 Day + Holiday)-25 | Design Consultnacy Charges; Physical Progress [53350 h]; TATA Projects Ltd-25 |  |  |
| E-DD-MEP-CC-15 |  | Peer Review Approval | 73.9d | 2026-06-20 A | 2026-10-05 | E-DD-MEP-CC-10 SS | 50% | 2d | 2026-06-22 | 2026-10-05 | CSD-LKO-Design (5 Day + Holiday)-25 | Design Consultnacy Charges [422483 INR]; Physical Progress [4960 h]; Peer Reviewer-25 | 422,483 | 411,049.09 |
|  | 5 | **Facade** |  | 2026-09-30 | 2027-01-14 |  |  |  |  |  |  |  |  |  |
|  | 1 | **Hotel 4 Star** |  | 2026-09-30 | 2027-01-14 |  |  |  |  |  |  |  |  |  |
| E-DD-F-4S-10 |  | Drawings Preparation& Submission | 64d | 2026-09-30 | 2027-01-04 | Milestones-25, E-SD-F10 |  |  |  |  | CSD-LKO-Design (5 Day + Holiday)-25 | Design Consultnacy Charges; Physical Progress [37220 h]; TATA Projects Ltd-25 |  |  |
| E-DD-F-4S-15 |  | Domain Expert Approval | 2d | 2027-01-04 | 2027-01-06 | E-DD-F-4S-10 |  |  |  |  | CSD-LKO-Design (5 Day + Holiday)-25 | Design Consultnacy Charges; Physical Progress [2480 h]; TATA Projects Ltd-25 |  |  |
| E-DD-F-4S-20 |  | Executive Consultant Approval | 2d | 2027-01-06 | 2027-01-08 | E-DD-F-4S-15 |  |  |  |  | CSD-LKO-Design (5 Day + Holiday)-25 | Design Consultnacy Charges; Physical Progress [2480 h]; TATA Projects Ltd-25 |  |  |
| E-DD-F-4S-25 |  | Peer Reviewer Approval | 2d | 2027-01-08 | 2027-01-12 | E-DD-F-4S-20 |  |  |  |  | CSD-LKO-Design (5 Day + Holiday)-25 | Design Consultnacy Charges; Physical Progress [2480 h]; Peer Reviewer-25 |  |  |
| E-DD-F-4S-30 |  | TPL Design Team Approval | 2d | 2027-01-12 | 2027-01-14 | E-DD-F-4S-25 |  |  |  |  | CSD-LKO-Design (5 Day + Holiday)-25 | Design Consultnacy Charges [268940 INR]; Physical Progress [2480 h]; TATA Projects Ltd-25 | 268,940 |  |

| ID | WBS | Activity | Duration | Start | Finish | Predecessors | Calendar | Resources | Cost |
| --- | --- | --- | --- | --- | --- | --- | --- | --- | --- |
|  | 2 | **Hotel 3 Star** |  | 2026-09-30 | 2027-01-14 |  |  |  |  |
| E-DD-F-3S-10 |  | Drawings Preparation& Submission | 64d | 2026-09-30 | 2027-01-04 | Milestones-25, E-SD-F15 | CSD-LKO-Design (5 Day + Holiday)-25 | Design Consultnacy Charges; Physical Progress [37220 h]; TATA Projects Ltd-25 |  |
| E-DD-F-3S-15 |  | Domain Expert Approval | 2d | 2027-01-04 | 2027-01-06 | E-DD-F-3S-10 | CSD-LKO-Design (5 Day + Holiday)-25 | Design Consultnacy Charges; Physical Progress [2480 h]; TATA Projects Ltd-25 |  |
| E-DD-F-3S-20 |  | Executive Consultant Approval | 2d | 2027-01-06 | 2027-01-08 | E-DD-F-3S-15 | CSD-LKO-Design (5 Day + Holiday)-25 | Design Consultnacy Charges; Physical Progress [2480 h]; TATA Projects Ltd-25 |  |
| E-DD-F-3S-25 |  | Peer Reviewer Approval | 2d | 2027-01-08 | 2027-01-12 | E-DD-F-3S-20 | CSD-LKO-Design (5 Day + Holiday)-25 | Design Consultnacy Charges; Physical Progress [2480 h]; Peer Reviewer-25 |  |
| E-DD-F-3S-30 |  | TPL Design Team Approval | 2d | 2027-01-12 | 2027-01-14 | E-DD-F-3S-25 | CSD-LKO-Design (5 Day + Holiday)-25 | Design Consultnacy Charges [268940 INR]; Physical Progress [2480 h]; TATA Projects Ltd-25 | 268,940 |
|  | 3 | **Retail Block 1** |  | 2026-09-30 | 2027-01-14 |  |  |  |  |
| E-DD-F-RB1-10 |  | Drawings Preparation& Submission | 64d | 2026-09-30 | 2027-01-04 | Milestones-25, E-SD-F25 | CSD-LKO-Design (5 Day + Holiday)-25 | Design Consultnacy Charges; Physical Progress [37220 h]; TATA Projects Ltd-25 |  |
| E-DD-F-RB1-15 |  | Domain Expert Approval | 2d | 2027-01-04 | 2027-01-06 | E-DD-F-RB1-10 | CSD-LKO-Design (5 Day + Holiday)-25 | Design Consultnacy Charges; Physical Progress [2480 h]; TATA Projects Ltd-25 |  |
| E-DD-F-RB1-20 |  | Executive Consultant Approval | 2d | 2027-01-06 | 2027-01-08 | E-DD-F-RB1-15 | CSD-LKO-Design (5 Day + Holiday)-25 | Design Consultnacy Charges; Physical Progress [2480 h]; TATA Projects Ltd-25 |  |
| E-DD-F-RB1-25 |  | Peer Reviewer Approval | 2d | 2027-01-08 | 2027-01-12 | E-DD-F-RB1-20 | CSD-LKO-Design (5 Day + Holiday)-25 | Design Consultnacy Charges; Physical Progress [2480 h]; Peer Reviewer-25 |  |
| E-DD-F-RB1-30 |  | TPL Design Team Approval | 2d | 2027-01-12 | 2027-01-14 | E-DD-F-RB1-25 | CSD-LKO-Design (5 Day + Holiday)-25 | Design Consultnacy Charges [268940 INR]; Physical Progress [2480 h]; TATA Projects Ltd-25 | 268,940 |
|  | 4 | **Retail Block 2** |  | 2026-09-30 | 2027-01-14 |  |  |  |  |
| E-DD-F-RB2-10 |  | Drawings Preparation& Submission | 64d | 2026-09-30 | 2027-01-04 | Milestones-25, E-SD-F20 | CSD-LKO-Design (5 Day + Holiday)-25 | Design Consultnacy Charges; Physical Progress [37220 h]; TATA Projects Ltd-25 |  |
| E-DD-F-RB2-15 |  | Domain Expert Approval | 2d | 2027-01-04 | 2027-01-06 | E-DD-F-RB2-10 | CSD-LKO-Design (5 Day + Holiday)-25 | Design Consultnacy Charges; Physical Progress [2480 h]; TATA Projects Ltd-25 |  |
| E-DD-F-RB2-20 |  | Executive Consultant Approval | 2d | 2027-01-06 | 2027-01-08 | E-DD-F-RB2-15 | CSD-LKO-Design (5 Day + Holiday)-25 | Design Consultnacy Charges; Physical Progress [2480 h]; TATA Projects Ltd-25 |  |
| E-DD-F-RB2-25 |  | Peer Reviewer Approval | 2d | 2027-01-08 | 2027-01-12 | E-DD-F-RB2-20 | CSD-LKO-Design (5 Day + Holiday)-25 | Design Consultnacy Charges; Physical Progress [2480 h]; Peer Reviewer-25 |  |
| E-DD-F-RB2-30 |  | TPL Design Team Approval | 2d | 2027-01-12 | 2027-01-14 | E-DD-F-RB2-25 | CSD-LKO-Design (5 Day + Holiday)-25 | Design Consultnacy Charges [268940 INR]; Physical Progress [2480 h]; TATA Projects Ltd-25 | 268,940 |
|  | 5 | **Convention Center** |  | 2026-09-30 | 2027-01-14 |  |  |  |  |
| E-DD-F-CC-10 |  | Drawings Preparation& Submission | 64d | 2026-09-30 | 2027-01-04 | Milestones-25, E-SD-F30 | CSD-LKO-Design (5 Day + Holiday)-25 | Design Consultnacy Charges; Physical Progress [37220 h]; TATA Projects Ltd-25 |  |
| E-DD-F-CC-15 |  | Domain Expert Approval | 2d | 2027-01-04 | 2027-01-06 | E-DD-F-CC-10 | CSD-LKO-Design (5 Day + Holiday)-25 | Design Consultnacy Charges; Physical Progress [2480 h]; TATA Projects Ltd-25 |  |
| E-DD-F-CC-20 |  | Executive Consultant Approval | 2d | 2027-01-06 | 2027-01-08 | E-DD-F-CC-15 | CSD-LKO-Design (5 Day + Holiday)-25 | Design Consultnacy Charges; Physical Progress [2480 h]; TATA Projects Ltd-25 |  |
| E-DD-F-CC-25 |  | Peer Reviewer Approval | 2d | 2027-01-08 | 2027-01-12 | E-DD-F-CC-20 | CSD-LKO-Design (5 Day + Holiday)-25 | Design Consultnacy Charges; Physical Progress [2480 h]; Peer Reviewer-25 |  |
| E-DD-F-CC-30 |  | TPL Design Team Approval | 2d | 2027-01-12 | 2027-01-14 | E-DD-F-CC-25 | CSD-LKO-Design (5 Day + Holiday)-25 | Design Consultnacy Charges [268940 INR]; Physical Progress [2480 h]; TATA Projects Ltd-25 | 268,940 |

| ID | WBS | Activity | Duration | Start | Finish | Predecessors | Complete | Remaining | Planned start | Planned finish | Calendar | Resources | Cost | Actual cost |
| --- | --- | --- | --- | --- | --- | --- | --- | --- | --- | --- | --- | --- | --- | --- |
|  | 4 | **ID** |  | 2027-06-17 | 2027-09-08 |  |  |  |  |  |  |  |  |  |
|  | 3 | **Office & Retail** |  | 2027-06-17 | 2027-08-16 |  |  |  |  |  |  |  |  |  |
| E-DD-ID-R&O-10 |  | Drawings Preparation& Submission | 34d | 2027-06-17 | 2027-08-04 | Milestones-25, E-SD-ID10, Mock Up-ID_R&O-D-20 FF+20d |  |  |  |  | CSD-LKO-Design (5 Day + Holiday)-25 | Design Consultnacy Charges; Physical Progress [42180 h]; TATA Projects Ltd-25 |  |  |
| E-DD-ID-R&O-15 |  | Domain Expert Approval | 2d | 2027-08-04 | 2027-08-06 | E-DD-ID-R&O-10 |  |  |  |  | CSD-LKO-Design (5 Day + Holiday)-25 | Design Consultnacy Charges; Physical Progress [2480 h]; TATA Projects Ltd-25 |  |  |
| E-DD-ID-R&O-20 |  | Executive Consultant Approval | 2d | 2027-08-06 | 2027-08-10 | E-DD-ID-R&O-15 |  |  |  |  | CSD-LKO-Design (5 Day + Holiday)-25 | Design Consultnacy Charges; Physical Progress [2480 h]; TATA Projects Ltd-25 |  |  |
| E-DD-ID-R&O-25 |  | Peer Reviewer Approval | 2d | 2027-08-10 | 2027-08-12 | E-DD-ID-R&O-20 |  |  |  |  | CSD-LKO-Design (5 Day + Holiday)-25 | Design Consultnacy Charges; Physical Progress [2480 h]; Peer Reviewer-25 |  |  |
| E-DD-ID-R&O-30 |  | TPL Design Team Approval | 2d | 2027-08-12 | 2027-08-16 | E-DD-ID-R&O-25 |  |  |  |  | CSD-LKO-Design (5 Day + Holiday)-25 | Design Consultnacy Charges [628467 INR]; Physical Progress [2480 h]; TATA Projects Ltd-25 | 628,467 |  |
|  | 4 | **Hotel & Convention center** |  | 2027-06-21 | 2027-09-08 |  |  |  |  |  |  |  |  |  |
| E-DD-ID-H&CC-10 |  | Drawings Preparation& Submission | 50d | 2027-06-21 | 2027-08-27 | Milestones-25, E-SD-ID15, Mock Up-ID_H&CC-D-20 FF+20d |  |  |  |  | CSD-LKO-Design (5 Day + Holiday)-25 | Design Consultnacy Charges; Physical Progress [62040 h]; TATA Projects Ltd-25 |  |  |
| E-DD-ID-H&CC-15 |  | Domain Expert Approval | 2d | 2027-08-30 | 2027-08-31 | E-DD-ID-H&CC-10 |  |  |  |  | CSD-LKO-Design (5 Day + Holiday)-25 | Design Consultnacy Charges; Physical Progress [2480 h]; TATA Projects Ltd-25 |  |  |
| E-DD-ID-H&CC-20 |  | Executive Consultant Approval | 2d | 2027-09-01 | 2027-09-02 | E-DD-ID-H&CC-15 |  |  |  |  | CSD-LKO-Design (5 Day + Holiday)-25 | Design Consultnacy Charges; Physical Progress [2480 h]; TATA Projects Ltd-25 |  |  |
| E-DD-ID-H&CC-25 |  | Peer Reviewer Approval | 2d | 2027-09-03 | 2027-09-06 | E-DD-ID-H&CC-20 |  |  |  |  | CSD-LKO-Design (5 Day + Holiday)-25 | Design Consultnacy Charges; Physical Progress [2480 h]; Peer Reviewer-25 |  |  |
| E-DD-ID-H&CC-30 |  | TPL Design Team Approval | 2d | 2027-09-07 | 2027-09-08 | E-DD-ID-H&CC-25 |  |  |  |  | CSD-LKO-Design (5 Day + Holiday)-25 | Design Consultnacy Charges [3169009 INR]; Physical Progress [2480 h]; TATA Projects Ltd-25 | 3,169,009 |  |
|  | 6 | **Misc** |  | 2026-04-01 | 2027-09-08 |  |  |  |  |  |  |  |  |  |
|  | 1 | **Landscape** |  | 2026-06-11 | 2026-10-22 |  |  |  |  |  |  |  |  |  |
| E-DD-Misc-LS-10 |  | Drawings Preparation& Submission | 92.4d | 2026-06-11 A | 2026-10-22 | Milestones-25, E-SD-Misc10 | 46% | 13.5d |  |  | CSD-LKO-Design (5 Day + Holiday)-25 | Design Consultnacy Charges; Physical Progress [31020 h]; TATA Projects Ltd-25 |  |  |
| E-DD-Misc-LS-15 |  | Domain Expert Approval | 69.98d | 2026-06-25 A | 2026-10-01 | E-DD-Misc-LS-10 SS | 46% | 1.08d |  |  | CSD-LKO-Design (5 Day + Holiday)-25 | Design Consultnacy Charges; Physical Progress [2480 h]; TATA Projects Ltd-25 |  |  |
| E-DD-Misc-LS-20 |  | Executive Consultant Approval | 69.98d | 2026-06-25 A | 2026-10-01 | E-DD-Misc-LS-15 SS | 46% | 1.08d |  |  | CSD-LKO-Design (5 Day + Holiday)-25 | Design Consultnacy Charges; Physical Progress [2480 h]; TATA Projects Ltd-25 |  |  |
| E-DD-Misc-LS-25 |  | Peer Reviewer Approval | 67.98d | 2026-06-27 A | 2026-10-01 | E-DD-Misc-LS-20 SS | 46% | 1.08d | 2026-06-29 | 2026-10-01 | CSD-LKO-Design (5 Day + Holiday)-25 | Design Consultnacy Charges; Physical Progress [2480 h]; Peer Reviewer-25 |  |  |
| E-DD-Misc-LS-30 |  | TPL Design Team Approval | 66.98d | 2026-06-30 A | 2026-10-01 | E-DD-Misc-LS-25 SS | 46% | 1.08d |  |  | CSD-LKO-Design (5 Day + Holiday)-25 | Design Consultnacy Charges [2255344 INR]; Physical Progress [2480 h]; TATA Projects Ltd-25 | 2,255,344 | 2,218,978.35 |
|  | 2 | **Traffic** |  | 2026-05-08 | 2026-11-27 |  |  |  |  |  |  |  |  |  |
| E-DD-Misc-TR-10 |  | Drawings Preparation& Submission | 113.65d | 2026-05-08 A | 2026-10-19 | Milestones-25, E-SD-Misc15 | 75% | 11.75d |  |  | CSD-LKO-Design (5 Day + Holiday)-25 | Design Consultnacy Charges; Physical Progress [58300 h]; TATA Projects Ltd-25 |  |  |
| E-DD-Misc-TR-15 |  | Domain Expert Approval | 2d | 2026-10-19 | 2026-10-22 | E-DD-Misc-TR-10 |  |  |  |  | CSD-LKO-Design (5 Day + Holiday)-25 | Design Consultnacy Charges; Physical Progress [2480 h]; TATA Projects Ltd-25 |  |  |
| E-DD-Misc-TR-20 |  | Executive Consultant Approval | 2d | 2026-10-22 | 2026-10-26 | E-DD-Misc-TR-15 |  |  |  |  | CSD-LKO-Design (5 Day + Holiday)-25 | Design Consultnacy Charges; Physical Progress [2480 h]; TATA Projects Ltd-25 |  |  |
| E-DD-Misc-TR-25 |  | Peer Reviewer Approval | 2d | 2026-10-26 | 2026-10-28 | E-DD-Misc-TR-20 |  |  |  |  | CSD-LKO-Design (5 Day + Holiday)-25 | Design Consultnacy Charges; Physical Progress [2480 h]; Peer Reviewer-25 |  |  |
| E-DD-Misc-TR-30 |  | TPL Design Team Approval | 2d | 2026-10-28 | 2026-10-30 | E-DD-Misc-TR-25 |  |  |  |  | CSD-LKO-Design (5 Day + Holiday)-25 | Design Consultnacy Charges [454781 INR]; Physical Progress [2480 h]; TATA Projects Ltd-25 | 454,781 |  |
| E-DD-Misc-TR-35 |  | Carrying Out Traffic Impact Study | 20d | 2026-10-30 | 2026-11-27 | E-DD-Misc-TR-30 |  |  |  |  | CSD-LKO-Design (5 Day + Holiday)-25 | Design Consultnacy Charges [28256749 INR]; Physical Progress [24810 h]; TATA Projects Ltd-25 | 28,256,749 |  |

| ID | WBS | Activity | Duration | Start | Finish | Predecessors | Complete | Remaining | Planned start | Planned finish | Calendar | Resources | Cost |
| --- | --- | --- | --- | --- | --- | --- | --- | --- | --- | --- | --- | --- | --- |
|  | 3 | **Kitchen/BOH** |  | 2026-05-08 | 2026-10-29 |  |  |  |  |  |  |  |  |
| E-DD-Misc-Kitchen-10 |  | Drawings Preparation& Submission | 112.4d | 2026-05-08 A | 2026-10-16 | Milestones-25, E-SD-Misc20 | 75% | 10.5d |  |  | CSD-LKO-Design (5 Day + Holiday)-25 | Design Consultnacy Charges; Physical Progress [52110 h]; TATA Projects Ltd-25 |  |
| E-DD-Misc-Kitchen-15 |  | Domain Expert Approval | 2d | 2026-10-16 | 2026-10-21 | E-DD-Misc-Kitchen-10 |  |  |  |  | CSD-LKO-Design (5 Day + Holiday)-25 | Design Consultnacy Charges; Physical Progress [2480 h]; TATA Projects Ltd-25 |  |
| E-DD-Misc-Kitchen-20 |  | Executive Consultant Approval | 2d | 2026-10-21 | 2026-10-23 | E-DD-Misc-Kitchen-15 |  |  |  |  | CSD-LKO-Design (5 Day + Holiday)-25 | Design Consultnacy Charges; Physical Progress [2480 h]; TATA Projects Ltd-25 |  |
| E-DD-Misc-Kitchen-25 |  | Peer Reviewer Approval | 2d | 2026-10-23 | 2026-10-27 | E-DD-Misc-Kitchen-20 |  |  |  |  | CSD-LKO-Design (5 Day + Holiday)-25 | Design Consultnacy Charges; Physical Progress [2480 h]; Peer Reviewer-25 |  |
| E-DD-Misc-Kitchen-30 |  | TPL Design Team Approval | 2d | 2026-10-27 | 2026-10-29 | E-DD-Misc-Kitchen-25 |  |  |  |  | CSD-LKO-Design (5 Day + Holiday)-25 | Design Consultnacy Charges [821009 INR]; Physical Progress [2480 h]; TATA Projects Ltd-25 | 821,009 |
|  | 4 | **Vertical Transport** |  | 2026-04-01 | 2026-09-19 |  |  |  |  |  |  |  |  |
| E-DD-Misc-VT-10 |  | Drawings Preparation& Submission | 14d | 2026-04-01 A | 2026-04-21 A | Milestones-25, E-SD-Misc25 | 100% |  |  |  | CSD-LKO-Design (5 Day + Holiday)-25 | Design Consultnacy Charges; Physical Progress [43420 h]; TATA Projects Ltd-25 |  |
| E-DD-Misc-VT-15 |  | Domain Expert Approval | 3d | 2026-04-22 A | 2026-04-24 A | E-DD-Misc-VT-10 | 100% |  |  |  | CSD-LKO-Design (5 Day + Holiday)-25 | Design Consultnacy Charges; Physical Progress [2480 h]; TATA Projects Ltd-25 |  |
| E-DD-Misc-VT-20 |  | Executive Consultant Approval | 3d | 2026-04-24 A | 2026-04-28 A | E-DD-Misc-VT-15 | 100% |  |  |  | CSD-LKO-Design (5 Day + Holiday)-25 | Design Consultnacy Charges; Physical Progress [2480 h]; TATA Projects Ltd-25 |  |
| E-DD-Misc-VT-25 |  | Peer Reviewer Approval | 2d | 2026-04-29 A | 2026-04-30 A | E-DD-Misc-VT-20 | 100% |  |  |  | CSD-LKO-Design (5 Day + Holiday)-25 | Design Consultnacy Charges; Physical Progress [2480 h]; Peer Reviewer-25 |  |
| E-DD-Misc-VT-30 |  | TPL Design Team Approval | 98d | 2026-05-04 A | 2026-09-19 A | E-DD-Misc-VT-25 | 100% |  | 2026-05-04 | 2026-09-18 | CSD-LKO-Design (5 Day + Holiday)-25 | Design Consultnacy Charges; Physical Progress [2480 h]; TATA Projects Ltd-25 |  |
|  | 5 | **Lighting** |  | 2026-05-03 | 2027-09-08 |  |  |  |  |  |  |  |  |
| E-DD-Misc-Lighting-10 |  | Drawings Preparation& Submission | 335d | 2026-05-03 A | 2027-08-27 | Milestones-25, E-SD-Misc30, E-DD-ID-H&CC-10 FF | 50% | 12.5d | 2026-05-04 | 2027-08-27 | CSD-LKO-Design (5 Day + Holiday)-25 | Design Consultnacy Charges; Physical Progress [31020 h]; TATA Projects Ltd-25 |  |
| E-DD-Misc-Lighting-15 |  | Domain Expert Approval | 2d | 2027-08-30 | 2027-08-31 | E-DD-Misc-Lighting-10 |  |  |  |  | CSD-LKO-Design (5 Day + Holiday)-25 | Design Consultnacy Charges; Physical Progress [2480 h]; TATA Projects Ltd-25 |  |
| E-DD-Misc-Lighting-20 |  | Executive Consultant Approval | 2d | 2027-09-01 | 2027-09-02 | E-DD-Misc-Lighting-15 |  |  |  |  | CSD-LKO-Design (5 Day + Holiday)-25 | Design Consultnacy Charges; Physical Progress [2480 h]; TATA Projects Ltd-25 |  |
| E-DD-Misc-Lighting-25 |  | Peer Reviewer Approval | 2d | 2027-09-03 | 2027-09-06 | E-DD-Misc-Lighting-20 |  |  |  |  | CSD-LKO-Design (5 Day + Holiday)-25 | Design Consultnacy Charges; Physical Progress [2480 h]; Peer Reviewer-25 |  |
| E-DD-Misc-Lighting-30 |  | TPL Design Team Approval | 2d | 2027-09-07 | 2027-09-08 | E-DD-Misc-Lighting-25 |  |  |  |  | CSD-LKO-Design (5 Day + Holiday)-25 | Design Consultnacy Charges [392781 INR]; Physical Progress [2480 h]; TATA Projects Ltd-25 | 392,781 |
|  | 6 | **Signage** |  | 2026-09-30 | 2026-11-18 |  |  |  |  |  |  |  |  |
| E-DD-Misc-Signage-10 |  | Drawings Preparation& Submission | 25d | 2026-09-30 | 2026-11-06 | Milestones-25, E-SD-Misc35 |  |  |  |  | CSD-LKO-Design (5 Day + Holiday)-25 | Design Consultnacy Charges; Physical Progress [31020 h]; TATA Projects Ltd-25 |  |
| E-DD-Misc-Signage-15 |  | Domain Expert Approval | 2d | 2026-11-06 | 2026-11-10 | E-DD-Misc-Signage-10 |  |  |  |  | CSD-LKO-Design (5 Day + Holiday)-25 | Design Consultnacy Charges; Physical Progress [2480 h]; TATA Projects Ltd-25 |  |
| E-DD-Misc-Signage-20 |  | Executive Consultant Approval | 2d | 2026-11-10 | 2026-11-12 | E-DD-Misc-Signage-15 |  |  |  |  | CSD-LKO-Design (5 Day + Holiday)-25 | Design Consultnacy Charges; Physical Progress [2480 h]; TATA Projects Ltd-25 |  |
| E-DD-Misc-Signage-25 |  | Peer Reviewer Approval | 2d | 2026-11-12 | 2026-11-16 | E-DD-Misc-Signage-20 |  |  |  |  | CSD-LKO-Design (5 Day + Holiday)-25 | Design Consultnacy Charges; Physical Progress [2480 h]; Peer Reviewer-25 |  |
| E-DD-Misc-Signage-30 |  | TPL Design Team Approval | 2d | 2026-11-16 | 2026-11-18 | E-DD-Misc-Signage-25 |  |  |  |  | CSD-LKO-Design (5 Day + Holiday)-25 | Design Consultnacy Charges [385870 INR]; Physical Progress [2480 h]; TATA Projects Ltd-25 | 385,870 |

| ID | WBS | Activity | Duration | Start | Finish | Predecessors | Complete | Remaining | Planned start | Planned finish | Calendar | Resources | Cost | Actual cost |
| --- | --- | --- | --- | --- | --- | --- | --- | --- | --- | --- | --- | --- | --- | --- |
|  | 7 | **IT/Secutity** |  | 2026-07-26 | 2027-08-27 |  |  |  |  |  |  |  |  |  |
| E-DD-Misc-IT/Security-10 |  | Drawings Preparation& Submission | 276d | 2026-07-26 A | 2027-08-27 | Milestones-25, E-SD-Misc40, E-DD-ID-H&CC-10 FF | 84% | 5.72d | 2026-07-27 | 2027-08-27 | CSD-LKO-Design (5 Day + Holiday)-25 | Design Consultnacy Charges; Physical Progress [43420 h]; TATA Projects Ltd-25 |  |  |
| E-DD-Misc-IT/Security-15 |  | Domain Expert Approval | 235.6d | 2026-09-13 A | 2027-08-20 | E-DD-Misc-IT/Security-10 SS | 84% | 0.33d | 2026-09-15 | 2027-08-20 | CSD-LKO-Design (5 Day + Holiday)-25 | Design Consultnacy Charges; Physical Progress [2480 h]; TATA Projects Ltd-25 |  |  |
| E-DD-Misc-IT/Security-20 |  | Executive Consultant Approval | 235.6d | 2026-09-15 A | 2027-08-20 | E-DD-Misc-IT/Security-15 SS | 84% | 0.33d |  |  | CSD-LKO-Design (5 Day + Holiday)-25 | Design Consultnacy Charges; Physical Progress [2480 h]; TATA Projects Ltd-25 |  |  |
| E-DD-Misc-IT/Security-25 |  | Peer Reviewer Approval | 233.6d | 2026-09-17 A | 2027-08-20 | E-DD-Misc-IT/Security-20 SS | 84% | 0.33d |  |  | CSD-LKO-Design (5 Day + Holiday)-25 | Design Consultnacy Charges; Physical Progress [2480 h]; Peer Reviewer-25 |  |  |
| E-DD-Misc-IT/Security-30 |  | TPL Design Team Approval | 233.28d | 2026-09-21 A | 2027-08-24 | E-DD-Misc-IT/Security-25 SS |  | 2d |  |  | CSD-LKO-Design (5 Day + Holiday)-25 | Design Consultnacy Charges [755090 INR]; Physical Progress [2480 h]; TATA Projects Ltd-25 | 755,090 | 748,616.23 |
|  | 8 | **Accoustic & AV** |  | 2027-07-19 | 2027-09-08 |  |  |  |  |  |  |  |  |  |
| E-DD-Misc-Accoustic/AV-10 |  | Drawings Preparation& Submission | 30d | 2027-07-19 | 2027-08-27 | Milestones-25, E-SD-Misc45, E-DD-ID-H&CC-10 FF |  |  |  |  | CSD-LKO-Design (5 Day + Holiday)-25 | Design Consultnacy Charges; Physical Progress [37220 h]; TATA Projects Ltd-25 |  |  |
| E-DD-Misc-Accoustic/AV-15 |  | Domain Expert Approval | 2d | 2027-08-30 | 2027-08-31 | E-DD-Misc-Accoustic/AV-10 |  |  |  |  | CSD-LKO-Design (5 Day + Holiday)-25 | Design Consultnacy Charges; Physical Progress [2480 h]; TATA Projects Ltd-25 |  |  |
| E-DD-Misc-Accoustic/AV-20 |  | Executive Consultant Approval | 2d | 2027-09-01 | 2027-09-02 | E-DD-Misc-Accoustic/AV-15 |  |  |  |  | CSD-LKO-Design (5 Day + Holiday)-25 | Design Consultnacy Charges; Physical Progress [2480 h]; TATA Projects Ltd-25 |  |  |
| E-DD-Misc-Accoustic/AV-25 |  | Peer Reviewer Approval | 2d | 2027-09-03 | 2027-09-06 | E-DD-Misc-Accoustic/AV-20 |  |  |  |  | CSD-LKO-Design (5 Day + Holiday)-25 | Design Consultnacy Charges; Physical Progress [2480 h]; Peer Reviewer-25 |  |  |
| E-DD-Misc-Accoustic/AV-30 |  | TPL Design Team Approval | 2d | 2027-09-07 | 2027-09-08 | E-DD-Misc-Accoustic/AV-25 |  |  |  |  | CSD-LKO-Design (5 Day + Holiday)-25 | Design Consultnacy Charges [1392694 INR]; Physical Progress [2480 h]; TATA Projects Ltd-25 | 1,392,694 |  |
|  | 9 | **Green Building** |  | 2026-02-16 | 2026-12-02 |  |  |  |  |  |  |  |  |  |
| E-DD-GB-10 |  | Target Points | 86d | 2026-02-16 A | 2026-06-19 A | E-Consultant-85 | 100% |  |  |  | CSD-LKO-Design (5 Day + Holiday)-25 | Design Consultnacy Charges [143085 INR]; Physical Progress [24810 h]; TATA Projects Ltd-25 | 143,085 | 143,085 |
| E-DD-GB-20 |  | App Energy Model | 115.4d | 2026-06-19 A | 2026-12-02 | E-DD-GB-15 SS | 15% | 42.5d |  |  | CSD-LKO-Design (5 Day + Holiday)-25 | Design Consultnacy Charges [1671237 INR]; Physical Progress [62040 h]; TATA Projects Ltd-25 | 1,671,237 | 1,055,746.77 |
| E-DD-GB-15 |  | Agency Submission | 78.2d | 2026-06-20 A | 2026-10-12 | E-DD-GB-10 | 37% | 6.3d | 2026-06-22 | 2026-10-12 | CSD-LKO-Design (5 Day + Holiday)-25 | Design Consultnacy Charges [214626 INR]; Physical Progress [12410 h]; TATA Projects Ltd-25 | 214,626 | 197,335.16 |
|  | 8 | **Swimming Pool/Water Body** |  | 2026-06-23 | 2027-02-16 |  |  |  |  |  |  |  |  |  |
| E-DD-SP/WB-10 |  | Preliminary Description & Scheme | 94.9d | 2026-06-23 A | 2026-11-05 | E-Consultant-50 | 20% | 24d |  |  | CSD-LKO-Design (5 Day + Holiday)-25 | Design Consultnacy Charges [371250 INR]; Physical Progress [37220 h]; TATA Projects Ltd-25 | 371,250 | 277,361.7 |
| E-DD-SP/WB-15 |  | System Routing | 50d | 2026-11-05 | 2027-01-18 | E-DD-SP/WB-10 |  |  |  |  | CSD-LKO-Design (5 Day + Holiday)-25 | Design Consultnacy Charges [247500 INR]; Physical Progress [62040 h]; TATA Projects Ltd-25 | 247,500 |  |
| E-DD-SP/WB-20 |  | Tech Specification | 20d | 2027-01-18 | 2027-02-16 | E-DD-SP/WB-15 |  |  |  |  | CSD-LKO-Design (5 Day + Holiday)-25 | Design Consultnacy Charges [247500 INR]; Physical Progress [24810 h]; TATA Projects Ltd-25 | 247,500 |  |
|  | 7 | **Tender (Revised BOQ)** |  | 2026-05-04 | 2027-10-20 |  |  |  |  |  |  |  |  |  |
| E-Tender-10 |  | Vertical Transport | 92d | 2026-05-04 A | 2026-09-10 A | E-DD-Misc-VT-10 | 100% |  | 2026-05-04 | 2026-09-09 | CSD-LKO-Design (5 Day + Holiday)-25 | Design Consultnacy Charges [496967 INR]; Physical Progress [37870 h]; TATA Projects Ltd-25 | 496,967 | 496,967 |
| E-Tender-20 |  | Architecture | 4d | 2026-09-30 | 2026-10-07 | E-DD-AR-CB-15, E-DD-AR-CC-15, E-DD-AR-RB2-15, E-DD-AR-RB1-15, E-DD-AR-3S-15, E-DD-AR-4S-15 |  |  |  |  | CSD-LKO-Design (5 Day + Holiday)-25 | Design Consultnacy Charges [3698606 INR]; Physical Progress [10100 h]; TATA Projects Ltd-25 | 3,698,606 |  |
| E-Tender-25 |  | Structure | 4d | 2026-09-30 | 2026-10-07 | E-DD-ST-4S-15, E-DD-ST-3S-15, E-DD-ST-RB1-15, E-DD-ST-RB2-15, E-DD-ST-CC-15, E-DD-ST-CB-15 |  |  |  |  | CSD-LKO-Design (5 Day + Holiday)-25 | Design Consultnacy Charges [1279425 INR]; Physical Progress [10100 h]; TATA Projects Ltd-25 | 1,279,425 |  |
| E-Tender-45 |  | Facade | 12d | 2026-09-30 | 2026-10-19 | E-SD-F30, E-SD-F25, E-SD-F20, E-SD-F15, E-SD-F10 |  |  |  |  | CSD-LKO-Design (5 Day + Holiday)-25 | Design Consultnacy Charges [1680874 INR]; Physical Progress [30300 h]; TATA Projects Ltd-25 | 1,680,874 |  |
| E-Tender-30 |  | Landscape | 9d | 2026-10-01 | 2026-10-15 | E-DD-Misc-LS-30 |  |  |  |  | CSD-LKO-Design (5 Day + Holiday)-25 | Design Consultnacy Charges [2255344 INR]; Physical Progress [22730 h]; TATA Projects Ltd-25 | 2,255,344 |  |
| E-Tender-35 |  | MEPF | 4d | 2026-10-05 | 2026-10-09 | E-DD-MEP-4S-15, E-DD-MEP-3S-15, E-DD-MEP-RB1-15, E-DD-MEP-RB2-15, E-DD-MEP-CC-15, E-DD-MEP-CB-15 |  |  |  |  | CSD-LKO-Design (5 Day + Holiday)-25 | Design Consultnacy Charges [2534899 INR]; Physical Progress [10100 h]; TATA Projects Ltd-25 | 2,534,899 |  |
| E-Tender-40 |  | Kitchen/BOH | 9d | 2026-10-29 | 2026-11-11 | E-DD-Misc-Kitchen-30 |  |  |  |  | CSD-LKO-Design (5 Day + Holiday)-25 | Design Consultnacy Charges [1368348 INR]; Physical Progress [22730 h]; TATA Projects Ltd-25 | 1,368,348 |  |
| E-Tender-15 |  | Signage | 9d | 2026-11-06 | 2026-11-19 | E-DD-Misc-Signage-10 |  |  |  |  | CSD-LKO-Design (5 Day + Holiday)-25 | Design Consultnacy Charges [385870 INR]; Physical Progress [22730 h]; TATA Projects Ltd-25 | 385,870 |  |
| E-Tender-50 |  | ID - Office & Retail | 12d | 2027-08-16 | 2027-09-01 | E-DD-ID-R&O-30 |  |  |  |  | CSD-LKO-Design (5 Day + Holiday)-25 | Design Consultnacy Charges [571333 INR]; Physical Progress [30300 h]; TATA Projects Ltd-25 | 571,333 |  |
| E-Tender-55 |  | Lighting | 30d | 2027-09-09 | 2027-10-20 | E-DD-Misc-Lighting-10, E-Tender-70 FF |  |  |  |  | CSD-LKO-Design (5 Day + Holiday)-25 | Design Consultnacy Charges [441927 INR]; Physical Progress [75760 h]; TATA Projects Ltd-25 | 441,927 |  |
| E-Tender-60 |  | IT/Secutity | 30d | 2027-09-09 | 2027-10-20 | E-DD-Misc-IT/Security-30, E-Tender-70 FF |  |  |  |  | CSD-LKO-Design (5 Day + Holiday)-25 | Design Consultnacy Charges [1258483 INR]; Physical Progress [75760 h]; TATA Projects Ltd-25 | 1,258,483 |  |
| E-Tender-65 |  | Accoustic & AV | 30d | 2027-09-09 | 2027-10-20 | E-DD-Misc-Accoustic/AV-30, E-Tender-70 FF |  |  |  |  | CSD-LKO-Design (5 Day + Holiday)-25 | Design Consultnacy Charges [654637 INR]; Physical Progress [75760 h]; TATA Projects Ltd-25 | 654,637 |  |
| E-Tender-70 |  | ID - Hotel & Convention center | 30d | 2027-09-09 | 2027-10-20 | E-DD-ID-H&CC-30 |  |  |  |  | CSD-LKO-Design (5 Day + Holiday)-25 | Design Consultnacy Charges [2880917 INR]; Physical Progress [75760 h]; TATA Projects Ltd-25 | 2,880,917 |  |

Notes:
- E-DD-GB-20: Note: Dependency on Facade

| ID | WBS | Activity | Duration | Start | Finish | Predecessors | Complete | Remaining | Calendar | Resources | Cost | Actual cost |
| --- | --- | --- | --- | --- | --- | --- | --- | --- | --- | --- | --- | --- |
|  | 2 | **GFCs** |  | 2026-02-27 | 2027-12-16 |  |  |  |  |  |  |  |
|  | 1 | **Architectural** |  | 2026-02-27 | 2027-03-29 |  |  |  |  |  |  |  |
|  | 2 | **Common Basements** |  | 2026-02-27 | 2026-10-07 |  |  |  |  |  |  |  |
|  | 1 | **Basement 03** |  | 2026-02-27 | 2026-10-06 |  |  |  |  |  |  |  |
| E-GFC-AR-CB-10 |  | Drawings Preparation& Submission | 151.38d | 2026-02-27 A | 2026-10-06 | E-DD-AR-CB-15 | 69% | 2.48d | CSD-LKO-Design (5 Day + Holiday)-25 | Design Consultnacy Charges; Physical Progress [4090 h]; TATA Projects Ltd-25 |  |  |
| E-GFC-AR-CB-25 |  | Domain Expert Approval | 100.66d | 2026-05-12 A | 2026-10-01 | E-GFC-AR-CB-10 SS | 62% | 0.76d | CSD-LKO-Design (5 Day + Holiday)-25 | Design Consultnacy Charges; Physical Progress [1020 h]; TATA Projects Ltd-25 |  |  |
| E-GFC-AR-CB-40 |  | Executive Consultant Approval | 98.9d | 2026-05-14 A | 2026-10-01 | E-GFC-AR-CB-25 SS | 50% | 1d | CSD-LKO-Design (5 Day + Holiday)-25 | Design Consultnacy Charges; Physical Progress [1020 h]; TATA Projects Ltd-25 |  |  |
| E-GFC-AR-CB-55 |  | Peer Reviewer Approval | 96.9d | 2026-05-18 A | 2026-10-01 | E-GFC-AR-CB-40 SS | 50% | 1d | CSD-LKO-Design (5 Day + Holiday)-25 | Design Consultnacy Charges; Physical Progress [1020 h]; Peer Reviewer-25 |  |  |
| E-GFC-AR-CB-70 |  | TPL Design Team Approval | 94.9d | 2026-05-20 A | 2026-10-01 | E-GFC-AR-CB-55 SS | 50% | 1d | CSD-LKO-Design (5 Day + Holiday)-25 | Design Consultnacy Charges [388659 INR]; Physical Progress [1020 h]; TATA Projects Ltd-25 | 388,659 | 384,563.54 |
| E-GFC-AR-CB-85 |  | Issue of Hard Copy on Site | 92.4d | 2026-05-22 A | 2026-10-01 | E-GFC-AR-CB-70 SS | 50% | 0.5d | CSD-LKO-Design (5 Day + Holiday)-25 | Design Consultnacy Charges; Physical Progress [510 h]; TATA Projects Ltd-25 |  |  |
|  | 2 | **Basement 02** |  | 2026-02-27 | 2026-10-07 |  |  |  |  |  |  |  |
| E-GFC-AR-CB-15 |  | Drawings Preparation& Submission | 152.89d | 2026-02-27 A | 2026-10-07 | E-DD-AR-CB-15 | 50% | 3.99d | CSD-LKO-Design (5 Day + Holiday)-25 | Design Consultnacy Charges; Physical Progress [4090 h]; TATA Projects Ltd-25 |  |  |
| E-GFC-AR-CB-30 |  | Domain Expert Approval | 100.9d | 2026-05-12 A | 2026-10-01 | E-GFC-AR-CB-15 SS | 50% | 1d | CSD-LKO-Design (5 Day + Holiday)-25 | Design Consultnacy Charges; Physical Progress [1020 h]; TATA Projects Ltd-25 |  |  |
| E-GFC-AR-CB-45 |  | Executive Consultant Approval | 98.9d | 2026-05-14 A | 2026-10-01 | E-GFC-AR-CB-30 SS | 50% | 1d | CSD-LKO-Design (5 Day + Holiday)-25 | Design Consultnacy Charges; Physical Progress [1020 h]; TATA Projects Ltd-25 |  |  |
| E-GFC-AR-CB-60 |  | Peer Reviewer Approval | 96.9d | 2026-05-18 A | 2026-10-01 | E-GFC-AR-CB-45 SS | 50% | 1d | CSD-LKO-Design (5 Day + Holiday)-25 | Design Consultnacy Charges; Physical Progress [1020 h]; Peer Reviewer-25 |  |  |
| E-GFC-AR-CB-75 |  | TPL Design Team Approval | 94.9d | 2026-05-20 A | 2026-10-01 | E-GFC-AR-CB-60 SS | 50% | 1d | CSD-LKO-Design (5 Day + Holiday)-25 | Design Consultnacy Charges [388659 INR]; Physical Progress [1020 h]; TATA Projects Ltd-25 | 388,659 | 384,563.54 |
| E-GFC-AR-CB-90 |  | Issue of Hard Copy on Site | 6.18d | 2026-09-25 A | 2026-10-06 | E-GFC-AR-CB-75 SS | 43% | 2.28d | CSD-LKO-Design (5 Day + Holiday)-25 | Design Consultnacy Charges; Physical Progress [510 h]; TATA Projects Ltd-25 |  |  |
|  | 4 | **Basement 01** |  | 2026-06-19 | 2026-10-07 |  |  |  |  |  |  |  |
| E-GFC-AR-CB-20 |  | Drawings Preparation& Submission | 73.46d | 2026-06-19 A | 2026-10-01 | E-DD-AR-CB-15, E-GFC-AR-CB-15 SS | 93% | 0.56d | CSD-LKO-Design (5 Day + Holiday)-25 | Design Consultnacy Charges; Physical Progress [4090 h]; TATA Projects Ltd-25 |  |  |
| E-GFC-AR-CB-35 |  | Domain Expert Approval | 49.5d | 2026-07-24 A | 2026-10-05 | E-GFC-AR-CB-20 SS | 20% | 1.6d | CSD-LKO-Design (5 Day + Holiday)-25 | Design Consultnacy Charges; Physical Progress [1020 h]; TATA Projects Ltd-25 |  |  |
| E-GFC-AR-CB-50 |  | Executive Consultant Approval | 46.5d | 2026-07-29 A | 2026-10-05 | E-GFC-AR-CB-35 SS | 20% | 1.6d | CSD-LKO-Design (5 Day + Holiday)-25 | Design Consultnacy Charges; Physical Progress [1020 h]; TATA Projects Ltd-25 |  |  |
| E-GFC-AR-CB-65 |  | Peer Reviewer Approval | 46.5d | 2026-07-29 A | 2026-10-05 | E-GFC-AR-CB-50 SS | 20% | 1.6d | CSD-LKO-Design (5 Day + Holiday)-25 | Design Consultnacy Charges; Physical Progress [1020 h]; Peer Reviewer-25 |  |  |
| E-GFC-AR-CB-95 |  | Issue of Hard Copy on Site | 23.32d | 2026-09-01 A | 2026-10-07 | E-GFC-AR-CB-80 SS | 20% | 3.2d | CSD-LKO-Design (5 Day + Holiday)-25 | Design Consultnacy Charges; Physical Progress [510 h]; TATA Projects Ltd-25 |  |  |
| E-GFC-AR-CB-80 |  | TPL Design Team Approval | 5.5d | 2026-09-25 A | 2026-10-05 | E-GFC-AR-CB-65 SS | 20% | 1.6d | CSD-LKO-Design (5 Day + Holiday)-25 | Design Consultnacy Charges [388659 INR]; Physical Progress [1020 h]; TATA Projects Ltd-25 | 388,659 | 275,594.56 |

| ID | WBS | Activity | Duration | Start | Finish | Predecessors | Calendar | Resources | Cost |
| --- | --- | --- | --- | --- | --- | --- | --- | --- | --- |
|  | 1 | **Hotel 4 Star** |  | 2026-11-06 | 2027-03-08 |  |  |  |  |
|  | 1 | **Ground Floor** |  | 2026-11-06 | 2026-12-24 |  |  |  |  |
| E-GFC-AR-4S-10 |  | Drawings Preparation& Submission | 22d | 2026-11-06 | 2026-12-08 | E-DD-AR-4S-15, E-GFC-ST-4S-10 | CSD-LKO-Design (5 Day + Holiday)-25 | Design Consultnacy Charges; Physical Progress [17910 h]; TATA Projects Ltd-25 |  |
| E-GFC-AR-4S-15 |  | Domain Expert Approval | 2d | 2026-12-08 | 2026-12-10 | E-GFC-AR-4S-10 | CSD-LKO-Design (5 Day + Holiday)-25 | Design Consultnacy Charges; Physical Progress [1020 h]; TATA Projects Ltd-25 |  |
| E-GFC-AR-4S-30 |  | Executive Consultant Approval | 2d | 2026-12-10 | 2026-12-14 | E-GFC-AR-4S-15 | CSD-LKO-Design (5 Day + Holiday)-25 | Design Consultnacy Charges; Physical Progress [1020 h]; TATA Projects Ltd-25 |  |
| E-GFC-AR-4S-35 |  | Peer Reviewer Approval | 2d | 2026-12-14 | 2026-12-16 | E-GFC-AR-4S-30 | CSD-LKO-Design (5 Day + Holiday)-25 | Design Consultnacy Charges; Physical Progress [1020 h]; Peer Reviewer-25 |  |
| E-GFC-AR-4S-40 |  | TPL Design Team Approval | 2d | 2026-12-16 | 2026-12-18 | E-GFC-AR-4S-35 | CSD-LKO-Design (5 Day + Holiday)-25 | Design Consultnacy Charges [388659 INR]; Physical Progress [1020 h]; TATA Projects Ltd-25 | 388,659 |
| E-GFC-AR-4S-45 |  | Issue of Hard Copy on Site | 4d | 2026-12-18 | 2026-12-24 | E-GFC-AR-4S-40 | CSD-LKO-Design (5 Day + Holiday)-25 | Design Consultnacy Charges; Physical Progress [510 h]; TATA Projects Ltd-25 |  |
|  | 2 | **First Floor** |  | 2026-11-06 | 2026-12-24 |  |  |  |  |
| E-GFC-AR-4S-20 |  | Drawings Preparation& Submission | 22d | 2026-11-06 | 2026-12-08 | E-DD-AR-4S-15, E-GFC-ST-4S-10 | CSD-LKO-Design (5 Day + Holiday)-25 | Design Consultnacy Charges; Physical Progress [13300 h]; TATA Projects Ltd-25 |  |
| E-GFC-AR-4S-50 |  | Domain Expert Approval | 2d | 2026-12-08 | 2026-12-10 | E-GFC-AR-4S-20 | CSD-LKO-Design (5 Day + Holiday)-25 | Design Consultnacy Charges; Physical Progress [1020 h]; TATA Projects Ltd-25 |  |
| E-GFC-AR-4S-90 |  | Executive Consultant Approval | 2d | 2026-12-10 | 2026-12-14 | E-GFC-AR-4S-50 | CSD-LKO-Design (5 Day + Holiday)-25 | Design Consultnacy Charges; Physical Progress [1020 h]; TATA Projects Ltd-25 |  |
| E-GFC-AR-4S-100 |  | Peer Reviewer Approval | 2d | 2026-12-14 | 2026-12-16 | E-GFC-AR-4S-90 | CSD-LKO-Design (5 Day + Holiday)-25 | Design Consultnacy Charges; Physical Progress [1020 h]; Peer Reviewer-25 |  |
| E-GFC-AR-4S-110 |  | TPL Design Team Approval | 2d | 2026-12-16 | 2026-12-18 | E-GFC-AR-4S-100 | CSD-LKO-Design (5 Day + Holiday)-25 | Design Consultnacy Charges [388659 INR]; Physical Progress [1020 h]; TATA Projects Ltd-25 | 388,659 |
| E-GFC-AR-4S-120 |  | Issue of Hard Copy on Site | 4d | 2026-12-18 | 2026-12-24 | E-GFC-AR-4S-110 | CSD-LKO-Design (5 Day + Holiday)-25 | Design Consultnacy Charges; Physical Progress [510 h]; TATA Projects Ltd-25 |  |
|  | 3 | **Service Floor** |  | 2026-12-08 | 2027-01-06 |  |  |  |  |
| E-GFC-AR-4S-25 |  | Drawings Preparation& Submission | 7d | 2026-12-08 | 2026-12-17 | E-DD-AR-4S-15, E-GFC-AR-4S-20 | CSD-LKO-Design (5 Day + Holiday)-25 | Design Consultnacy Charges; Physical Progress [13300 h]; TATA Projects Ltd-25 |  |
| E-GFC-AR-4S-55 |  | Domain Expert Approval | 2d | 2026-12-17 | 2026-12-21 | E-GFC-AR-4S-25 | CSD-LKO-Design (5 Day + Holiday)-25 | Design Consultnacy Charges; Physical Progress [1020 h]; TATA Projects Ltd-25 |  |
| E-GFC-AR-4S-95 |  | Executive Consultant Approval | 2d | 2026-12-21 | 2026-12-23 | E-GFC-AR-4S-55 | CSD-LKO-Design (5 Day + Holiday)-25 | Design Consultnacy Charges; Physical Progress [1020 h]; TATA Projects Ltd-25 |  |
| E-GFC-AR-4S-105 |  | Peer Reviewer Approval | 2d | 2026-12-23 | 2026-12-28 | E-GFC-AR-4S-95 | CSD-LKO-Design (5 Day + Holiday)-25 | Design Consultnacy Charges; Physical Progress [1020 h]; Peer Reviewer-25 |  |
| E-GFC-AR-4S-115 |  | TPL Design Team Approval | 2d | 2026-12-28 | 2026-12-30 | E-GFC-AR-4S-105 | CSD-LKO-Design (5 Day + Holiday)-25 | Design Consultnacy Charges [388659 INR]; Physical Progress [1020 h]; TATA Projects Ltd-25 | 388,659 |
| E-GFC-AR-4S-125 |  | Issue of Hard Copy on Site | 4d | 2026-12-30 | 2027-01-06 | E-GFC-AR-4S-115 | CSD-LKO-Design (5 Day + Holiday)-25 | Design Consultnacy Charges; Physical Progress [510 h]; TATA Projects Ltd-25 |  |
|  | 4 | **Second Floor** |  | 2026-12-17 | 2027-01-15 |  |  |  |  |
| E-GFC-AR-4S-60 |  | Drawings Preparation& Submission | 7d | 2026-12-17 | 2026-12-29 | E-DD-AR-4S-15, E-GFC-AR-4S-25 | CSD-LKO-Design (5 Day + Holiday)-25 | Design Consultnacy Charges; Physical Progress [15860 h]; TATA Projects Ltd-25 |  |
| E-GFC-AR-4S-130 |  | Domain Expert Approval | 2d | 2026-12-29 | 2026-12-31 | E-GFC-AR-4S-60 | CSD-LKO-Design (5 Day + Holiday)-25 | Design Consultnacy Charges; Physical Progress [1020 h]; TATA Projects Ltd-25 |  |
| E-GFC-AR-4S-160 |  | Executive Consultant Approval | 2d | 2026-12-31 | 2027-01-05 | E-GFC-AR-4S-130 | CSD-LKO-Design (5 Day + Holiday)-25 | Design Consultnacy Charges; Physical Progress [1020 h]; TATA Projects Ltd-25 |  |
| E-GFC-AR-4S-190 |  | Peer Reviewer Approval | 2d | 2027-01-05 | 2027-01-07 | E-GFC-AR-4S-160 | CSD-LKO-Design (5 Day + Holiday)-25 | Design Consultnacy Charges; Physical Progress [1020 h]; Peer Reviewer-25 |  |
| E-GFC-AR-4S-220 |  | TPL Design Team Approval | 2d | 2027-01-07 | 2027-01-11 | E-GFC-AR-4S-190 | CSD-LKO-Design (5 Day + Holiday)-25 | Design Consultnacy Charges [388659 INR]; Physical Progress [1020 h]; TATA Projects Ltd-25 | 388,659 |
| E-GFC-AR-4S-250 |  | Issue of Hard Copy on Site | 4d | 2027-01-11 | 2027-01-15 | E-GFC-AR-4S-220 | CSD-LKO-Design (5 Day + Holiday)-25 | Design Consultnacy Charges; Physical Progress [510 h]; TATA Projects Ltd-25 |  |

| ID | WBS | Activity | Duration | Start | Finish | Predecessors | Calendar | Resources | Cost |
| --- | --- | --- | --- | --- | --- | --- | --- | --- | --- |
|  | 5 | **Third Floor** |  | 2026-12-29 | 2027-01-27 |  |  |  |  |
| E-GFC-AR-4S-65 |  | Drawings Preparation& Submission | 7d | 2026-12-29 | 2027-01-08 | E-DD-AR-4S-15, E-GFC-AR-4S-60 | CSD-LKO-Design (5 Day + Holiday)-25 | Design Consultnacy Charges; Physical Progress [15860 h]; TATA Projects Ltd-25 |  |
| E-GFC-AR-4S-135 |  | Domain Expert Approval | 2d | 2027-01-08 | 2027-01-12 | E-GFC-AR-4S-65 | CSD-LKO-Design (5 Day + Holiday)-25 | Design Consultnacy Charges; Physical Progress [1030 h]; TATA Projects Ltd-25 |  |
| E-GFC-AR-4S-165 |  | Executive Consultant Approval | 2d | 2027-01-12 | 2027-01-14 | E-GFC-AR-4S-135 | CSD-LKO-Design (5 Day + Holiday)-25 | Design Consultnacy Charges; Physical Progress [1030 h]; TATA Projects Ltd-25 |  |
| E-GFC-AR-4S-195 |  | Peer Reviewer Approval | 2d | 2027-01-14 | 2027-01-18 | E-GFC-AR-4S-165 | CSD-LKO-Design (5 Day + Holiday)-25 | Design Consultnacy Charges; Physical Progress [1030 h]; Peer Reviewer-25 |  |
| E-GFC-AR-4S-225 |  | TPL Design Team Approval | 2d | 2027-01-18 | 2027-01-20 | E-GFC-AR-4S-195 | CSD-LKO-Design (5 Day + Holiday)-25 | Design Consultnacy Charges [388659 INR]; Physical Progress [1030 h]; TATA Projects Ltd-25 | 388,659 |
| E-GFC-AR-4S-255 |  | Issue of Hard Copy on Site | 4d | 2027-01-20 | 2027-01-27 | E-GFC-AR-4S-225 | CSD-LKO-Design (5 Day + Holiday)-25 | Design Consultnacy Charges; Physical Progress [510 h]; TATA Projects Ltd-25 |  |
|  | 6 | **Fourth Floor** |  | 2027-01-08 | 2027-02-05 |  |  |  |  |
| E-GFC-AR-4S-70 |  | Drawings Preparation& Submission | 7d | 2027-01-08 | 2027-01-19 | E-DD-AR-4S-15, E-GFC-AR-4S-65 | CSD-LKO-Design (5 Day + Holiday)-25 | Design Consultnacy Charges; Physical Progress [15860 h]; TATA Projects Ltd-25 |  |
| E-GFC-AR-4S-140 |  | Domain Expert Approval | 2d | 2027-01-19 | 2027-01-21 | E-GFC-AR-4S-70 | CSD-LKO-Design (5 Day + Holiday)-25 | Design Consultnacy Charges; Physical Progress [1030 h]; TATA Projects Ltd-25 |  |
| E-GFC-AR-4S-170 |  | Executive Consultant Approval | 2d | 2027-01-21 | 2027-01-25 | E-GFC-AR-4S-140 | CSD-LKO-Design (5 Day + Holiday)-25 | Design Consultnacy Charges; Physical Progress [1030 h]; TATA Projects Ltd-25 |  |
| E-GFC-AR-4S-200 |  | Peer Reviewer Approval | 2d | 2027-01-25 | 2027-01-28 | E-GFC-AR-4S-170 | CSD-LKO-Design (5 Day + Holiday)-25 | Design Consultnacy Charges; Physical Progress [1030 h]; Peer Reviewer-25 |  |
| E-GFC-AR-4S-230 |  | TPL Design Team Approval | 2d | 2027-01-28 | 2027-02-01 | E-GFC-AR-4S-200 | CSD-LKO-Design (5 Day + Holiday)-25 | Design Consultnacy Charges [388659 INR]; Physical Progress [1030 h]; TATA Projects Ltd-25 | 388,659 |
| E-GFC-AR-4S-260 |  | Issue of Hard Copy on Site | 4d | 2027-02-01 | 2027-02-05 | E-GFC-AR-4S-230 | CSD-LKO-Design (5 Day + Holiday)-25 | Design Consultnacy Charges; Physical Progress [510 h]; TATA Projects Ltd-25 |  |
|  | 7 | **Fifth Floor** |  | 2027-01-19 | 2027-02-16 |  |  |  |  |
| E-GFC-AR-4S-75 |  | Drawings Preparation& Submission | 7d | 2027-01-19 | 2027-01-29 | E-DD-AR-4S-15, E-GFC-AR-4S-70 | CSD-LKO-Design (5 Day + Holiday)-25 | Design Consultnacy Charges; Physical Progress [15860 h]; TATA Projects Ltd-25 |  |
| E-GFC-AR-4S-145 |  | Domain Expert Approval | 2d | 2027-01-29 | 2027-02-02 | E-GFC-AR-4S-75 | CSD-LKO-Design (5 Day + Holiday)-25 | Design Consultnacy Charges; Physical Progress [1030 h]; TATA Projects Ltd-25 |  |
| E-GFC-AR-4S-175 |  | Executive Consultant Approval | 2d | 2027-02-02 | 2027-02-04 | E-GFC-AR-4S-145 | CSD-LKO-Design (5 Day + Holiday)-25 | Design Consultnacy Charges; Physical Progress [1030 h]; TATA Projects Ltd-25 |  |
| E-GFC-AR-4S-205 |  | Peer Reviewer Approval | 2d | 2027-02-04 | 2027-02-08 | E-GFC-AR-4S-175 | CSD-LKO-Design (5 Day + Holiday)-25 | Design Consultnacy Charges; Physical Progress [1030 h]; Peer Reviewer-25 |  |
| E-GFC-AR-4S-235 |  | TPL Design Team Approval | 2d | 2027-02-08 | 2027-02-10 | E-GFC-AR-4S-205 | CSD-LKO-Design (5 Day + Holiday)-25 | Design Consultnacy Charges [388659 INR]; Physical Progress [1030 h]; TATA Projects Ltd-25 | 388,659 |
| E-GFC-AR-4S-265 |  | Issue of Hard Copy on Site | 4d | 2027-02-10 | 2027-02-16 | E-GFC-AR-4S-235 | CSD-LKO-Design (5 Day + Holiday)-25 | Design Consultnacy Charges; Physical Progress [510 h]; TATA Projects Ltd-25 |  |
|  | 8 | **Sixth Floor** |  | 2027-01-29 | 2027-02-25 |  |  |  |  |
| E-GFC-AR-4S-80 |  | Drawings Preparation& Submission | 7d | 2027-01-29 | 2027-02-09 | E-DD-AR-4S-15, E-GFC-AR-4S-75 | CSD-LKO-Design (5 Day + Holiday)-25 | Design Consultnacy Charges; Physical Progress [15860 h]; TATA Projects Ltd-25 |  |
| E-GFC-AR-4S-150 |  | Domain Expert Approval | 2d | 2027-02-09 | 2027-02-11 | E-GFC-AR-4S-80 | CSD-LKO-Design (5 Day + Holiday)-25 | Design Consultnacy Charges; Physical Progress [1030 h]; TATA Projects Ltd-25 |  |
| E-GFC-AR-4S-180 |  | Executive Consultant Approval | 2d | 2027-02-11 | 2027-02-15 | E-GFC-AR-4S-150 | CSD-LKO-Design (5 Day + Holiday)-25 | Design Consultnacy Charges; Physical Progress [1030 h]; TATA Projects Ltd-25 |  |
| E-GFC-AR-4S-210 |  | Peer Reviewer Approval | 2d | 2027-02-15 | 2027-02-17 | E-GFC-AR-4S-180 | CSD-LKO-Design (5 Day + Holiday)-25 | Design Consultnacy Charges; Physical Progress [1030 h]; Peer Reviewer-25 |  |
| E-GFC-AR-4S-240 |  | TPL Design Team Approval | 2d | 2027-02-17 | 2027-02-19 | E-GFC-AR-4S-210 | CSD-LKO-Design (5 Day + Holiday)-25 | Design Consultnacy Charges [388659 INR]; Physical Progress [1030 h]; TATA Projects Ltd-25 | 388,659 |
| E-GFC-AR-4S-270 |  | Issue of Hard Copy on Site | 4d | 2027-02-19 | 2027-02-25 | E-GFC-AR-4S-240 | CSD-LKO-Design (5 Day + Holiday)-25 | Design Consultnacy Charges; Physical Progress [510 h]; TATA Projects Ltd-25 |  |

| ID | WBS | Activity | Duration | Start | Finish | Predecessors | Calendar | Resources | Cost |
| --- | --- | --- | --- | --- | --- | --- | --- | --- | --- |
|  | 9 | **Terrace** |  | 2027-02-09 | 2027-03-08 |  |  |  |  |
| E-GFC-AR-4S-85 |  | Drawings Preparation& Submission | 7d | 2027-02-09 | 2027-02-18 | E-DD-AR-4S-15, E-GFC-AR-4S-80 | CSD-LKO-Design (5 Day + Holiday)-25 | Design Consultnacy Charges; Physical Progress [15860 h]; TATA Projects Ltd-25 |  |
| E-GFC-AR-4S-155 |  | Domain Expert Approval | 2d | 2027-02-18 | 2027-02-22 | E-GFC-AR-4S-85 | CSD-LKO-Design (5 Day + Holiday)-25 | Design Consultnacy Charges; Physical Progress [1030 h]; TATA Projects Ltd-25 |  |
| E-GFC-AR-4S-185 |  | Executive Consultant Approval | 2d | 2027-02-22 | 2027-02-24 | E-GFC-AR-4S-155 | CSD-LKO-Design (5 Day + Holiday)-25 | Design Consultnacy Charges; Physical Progress [1030 h]; TATA Projects Ltd-25 |  |
| E-GFC-AR-4S-215 |  | Peer Reviewer Approval | 2d | 2027-02-24 | 2027-02-26 | E-GFC-AR-4S-185 | CSD-LKO-Design (5 Day + Holiday)-25 | Design Consultnacy Charges; Physical Progress [1030 h]; Peer Reviewer-25 |  |
| E-GFC-AR-4S-245 |  | TPL Design Team Approval | 2d | 2027-02-26 | 2027-03-02 | E-GFC-AR-4S-215 | CSD-LKO-Design (5 Day + Holiday)-25 | Design Consultnacy Charges [388659 INR]; Physical Progress [1030 h]; TATA Projects Ltd-25 | 388,659 |
| E-GFC-AR-4S-275 |  | Issue of Hard Copy on Site | 4d | 2027-03-02 | 2027-03-08 | E-GFC-AR-4S-245 | CSD-LKO-Design (5 Day + Holiday)-25 | Design Consultnacy Charges; Physical Progress [510 h]; TATA Projects Ltd-25 |  |
|  | 3 | **Hotel 3 Star** |  | 2026-11-13 | 2027-03-25 |  |  |  |  |
|  | 1 | **Ground Floor** |  | 2026-11-13 | 2026-12-31 |  |  |  |  |
| E-GFC-AR-3S-10 |  | Drawings Preparation& Submission | 21d | 2026-11-13 | 2026-12-14 | E-DD-AR-3S-15, E-GFC-ST-3S-10 | CSD-LKO-Design (5 Day + Holiday)-25 | Design Consultnacy Charges; Physical Progress [17910 h]; TATA Projects Ltd-25 |  |
| E-GFC-AR-3S-15 |  | Domain Expert Approval | 2d | 2026-12-14 | 2026-12-16 | E-GFC-AR-3S-10 | CSD-LKO-Design (5 Day + Holiday)-25 | Design Consultnacy Charges; Physical Progress [1030 h]; TATA Projects Ltd-25 |  |
| E-GFC-AR-3S-30 |  | Executive Consultant Approval | 2d | 2026-12-16 | 2026-12-18 | E-GFC-AR-3S-15 | CSD-LKO-Design (5 Day + Holiday)-25 | Design Consultnacy Charges; Physical Progress [1030 h]; TATA Projects Ltd-25 |  |
| E-GFC-AR-3S-35 |  | Peer Reviewer Approval | 2d | 2026-12-18 | 2026-12-22 | E-GFC-AR-3S-30 | CSD-LKO-Design (5 Day + Holiday)-25 | Design Consultnacy Charges; Physical Progress [1030 h]; Peer Reviewer-25 |  |
| E-GFC-AR-3S-40 |  | TPL Design Team Approval | 2d | 2026-12-22 | 2026-12-24 | E-GFC-AR-3S-35 | CSD-LKO-Design (5 Day + Holiday)-25 | Design Consultnacy Charges [388659 INR]; Physical Progress [1030 h]; TATA Projects Ltd-25 | 388,659 |
| E-GFC-AR-3S-45 |  | Issue of Hard Copy on Site | 4d | 2026-12-24 | 2026-12-31 | E-GFC-AR-3S-40 | CSD-LKO-Design (5 Day + Holiday)-25 | Design Consultnacy Charges; Physical Progress [510 h]; TATA Projects Ltd-25 |  |
|  | 2 | **First Floor** |  | 2026-11-13 | 2026-12-31 |  |  |  |  |
| E-GFC-AR-3S-20 |  | Drawings Preparation& Submission | 21d | 2026-11-13 | 2026-12-14 | E-DD-AR-3S-15, E-GFC-ST-3S-10 | CSD-LKO-Design (5 Day + Holiday)-25 | Design Consultnacy Charges; Physical Progress [13300 h]; TATA Projects Ltd-25 |  |
| E-GFC-AR-3S-50 |  | Domain Expert Approval | 2d | 2026-12-14 | 2026-12-16 | E-GFC-AR-3S-20 | CSD-LKO-Design (5 Day + Holiday)-25 | Design Consultnacy Charges; Physical Progress [1030 h]; TATA Projects Ltd-25 |  |
| E-GFC-AR-3S-95 |  | Executive Consultant Approval | 2d | 2026-12-16 | 2026-12-18 | E-GFC-AR-3S-50 | CSD-LKO-Design (5 Day + Holiday)-25 | Design Consultnacy Charges; Physical Progress [1030 h]; TATA Projects Ltd-25 |  |
| E-GFC-AR-3S-105 |  | Peer Reviewer Approval | 2d | 2026-12-18 | 2026-12-22 | E-GFC-AR-3S-95 | CSD-LKO-Design (5 Day + Holiday)-25 | Design Consultnacy Charges; Physical Progress [1030 h]; Peer Reviewer-25 |  |
| E-GFC-AR-3S-115 |  | TPL Design Team Approval | 2d | 2026-12-22 | 2026-12-24 | E-GFC-AR-3S-105 | CSD-LKO-Design (5 Day + Holiday)-25 | Design Consultnacy Charges [388659 INR]; Physical Progress [1030 h]; TATA Projects Ltd-25 | 388,659 |
| E-GFC-AR-3S-125 |  | Issue of Hard Copy on Site | 4d | 2026-12-24 | 2026-12-31 | E-GFC-AR-3S-115 | CSD-LKO-Design (5 Day + Holiday)-25 | Design Consultnacy Charges; Physical Progress [510 h]; TATA Projects Ltd-25 |  |
|  | 3 | **Service Floor** |  | 2026-12-14 | 2027-01-12 |  |  |  |  |
| E-GFC-AR-3S-25 |  | Drawings Preparation& Submission | 7d | 2026-12-14 | 2026-12-23 | E-DD-AR-3S-15, E-GFC-AR-3S-20 | CSD-LKO-Design (5 Day + Holiday)-25 | Design Consultnacy Charges; Physical Progress [13300 h]; TATA Projects Ltd-25 |  |
| E-GFC-AR-3S-55 |  | Domain Expert Approval | 2d | 2026-12-23 | 2026-12-28 | E-GFC-AR-3S-25 | CSD-LKO-Design (5 Day + Holiday)-25 | Design Consultnacy Charges; Physical Progress [1030 h]; TATA Projects Ltd-25 |  |
| E-GFC-AR-3S-100 |  | Executive Consultant Approval | 2d | 2026-12-28 | 2026-12-30 | E-GFC-AR-3S-55 | CSD-LKO-Design (5 Day + Holiday)-25 | Design Consultnacy Charges; Physical Progress [1030 h]; TATA Projects Ltd-25 |  |
| E-GFC-AR-3S-110 |  | Peer Reviewer Approval | 2d | 2026-12-30 | 2027-01-04 | E-GFC-AR-3S-100 | CSD-LKO-Design (5 Day + Holiday)-25 | Design Consultnacy Charges; Physical Progress [1030 h]; Peer Reviewer-25 |  |
| E-GFC-AR-3S-120 |  | TPL Design Team Approval | 2d | 2027-01-04 | 2027-01-06 | E-GFC-AR-3S-110 | CSD-LKO-Design (5 Day + Holiday)-25 | Design Consultnacy Charges [388659 INR]; Physical Progress [1030 h]; TATA Projects Ltd-25 | 388,659 |
| E-GFC-AR-3S-130 |  | Issue of Hard Copy on Site | 4d | 2027-01-06 | 2027-01-12 | E-GFC-AR-3S-120 | CSD-LKO-Design (5 Day + Holiday)-25 | Design Consultnacy Charges; Physical Progress [510 h]; TATA Projects Ltd-25 |  |

| ID | WBS | Activity | Duration | Start | Finish | Predecessors | Calendar | Resources | Cost |
| --- | --- | --- | --- | --- | --- | --- | --- | --- | --- |
|  | 4 | **Second Floor** |  | 2026-12-23 | 2027-01-21 |  |  |  |  |
| E-GFC-AR-3S-60 |  | Drawings Preparation& Submission | 7d | 2026-12-23 | 2027-01-05 | E-DD-AR-3S-15, E-GFC-AR-3S-25 | CSD-LKO-Design (5 Day + Holiday)-25 | Design Consultnacy Charges; Physical Progress [15860 h]; TATA Projects Ltd-25 |  |
| E-GFC-AR-3S-135 |  | Domain Expert Approval | 2d | 2027-01-05 | 2027-01-07 | E-GFC-AR-3S-60 | CSD-LKO-Design (5 Day + Holiday)-25 | Design Consultnacy Charges; Physical Progress [1030 h]; TATA Projects Ltd-25 |  |
| E-GFC-AR-3S-170 |  | Executive Consultant Approval | 2d | 2027-01-07 | 2027-01-11 | E-GFC-AR-3S-135 | CSD-LKO-Design (5 Day + Holiday)-25 | Design Consultnacy Charges; Physical Progress [1030 h]; TATA Projects Ltd-25 |  |
| E-GFC-AR-3S-205 |  | Peer Reviewer Approval | 2d | 2027-01-11 | 2027-01-13 | E-GFC-AR-3S-170 | CSD-LKO-Design (5 Day + Holiday)-25 | Design Consultnacy Charges; Physical Progress [1030 h]; Peer Reviewer-25 |  |
| E-GFC-AR-3S-240 |  | TPL Design Team Approval | 2d | 2027-01-13 | 2027-01-15 | E-GFC-AR-3S-205 | CSD-LKO-Design (5 Day + Holiday)-25 | Design Consultnacy Charges [388659 INR]; Physical Progress [1030 h]; TATA Projects Ltd-25 | 388,659 |
| E-GFC-AR-3S-275 |  | Issue of Hard Copy on Site | 4d | 2027-01-15 | 2027-01-21 | E-GFC-AR-3S-240 | CSD-LKO-Design (5 Day + Holiday)-25 | Design Consultnacy Charges; Physical Progress [510 h]; TATA Projects Ltd-25 |  |
|  | 5 | **Third Floor** |  | 2027-01-05 | 2027-02-02 |  |  |  |  |
| E-GFC-AR-3S-65 |  | Drawings Preparation& Submission | 7d | 2027-01-05 | 2027-01-14 | E-DD-AR-3S-15, E-GFC-AR-3S-60 | CSD-LKO-Design (5 Day + Holiday)-25 | Design Consultnacy Charges; Physical Progress [15860 h]; TATA Projects Ltd-25 |  |
| E-GFC-AR-3S-140 |  | Domain Expert Approval | 2d | 2027-01-14 | 2027-01-18 | E-GFC-AR-3S-65 | CSD-LKO-Design (5 Day + Holiday)-25 | Design Consultnacy Charges; Physical Progress [1030 h]; TATA Projects Ltd-25 |  |
| E-GFC-AR-3S-175 |  | Executive Consultant Approval | 2d | 2027-01-18 | 2027-01-20 | E-GFC-AR-3S-140 | CSD-LKO-Design (5 Day + Holiday)-25 | Design Consultnacy Charges; Physical Progress [1030 h]; TATA Projects Ltd-25 |  |
| E-GFC-AR-3S-210 |  | Peer Reviewer Approval | 2d | 2027-01-20 | 2027-01-22 | E-GFC-AR-3S-175 | CSD-LKO-Design (5 Day + Holiday)-25 | Design Consultnacy Charges; Physical Progress [1030 h]; Peer Reviewer-25 |  |
| E-GFC-AR-3S-245 |  | TPL Design Team Approval | 2d | 2027-01-22 | 2027-01-27 | E-GFC-AR-3S-210 | CSD-LKO-Design (5 Day + Holiday)-25 | Design Consultnacy Charges [388659 INR]; Physical Progress [1030 h]; TATA Projects Ltd-25 | 388,659 |
| E-GFC-AR-3S-280 |  | Issue of Hard Copy on Site | 4d | 2027-01-27 | 2027-02-02 | E-GFC-AR-3S-245 | CSD-LKO-Design (5 Day + Holiday)-25 | Design Consultnacy Charges; Physical Progress [510 h]; TATA Projects Ltd-25 |  |
|  | 6 | **Fourth Floor** |  | 2027-01-14 | 2027-02-11 |  |  |  |  |
| E-GFC-AR-3S-70 |  | Drawings Preparation& Submission | 7d | 2027-01-14 | 2027-01-25 | E-DD-AR-3S-15, E-GFC-AR-3S-65 | CSD-LKO-Design (5 Day + Holiday)-25 | Design Consultnacy Charges; Physical Progress [15860 h]; TATA Projects Ltd-25 |  |
| E-GFC-AR-3S-145 |  | Domain Expert Approval | 2d | 2027-01-25 | 2027-01-28 | E-GFC-AR-3S-70 | CSD-LKO-Design (5 Day + Holiday)-25 | Design Consultnacy Charges; Physical Progress [1030 h]; TATA Projects Ltd-25 |  |
| E-GFC-AR-3S-180 |  | Executive Consultant Approval | 2d | 2027-01-28 | 2027-02-01 | E-GFC-AR-3S-145 | CSD-LKO-Design (5 Day + Holiday)-25 | Design Consultnacy Charges; Physical Progress [1030 h]; TATA Projects Ltd-25 |  |
| E-GFC-AR-3S-215 |  | Peer Reviewer Approval | 2d | 2027-02-01 | 2027-02-03 | E-GFC-AR-3S-180 | CSD-LKO-Design (5 Day + Holiday)-25 | Design Consultnacy Charges; Physical Progress [1030 h]; Peer Reviewer-25 |  |
| E-GFC-AR-3S-250 |  | TPL Design Team Approval | 2d | 2027-02-03 | 2027-02-05 | E-GFC-AR-3S-215 | CSD-LKO-Design (5 Day + Holiday)-25 | Design Consultnacy Charges [388659 INR]; Physical Progress [1030 h]; TATA Projects Ltd-25 | 388,659 |
| E-GFC-AR-3S-285 |  | Issue of Hard Copy on Site | 4d | 2027-02-05 | 2027-02-11 | E-GFC-AR-3S-250 | CSD-LKO-Design (5 Day + Holiday)-25 | Design Consultnacy Charges; Physical Progress [510 h]; TATA Projects Ltd-25 |  |
|  | 7 | **Fifth Floor** |  | 2027-01-25 | 2027-02-22 |  |  |  |  |
| E-GFC-AR-3S-75 |  | Drawings Preparation& Submission | 7d | 2027-01-25 | 2027-02-04 | E-DD-AR-3S-15, E-GFC-AR-3S-70 | CSD-LKO-Design (5 Day + Holiday)-25 | Design Consultnacy Charges; Physical Progress [15860 h]; TATA Projects Ltd-25 |  |
| E-GFC-AR-3S-150 |  | Domain Expert Approval | 2d | 2027-02-04 | 2027-02-08 | E-GFC-AR-3S-75 | CSD-LKO-Design (5 Day + Holiday)-25 | Design Consultnacy Charges; Physical Progress [1030 h]; TATA Projects Ltd-25 |  |
| E-GFC-AR-3S-185 |  | Executive Consultant Approval | 2d | 2027-02-08 | 2027-02-10 | E-GFC-AR-3S-150 | CSD-LKO-Design (5 Day + Holiday)-25 | Design Consultnacy Charges; Physical Progress [1030 h]; TATA Projects Ltd-25 |  |
| E-GFC-AR-3S-220 |  | Peer Reviewer Approval | 2d | 2027-02-10 | 2027-02-12 | E-GFC-AR-3S-185 | CSD-LKO-Design (5 Day + Holiday)-25 | Design Consultnacy Charges; Physical Progress [1030 h]; Peer Reviewer-25 |  |
| E-GFC-AR-3S-255 |  | TPL Design Team Approval | 2d | 2027-02-12 | 2027-02-16 | E-GFC-AR-3S-220 | CSD-LKO-Design (5 Day + Holiday)-25 | Design Consultnacy Charges [388659 INR]; Physical Progress [1030 h]; TATA Projects Ltd-25 | 388,659 |
| E-GFC-AR-3S-290 |  | Issue of Hard Copy on Site | 4d | 2027-02-16 | 2027-02-22 | E-GFC-AR-3S-255 | CSD-LKO-Design (5 Day + Holiday)-25 | Design Consultnacy Charges; Physical Progress [510 h]; TATA Projects Ltd-25 |  |

| ID | WBS | Activity | Duration | Start | Finish | Predecessors | Calendar | Resources | Cost |
| --- | --- | --- | --- | --- | --- | --- | --- | --- | --- |
|  | 8 | **Sixth Floor** |  | 2027-02-04 | 2027-03-03 |  |  |  |  |
| E-GFC-AR-3S-80 |  | Drawings Preparation& Submission | 7d | 2027-02-04 | 2027-02-15 | E-DD-AR-3S-15, E-GFC-AR-3S-75 | CSD-LKO-Design (5 Day + Holiday)-25 | Design Consultnacy Charges; Physical Progress [15860 h]; TATA Projects Ltd-25 |  |
| E-GFC-AR-3S-155 |  | Domain Expert Approval | 2d | 2027-02-15 | 2027-02-17 | E-GFC-AR-3S-80 | CSD-LKO-Design (5 Day + Holiday)-25 | Design Consultnacy Charges; Physical Progress [1030 h]; TATA Projects Ltd-25 |  |
| E-GFC-AR-3S-190 |  | Executive Consultant Approval | 2d | 2027-02-17 | 2027-02-19 | E-GFC-AR-3S-155 | CSD-LKO-Design (5 Day + Holiday)-25 | Design Consultnacy Charges; Physical Progress [1030 h]; TATA Projects Ltd-25 |  |
| E-GFC-AR-3S-225 |  | Peer Reviewer Approval | 2d | 2027-02-19 | 2027-02-23 | E-GFC-AR-3S-190 | CSD-LKO-Design (5 Day + Holiday)-25 | Design Consultnacy Charges; Physical Progress [1030 h]; Peer Reviewer-25 |  |
| E-GFC-AR-3S-260 |  | TPL Design Team Approval | 2d | 2027-02-23 | 2027-02-25 | E-GFC-AR-3S-225 | CSD-LKO-Design (5 Day + Holiday)-25 | Design Consultnacy Charges [388659 INR]; Physical Progress [1030 h]; TATA Projects Ltd-25 | 388,659 |
| E-GFC-AR-3S-295 |  | Issue of Hard Copy on Site | 4d | 2027-02-25 | 2027-03-03 | E-GFC-AR-3S-260 | CSD-LKO-Design (5 Day + Holiday)-25 | Design Consultnacy Charges; Physical Progress [510 h]; TATA Projects Ltd-25 |  |
|  | 10 | **Seventh Floor** |  | 2027-02-15 | 2027-03-15 |  |  |  |  |
| E-GFC-AR-3S-90 |  | Drawings Preparation& Submission | 7d | 2027-02-15 | 2027-02-24 | E-DD-AR-3S-15, E-GFC-AR-3S-80 | CSD-LKO-Design (5 Day + Holiday)-25 | Design Consultnacy Charges; Physical Progress [15860 h]; TATA Projects Ltd-25 |  |
| E-GFC-AR-3S-165 |  | Domain Expert Approval | 2d | 2027-02-24 | 2027-02-26 | E-GFC-AR-3S-90 | CSD-LKO-Design (5 Day + Holiday)-25 | Design Consultnacy Charges; Physical Progress [1030 h]; TATA Projects Ltd-25 |  |
| E-GFC-AR-3S-200 |  | Executive Consultant Approval | 2d | 2027-02-26 | 2027-03-02 | E-GFC-AR-3S-165 | CSD-LKO-Design (5 Day + Holiday)-25 | Design Consultnacy Charges; Physical Progress [1030 h]; TATA Projects Ltd-25 |  |
| E-GFC-AR-3S-235 |  | Peer Reviewer Approval | 2d | 2027-03-02 | 2027-03-04 | E-GFC-AR-3S-200 | CSD-LKO-Design (5 Day + Holiday)-25 | Design Consultnacy Charges; Physical Progress [1030 h]; Peer Reviewer-25 |  |
| E-GFC-AR-3S-270 |  | TPL Design Team Approval | 2d | 2027-03-04 | 2027-03-08 | E-GFC-AR-3S-235 | CSD-LKO-Design (5 Day + Holiday)-25 | Design Consultnacy Charges [388659 INR]; Physical Progress [1030 h]; TATA Projects Ltd-25 | 388,659 |
| E-GFC-AR-3S-305 |  | Issue of Hard Copy on Site | 4d | 2027-03-08 | 2027-03-15 | E-GFC-AR-3S-270 | CSD-LKO-Design (5 Day + Holiday)-25 | Design Consultnacy Charges; Physical Progress [510 h]; TATA Projects Ltd-25 |  |
|  | 9 | **Terrace** |  | 2027-02-24 | 2027-03-25 |  |  |  |  |
| E-GFC-AR-3S-85 |  | Drawings Preparation& Submission | 7d | 2027-02-24 | 2027-03-05 | E-DD-AR-3S-15, E-GFC-AR-3S-90 | CSD-LKO-Design (5 Day + Holiday)-25 | Design Consultnacy Charges; Physical Progress [15860 h]; TATA Projects Ltd-25 |  |
| E-GFC-AR-3S-160 |  | Domain Expert Approval | 2d | 2027-03-05 | 2027-03-09 | E-GFC-AR-3S-85 | CSD-LKO-Design (5 Day + Holiday)-25 | Design Consultnacy Charges; Physical Progress [1030 h]; TATA Projects Ltd-25 |  |
| E-GFC-AR-3S-195 |  | Executive Consultant Approval | 2d | 2027-03-09 | 2027-03-12 | E-GFC-AR-3S-160 | CSD-LKO-Design (5 Day + Holiday)-25 | Design Consultnacy Charges; Physical Progress [1030 h]; TATA Projects Ltd-25 |  |
| E-GFC-AR-3S-230 |  | Peer Reviewer Approval | 2d | 2027-03-12 | 2027-03-16 | E-GFC-AR-3S-195 | CSD-LKO-Design (5 Day + Holiday)-25 | Design Consultnacy Charges; Physical Progress [1030 h]; Peer Reviewer-25 |  |
| E-GFC-AR-3S-265 |  | TPL Design Team Approval | 2d | 2027-03-16 | 2027-03-18 | E-GFC-AR-3S-230 | CSD-LKO-Design (5 Day + Holiday)-25 | Design Consultnacy Charges [388659 INR]; Physical Progress [1030 h]; TATA Projects Ltd-25 | 388,659 |
| E-GFC-AR-3S-300 |  | Issue of Hard Copy on Site | 4d | 2027-03-18 | 2027-03-25 | E-GFC-AR-3S-265 | CSD-LKO-Design (5 Day + Holiday)-25 | Design Consultnacy Charges; Physical Progress [510 h]; TATA Projects Ltd-25 |  |
|  | 4 | **Retail Block 2** |  | 2026-12-04 | 2027-03-29 |  |  |  |  |
|  | 1 | **Ground Floor** |  | 2026-12-04 | 2027-01-22 |  |  |  |  |
| E-GFC-AR-RB2-10 |  | Drawings Preparation& Submission | 21d | 2026-12-04 | 2027-01-06 | E-DD-AR-RB2-15, E-GFC-ST-RB2-10 | CSD-LKO-Design (5 Day + Holiday)-25 | Design Consultnacy Charges; Physical Progress [17910 h]; TATA Projects Ltd-25 |  |
| E-GFC-AR-RB2-15 |  | Domain Expert Approval | 2d | 2027-01-06 | 2027-01-08 | E-GFC-AR-RB2-10 | CSD-LKO-Design (5 Day + Holiday)-25 | Design Consultnacy Charges; Physical Progress [1030 h]; TATA Projects Ltd-25 |  |
| E-GFC-AR-RB2-35 |  | Executive Consultant Approval | 2d | 2027-01-08 | 2027-01-12 | E-GFC-AR-RB2-15 | CSD-LKO-Design (5 Day + Holiday)-25 | Design Consultnacy Charges; Physical Progress [1030 h]; TATA Projects Ltd-25 |  |
| E-GFC-AR-RB2-40 |  | Peer Reviewer Approval | 2d | 2027-01-12 | 2027-01-14 | E-GFC-AR-RB2-35 | CSD-LKO-Design (5 Day + Holiday)-25 | Design Consultnacy Charges; Physical Progress [1030 h]; Peer Reviewer-25 |  |
| E-GFC-AR-RB2-45 |  | TPL Design Team Approval | 2d | 2027-01-14 | 2027-01-18 | E-GFC-AR-RB2-40 | CSD-LKO-Design (5 Day + Holiday)-25 | Design Consultnacy Charges [388659 INR]; Physical Progress [1030 h]; TATA Projects Ltd-25 | 388,659 |
| E-GFC-AR-RB2-50 |  | Issue of Hard Copy on Site | 4d | 2027-01-18 | 2027-01-22 | E-GFC-AR-RB2-45 | CSD-LKO-Design (5 Day + Holiday)-25 | Design Consultnacy Charges; Physical Progress [510 h]; TATA Projects Ltd-25 |  |

| ID | WBS | Activity | Duration | Start | Finish | Predecessors | Calendar | Resources | Cost |
| --- | --- | --- | --- | --- | --- | --- | --- | --- | --- |
|  | 2 | **First Floor** |  | 2026-12-04 | 2027-01-22 |  |  |  |  |
| E-GFC-AR-RB2-20 |  | Drawings Preparation& Submission | 21d | 2026-12-04 | 2027-01-06 | E-DD-AR-RB2-15, E-GFC-ST-RB2-10 | CSD-LKO-Design (5 Day + Holiday)-25 | Design Consultnacy Charges; Physical Progress [13300 h]; TATA Projects Ltd-25 |  |
| E-GFC-AR-RB2-55 |  | Domain Expert Approval | 2d | 2027-01-06 | 2027-01-08 | E-GFC-AR-RB2-20 | CSD-LKO-Design (5 Day + Holiday)-25 | Design Consultnacy Charges; Physical Progress [1030 h]; TATA Projects Ltd-25 |  |
| E-GFC-AR-RB2-90 |  | Executive Consultant Approval | 2d | 2027-01-08 | 2027-01-12 | E-GFC-AR-RB2-55 | CSD-LKO-Design (5 Day + Holiday)-25 | Design Consultnacy Charges; Physical Progress [1030 h]; TATA Projects Ltd-25 |  |
| E-GFC-AR-RB2-105 |  | Peer Reviewer Approval | 2d | 2027-01-12 | 2027-01-14 | E-GFC-AR-RB2-90 | CSD-LKO-Design (5 Day + Holiday)-25 | Design Consultnacy Charges; Physical Progress [1030 h]; Peer Reviewer-25 |  |
| E-GFC-AR-RB2-120 |  | TPL Design Team Approval | 2d | 2027-01-14 | 2027-01-18 | E-GFC-AR-RB2-105 | CSD-LKO-Design (5 Day + Holiday)-25 | Design Consultnacy Charges [388659 INR]; Physical Progress [1030 h]; TATA Projects Ltd-25 | 388,659 |
| E-GFC-AR-RB2-135 |  | Issue of Hard Copy on Site | 4d | 2027-01-18 | 2027-01-22 | E-GFC-AR-RB2-120 | CSD-LKO-Design (5 Day + Holiday)-25 | Design Consultnacy Charges; Physical Progress [510 h]; TATA Projects Ltd-25 |  |
|  | 4 | **Second Floor** |  | 2027-01-06 | 2027-02-03 |  |  |  |  |
| E-GFC-AR-RB2-25 |  | Drawings Preparation& Submission | 7d | 2027-01-06 | 2027-01-15 | E-DD-AR-RB2-15, E-GFC-AR-RB2-20 | CSD-LKO-Design (5 Day + Holiday)-25 | Design Consultnacy Charges; Physical Progress [13300 h]; TATA Projects Ltd-25 |  |
| E-GFC-AR-RB2-60 |  | Domain Expert Approval | 2d | 2027-01-15 | 2027-01-19 | E-GFC-AR-RB2-25 | CSD-LKO-Design (5 Day + Holiday)-25 | Design Consultnacy Charges; Physical Progress [1030 h]; TATA Projects Ltd-25 |  |
| E-GFC-AR-RB2-95 |  | Executive Consultant Approval | 2d | 2027-01-19 | 2027-01-21 | E-GFC-AR-RB2-60 | CSD-LKO-Design (5 Day + Holiday)-25 | Design Consultnacy Charges; Physical Progress [1030 h]; TATA Projects Ltd-25 |  |
| E-GFC-AR-RB2-110 |  | Peer Reviewer Approval | 2d | 2027-01-21 | 2027-01-25 | E-GFC-AR-RB2-95 | CSD-LKO-Design (5 Day + Holiday)-25 | Design Consultnacy Charges; Physical Progress [1030 h]; Peer Reviewer-25 |  |
| E-GFC-AR-RB2-125 |  | TPL Design Team Approval | 2d | 2027-01-25 | 2027-01-28 | E-GFC-AR-RB2-110 | CSD-LKO-Design (5 Day + Holiday)-25 | Design Consultnacy Charges [388659 INR]; Physical Progress [1030 h]; TATA Projects Ltd-25 | 388,659 |
| E-GFC-AR-RB2-140 |  | Issue of Hard Copy on Site | 4d | 2027-01-28 | 2027-02-03 | E-GFC-AR-RB2-125 | CSD-LKO-Design (5 Day + Holiday)-25 | Design Consultnacy Charges; Physical Progress [510 h]; TATA Projects Ltd-25 |  |
|  | 5 | **Third Floor** |  | 2027-01-15 | 2027-02-12 |  |  |  |  |
| E-GFC-AR-RB2-30 |  | Drawings Preparation& Submission | 7d | 2027-01-15 | 2027-01-27 | E-DD-AR-RB2-15, E-GFC-AR-RB2-25 | CSD-LKO-Design (5 Day + Holiday)-25 | Design Consultnacy Charges; Physical Progress [13300 h]; TATA Projects Ltd-25 |  |
| E-GFC-AR-RB2-65 |  | Domain Expert Approval | 2d | 2027-01-27 | 2027-01-29 | E-GFC-AR-RB2-30 | CSD-LKO-Design (5 Day + Holiday)-25 | Design Consultnacy Charges; Physical Progress [1030 h]; TATA Projects Ltd-25 |  |
| E-GFC-AR-RB2-100 |  | Executive Consultant Approval | 2d | 2027-01-29 | 2027-02-02 | E-GFC-AR-RB2-65 | CSD-LKO-Design (5 Day + Holiday)-25 | Design Consultnacy Charges; Physical Progress [1030 h]; TATA Projects Ltd-25 |  |
| E-GFC-AR-RB2-115 |  | Peer Reviewer Approval | 2d | 2027-02-02 | 2027-02-04 | E-GFC-AR-RB2-100 | CSD-LKO-Design (5 Day + Holiday)-25 | Design Consultnacy Charges; Physical Progress [1030 h]; Peer Reviewer-25 |  |
| E-GFC-AR-RB2-130 |  | TPL Design Team Approval | 2d | 2027-02-04 | 2027-02-08 | E-GFC-AR-RB2-115 | CSD-LKO-Design (5 Day + Holiday)-25 | Design Consultnacy Charges [388659 INR]; Physical Progress [1030 h]; TATA Projects Ltd-25 | 388,659 |
| E-GFC-AR-RB2-145 |  | Issue of Hard Copy on Site | 4d | 2027-02-08 | 2027-02-12 | E-GFC-AR-RB2-130 | CSD-LKO-Design (5 Day + Holiday)-25 | Design Consultnacy Charges; Physical Progress [510 h]; TATA Projects Ltd-25 |  |
|  | 6 | **Fourth Floor** |  | 2027-01-27 | 2027-02-23 |  |  |  |  |
| E-GFC-AR-RB2-70 |  | Drawings Preparation& Submission | 7d | 2027-01-27 | 2027-02-05 | E-DD-AR-RB2-15, E-GFC-AR-RB2-30 | CSD-LKO-Design (5 Day + Holiday)-25 | Design Consultnacy Charges; Physical Progress [15860 h]; TATA Projects Ltd-25 |  |
| E-GFC-AR-RB2-150 |  | Domain Expert Approval | 2d | 2027-02-05 | 2027-02-09 | E-GFC-AR-RB2-70 | CSD-LKO-Design (5 Day + Holiday)-25 | Design Consultnacy Charges; Physical Progress [1030 h]; TATA Projects Ltd-25 |  |
| E-GFC-AR-RB2-170 |  | Executive Consultant Approval | 2d | 2027-02-09 | 2027-02-11 | E-GFC-AR-RB2-150 | CSD-LKO-Design (5 Day + Holiday)-25 | Design Consultnacy Charges; Physical Progress [1030 h]; TATA Projects Ltd-25 |  |
| E-GFC-AR-RB2-190 |  | Peer Reviewer Approval | 2d | 2027-02-11 | 2027-02-15 | E-GFC-AR-RB2-170 | CSD-LKO-Design (5 Day + Holiday)-25 | Design Consultnacy Charges; Physical Progress [1030 h]; Peer Reviewer-25 |  |
| E-GFC-AR-RB2-210 |  | TPL Design Team Approval | 2d | 2027-02-15 | 2027-02-17 | E-GFC-AR-RB2-190 | CSD-LKO-Design (5 Day + Holiday)-25 | Design Consultnacy Charges [388659 INR]; Physical Progress [1030 h]; TATA Projects Ltd-25 | 388,659 |
| E-GFC-AR-RB2-230 |  | Issue of Hard Copy on Site | 4d | 2027-02-17 | 2027-02-23 | E-GFC-AR-RB2-210 | CSD-LKO-Design (5 Day + Holiday)-25 | Design Consultnacy Charges; Physical Progress [510 h]; TATA Projects Ltd-25 |  |

| ID | WBS | Activity | Duration | Start | Finish | Predecessors | Calendar | Resources | Cost |
| --- | --- | --- | --- | --- | --- | --- | --- | --- | --- |
|  | 7 | **Fifth Floor** |  | 2027-02-05 | 2027-03-04 |  |  |  |  |
| E-GFC-AR-RB2-75 |  | Drawings Preparation& Submission | 7d | 2027-02-05 | 2027-02-16 | E-DD-AR-RB2-15, E-GFC-AR-RB2-70 | CSD-LKO-Design (5 Day + Holiday)-25 | Design Consultnacy Charges; Physical Progress [15860 h]; TATA Projects Ltd-25 |  |
| E-GFC-AR-RB2-155 |  | Domain Expert Approval | 2d | 2027-02-16 | 2027-02-18 | E-GFC-AR-RB2-75 | CSD-LKO-Design (5 Day + Holiday)-25 | Design Consultnacy Charges; Physical Progress [1030 h]; TATA Projects Ltd-25 |  |
| E-GFC-AR-RB2-175 |  | Executive Consultant Approval | 2d | 2027-02-18 | 2027-02-22 | E-GFC-AR-RB2-155 | CSD-LKO-Design (5 Day + Holiday)-25 | Design Consultnacy Charges; Physical Progress [1030 h]; TATA Projects Ltd-25 |  |
| E-GFC-AR-RB2-195 |  | Peer Reviewer Approval | 2d | 2027-02-22 | 2027-02-24 | E-GFC-AR-RB2-175 | CSD-LKO-Design (5 Day + Holiday)-25 | Design Consultnacy Charges; Physical Progress [1030 h]; Peer Reviewer-25 |  |
| E-GFC-AR-RB2-215 |  | TPL Design Team Approval | 2d | 2027-02-24 | 2027-02-26 | E-GFC-AR-RB2-195 | CSD-LKO-Design (5 Day + Holiday)-25 | Design Consultnacy Charges [388659 INR]; Physical Progress [1030 h]; TATA Projects Ltd-25 | 388,659 |
| E-GFC-AR-RB2-235 |  | Issue of Hard Copy on Site | 4d | 2027-02-26 | 2027-03-04 | E-GFC-AR-RB2-215 | CSD-LKO-Design (5 Day + Holiday)-25 | Design Consultnacy Charges; Physical Progress [510 h]; TATA Projects Ltd-25 |  |
|  | 8 | **Sixth Floor** |  | 2027-02-16 | 2027-03-16 |  |  |  |  |
| E-GFC-AR-RB2-80 |  | Drawings Preparation& Submission | 7d | 2027-02-16 | 2027-02-25 | E-DD-AR-RB2-15, E-GFC-AR-RB2-75 | CSD-LKO-Design (5 Day + Holiday)-25 | Design Consultnacy Charges; Physical Progress [15860 h]; TATA Projects Ltd-25 |  |
| E-GFC-AR-RB2-160 |  | Domain Expert Approval | 2d | 2027-02-25 | 2027-03-01 | E-GFC-AR-RB2-80 | CSD-LKO-Design (5 Day + Holiday)-25 | Design Consultnacy Charges; Physical Progress [1030 h]; TATA Projects Ltd-25 |  |
| E-GFC-AR-RB2-180 |  | Executive Consultant Approval | 2d | 2027-03-01 | 2027-03-03 | E-GFC-AR-RB2-160 | CSD-LKO-Design (5 Day + Holiday)-25 | Design Consultnacy Charges; Physical Progress [1030 h]; TATA Projects Ltd-25 |  |
| E-GFC-AR-RB2-200 |  | Peer Reviewer Approval | 2d | 2027-03-03 | 2027-03-05 | E-GFC-AR-RB2-180 | CSD-LKO-Design (5 Day + Holiday)-25 | Design Consultnacy Charges; Physical Progress [1030 h]; Peer Reviewer-25 |  |
| E-GFC-AR-RB2-220 |  | TPL Design Team Approval | 2d | 2027-03-05 | 2027-03-09 | E-GFC-AR-RB2-200 | CSD-LKO-Design (5 Day + Holiday)-25 | Design Consultnacy Charges [388659 INR]; Physical Progress [1030 h]; TATA Projects Ltd-25 | 388,659 |
| E-GFC-AR-RB2-240 |  | Issue of Hard Copy on Site | 4d | 2027-03-09 | 2027-03-16 | E-GFC-AR-RB2-220 | CSD-LKO-Design (5 Day + Holiday)-25 | Design Consultnacy Charges; Physical Progress [510 h]; TATA Projects Ltd-25 |  |
|  | 9 | **Terrace** |  | 2027-02-25 | 2027-03-29 |  |  |  |  |
| E-GFC-AR-RB2-85 |  | Drawings Preparation& Submission | 7d | 2027-02-25 | 2027-03-08 | E-DD-AR-RB2-15, E-GFC-AR-RB2-80 | CSD-LKO-Design (5 Day + Holiday)-25 | Design Consultnacy Charges; Physical Progress [15860 h]; TATA Projects Ltd-25 |  |
| E-GFC-AR-RB2-165 |  | Domain Expert Approval | 2d | 2027-03-08 | 2027-03-11 | E-GFC-AR-RB2-85 | CSD-LKO-Design (5 Day + Holiday)-25 | Design Consultnacy Charges; Physical Progress [1030 h]; TATA Projects Ltd-25 |  |
| E-GFC-AR-RB2-185 |  | Executive Consultant Approval | 2d | 2027-03-11 | 2027-03-15 | E-GFC-AR-RB2-165 | CSD-LKO-Design (5 Day + Holiday)-25 | Design Consultnacy Charges; Physical Progress [1030 h]; TATA Projects Ltd-25 |  |
| E-GFC-AR-RB2-205 |  | Peer Reviewer Approval | 2d | 2027-03-15 | 2027-03-17 | E-GFC-AR-RB2-185 | CSD-LKO-Design (5 Day + Holiday)-25 | Design Consultnacy Charges; Physical Progress [1030 h]; Peer Reviewer-25 |  |
| E-GFC-AR-RB2-225 |  | TPL Design Team Approval | 2d | 2027-03-17 | 2027-03-19 | E-GFC-AR-RB2-205 | CSD-LKO-Design (5 Day + Holiday)-25 | Design Consultnacy Charges [388659 INR]; Physical Progress [1030 h]; TATA Projects Ltd-25 | 388,659 |
| E-GFC-AR-RB2-245 |  | Issue of Hard Copy on Site | 4d | 2027-03-19 | 2027-03-29 | E-GFC-AR-RB2-225 | CSD-LKO-Design (5 Day + Holiday)-25 | Design Consultnacy Charges; Physical Progress [510 h]; TATA Projects Ltd-25 |  |
|  | 5 | **Retail Block 1** |  | 2026-11-27 | 2027-02-25 |  |  |  |  |
|  | 1 | **Ground Floor** |  | 2026-11-27 | 2027-01-15 |  |  |  |  |
| E-GFC-AR-RB1-10 |  | Drawings Preparation& Submission | 21d | 2026-11-27 | 2026-12-29 | E-DD-AR-RB1-15, E-GFC-ST-RB1-10 | CSD-LKO-Design (5 Day + Holiday)-25 | Design Consultnacy Charges; Physical Progress [17910 h]; TATA Projects Ltd-25 |  |
| E-GFC-AR-RB1-15 |  | Domain Expert Approval | 2d | 2026-12-29 | 2026-12-31 | E-GFC-AR-RB1-10 | CSD-LKO-Design (5 Day + Holiday)-25 | Design Consultnacy Charges; Physical Progress [1030 h]; TATA Projects Ltd-25 |  |
| E-GFC-AR-RB1-30 |  | Executive Consultant Approval | 2d | 2026-12-31 | 2027-01-05 | E-GFC-AR-RB1-15 | CSD-LKO-Design (5 Day + Holiday)-25 | Design Consultnacy Charges; Physical Progress [1030 h]; TATA Projects Ltd-25 |  |
| E-GFC-AR-RB1-35 |  | Peer Reviewer Approval | 2d | 2027-01-05 | 2027-01-07 | E-GFC-AR-RB1-30 | CSD-LKO-Design (5 Day + Holiday)-25 | Design Consultnacy Charges; Physical Progress [1030 h]; Peer Reviewer-25 |  |
| E-GFC-AR-RB1-40 |  | TPL Design Team Approval | 2d | 2027-01-07 | 2027-01-11 | E-GFC-AR-RB1-35 | CSD-LKO-Design (5 Day + Holiday)-25 | Design Consultnacy Charges [388659 INR]; Physical Progress [1030 h]; TATA Projects Ltd-25 | 388,659 |
| E-GFC-AR-RB1-45 |  | Issue of Hard Copy on Site | 4d | 2027-01-11 | 2027-01-15 | E-GFC-AR-RB1-40 | CSD-LKO-Design (5 Day + Holiday)-25 | Design Consultnacy Charges; Physical Progress [510 h]; TATA Projects Ltd-25 |  |

| ID | WBS | Activity | Duration | Start | Finish | Predecessors | Calendar | Resources | Cost |
| --- | --- | --- | --- | --- | --- | --- | --- | --- | --- |
|  | 2 | **First Floor** |  | 2026-11-27 | 2027-01-15 |  |  |  |  |
| E-GFC-AR-RB1-20 |  | Drawings Preparation& Submission | 21d | 2026-11-27 | 2026-12-29 | E-DD-AR-RB1-15, E-GFC-ST-RB1-10 | CSD-LKO-Design (5 Day + Holiday)-25 | Design Consultnacy Charges; Physical Progress [13300 h]; TATA Projects Ltd-25 |  |
| E-GFC-AR-RB1-50 |  | Domain Expert Approval | 2d | 2026-12-29 | 2026-12-31 | E-GFC-AR-RB1-20 | CSD-LKO-Design (5 Day + Holiday)-25 | Design Consultnacy Charges; Physical Progress [1030 h]; TATA Projects Ltd-25 |  |
| E-GFC-AR-RB1-75 |  | Executive Consultant Approval | 2d | 2026-12-31 | 2027-01-05 | E-GFC-AR-RB1-50 | CSD-LKO-Design (5 Day + Holiday)-25 | Design Consultnacy Charges; Physical Progress [1030 h]; TATA Projects Ltd-25 |  |
| E-GFC-AR-RB1-85 |  | Peer Reviewer Approval | 2d | 2027-01-05 | 2027-01-07 | E-GFC-AR-RB1-75 | CSD-LKO-Design (5 Day + Holiday)-25 | Design Consultnacy Charges; Physical Progress [1030 h]; Peer Reviewer-25 |  |
| E-GFC-AR-RB1-95 |  | TPL Design Team Approval | 2d | 2027-01-07 | 2027-01-11 | E-GFC-AR-RB1-85 | CSD-LKO-Design (5 Day + Holiday)-25 | Design Consultnacy Charges [388659 INR]; Physical Progress [1030 h]; TATA Projects Ltd-25 | 388,659 |
| E-GFC-AR-RB1-105 |  | Issue of Hard Copy on Site | 4d | 2027-01-11 | 2027-01-15 | E-GFC-AR-RB1-95 | CSD-LKO-Design (5 Day + Holiday)-25 | Design Consultnacy Charges; Physical Progress [510 h]; TATA Projects Ltd-25 |  |
|  | 4 | **Second Floor** |  | 2026-12-29 | 2027-01-27 |  |  |  |  |
| E-GFC-AR-RB1-25 |  | Drawings Preparation& Submission | 7d | 2026-12-29 | 2027-01-08 | E-DD-AR-RB1-15, E-GFC-AR-RB1-20 | CSD-LKO-Design (5 Day + Holiday)-25 | Design Consultnacy Charges; Physical Progress [13300 h]; TATA Projects Ltd-25 |  |
| E-GFC-AR-RB1-55 |  | Domain Expert Approval | 2d | 2027-01-08 | 2027-01-12 | E-GFC-AR-RB1-25 | CSD-LKO-Design (5 Day + Holiday)-25 | Design Consultnacy Charges; Physical Progress [1030 h]; TATA Projects Ltd-25 |  |
| E-GFC-AR-RB1-80 |  | Executive Consultant Approval | 2d | 2027-01-12 | 2027-01-14 | E-GFC-AR-RB1-55 | CSD-LKO-Design (5 Day + Holiday)-25 | Design Consultnacy Charges; Physical Progress [1030 h]; TATA Projects Ltd-25 |  |
| E-GFC-AR-RB1-90 |  | Peer Reviewer Approval | 2d | 2027-01-14 | 2027-01-18 | E-GFC-AR-RB1-80 | CSD-LKO-Design (5 Day + Holiday)-25 | Design Consultnacy Charges; Physical Progress [1030 h]; Peer Reviewer-25 |  |
| E-GFC-AR-RB1-100 |  | TPL Design Team Approval | 2d | 2027-01-18 | 2027-01-20 | E-GFC-AR-RB1-90 | CSD-LKO-Design (5 Day + Holiday)-25 | Design Consultnacy Charges [388659 INR]; Physical Progress [1030 h]; TATA Projects Ltd-25 | 388,659 |
| E-GFC-AR-RB1-110 |  | Issue of Hard Copy on Site | 4d | 2027-01-20 | 2027-01-27 | E-GFC-AR-RB1-100 | CSD-LKO-Design (5 Day + Holiday)-25 | Design Consultnacy Charges; Physical Progress [510 h]; TATA Projects Ltd-25 |  |
|  | 5 | **Third Floor** |  | 2027-01-08 | 2027-02-05 |  |  |  |  |
| E-GFC-AR-RB1-60 |  | Drawings Preparation& Submission | 7d | 2027-01-08 | 2027-01-19 | E-DD-AR-RB1-15, E-GFC-AR-RB1-25 | CSD-LKO-Design (5 Day + Holiday)-25 | Design Consultnacy Charges; Physical Progress [15860 h]; TATA Projects Ltd-25 |  |
| E-GFC-AR-RB1-115 |  | Domain Expert Approval | 2d | 2027-01-19 | 2027-01-21 | E-GFC-AR-RB1-60 | CSD-LKO-Design (5 Day + Holiday)-25 | Design Consultnacy Charges; Physical Progress [1030 h]; TATA Projects Ltd-25 |  |
| E-GFC-AR-RB1-130 |  | Executive Consultant Approval | 2d | 2027-01-21 | 2027-01-25 | E-GFC-AR-RB1-115 | CSD-LKO-Design (5 Day + Holiday)-25 | Design Consultnacy Charges; Physical Progress [1030 h]; TATA Projects Ltd-25 |  |
| E-GFC-AR-RB1-145 |  | Peer Reviewer Approval | 2d | 2027-01-25 | 2027-01-28 | E-GFC-AR-RB1-130 | CSD-LKO-Design (5 Day + Holiday)-25 | Design Consultnacy Charges; Physical Progress [1030 h]; Peer Reviewer-25 |  |
| E-GFC-AR-RB1-160 |  | TPL Design Team Approval | 2d | 2027-01-28 | 2027-02-01 | E-GFC-AR-RB1-145 | CSD-LKO-Design (5 Day + Holiday)-25 | Design Consultnacy Charges [388659 INR]; Physical Progress [1030 h]; TATA Projects Ltd-25 | 388,659 |
| E-GFC-AR-RB1-175 |  | Issue of Hard Copy on Site | 4d | 2027-02-01 | 2027-02-05 | E-GFC-AR-RB1-160 | CSD-LKO-Design (5 Day + Holiday)-25 | Design Consultnacy Charges; Physical Progress [510 h]; TATA Projects Ltd-25 |  |
|  | 6 | **Fourth Floor** |  | 2027-01-19 | 2027-02-16 |  |  |  |  |
| E-GFC-AR-RB1-65 |  | Drawings Preparation& Submission | 7d | 2027-01-19 | 2027-01-29 | E-DD-AR-RB1-15, E-GFC-AR-RB1-60 | CSD-LKO-Design (5 Day + Holiday)-25 | Design Consultnacy Charges; Physical Progress [15860 h]; TATA Projects Ltd-25 |  |
| E-GFC-AR-RB1-120 |  | Domain Expert Approval | 2d | 2027-01-29 | 2027-02-02 | E-GFC-AR-RB1-65 | CSD-LKO-Design (5 Day + Holiday)-25 | Design Consultnacy Charges; Physical Progress [1030 h]; TATA Projects Ltd-25 |  |
| E-GFC-AR-RB1-135 |  | Executive Consultant Approval | 2d | 2027-02-02 | 2027-02-04 | E-GFC-AR-RB1-120 | CSD-LKO-Design (5 Day + Holiday)-25 | Design Consultnacy Charges; Physical Progress [1030 h]; TATA Projects Ltd-25 |  |
| E-GFC-AR-RB1-150 |  | Peer Reviewer Approval | 2d | 2027-02-04 | 2027-02-08 | E-GFC-AR-RB1-135 | CSD-LKO-Design (5 Day + Holiday)-25 | Design Consultnacy Charges; Physical Progress [1030 h]; Peer Reviewer-25 |  |
| E-GFC-AR-RB1-165 |  | TPL Design Team Approval | 2d | 2027-02-08 | 2027-02-10 | E-GFC-AR-RB1-150 | CSD-LKO-Design (5 Day + Holiday)-25 | Design Consultnacy Charges [388659 INR]; Physical Progress [1030 h]; TATA Projects Ltd-25 | 388,659 |
| E-GFC-AR-RB1-180 |  | Issue of Hard Copy on Site | 4d | 2027-02-10 | 2027-02-16 | E-GFC-AR-RB1-165 | CSD-LKO-Design (5 Day + Holiday)-25 | Design Consultnacy Charges; Physical Progress [510 h]; TATA Projects Ltd-25 |  |

| ID | WBS | Activity | Duration | Start | Finish | Predecessors | Calendar | Resources | Cost |
| --- | --- | --- | --- | --- | --- | --- | --- | --- | --- |
|  | 9 | **Terrace** |  | 2027-01-29 | 2027-02-25 |  |  |  |  |
| E-GFC-AR-RB1-70 |  | Drawings Preparation& Submission | 7d | 2027-01-29 | 2027-02-09 | E-DD-AR-RB1-15, E-GFC-AR-RB1-65 | CSD-LKO-Design (5 Day + Holiday)-25 | Design Consultnacy Charges; Physical Progress [15860 h]; TATA Projects Ltd-25 |  |
| E-GFC-AR-RB1-125 |  | Domain Expert Approval | 2d | 2027-02-09 | 2027-02-11 | E-GFC-AR-RB1-70 | CSD-LKO-Design (5 Day + Holiday)-25 | Design Consultnacy Charges; Physical Progress [1030 h]; TATA Projects Ltd-25 |  |
| E-GFC-AR-RB1-140 |  | Executive Consultant Approval | 2d | 2027-02-11 | 2027-02-15 | E-GFC-AR-RB1-125 | CSD-LKO-Design (5 Day + Holiday)-25 | Design Consultnacy Charges; Physical Progress [1030 h]; TATA Projects Ltd-25 |  |
| E-GFC-AR-RB1-155 |  | Peer Reviewer Approval | 2d | 2027-02-15 | 2027-02-17 | E-GFC-AR-RB1-140 | CSD-LKO-Design (5 Day + Holiday)-25 | Design Consultnacy Charges; Physical Progress [1030 h]; Peer Reviewer-25 |  |
| E-GFC-AR-RB1-170 |  | TPL Design Team Approval | 2d | 2027-02-17 | 2027-02-19 | E-GFC-AR-RB1-155 | CSD-LKO-Design (5 Day + Holiday)-25 | Design Consultnacy Charges [388659 INR]; Physical Progress [1030 h]; TATA Projects Ltd-25 | 388,659 |
| E-GFC-AR-RB1-185 |  | Issue of Hard Copy on Site | 4d | 2027-02-19 | 2027-02-25 | E-GFC-AR-RB1-170 | CSD-LKO-Design (5 Day + Holiday)-25 | Design Consultnacy Charges; Physical Progress [510 h]; TATA Projects Ltd-25 |  |
|  | 6 | **Convention Center** |  | 2026-11-20 | 2027-03-01 |  |  |  |  |
|  | 1 | **Ground Floor** |  | 2026-11-20 | 2027-01-08 |  |  |  |  |
| E-GFC-AR-CC-10 |  | Drawings Preparation& Submission | 21d | 2026-11-20 | 2026-12-21 | E-DD-AR-CC-15, E-GFC-ST-CC-15 | CSD-LKO-Design (5 Day + Holiday)-25 | Design Consultnacy Charges; Physical Progress [17910 h]; TATA Projects Ltd-25 |  |
| E-GFC-AR-CC-15 |  | Domain Expert Approval | 2d | 2026-12-21 | 2026-12-23 | E-GFC-AR-CC-10 | CSD-LKO-Design (5 Day + Holiday)-25 | Design Consultnacy Charges; Physical Progress [1030 h]; TATA Projects Ltd-25 |  |
| E-GFC-AR-CC-40 |  | Executive Consultant Approval | 2d | 2026-12-23 | 2026-12-28 | E-GFC-AR-CC-15 | CSD-LKO-Design (5 Day + Holiday)-25 | Design Consultnacy Charges; Physical Progress [1030 h]; TATA Projects Ltd-25 |  |
| E-GFC-AR-CC-45 |  | Peer Reviewer Approval | 2d | 2026-12-28 | 2026-12-30 | E-GFC-AR-CC-40 | CSD-LKO-Design (5 Day + Holiday)-25 | Design Consultnacy Charges; Physical Progress [1030 h]; Peer Reviewer-25 |  |
| E-GFC-AR-CC-50 |  | TPL Design Team Approval | 2d | 2026-12-30 | 2027-01-04 | E-GFC-AR-CC-45 | CSD-LKO-Design (5 Day + Holiday)-25 | Design Consultnacy Charges [388659 INR]; Physical Progress [1030 h]; TATA Projects Ltd-25 | 388,659 |
| E-GFC-AR-CC-55 |  | Issue of Hard Copy on Site | 4d | 2027-01-04 | 2027-01-08 | E-GFC-AR-CC-50 | CSD-LKO-Design (5 Day + Holiday)-25 | Design Consultnacy Charges; Physical Progress [510 h]; TATA Projects Ltd-25 |  |
|  | 5 | **First Mezzanine** |  | 2026-11-20 | 2027-01-08 |  |  |  |  |
| E-GFC-AR-CC-25 |  | Drawings Preparation& Submission | 21d | 2026-11-20 | 2026-12-21 | E-DD-AR-CC-15, E-GFC-ST-CC-15 | CSD-LKO-Design (5 Day + Holiday)-25 | Design Consultnacy Charges; Physical Progress [13300 h]; TATA Projects Ltd-25 |  |
| E-GFC-AR-CC-70 |  | Domain Expert Approval | 2d | 2026-12-21 | 2026-12-23 | E-GFC-AR-CC-25 | CSD-LKO-Design (5 Day + Holiday)-25 | Design Consultnacy Charges; Physical Progress [1030 h]; TATA Projects Ltd-25 |  |
| E-GFC-AR-CC-95 |  | Executive Consultant Approval | 2d | 2026-12-23 | 2026-12-28 | E-GFC-AR-CC-70 | CSD-LKO-Design (5 Day + Holiday)-25 | Design Consultnacy Charges; Physical Progress [1030 h]; TATA Projects Ltd-25 |  |
| E-GFC-AR-CC-115 |  | Peer Reviewer Approval | 2d | 2026-12-28 | 2026-12-30 | E-GFC-AR-CC-95 | CSD-LKO-Design (5 Day + Holiday)-25 | Design Consultnacy Charges; Physical Progress [1030 h]; Peer Reviewer-25 |  |
| E-GFC-AR-CC-135 |  | TPL Design Team Approval | 2d | 2026-12-30 | 2027-01-04 | E-GFC-AR-CC-115 | CSD-LKO-Design (5 Day + Holiday)-25 | Design Consultnacy Charges [388659 INR]; Physical Progress [1030 h]; TATA Projects Ltd-25 | 388,659 |
| E-GFC-AR-CC-155 |  | Issue of Hard Copy on Site | 4d | 2027-01-04 | 2027-01-08 | E-GFC-AR-CC-135 | CSD-LKO-Design (5 Day + Holiday)-25 | Design Consultnacy Charges; Physical Progress [510 h]; TATA Projects Ltd-25 |  |
|  | 6 | **Second Mezzanine** |  | 2026-12-21 | 2027-01-19 |  |  |  |  |
| E-GFC-AR-CC-30 |  | Drawings Preparation& Submission | 7d | 2026-12-21 | 2026-12-31 | E-DD-AR-CC-15, E-GFC-AR-CC-25 | CSD-LKO-Design (5 Day + Holiday)-25 | Design Consultnacy Charges; Physical Progress [13300 h]; TATA Projects Ltd-25 |  |
| E-GFC-AR-CC-75 |  | Domain Expert Approval | 2d | 2026-12-31 | 2027-01-05 | E-GFC-AR-CC-30 | CSD-LKO-Design (5 Day + Holiday)-25 | Design Consultnacy Charges; Physical Progress [1030 h]; TATA Projects Ltd-25 |  |
| E-GFC-AR-CC-100 |  | Executive Consultant Approval | 2d | 2027-01-05 | 2027-01-07 | E-GFC-AR-CC-75 | CSD-LKO-Design (5 Day + Holiday)-25 | Design Consultnacy Charges; Physical Progress [1030 h]; TATA Projects Ltd-25 |  |
| E-GFC-AR-CC-120 |  | Peer Reviewer Approval | 2d | 2027-01-07 | 2027-01-11 | E-GFC-AR-CC-100 | CSD-LKO-Design (5 Day + Holiday)-25 | Design Consultnacy Charges; Physical Progress [1030 h]; Peer Reviewer-25 |  |
| E-GFC-AR-CC-140 |  | TPL Design Team Approval | 2d | 2027-01-11 | 2027-01-13 | E-GFC-AR-CC-120 | CSD-LKO-Design (5 Day + Holiday)-25 | Design Consultnacy Charges [388659 INR]; Physical Progress [1030 h]; TATA Projects Ltd-25 | 388,659 |
| E-GFC-AR-CC-165 |  | Issue of Hard Copy on Site | 4d | 2027-01-13 | 2027-01-19 | E-GFC-AR-CC-140 | CSD-LKO-Design (5 Day + Holiday)-25 | Design Consultnacy Charges; Physical Progress [510 h]; TATA Projects Ltd-25 |  |

| ID | WBS | Activity | Duration | Start | Finish | Predecessors | Calendar | Resources | Cost |
| --- | --- | --- | --- | --- | --- | --- | --- | --- | --- |
|  | 2 | **First Floor** |  | 2026-12-31 | 2027-01-29 |  |  |  |  |
| E-GFC-AR-CC-20 |  | Drawings Preparation& Submission | 7d | 2026-12-31 | 2027-01-12 | E-DD-AR-CC-15, E-GFC-AR-CC-30 | CSD-LKO-Design (5 Day + Holiday)-25 | Design Consultnacy Charges; Physical Progress [13300 h]; TATA Projects Ltd-25 |  |
| E-GFC-AR-CC-60 |  | Domain Expert Approval | 2d | 2027-01-12 | 2027-01-14 | E-GFC-AR-CC-20 | CSD-LKO-Design (5 Day + Holiday)-25 | Design Consultnacy Charges; Physical Progress [1030 h]; TATA Projects Ltd-25 |  |
| E-GFC-AR-CC-90 |  | Executive Consultant Approval | 2d | 2027-01-14 | 2027-01-18 | E-GFC-AR-CC-60 | CSD-LKO-Design (5 Day + Holiday)-25 | Design Consultnacy Charges; Physical Progress [1030 h]; TATA Projects Ltd-25 |  |
| E-GFC-AR-CC-110 |  | Peer Reviewer Approval | 2d | 2027-01-18 | 2027-01-20 | E-GFC-AR-CC-90 | CSD-LKO-Design (5 Day + Holiday)-25 | Design Consultnacy Charges; Physical Progress [1030 h]; Peer Reviewer-25 |  |
| E-GFC-AR-CC-130 |  | TPL Design Team Approval | 2d | 2027-01-20 | 2027-01-22 | E-GFC-AR-CC-110 | CSD-LKO-Design (5 Day + Holiday)-25 | Design Consultnacy Charges [388659 INR]; Physical Progress [1030 h]; TATA Projects Ltd-25 | 388,659 |
| E-GFC-AR-CC-150 |  | Issue of Hard Copy on Site | 4d | 2027-01-22 | 2027-01-29 | E-GFC-AR-CC-130 | CSD-LKO-Design (5 Day + Holiday)-25 | Design Consultnacy Charges; Physical Progress [510 h]; TATA Projects Ltd-25 |  |
|  | 7 | **Third Mezzanine** |  | 2027-01-12 | 2027-02-09 |  |  |  |  |
| E-GFC-AR-CC-35 |  | Drawings Preparation& Submission | 7d | 2027-01-12 | 2027-01-21 | E-DD-AR-CC-15, E-GFC-AR-CC-20 | CSD-LKO-Design (5 Day + Holiday)-25 | Design Consultnacy Charges; Physical Progress [13300 h]; TATA Projects Ltd-25 |  |
| E-GFC-AR-CC-80 |  | Domain Expert Approval | 2d | 2027-01-21 | 2027-01-25 | E-GFC-AR-CC-35 | CSD-LKO-Design (5 Day + Holiday)-25 | Design Consultnacy Charges; Physical Progress [1030 h]; TATA Projects Ltd-25 |  |
| E-GFC-AR-CC-105 |  | Executive Consultant Approval | 2d | 2027-01-25 | 2027-01-28 | E-GFC-AR-CC-80 | CSD-LKO-Design (5 Day + Holiday)-25 | Design Consultnacy Charges; Physical Progress [1030 h]; TATA Projects Ltd-25 |  |
| E-GFC-AR-CC-125 |  | Peer Reviewer Approval | 2d | 2027-01-28 | 2027-02-01 | E-GFC-AR-CC-105 | CSD-LKO-Design (5 Day + Holiday)-25 | Design Consultnacy Charges; Physical Progress [1030 h]; Peer Reviewer-25 |  |
| E-GFC-AR-CC-145 |  | TPL Design Team Approval | 2d | 2027-02-01 | 2027-02-03 | E-GFC-AR-CC-125 | CSD-LKO-Design (5 Day + Holiday)-25 | Design Consultnacy Charges [388659 INR]; Physical Progress [1030 h]; TATA Projects Ltd-25 | 388,659 |
| E-GFC-AR-CC-160 |  | Issue of Hard Copy on Site | 4d | 2027-02-03 | 2027-02-09 | E-GFC-AR-CC-145 | CSD-LKO-Design (5 Day + Holiday)-25 | Design Consultnacy Charges; Physical Progress [510 h]; TATA Projects Ltd-25 |  |
|  | 4 | **Second Floor** |  | 2027-01-21 | 2027-02-18 |  |  |  |  |
| E-GFC-AR-CC-65 |  | Drawings Preparation& Submission | 7d | 2027-01-21 | 2027-02-02 | E-DD-AR-CC-15, E-GFC-AR-CC-35 | CSD-LKO-Design (5 Day + Holiday)-25 | Design Consultnacy Charges; Physical Progress [15860 h]; TATA Projects Ltd-25 |  |
| E-GFC-AR-CC-170 |  | Domain Expert Approval | 2d | 2027-02-02 | 2027-02-04 | E-GFC-AR-CC-65 | CSD-LKO-Design (5 Day + Holiday)-25 | Design Consultnacy Charges; Physical Progress [1030 h]; TATA Projects Ltd-25 |  |
| E-GFC-AR-CC-180 |  | Executive Consultant Approval | 2d | 2027-02-04 | 2027-02-08 | E-GFC-AR-CC-170 | CSD-LKO-Design (5 Day + Holiday)-25 | Design Consultnacy Charges; Physical Progress [1030 h]; TATA Projects Ltd-25 |  |
| E-GFC-AR-CC-190 |  | Peer Reviewer Approval | 2d | 2027-02-08 | 2027-02-10 | E-GFC-AR-CC-180 | CSD-LKO-Design (5 Day + Holiday)-25 | Design Consultnacy Charges; Physical Progress [1030 h]; Peer Reviewer-25 |  |
| E-GFC-AR-CC-200 |  | TPL Design Team Approval | 2d | 2027-02-10 | 2027-02-12 | E-GFC-AR-CC-190 | CSD-LKO-Design (5 Day + Holiday)-25 | Design Consultnacy Charges [388659 INR]; Physical Progress [1030 h]; TATA Projects Ltd-25 | 388,659 |
| E-GFC-AR-CC-210 |  | Issue of Hard Copy on Site | 4d | 2027-02-12 | 2027-02-18 | E-GFC-AR-CC-200 | CSD-LKO-Design (5 Day + Holiday)-25 | Design Consultnacy Charges; Physical Progress [510 h]; TATA Projects Ltd-25 |  |
|  | 9 | **Terrace** |  | 2027-02-02 | 2027-03-01 |  |  |  |  |
| E-GFC-AR-CC-85 |  | Drawings Preparation& Submission | 7d | 2027-02-02 | 2027-02-11 | E-DD-AR-CC-15, E-GFC-AR-CC-65 | CSD-LKO-Design (5 Day + Holiday)-25 | Design Consultnacy Charges; Physical Progress [15860 h]; TATA Projects Ltd-25 |  |
| E-GFC-AR-CC-175 |  | Domain Expert Approval | 2d | 2027-02-11 | 2027-02-15 | E-GFC-AR-CC-85 | CSD-LKO-Design (5 Day + Holiday)-25 | Design Consultnacy Charges; Physical Progress [1030 h]; TATA Projects Ltd-25 |  |
| E-GFC-AR-CC-185 |  | Executive Consultant Approval | 2d | 2027-02-15 | 2027-02-17 | E-GFC-AR-CC-175 | CSD-LKO-Design (5 Day + Holiday)-25 | Design Consultnacy Charges; Physical Progress [1030 h]; TATA Projects Ltd-25 |  |
| E-GFC-AR-CC-195 |  | Peer Reviewer Approval | 2d | 2027-02-17 | 2027-02-19 | E-GFC-AR-CC-185 | CSD-LKO-Design (5 Day + Holiday)-25 | Design Consultnacy Charges; Physical Progress [1030 h]; Peer Reviewer-25 |  |
| E-GFC-AR-CC-205 |  | TPL Design Team Approval | 2d | 2027-02-19 | 2027-02-23 | E-GFC-AR-CC-195 | CSD-LKO-Design (5 Day + Holiday)-25 | Design Consultnacy Charges [388659 INR]; Physical Progress [1030 h]; TATA Projects Ltd-25 | 388,659 |
| E-GFC-AR-CC-215 |  | Issue of Hard Copy on Site | 4d | 2027-02-23 | 2027-03-01 | E-GFC-AR-CC-205 | CSD-LKO-Design (5 Day + Holiday)-25 | Design Consultnacy Charges; Physical Progress [510 h]; TATA Projects Ltd-25 |  |

| ID | WBS | Activity | Duration | Start | Finish | Predecessors | Complete | Remaining | Planned start | Planned finish | Calendar | Resources | Cost | Actual cost |
| --- | --- | --- | --- | --- | --- | --- | --- | --- | --- | --- | --- | --- | --- | --- |
|  | 2 | **Structural** |  | 2026-03-30 | 2027-03-12 |  |  |  |  |  |  |  |  |  |
|  | 2 | **Common Basements** |  | 2026-03-30 | 2026-10-05 |  |  |  |  |  |  |  |  |  |
|  | 3 | **Foundation** |  | 2026-03-30 | 2026-05-13 |  |  |  |  |  |  |  |  |  |
| E-GFC-ST-CB-10 |  | Drawings Preparation& Submission | 2d | 2026-03-30 A | 2026-03-31 A | E-DD-ST-FN-15 | 100% |  |  |  | CSD-LKO-Design (5 Day + Holiday)-25 | Design Consultnacy Charges; Physical Progress [3070 h]; TATA Projects Ltd-25 |  |  |
| E-GFC-ST-CB-15 |  | Domain Expert Approval | 2d | 2026-04-01 A | 2026-04-02 A | E-GFC-ST-CB-10 | 100% |  |  |  | CSD-LKO-Design (5 Day + Holiday)-25 | Design Consultnacy Charges; Physical Progress [1030 h]; TATA Projects Ltd-25 |  |  |
| E-GFC-ST-CB-35 |  | Executive Consultant Approval | 2d | 2026-04-06 A | 2026-04-07 A | E-GFC-ST-CB-15 | 100% |  |  |  | CSD-LKO-Design (5 Day + Holiday)-25 | Design Consultnacy Charges; Physical Progress [1030 h]; TATA Projects Ltd-25 |  |  |
| E-GFC-ST-CB-40 |  | Peer Reviewer Approval | 2d | 2026-04-08 A | 2026-04-09 A | E-GFC-ST-CB-35 | 100% |  |  |  | CSD-LKO-Design (5 Day + Holiday)-25 | Design Consultnacy Charges; Physical Progress [1030 h]; Peer Reviewer-25 |  |  |
| E-GFC-ST-CB-45 |  | TPL Design Team Approval | 0d | 2026-04-10 A | 2026-04-10 A | E-GFC-ST-CB-40 | 100% |  |  |  | CSD-LKO-Design (5 Day + Holiday)-25 | Design Consultnacy Charges; Physical Progress; TATA Projects Ltd-25 |  |  |
| E-GFC-ST-CB-50 |  | Issue of Hard Copy on Site | 0d | 2026-05-13 A | 2026-05-13 A | E-GFC-ST-CB-45 | 100% |  |  |  | CSD-LKO-Design (5 Day + Holiday)-25 | Design Consultnacy Charges; Physical Progress; TATA Projects Ltd-25 |  |  |
|  | 1 | **Basement 03** |  | 2026-04-09 | 2026-10-05 |  |  |  |  |  |  |  |  |  |
| E-GFC-ST-CB-20 |  | Drawings Preparation& Submission | 123.26d | 2026-04-09 A | 2026-10-05 | E-DD-ST-CB-15 | 92% | 1.36d |  |  | CSD-LKO-Design (5 Day + Holiday)-25 | Design Consultnacy Charges; Physical Progress [4090 h]; TATA Projects Ltd-25 |  |  |
| E-GFC-ST-CB-55 |  | Domain Expert Approval | 67.22d | 2026-06-29 A | 2026-10-01 | E-GFC-ST-CB-20 SS | 84% | 0.32d |  |  | CSD-LKO-Design (5 Day + Holiday)-25 | Design Consultnacy Charges; Physical Progress [1030 h]; TATA Projects Ltd-25 |  |  |
| E-GFC-ST-CB-75 |  | Executive Consultant Approval | 67.22d | 2026-06-29 A | 2026-10-01 | E-GFC-ST-CB-55 SS | 84% | 0.32d |  |  | CSD-LKO-Design (5 Day + Holiday)-25 | Design Consultnacy Charges; Physical Progress [1030 h]; TATA Projects Ltd-25 |  |  |
| E-GFC-ST-CB-90 |  | Peer Reviewer Approval | 67.22d | 2026-06-29 A | 2026-10-01 | E-GFC-ST-CB-75 SS | 84% | 0.32d |  |  | CSD-LKO-Design (5 Day + Holiday)-25 | Design Consultnacy Charges; Physical Progress [1030 h]; Peer Reviewer-25 |  |  |
| E-GFC-ST-CB-105 |  | TPL Design Team Approval | 66.22d | 2026-06-30 A | 2026-10-01 | E-GFC-ST-CB-90 SS | 84% | 0.32d |  |  | CSD-LKO-Design (5 Day + Holiday)-25 | Design Consultnacy Charges [128903 INR]; Physical Progress [1030 h]; TATA Projects Ltd-25 | 128,903 | 128,280.09 |
| E-GFC-ST-CB-130 |  | Issue of Hard Copy on Site | 65.54d | 2026-07-01 A | 2026-10-01 | E-GFC-ST-CB-105 SS | 84% | 0.64d |  |  | CSD-LKO-Design (5 Day + Holiday)-25 | Design Consultnacy Charges; Physical Progress [510 h]; TATA Projects Ltd-25 |  |  |
|  | 2 | **Basement 02** |  | 2026-04-09 | 2026-10-05 |  |  |  |  |  |  |  |  |  |
| E-GFC-ST-CB-25 |  | Drawings Preparation& Submission | 123.09d | 2026-04-09 A | 2026-10-05 | E-DD-ST-CB-15 | 93% | 1.19d |  |  | CSD-LKO-Design (5 Day + Holiday)-25 | Design Consultnacy Charges; Physical Progress [4090 h]; TATA Projects Ltd-25 |  |  |
| E-GFC-ST-CB-60 |  | Domain Expert Approval | 67.22d | 2026-06-29 A | 2026-10-01 | E-GFC-ST-CB-25 SS | 84% | 0.32d |  |  | CSD-LKO-Design (5 Day + Holiday)-25 | Design Consultnacy Charges; Physical Progress [1030 h]; TATA Projects Ltd-25 |  |  |
| E-GFC-ST-CB-80 |  | Executive Consultant Approval | 67.22d | 2026-06-29 A | 2026-10-01 | E-GFC-ST-CB-60 SS | 84% | 0.32d |  |  | CSD-LKO-Design (5 Day + Holiday)-25 | Design Consultnacy Charges; Physical Progress [1030 h]; TATA Projects Ltd-25 |  |  |
| E-GFC-ST-CB-110 |  | TPL Design Team Approval | 20.22d | 2026-09-02 A | 2026-10-01 | E-GFC-ST-CB-95 SS | 84% | 0.32d |  |  | CSD-LKO-Design (5 Day + Holiday)-25 | Design Consultnacy Charges [128903 INR]; Physical Progress [1030 h]; TATA Projects Ltd-25 | 128,903 | 126,862.99 |
| E-GFC-ST-CB-120 |  | Issue of Hard Copy on Site | 20.54d | 2026-09-02 A | 2026-10-01 | E-GFC-ST-CB-110 SS | 84% | 0.64d |  |  | CSD-LKO-Design (5 Day + Holiday)-25 | Design Consultnacy Charges; Physical Progress [510 h]; TATA Projects Ltd-25 |  |  |
| E-GFC-ST-CB-95 |  | Peer Reviewer Approval | 20.22d | 2026-09-02 A | 2026-10-01 | E-GFC-ST-CB-80 SS | 84% | 0.32d |  |  | CSD-LKO-Design (5 Day + Holiday)-25 | Design Consultnacy Charges; Physical Progress [1030 h]; Peer Reviewer-25 |  |  |
|  | 4 | **Basement 01** |  | 2026-05-01 | 2026-10-01 |  |  |  |  |  |  |  |  |  |
| E-GFC-ST-CB-30 |  | Drawings Preparation& Submission | 106.92d | 2026-05-01 A | 2026-10-01 | E-DD-ST-CB-15 | 94% | 1.02d | 2026-05-04 | 2026-10-01 | CSD-LKO-Design (5 Day + Holiday)-25 | Design Consultnacy Charges; Physical Progress [4090 h]; TATA Projects Ltd-25 |  |  |
| E-GFC-ST-CB-100 |  | Peer Reviewer Approval | 19.91d | 2026-09-02 A | 2026-10-01 | E-GFC-ST-CB-85 SS | 84% | 0.32d |  |  | CSD-LKO-Design (5 Day + Holiday)-25 | Design Consultnacy Charges; Physical Progress [1030 h]; Peer Reviewer-25 |  |  |
| E-GFC-ST-CB-115 |  | TPL Design Team Approval | 19.91d | 2026-09-02 A | 2026-10-01 | E-GFC-ST-CB-100 SS | 84% | 0.32d |  |  | CSD-LKO-Design (5 Day + Holiday)-25 | Design Consultnacy Charges [128903 INR]; Physical Progress [1030 h]; TATA Projects Ltd-25 | 128,903 | 126,831.23 |
| E-GFC-ST-CB-125 |  | Issue of Hard Copy on Site | 20.23d | 2026-09-02 A | 2026-10-01 | E-GFC-ST-CB-115 SS | 84% | 0.64d |  |  | CSD-LKO-Design (5 Day + Holiday)-25 | Design Consultnacy Charges; Physical Progress [510 h]; TATA Projects Ltd-25 |  |  |
| E-GFC-ST-CB-65 |  | Domain Expert Approval | 19.91d | 2026-09-02 A | 2026-10-01 | E-GFC-ST-CB-30 SS | 84% | 0.32d |  |  | CSD-LKO-Design (5 Day + Holiday)-25 | Design Consultnacy Charges; Physical Progress [1030 h]; TATA Projects Ltd-25 |  |  |
| E-GFC-ST-CB-85 |  | Executive Consultant Approval | 19.91d | 2026-09-02 A | 2026-10-01 | E-GFC-ST-CB-65 SS | 84% | 0.32d |  |  | CSD-LKO-Design (5 Day + Holiday)-25 | Design Consultnacy Charges; Physical Progress [1030 h]; TATA Projects Ltd-25 |  |  |

| ID | WBS | Activity | Duration | Start | Finish | Predecessors | Complete | Remaining | Calendar | Resources | Cost | Actual cost |
| --- | --- | --- | --- | --- | --- | --- | --- | --- | --- | --- | --- | --- |
|  | 5 | **Ground Floor** |  | 2026-07-27 | 2026-10-05 |  |  |  |  |  |  |  |
| E-GFC-ST-CB-70 |  | Drawings Preparation& Submission | 47.91d | 2026-07-27 A | 2026-10-05 | E-DD-ST-CB-15, E-GFC-ST-CB-30 SS | 94% | 1.32d | CSD-LKO-Design (5 Day + Holiday)-25 | Design Consultnacy Charges; Physical Progress [11260 h]; TATA Projects Ltd-25 |  |  |
| E-GFC-ST-CB-135 |  | Domain Expert Approval | 19.91d | 2026-09-02 A | 2026-10-01 | E-GFC-ST-CB-70 SS | 84% | 0.32d | CSD-LKO-Design (5 Day + Holiday)-25 | Design Consultnacy Charges; Physical Progress [1030 h]; TATA Projects Ltd-25 |  |  |
| E-GFC-ST-CB-140 |  | Executive Consultant Approval | 19.91d | 2026-09-02 A | 2026-10-01 | E-GFC-ST-CB-135 SS | 84% | 0.32d | CSD-LKO-Design (5 Day + Holiday)-25 | Design Consultnacy Charges; Physical Progress [1030 h]; TATA Projects Ltd-25 |  |  |
| E-GFC-ST-CB-145 |  | Peer Reviewer Approval | 19.91d | 2026-09-02 A | 2026-10-01 | E-GFC-ST-CB-140 SS | 84% | 0.32d | CSD-LKO-Design (5 Day + Holiday)-25 | Design Consultnacy Charges; Physical Progress [1030 h]; Peer Reviewer-25 |  |  |
| E-GFC-ST-CB-150 |  | TPL Design Team Approval | 19.91d | 2026-09-02 A | 2026-10-01 | E-GFC-ST-CB-145 SS | 84% | 0.32d | CSD-LKO-Design (5 Day + Holiday)-25 | Design Consultnacy Charges [128903 INR]; Physical Progress [1030 h]; TATA Projects Ltd-25 | 128,903 | 126,831.23 |
| E-GFC-ST-CB-155 |  | Issue of Hard Copy on Site | 20.23d | 2026-09-02 A | 2026-10-01 | E-GFC-ST-CB-150 SS | 84% | 0.64d | CSD-LKO-Design (5 Day + Holiday)-25 | Design Consultnacy Charges; Physical Progress [510 h]; TATA Projects Ltd-25 |  |  |
|  | 1 | **Hotel 4 Star** |  | 2026-10-05 | 2027-02-04 |  |  |  |  |  |  |  |
|  | 2 | **First Floor** |  | 2026-10-05 | 2026-11-24 |  |  |  |  |  |  |  |
| E-GFC-ST-4S-10 |  | Drawings Preparation& Submission | 23d | 2026-10-05 | 2026-11-06 | E-DD-ST-4S-15, E-GFC-ST-CB-70 |  |  | CSD-LKO-Design (5 Day + Holiday)-25 | Design Consultnacy Charges; Physical Progress [3580 h]; TATA Projects Ltd-25 |  |  |
| E-GFC-ST-4S-25 |  | Domain Expert Approval | 2d | 2026-11-06 | 2026-11-10 | E-GFC-ST-4S-10 |  |  | CSD-LKO-Design (5 Day + Holiday)-25 | Design Consultnacy Charges; Physical Progress [1030 h]; TATA Projects Ltd-25 |  |  |
| E-GFC-ST-4S-65 |  | Executive Consultant Approval | 2d | 2026-11-10 | 2026-11-12 | E-GFC-ST-4S-25 |  |  | CSD-LKO-Design (5 Day + Holiday)-25 | Design Consultnacy Charges; Physical Progress [1030 h]; TATA Projects Ltd-25 |  |  |
| E-GFC-ST-4S-75 |  | Peer Reviewer Approval | 2d | 2026-11-12 | 2026-11-16 | E-GFC-ST-4S-65 |  |  | CSD-LKO-Design (5 Day + Holiday)-25 | Design Consultnacy Charges; Physical Progress [1030 h]; Peer Reviewer-25 |  |  |
| E-GFC-ST-4S-85 |  | TPL Design Team Approval | 2d | 2026-11-16 | 2026-11-18 | E-GFC-ST-4S-75 |  |  | CSD-LKO-Design (5 Day + Holiday)-25 | Design Consultnacy Charges [128903 INR]; Physical Progress [1030 h]; TATA Projects Ltd-25 | 128,903 |  |
| E-GFC-ST-4S-95 |  | Issue of Hard Copy on Site | 4d | 2026-11-18 | 2026-11-24 | E-GFC-ST-4S-85 |  |  | CSD-LKO-Design (5 Day + Holiday)-25 | Design Consultnacy Charges; Physical Progress [510 h]; TATA Projects Ltd-25 |  |  |
|  | 3 | **Service Floor** |  | 2026-11-06 | 2026-12-03 |  |  |  |  |  |  |  |
| E-GFC-ST-4S-15 |  | Drawings Preparation& Submission | 7d | 2026-11-06 | 2026-11-17 | E-DD-ST-4S-15, E-GFC-ST-4S-10 |  |  | CSD-LKO-Design (5 Day + Holiday)-25 | Design Consultnacy Charges; Physical Progress [3580 h]; TATA Projects Ltd-25 |  |  |
| E-GFC-ST-4S-30 |  | Domain Expert Approval | 2d | 2026-11-17 | 2026-11-19 | E-GFC-ST-4S-15 |  |  | CSD-LKO-Design (5 Day + Holiday)-25 | Design Consultnacy Charges; Physical Progress [1030 h]; TATA Projects Ltd-25 |  |  |
| E-GFC-ST-4S-70 |  | Executive Consultant Approval | 2d | 2026-11-19 | 2026-11-23 | E-GFC-ST-4S-30 |  |  | CSD-LKO-Design (5 Day + Holiday)-25 | Design Consultnacy Charges; Physical Progress [1030 h]; TATA Projects Ltd-25 |  |  |
| E-GFC-ST-4S-80 |  | Peer Reviewer Approval | 2d | 2026-11-23 | 2026-11-25 | E-GFC-ST-4S-70 |  |  | CSD-LKO-Design (5 Day + Holiday)-25 | Design Consultnacy Charges; Physical Progress [1030 h]; Peer Reviewer-25 |  |  |
| E-GFC-ST-4S-90 |  | TPL Design Team Approval | 2d | 2026-11-25 | 2026-11-27 | E-GFC-ST-4S-80 |  |  | CSD-LKO-Design (5 Day + Holiday)-25 | Design Consultnacy Charges [128903 INR]; Physical Progress [1030 h]; TATA Projects Ltd-25 | 128,903 |  |
| E-GFC-ST-4S-100 |  | Issue of Hard Copy on Site | 4d | 2026-11-27 | 2026-12-03 | E-GFC-ST-4S-90 |  |  | CSD-LKO-Design (5 Day + Holiday)-25 | Design Consultnacy Charges; Physical Progress [510 h]; TATA Projects Ltd-25 |  |  |
|  | 4 | **Second Floor** |  | 2026-11-17 | 2026-12-14 |  |  |  |  |  |  |  |
| E-GFC-ST-4S-35 |  | Drawings Preparation& Submission | 7d | 2026-11-17 | 2026-11-26 | E-DD-ST-4S-15, E-GFC-ST-4S-15 |  |  | CSD-LKO-Design (5 Day + Holiday)-25 | Design Consultnacy Charges; Physical Progress [23030 h]; TATA Projects Ltd-25 |  |  |
| E-GFC-ST-4S-110 |  | Domain Expert Approval | 2d | 2026-11-26 | 2026-11-30 | E-GFC-ST-4S-35 |  |  | CSD-LKO-Design (5 Day + Holiday)-25 | Design Consultnacy Charges; Physical Progress [1030 h]; TATA Projects Ltd-25 |  |  |
| E-GFC-ST-4S-145 |  | Executive Consultant Approval | 2d | 2026-11-30 | 2026-12-02 | E-GFC-ST-4S-110 |  |  | CSD-LKO-Design (5 Day + Holiday)-25 | Design Consultnacy Charges; Physical Progress [1030 h]; TATA Projects Ltd-25 |  |  |
| E-GFC-ST-4S-180 |  | Peer Reviewer Approval | 2d | 2026-12-02 | 2026-12-04 | E-GFC-ST-4S-145 |  |  | CSD-LKO-Design (5 Day + Holiday)-25 | Design Consultnacy Charges; Physical Progress [1030 h]; Peer Reviewer-25 |  |  |
| E-GFC-ST-4S-215 |  | TPL Design Team Approval | 2d | 2026-12-04 | 2026-12-08 | E-GFC-ST-4S-180 |  |  | CSD-LKO-Design (5 Day + Holiday)-25 | Design Consultnacy Charges [128903 INR]; Physical Progress [1030 h]; TATA Projects Ltd-25 | 128,903 |  |
| E-GFC-ST-4S-250 |  | Issue of Hard Copy on Site | 4d | 2026-12-08 | 2026-12-14 | E-GFC-ST-4S-215 |  |  | CSD-LKO-Design (5 Day + Holiday)-25 | Design Consultnacy Charges; Physical Progress [510 h]; TATA Projects Ltd-25 |  |  |

| ID | WBS | Activity | Duration | Start | Finish | Predecessors | Calendar | Resources | Cost |
| --- | --- | --- | --- | --- | --- | --- | --- | --- | --- |
|  | 5 | **Third Floor** |  | 2026-11-26 | 2026-12-23 |  |  |  |  |
| E-GFC-ST-4S-40 |  | Drawings Preparation& Submission | 7d | 2026-11-26 | 2026-12-07 | E-DD-ST-4S-15, E-GFC-ST-4S-35 | CSD-LKO-Design (5 Day + Holiday)-25 | Design Consultnacy Charges; Physical Progress [23030 h]; TATA Projects Ltd-25 |  |
| E-GFC-ST-4S-115 |  | Domain Expert Approval | 2d | 2026-12-07 | 2026-12-09 | E-GFC-ST-4S-40 | CSD-LKO-Design (5 Day + Holiday)-25 | Design Consultnacy Charges; Physical Progress [1030 h]; TATA Projects Ltd-25 |  |
| E-GFC-ST-4S-150 |  | Executive Consultant Approval | 2d | 2026-12-09 | 2026-12-11 | E-GFC-ST-4S-115 | CSD-LKO-Design (5 Day + Holiday)-25 | Design Consultnacy Charges; Physical Progress [1030 h]; TATA Projects Ltd-25 |  |
| E-GFC-ST-4S-185 |  | Peer Reviewer Approval | 2d | 2026-12-11 | 2026-12-15 | E-GFC-ST-4S-150 | CSD-LKO-Design (5 Day + Holiday)-25 | Design Consultnacy Charges; Physical Progress [1030 h]; Peer Reviewer-25 |  |
| E-GFC-ST-4S-220 |  | TPL Design Team Approval | 2d | 2026-12-15 | 2026-12-17 | E-GFC-ST-4S-185 | CSD-LKO-Design (5 Day + Holiday)-25 | Design Consultnacy Charges [128903 INR]; Physical Progress [1030 h]; TATA Projects Ltd-25 | 128,903 |
| E-GFC-ST-4S-255 |  | Issue of Hard Copy on Site | 4d | 2026-12-17 | 2026-12-23 | E-GFC-ST-4S-220 | CSD-LKO-Design (5 Day + Holiday)-25 | Design Consultnacy Charges; Physical Progress [510 h]; TATA Projects Ltd-25 |  |
|  | 6 | **Fourth Floor** |  | 2026-12-07 | 2027-01-05 |  |  |  |  |
| E-GFC-ST-4S-45 |  | Drawings Preparation& Submission | 7d | 2026-12-07 | 2026-12-16 | E-DD-ST-4S-15, E-GFC-ST-4S-40 | CSD-LKO-Design (5 Day + Holiday)-25 | Design Consultnacy Charges; Physical Progress [23030 h]; TATA Projects Ltd-25 |  |
| E-GFC-ST-4S-120 |  | Domain Expert Approval | 2d | 2026-12-16 | 2026-12-18 | E-GFC-ST-4S-45 | CSD-LKO-Design (5 Day + Holiday)-25 | Design Consultnacy Charges; Physical Progress [1030 h]; TATA Projects Ltd-25 |  |
| E-GFC-ST-4S-155 |  | Executive Consultant Approval | 2d | 2026-12-18 | 2026-12-22 | E-GFC-ST-4S-120 | CSD-LKO-Design (5 Day + Holiday)-25 | Design Consultnacy Charges; Physical Progress [1030 h]; TATA Projects Ltd-25 |  |
| E-GFC-ST-4S-190 |  | Peer Reviewer Approval | 2d | 2026-12-22 | 2026-12-24 | E-GFC-ST-4S-155 | CSD-LKO-Design (5 Day + Holiday)-25 | Design Consultnacy Charges; Physical Progress [1030 h]; Peer Reviewer-25 |  |
| E-GFC-ST-4S-225 |  | TPL Design Team Approval | 2d | 2026-12-24 | 2026-12-29 | E-GFC-ST-4S-190 | CSD-LKO-Design (5 Day + Holiday)-25 | Design Consultnacy Charges [128903 INR]; Physical Progress [1030 h]; TATA Projects Ltd-25 | 128,903 |
| E-GFC-ST-4S-260 |  | Issue of Hard Copy on Site | 4d | 2026-12-29 | 2027-01-05 | E-GFC-ST-4S-225 | CSD-LKO-Design (5 Day + Holiday)-25 | Design Consultnacy Charges; Physical Progress [510 h]; TATA Projects Ltd-25 |  |
|  | 7 | **Fifth Floor** |  | 2026-12-16 | 2027-01-14 |  |  |  |  |
| E-GFC-ST-4S-50 |  | Drawings Preparation& Submission | 7d | 2026-12-16 | 2026-12-28 | E-DD-ST-4S-15, E-GFC-ST-4S-45 | CSD-LKO-Design (5 Day + Holiday)-25 | Design Consultnacy Charges; Physical Progress [23030 h]; TATA Projects Ltd-25 |  |
| E-GFC-ST-4S-125 |  | Domain Expert Approval | 2d | 2026-12-28 | 2026-12-30 | E-GFC-ST-4S-50 | CSD-LKO-Design (5 Day + Holiday)-25 | Design Consultnacy Charges; Physical Progress [1030 h]; TATA Projects Ltd-25 |  |
| E-GFC-ST-4S-160 |  | Executive Consultant Approval | 2d | 2026-12-30 | 2027-01-04 | E-GFC-ST-4S-125 | CSD-LKO-Design (5 Day + Holiday)-25 | Design Consultnacy Charges; Physical Progress [1030 h]; TATA Projects Ltd-25 |  |
| E-GFC-ST-4S-195 |  | Peer Reviewer Approval | 2d | 2027-01-04 | 2027-01-06 | E-GFC-ST-4S-160 | CSD-LKO-Design (5 Day + Holiday)-25 | Design Consultnacy Charges; Physical Progress [1030 h]; Peer Reviewer-25 |  |
| E-GFC-ST-4S-230 |  | TPL Design Team Approval | 2d | 2027-01-06 | 2027-01-08 | E-GFC-ST-4S-195 | CSD-LKO-Design (5 Day + Holiday)-25 | Design Consultnacy Charges [128903 INR]; Physical Progress [1030 h]; TATA Projects Ltd-25 | 128,903 |
| E-GFC-ST-4S-265 |  | Issue of Hard Copy on Site | 4d | 2027-01-08 | 2027-01-14 | E-GFC-ST-4S-230 | CSD-LKO-Design (5 Day + Holiday)-25 | Design Consultnacy Charges; Physical Progress [510 h]; TATA Projects Ltd-25 |  |
|  | 8 | **Sixth Floor** |  | 2026-12-28 | 2027-01-25 |  |  |  |  |
| E-GFC-ST-4S-55 |  | Drawings Preparation& Submission | 7d | 2026-12-28 | 2027-01-07 | E-DD-ST-4S-15, E-GFC-ST-4S-50 | CSD-LKO-Design (5 Day + Holiday)-25 | Design Consultnacy Charges; Physical Progress [23030 h]; TATA Projects Ltd-25 |  |
| E-GFC-ST-4S-130 |  | Domain Expert Approval | 2d | 2027-01-07 | 2027-01-11 | E-GFC-ST-4S-55 | CSD-LKO-Design (5 Day + Holiday)-25 | Design Consultnacy Charges; Physical Progress [1030 h]; TATA Projects Ltd-25 |  |
| E-GFC-ST-4S-165 |  | Executive Consultant Approval | 2d | 2027-01-11 | 2027-01-13 | E-GFC-ST-4S-130 | CSD-LKO-Design (5 Day + Holiday)-25 | Design Consultnacy Charges; Physical Progress [1030 h]; TATA Projects Ltd-25 |  |
| E-GFC-ST-4S-200 |  | Peer Reviewer Approval | 2d | 2027-01-13 | 2027-01-15 | E-GFC-ST-4S-165 | CSD-LKO-Design (5 Day + Holiday)-25 | Design Consultnacy Charges; Physical Progress [1030 h]; Peer Reviewer-25 |  |
| E-GFC-ST-4S-235 |  | TPL Design Team Approval | 2d | 2027-01-15 | 2027-01-19 | E-GFC-ST-4S-200 | CSD-LKO-Design (5 Day + Holiday)-25 | Design Consultnacy Charges [128903 INR]; Physical Progress [1030 h]; TATA Projects Ltd-25 | 128,903 |
| E-GFC-ST-4S-270 |  | Issue of Hard Copy on Site | 4d | 2027-01-19 | 2027-01-25 | E-GFC-ST-4S-235 | CSD-LKO-Design (5 Day + Holiday)-25 | Design Consultnacy Charges; Physical Progress [510 h]; TATA Projects Ltd-25 |  |

| ID | WBS | Activity | Duration | Start | Finish | Predecessors | Calendar | Resources | Cost |
| --- | --- | --- | --- | --- | --- | --- | --- | --- | --- |
|  | 9 | **Terrace** |  | 2027-01-07 | 2027-02-04 |  |  |  |  |
| E-GFC-ST-4S-60 |  | Drawings Preparation& Submission | 7d | 2027-01-07 | 2027-01-18 | E-DD-ST-4S-15, E-GFC-ST-4S-55 | CSD-LKO-Design (5 Day + Holiday)-25 | Design Consultnacy Charges; Physical Progress [23030 h]; TATA Projects Ltd-25 |  |
| E-GFC-ST-4S-135 |  | Domain Expert Approval | 2d | 2027-01-18 | 2027-01-20 | E-GFC-ST-4S-60 | CSD-LKO-Design (5 Day + Holiday)-25 | Design Consultnacy Charges; Physical Progress [1030 h]; TATA Projects Ltd-25 |  |
| E-GFC-ST-4S-170 |  | Executive Consultant Approval | 2d | 2027-01-20 | 2027-01-22 | E-GFC-ST-4S-135 | CSD-LKO-Design (5 Day + Holiday)-25 | Design Consultnacy Charges; Physical Progress [1030 h]; TATA Projects Ltd-25 |  |
| E-GFC-ST-4S-205 |  | Peer Reviewer Approval | 2d | 2027-01-22 | 2027-01-27 | E-GFC-ST-4S-170 | CSD-LKO-Design (5 Day + Holiday)-25 | Design Consultnacy Charges; Physical Progress [1030 h]; Peer Reviewer-25 |  |
| E-GFC-ST-4S-240 |  | TPL Design Team Approval | 2d | 2027-01-27 | 2027-01-29 | E-GFC-ST-4S-205 | CSD-LKO-Design (5 Day + Holiday)-25 | Design Consultnacy Charges [128903 INR]; Physical Progress [1030 h]; TATA Projects Ltd-25 | 128,903 |
| E-GFC-ST-4S-275 |  | Issue of Hard Copy on Site | 4d | 2027-01-29 | 2027-02-04 | E-GFC-ST-4S-240 | CSD-LKO-Design (5 Day + Holiday)-25 | Design Consultnacy Charges; Physical Progress [510 h]; TATA Projects Ltd-25 |  |
|  | 1 | **Roof** |  | 2026-11-17 | 2027-02-04 |  |  |  |  |
| E-GFC-ST-4S-20 |  | Drawings Preparation& Submission | 48d | 2026-11-17 | 2027-01-27 | E-DD-ST-4S-15, E-GFC-ST-4S-15 | CSD-LKO-Design (5 Day + Holiday)-25 | Design Consultnacy Charges; Physical Progress [23030 h]; TATA Projects Ltd-25 |  |
| E-GFC-ST-4S-105 |  | Domain Expert Approval | 2d | 2027-01-18 | 2027-01-20 | E-GFC-ST-4S-60 | CSD-LKO-Design (5 Day + Holiday)-25 | Design Consultnacy Charges; Physical Progress [1030 h]; TATA Projects Ltd-25 |  |
| E-GFC-ST-4S-140 |  | Executive Consultant Approval | 2d | 2027-01-20 | 2027-01-22 | E-GFC-ST-4S-105 | CSD-LKO-Design (5 Day + Holiday)-25 | Design Consultnacy Charges; Physical Progress [1030 h]; TATA Projects Ltd-25 |  |
| E-GFC-ST-4S-175 |  | Peer Reviewer Approval | 2d | 2027-01-22 | 2027-01-27 | E-GFC-ST-4S-140 | CSD-LKO-Design (5 Day + Holiday)-25 | Design Consultnacy Charges; Physical Progress [1030 h]; Peer Reviewer-25 |  |
| E-GFC-ST-4S-210 |  | TPL Design Team Approval | 2d | 2027-01-27 | 2027-01-29 | E-GFC-ST-4S-175 | CSD-LKO-Design (5 Day + Holiday)-25 | Design Consultnacy Charges [128903 INR]; Physical Progress [1030 h]; TATA Projects Ltd-25 | 128,903 |
| E-GFC-ST-4S-245 |  | Issue of Hard Copy on Site | 4d | 2027-01-29 | 2027-02-04 | E-GFC-ST-4S-210 | CSD-LKO-Design (5 Day + Holiday)-25 | Design Consultnacy Charges; Physical Progress [510 h]; TATA Projects Ltd-25 |  |
|  | 3 | **Hotel 3 Star** |  | 2026-11-06 | 2027-03-03 |  |  |  |  |
|  | 2 | **First Floor** |  | 2026-11-06 | 2026-12-01 |  |  |  |  |
| E-GFC-ST-3S-10 |  | Drawings Preparation& Submission | 5d | 2026-11-06 | 2026-11-13 | E-DD-ST-3S-15, E-GFC-ST-4S-10 | CSD-LKO-Design (5 Day + Holiday)-25 | Design Consultnacy Charges; Physical Progress [3580 h]; TATA Projects Ltd-25 |  |
| E-GFC-ST-3S-25 |  | Domain Expert Approval | 2d | 2026-11-13 | 2026-11-17 | E-GFC-ST-3S-10 | CSD-LKO-Design (5 Day + Holiday)-25 | Design Consultnacy Charges; Physical Progress [1030 h]; TATA Projects Ltd-25 |  |
| E-GFC-ST-3S-70 |  | Executive Consultant Approval | 2d | 2026-11-17 | 2026-11-19 | E-GFC-ST-3S-25 | CSD-LKO-Design (5 Day + Holiday)-25 | Design Consultnacy Charges; Physical Progress [1030 h]; TATA Projects Ltd-25 |  |
| E-GFC-ST-3S-80 |  | Peer Reviewer Approval | 2d | 2026-11-19 | 2026-11-23 | E-GFC-ST-3S-70 | CSD-LKO-Design (5 Day + Holiday)-25 | Design Consultnacy Charges; Physical Progress [1030 h]; Peer Reviewer-25 |  |
| E-GFC-ST-3S-90 |  | TPL Design Team Approval | 2d | 2026-11-23 | 2026-11-25 | E-GFC-ST-3S-80 | CSD-LKO-Design (5 Day + Holiday)-25 | Design Consultnacy Charges [128903 INR]; Physical Progress [1030 h]; TATA Projects Ltd-25 | 128,903 |
| E-GFC-ST-3S-100 |  | Issue of Hard Copy on Site | 4d | 2026-11-25 | 2026-12-01 | E-GFC-ST-3S-90 | CSD-LKO-Design (5 Day + Holiday)-25 | Design Consultnacy Charges; Physical Progress [510 h]; TATA Projects Ltd-25 |  |
|  | 3 | **Service Floor** |  | 2026-11-13 | 2026-12-10 |  |  |  |  |
| E-GFC-ST-3S-15 |  | Drawings Preparation& Submission | 7d | 2026-11-13 | 2026-11-24 | E-DD-ST-3S-15, E-GFC-ST-3S-10 | CSD-LKO-Design (5 Day + Holiday)-25 | Design Consultnacy Charges; Physical Progress [3580 h]; TATA Projects Ltd-25 |  |
| E-GFC-ST-3S-30 |  | Domain Expert Approval | 2d | 2026-11-24 | 2026-11-26 | E-GFC-ST-3S-15 | CSD-LKO-Design (5 Day + Holiday)-25 | Design Consultnacy Charges; Physical Progress [1030 h]; TATA Projects Ltd-25 |  |
| E-GFC-ST-3S-75 |  | Executive Consultant Approval | 2d | 2026-11-26 | 2026-11-30 | E-GFC-ST-3S-30 | CSD-LKO-Design (5 Day + Holiday)-25 | Design Consultnacy Charges; Physical Progress [1030 h]; TATA Projects Ltd-25 |  |
| E-GFC-ST-3S-85 |  | Peer Reviewer Approval | 2d | 2026-11-30 | 2026-12-02 | E-GFC-ST-3S-75 | CSD-LKO-Design (5 Day + Holiday)-25 | Design Consultnacy Charges; Physical Progress [1030 h]; Peer Reviewer-25 |  |
| E-GFC-ST-3S-95 |  | TPL Design Team Approval | 2d | 2026-12-02 | 2026-12-04 | E-GFC-ST-3S-85 | CSD-LKO-Design (5 Day + Holiday)-25 | Design Consultnacy Charges [128903 INR]; Physical Progress [1030 h]; TATA Projects Ltd-25 | 128,903 |
| E-GFC-ST-3S-105 |  | Issue of Hard Copy on Site | 4d | 2026-12-04 | 2026-12-10 | E-GFC-ST-3S-95 | CSD-LKO-Design (5 Day + Holiday)-25 | Design Consultnacy Charges; Physical Progress [510 h]; TATA Projects Ltd-25 |  |

| ID | WBS | Activity | Duration | Start | Finish | Predecessors | Calendar | Resources | Cost |
| --- | --- | --- | --- | --- | --- | --- | --- | --- | --- |
|  | 4 | **Second Floor** |  | 2026-11-24 | 2026-12-21 |  |  |  |  |
| E-GFC-ST-3S-35 |  | Drawings Preparation& Submission | 7d | 2026-11-24 | 2026-12-03 | E-DD-ST-3S-15, E-GFC-ST-3S-15 | CSD-LKO-Design (5 Day + Holiday)-25 | Design Consultnacy Charges; Physical Progress [23030 h]; TATA Projects Ltd-25 |  |
| E-GFC-ST-3S-115 |  | Domain Expert Approval | 2d | 2026-12-03 | 2026-12-07 | E-GFC-ST-3S-35 | CSD-LKO-Design (5 Day + Holiday)-25 | Design Consultnacy Charges; Physical Progress [1030 h]; TATA Projects Ltd-25 |  |
| E-GFC-ST-3S-155 |  | Executive Consultant Approval | 2d | 2026-12-07 | 2026-12-09 | E-GFC-ST-3S-115 | CSD-LKO-Design (5 Day + Holiday)-25 | Design Consultnacy Charges; Physical Progress [1030 h]; TATA Projects Ltd-25 |  |
| E-GFC-ST-3S-195 |  | Peer Reviewer Approval | 2d | 2026-12-09 | 2026-12-11 | E-GFC-ST-3S-155 | CSD-LKO-Design (5 Day + Holiday)-25 | Design Consultnacy Charges; Physical Progress [1030 h]; Peer Reviewer-25 |  |
| E-GFC-ST-3S-235 |  | TPL Design Team Approval | 2d | 2026-12-11 | 2026-12-15 | E-GFC-ST-3S-195 | CSD-LKO-Design (5 Day + Holiday)-25 | Design Consultnacy Charges [128903 INR]; Physical Progress [1030 h]; TATA Projects Ltd-25 | 128,903 |
| E-GFC-ST-3S-275 |  | Issue of Hard Copy on Site | 4d | 2026-12-15 | 2026-12-21 | E-GFC-ST-3S-235 | CSD-LKO-Design (5 Day + Holiday)-25 | Design Consultnacy Charges; Physical Progress [510 h]; TATA Projects Ltd-25 |  |
|  | 5 | **Third Floor** |  | 2026-12-03 | 2026-12-31 |  |  |  |  |
| E-GFC-ST-3S-40 |  | Drawings Preparation& Submission | 7d | 2026-12-03 | 2026-12-14 | E-DD-ST-3S-15, E-GFC-ST-3S-35 | CSD-LKO-Design (5 Day + Holiday)-25 | Design Consultnacy Charges; Physical Progress [23030 h]; TATA Projects Ltd-25 |  |
| E-GFC-ST-3S-120 |  | Domain Expert Approval | 2d | 2026-12-14 | 2026-12-16 | E-GFC-ST-3S-40 | CSD-LKO-Design (5 Day + Holiday)-25 | Design Consultnacy Charges; Physical Progress [1030 h]; TATA Projects Ltd-25 |  |
| E-GFC-ST-3S-160 |  | Executive Consultant Approval | 2d | 2026-12-16 | 2026-12-18 | E-GFC-ST-3S-120 | CSD-LKO-Design (5 Day + Holiday)-25 | Design Consultnacy Charges; Physical Progress [1030 h]; TATA Projects Ltd-25 |  |
| E-GFC-ST-3S-200 |  | Peer Reviewer Approval | 2d | 2026-12-18 | 2026-12-22 | E-GFC-ST-3S-160 | CSD-LKO-Design (5 Day + Holiday)-25 | Design Consultnacy Charges; Physical Progress [1030 h]; Peer Reviewer-25 |  |
| E-GFC-ST-3S-240 |  | TPL Design Team Approval | 2d | 2026-12-22 | 2026-12-24 | E-GFC-ST-3S-200 | CSD-LKO-Design (5 Day + Holiday)-25 | Design Consultnacy Charges [128903 INR]; Physical Progress [1030 h]; TATA Projects Ltd-25 | 128,903 |
| E-GFC-ST-3S-280 |  | Issue of Hard Copy on Site | 4d | 2026-12-24 | 2026-12-31 | E-GFC-ST-3S-240 | CSD-LKO-Design (5 Day + Holiday)-25 | Design Consultnacy Charges; Physical Progress [510 h]; TATA Projects Ltd-25 |  |
|  | 6 | **Fourth Floor** |  | 2026-12-14 | 2027-01-12 |  |  |  |  |
| E-GFC-ST-3S-45 |  | Drawings Preparation& Submission | 7d | 2026-12-14 | 2026-12-23 | E-DD-ST-3S-15, E-GFC-ST-3S-40 | CSD-LKO-Design (5 Day + Holiday)-25 | Design Consultnacy Charges; Physical Progress [23030 h]; TATA Projects Ltd-25 |  |
| E-GFC-ST-3S-125 |  | Domain Expert Approval | 2d | 2026-12-23 | 2026-12-28 | E-GFC-ST-3S-45 | CSD-LKO-Design (5 Day + Holiday)-25 | Design Consultnacy Charges; Physical Progress [1020 h]; TATA Projects Ltd-25 |  |
| E-GFC-ST-3S-165 |  | Executive Consultant Approval | 2d | 2026-12-28 | 2026-12-30 | E-GFC-ST-3S-125 | CSD-LKO-Design (5 Day + Holiday)-25 | Design Consultnacy Charges; Physical Progress [1020 h]; TATA Projects Ltd-25 |  |
| E-GFC-ST-3S-205 |  | Peer Reviewer Approval | 2d | 2026-12-30 | 2027-01-04 | E-GFC-ST-3S-165 | CSD-LKO-Design (5 Day + Holiday)-25 | Design Consultnacy Charges; Physical Progress [1020 h]; Peer Reviewer-25 |  |
| E-GFC-ST-3S-245 |  | TPL Design Team Approval | 2d | 2027-01-04 | 2027-01-06 | E-GFC-ST-3S-205 | CSD-LKO-Design (5 Day + Holiday)-25 | Design Consultnacy Charges [128903 INR]; Physical Progress [1020 h]; TATA Projects Ltd-25 | 128,903 |
| E-GFC-ST-3S-285 |  | Issue of Hard Copy on Site | 4d | 2027-01-06 | 2027-01-12 | E-GFC-ST-3S-245 | CSD-LKO-Design (5 Day + Holiday)-25 | Design Consultnacy Charges; Physical Progress [510 h]; TATA Projects Ltd-25 |  |
|  | 7 | **Fifth Floor** |  | 2026-12-23 | 2027-01-21 |  |  |  |  |
| E-GFC-ST-3S-50 |  | Drawings Preparation& Submission | 7d | 2026-12-23 | 2027-01-05 | E-DD-ST-3S-15, E-GFC-ST-3S-45 | CSD-LKO-Design (5 Day + Holiday)-25 | Design Consultnacy Charges; Physical Progress [23030 h]; TATA Projects Ltd-25 |  |
| E-GFC-ST-3S-130 |  | Domain Expert Approval | 2d | 2027-01-05 | 2027-01-07 | E-GFC-ST-3S-50 | CSD-LKO-Design (5 Day + Holiday)-25 | Design Consultnacy Charges; Physical Progress [1020 h]; TATA Projects Ltd-25 |  |
| E-GFC-ST-3S-170 |  | Executive Consultant Approval | 2d | 2027-01-07 | 2027-01-11 | E-GFC-ST-3S-130 | CSD-LKO-Design (5 Day + Holiday)-25 | Design Consultnacy Charges; Physical Progress [1020 h]; TATA Projects Ltd-25 |  |
| E-GFC-ST-3S-210 |  | Peer Reviewer Approval | 2d | 2027-01-11 | 2027-01-13 | E-GFC-ST-3S-170 | CSD-LKO-Design (5 Day + Holiday)-25 | Design Consultnacy Charges; Physical Progress [1020 h]; Peer Reviewer-25 |  |
| E-GFC-ST-3S-250 |  | TPL Design Team Approval | 2d | 2027-01-13 | 2027-01-15 | E-GFC-ST-3S-210 | CSD-LKO-Design (5 Day + Holiday)-25 | Design Consultnacy Charges [128903 INR]; Physical Progress [1020 h]; TATA Projects Ltd-25 | 128,903 |
| E-GFC-ST-3S-290 |  | Issue of Hard Copy on Site | 4d | 2027-01-15 | 2027-01-21 | E-GFC-ST-3S-250 | CSD-LKO-Design (5 Day + Holiday)-25 | Design Consultnacy Charges; Physical Progress [510 h]; TATA Projects Ltd-25 |  |

| ID | WBS | Activity | Duration | Start | Finish | Predecessors | Calendar | Resources | Cost |
| --- | --- | --- | --- | --- | --- | --- | --- | --- | --- |
|  | 8 | **Sixth Floor** |  | 2027-01-05 | 2027-02-02 |  |  |  |  |
| E-GFC-ST-3S-55 |  | Drawings Preparation& Submission | 7d | 2027-01-05 | 2027-01-14 | E-DD-ST-3S-15, E-GFC-ST-3S-50 | CSD-LKO-Design (5 Day + Holiday)-25 | Design Consultnacy Charges; Physical Progress [23030 h]; TATA Projects Ltd-25 |  |
| E-GFC-ST-3S-135 |  | Domain Expert Approval | 2d | 2027-01-14 | 2027-01-18 | E-GFC-ST-3S-55 | CSD-LKO-Design (5 Day + Holiday)-25 | Design Consultnacy Charges; Physical Progress [1020 h]; TATA Projects Ltd-25 |  |
| E-GFC-ST-3S-175 |  | Executive Consultant Approval | 2d | 2027-01-18 | 2027-01-20 | E-GFC-ST-3S-135 | CSD-LKO-Design (5 Day + Holiday)-25 | Design Consultnacy Charges; Physical Progress [1020 h]; TATA Projects Ltd-25 |  |
| E-GFC-ST-3S-215 |  | Peer Reviewer Approval | 2d | 2027-01-20 | 2027-01-22 | E-GFC-ST-3S-175 | CSD-LKO-Design (5 Day + Holiday)-25 | Design Consultnacy Charges; Physical Progress [1020 h]; Peer Reviewer-25 |  |
| E-GFC-ST-3S-255 |  | TPL Design Team Approval | 2d | 2027-01-22 | 2027-01-27 | E-GFC-ST-3S-215 | CSD-LKO-Design (5 Day + Holiday)-25 | Design Consultnacy Charges [128903 INR]; Physical Progress [1020 h]; TATA Projects Ltd-25 | 128,903 |
| E-GFC-ST-3S-295 |  | Issue of Hard Copy on Site | 4d | 2027-01-27 | 2027-02-02 | E-GFC-ST-3S-255 | CSD-LKO-Design (5 Day + Holiday)-25 | Design Consultnacy Charges; Physical Progress [510 h]; TATA Projects Ltd-25 |  |
|  | 10 | **Seventh Floor** |  | 2027-01-14 | 2027-02-11 |  |  |  |  |
| E-GFC-ST-3S-65 |  | Drawings Preparation& Submission | 7d | 2027-01-14 | 2027-01-25 | E-DD-ST-3S-15, E-GFC-ST-3S-55 | CSD-LKO-Design (5 Day + Holiday)-25 | Design Consultnacy Charges; Physical Progress [23030 h]; TATA Projects Ltd-25 |  |
| E-GFC-ST-3S-145 |  | Domain Expert Approval | 2d | 2027-01-25 | 2027-01-28 | E-GFC-ST-3S-65 | CSD-LKO-Design (5 Day + Holiday)-25 | Design Consultnacy Charges; Physical Progress [1020 h]; TATA Projects Ltd-25 |  |
| E-GFC-ST-3S-185 |  | Executive Consultant Approval | 2d | 2027-01-28 | 2027-02-01 | E-GFC-ST-3S-145 | CSD-LKO-Design (5 Day + Holiday)-25 | Design Consultnacy Charges; Physical Progress [1020 h]; TATA Projects Ltd-25 |  |
| E-GFC-ST-3S-225 |  | Peer Reviewer Approval | 2d | 2027-02-01 | 2027-02-03 | E-GFC-ST-3S-185 | CSD-LKO-Design (5 Day + Holiday)-25 | Design Consultnacy Charges; Physical Progress [1020 h]; Peer Reviewer-25 |  |
| E-GFC-ST-3S-265 |  | TPL Design Team Approval | 2d | 2027-02-03 | 2027-02-05 | E-GFC-ST-3S-225 | CSD-LKO-Design (5 Day + Holiday)-25 | Design Consultnacy Charges [128903 INR]; Physical Progress [1020 h]; TATA Projects Ltd-25 | 128,903 |
| E-GFC-ST-3S-305 |  | Issue of Hard Copy on Site | 4d | 2027-02-05 | 2027-02-11 | E-GFC-ST-3S-265 | CSD-LKO-Design (5 Day + Holiday)-25 | Design Consultnacy Charges; Physical Progress [510 h]; TATA Projects Ltd-25 |  |
|  | 9 | **Terrace** |  | 2027-01-25 | 2027-02-22 |  |  |  |  |
| E-GFC-ST-3S-60 |  | Drawings Preparation& Submission | 7d | 2027-01-25 | 2027-02-04 | E-DD-ST-3S-15, E-GFC-ST-3S-65 | CSD-LKO-Design (5 Day + Holiday)-25 | Design Consultnacy Charges; Physical Progress [23030 h]; TATA Projects Ltd-25 |  |
| E-GFC-ST-3S-140 |  | Domain Expert Approval | 2d | 2027-02-04 | 2027-02-08 | E-GFC-ST-3S-60 | CSD-LKO-Design (5 Day + Holiday)-25 | Design Consultnacy Charges; Physical Progress [1020 h]; TATA Projects Ltd-25 |  |
| E-GFC-ST-3S-180 |  | Executive Consultant Approval | 2d | 2027-02-08 | 2027-02-10 | E-GFC-ST-3S-140 | CSD-LKO-Design (5 Day + Holiday)-25 | Design Consultnacy Charges; Physical Progress [1020 h]; TATA Projects Ltd-25 |  |
| E-GFC-ST-3S-220 |  | Peer Reviewer Approval | 2d | 2027-02-10 | 2027-02-12 | E-GFC-ST-3S-180 | CSD-LKO-Design (5 Day + Holiday)-25 | Design Consultnacy Charges; Physical Progress [1020 h]; Peer Reviewer-25 |  |
| E-GFC-ST-3S-260 |  | TPL Design Team Approval | 2d | 2027-02-12 | 2027-02-16 | E-GFC-ST-3S-220 | CSD-LKO-Design (5 Day + Holiday)-25 | Design Consultnacy Charges [128903 INR]; Physical Progress [1020 h]; TATA Projects Ltd-25 | 128,903 |
| E-GFC-ST-3S-300 |  | Issue of Hard Copy on Site | 4d | 2027-02-16 | 2027-02-22 | E-GFC-ST-3S-260 | CSD-LKO-Design (5 Day + Holiday)-25 | Design Consultnacy Charges; Physical Progress [510 h]; TATA Projects Ltd-25 |  |
|  | 1 | **Roof** |  | 2027-02-04 | 2027-03-03 |  |  |  |  |
| E-GFC-ST-3S-20 |  | Drawings Preparation& Submission | 7d | 2027-02-04 | 2027-02-15 | E-DD-ST-3S-15, E-GFC-ST-3S-60 | CSD-LKO-Design (5 Day + Holiday)-25 | Design Consultnacy Charges; Physical Progress [23030 h]; TATA Projects Ltd-25 |  |
| E-GFC-ST-3S-110 |  | Domain Expert Approval | 2d | 2027-02-15 | 2027-02-17 | E-GFC-ST-3S-20 | CSD-LKO-Design (5 Day + Holiday)-25 | Design Consultnacy Charges; Physical Progress [1030 h]; TATA Projects Ltd-25 |  |
| E-GFC-ST-3S-150 |  | Executive Consultant Approval | 2d | 2027-02-17 | 2027-02-19 | E-GFC-ST-3S-110 | CSD-LKO-Design (5 Day + Holiday)-25 | Design Consultnacy Charges; Physical Progress [1030 h]; TATA Projects Ltd-25 |  |
| E-GFC-ST-3S-190 |  | Peer Reviewer Approval | 2d | 2027-02-19 | 2027-02-23 | E-GFC-ST-3S-150 | CSD-LKO-Design (5 Day + Holiday)-25 | Design Consultnacy Charges; Physical Progress [1030 h]; Peer Reviewer-25 |  |
| E-GFC-ST-3S-230 |  | TPL Design Team Approval | 2d | 2027-02-23 | 2027-02-25 | E-GFC-ST-3S-190 | CSD-LKO-Design (5 Day + Holiday)-25 | Design Consultnacy Charges [128903 INR]; Physical Progress [1030 h]; TATA Projects Ltd-25 | 128,903 |
| E-GFC-ST-3S-270 |  | Issue of Hard Copy on Site | 4d | 2027-02-25 | 2027-03-03 | E-GFC-ST-3S-230 | CSD-LKO-Design (5 Day + Holiday)-25 | Design Consultnacy Charges; Physical Progress [510 h]; TATA Projects Ltd-25 |  |

| ID | WBS | Activity | Duration | Start | Finish | Predecessors | Calendar | Resources | Cost |
| --- | --- | --- | --- | --- | --- | --- | --- | --- | --- |
|  | 4 | **Retail Block 2** |  | 2026-11-27 | 2027-03-12 |  |  |  |  |
|  | 2 | **First Floor** |  | 2026-11-27 | 2026-12-22 |  |  |  |  |
| E-GFC-ST-RB2-10 |  | Drawings Preparation& Submission | 5d | 2026-11-27 | 2026-12-04 | E-DD-ST-RB2-15, E-GFC-ST-RB1-10 | CSD-LKO-Design (5 Day + Holiday)-25 | Design Consultnacy Charges; Physical Progress [3580 h]; TATA Projects Ltd-25 |  |
| E-GFC-ST-RB2-30 |  | Domain Expert Approval | 2d | 2026-12-04 | 2026-12-08 | E-GFC-ST-RB2-10 | CSD-LKO-Design (5 Day + Holiday)-25 | Design Consultnacy Charges; Physical Progress [1020 h]; TATA Projects Ltd-25 |  |
| E-GFC-ST-RB2-65 |  | Executive Consultant Approval | 2d | 2026-12-08 | 2026-12-10 | E-GFC-ST-RB2-30 | CSD-LKO-Design (5 Day + Holiday)-25 | Design Consultnacy Charges; Physical Progress [1020 h]; TATA Projects Ltd-25 |  |
| E-GFC-ST-RB2-80 |  | Peer Reviewer Approval | 2d | 2026-12-10 | 2026-12-14 | E-GFC-ST-RB2-65 | CSD-LKO-Design (5 Day + Holiday)-25 | Design Consultnacy Charges; Physical Progress [1020 h]; Peer Reviewer-25 |  |
| E-GFC-ST-RB2-95 |  | TPL Design Team Approval | 2d | 2026-12-14 | 2026-12-16 | E-GFC-ST-RB2-80 | CSD-LKO-Design (5 Day + Holiday)-25 | Design Consultnacy Charges [128903 INR]; Physical Progress [1020 h]; TATA Projects Ltd-25 | 128,903 |
| E-GFC-ST-RB2-110 |  | Issue of Hard Copy on Site | 4d | 2026-12-16 | 2026-12-22 | E-GFC-ST-RB2-95 | CSD-LKO-Design (5 Day + Holiday)-25 | Design Consultnacy Charges; Physical Progress [510 h]; TATA Projects Ltd-25 |  |
|  | 4 | **Second Floor** |  | 2026-12-04 | 2027-01-04 |  |  |  |  |
| E-GFC-ST-RB2-15 |  | Drawings Preparation& Submission | 7d | 2026-12-04 | 2026-12-15 | E-DD-ST-RB2-15, E-GFC-ST-RB2-10 | CSD-LKO-Design (5 Day + Holiday)-25 | Design Consultnacy Charges; Physical Progress [3580 h]; TATA Projects Ltd-25 |  |
| E-GFC-ST-RB2-35 |  | Domain Expert Approval | 2d | 2026-12-15 | 2026-12-17 | E-GFC-ST-RB2-15 | CSD-LKO-Design (5 Day + Holiday)-25 | Design Consultnacy Charges; Physical Progress [1020 h]; TATA Projects Ltd-25 |  |
| E-GFC-ST-RB2-70 |  | Executive Consultant Approval | 2d | 2026-12-17 | 2026-12-21 | E-GFC-ST-RB2-35 | CSD-LKO-Design (5 Day + Holiday)-25 | Design Consultnacy Charges; Physical Progress [1020 h]; TATA Projects Ltd-25 |  |
| E-GFC-ST-RB2-85 |  | Peer Reviewer Approval | 2d | 2026-12-21 | 2026-12-23 | E-GFC-ST-RB2-70 | CSD-LKO-Design (5 Day + Holiday)-25 | Design Consultnacy Charges; Physical Progress [1020 h]; Peer Reviewer-25 |  |
| E-GFC-ST-RB2-100 |  | TPL Design Team Approval | 2d | 2026-12-23 | 2026-12-28 | E-GFC-ST-RB2-85 | CSD-LKO-Design (5 Day + Holiday)-25 | Design Consultnacy Charges [128903 INR]; Physical Progress [1020 h]; TATA Projects Ltd-25 | 128,903 |
| E-GFC-ST-RB2-115 |  | Issue of Hard Copy on Site | 4d | 2026-12-28 | 2027-01-04 | E-GFC-ST-RB2-100 | CSD-LKO-Design (5 Day + Holiday)-25 | Design Consultnacy Charges; Physical Progress [510 h]; TATA Projects Ltd-25 |  |
|  | 5 | **Third Floor** |  | 2026-12-15 | 2027-01-13 |  |  |  |  |
| E-GFC-ST-RB2-20 |  | Drawings Preparation& Submission | 7d | 2026-12-15 | 2026-12-24 | E-DD-ST-RB2-15, E-GFC-ST-RB2-15 | CSD-LKO-Design (5 Day + Holiday)-25 | Design Consultnacy Charges; Physical Progress [3580 h]; TATA Projects Ltd-25 |  |
| E-GFC-ST-RB2-40 |  | Domain Expert Approval | 2d | 2026-12-24 | 2026-12-29 | E-GFC-ST-RB2-20 | CSD-LKO-Design (5 Day + Holiday)-25 | Design Consultnacy Charges; Physical Progress [1020 h]; TATA Projects Ltd-25 |  |
| E-GFC-ST-RB2-75 |  | Executive Consultant Approval | 2d | 2026-12-29 | 2026-12-31 | E-GFC-ST-RB2-40 | CSD-LKO-Design (5 Day + Holiday)-25 | Design Consultnacy Charges; Physical Progress [1020 h]; TATA Projects Ltd-25 |  |
| E-GFC-ST-RB2-90 |  | Peer Reviewer Approval | 2d | 2026-12-31 | 2027-01-05 | E-GFC-ST-RB2-75 | CSD-LKO-Design (5 Day + Holiday)-25 | Design Consultnacy Charges; Physical Progress [1020 h]; Peer Reviewer-25 |  |
| E-GFC-ST-RB2-105 |  | TPL Design Team Approval | 2d | 2027-01-05 | 2027-01-07 | E-GFC-ST-RB2-90 | CSD-LKO-Design (5 Day + Holiday)-25 | Design Consultnacy Charges [128903 INR]; Physical Progress [1020 h]; TATA Projects Ltd-25 | 128,903 |
| E-GFC-ST-RB2-120 |  | Issue of Hard Copy on Site | 4d | 2027-01-07 | 2027-01-13 | E-GFC-ST-RB2-105 | CSD-LKO-Design (5 Day + Holiday)-25 | Design Consultnacy Charges; Physical Progress [510 h]; TATA Projects Ltd-25 |  |
|  | 6 | **Fourth Floor** |  | 2026-12-24 | 2027-01-22 |  |  |  |  |
| E-GFC-ST-RB2-45 |  | Drawings Preparation& Submission | 7d | 2026-12-24 | 2027-01-06 | E-DD-ST-RB2-15, E-GFC-ST-RB2-20 | CSD-LKO-Design (5 Day + Holiday)-25 | Design Consultnacy Charges; Physical Progress [23030 h]; TATA Projects Ltd-25 |  |
| E-GFC-ST-RB2-130 |  | Domain Expert Approval | 2d | 2027-01-06 | 2027-01-08 | E-GFC-ST-RB2-45 | CSD-LKO-Design (5 Day + Holiday)-25 | Design Consultnacy Charges; Physical Progress [1020 h]; TATA Projects Ltd-25 |  |
| E-GFC-ST-RB2-155 |  | Executive Consultant Approval | 2d | 2027-01-08 | 2027-01-12 | E-GFC-ST-RB2-130 | CSD-LKO-Design (5 Day + Holiday)-25 | Design Consultnacy Charges; Physical Progress [1020 h]; TATA Projects Ltd-25 |  |
| E-GFC-ST-RB2-180 |  | Peer Reviewer Approval | 2d | 2027-01-12 | 2027-01-14 | E-GFC-ST-RB2-155 | CSD-LKO-Design (5 Day + Holiday)-25 | Design Consultnacy Charges; Physical Progress [1020 h]; Peer Reviewer-25 |  |
| E-GFC-ST-RB2-205 |  | TPL Design Team Approval | 2d | 2027-01-14 | 2027-01-18 | E-GFC-ST-RB2-180 | CSD-LKO-Design (5 Day + Holiday)-25 | Design Consultnacy Charges [128903 INR]; Physical Progress [1020 h]; TATA Projects Ltd-25 | 128,903 |
| E-GFC-ST-RB2-230 |  | Issue of Hard Copy on Site | 4d | 2027-01-18 | 2027-01-22 | E-GFC-ST-RB2-205 | CSD-LKO-Design (5 Day + Holiday)-25 | Design Consultnacy Charges; Physical Progress [510 h]; TATA Projects Ltd-25 |  |

| ID | WBS | Activity | Duration | Start | Finish | Predecessors | Calendar | Resources | Cost |
| --- | --- | --- | --- | --- | --- | --- | --- | --- | --- |
|  | 7 | **Fifth Floor** |  | 2027-01-06 | 2027-02-10 |  |  |  |  |
| E-GFC-ST-RB2-50 |  | Drawings Preparation& Submission | 12d | 2027-01-06 | 2027-01-22 | E-DD-ST-RB2-15, E-GFC-ST-RB2-45 | CSD-LKO-Design (5 Day + Holiday)-25 | Design Consultnacy Charges; Physical Progress [23030 h]; TATA Projects Ltd-25 |  |
| E-GFC-ST-RB2-135 |  | Domain Expert Approval | 2d | 2027-01-22 | 2027-01-27 | E-GFC-ST-RB2-50 | CSD-LKO-Design (5 Day + Holiday)-25 | Design Consultnacy Charges; Physical Progress [1020 h]; TATA Projects Ltd-25 |  |
| E-GFC-ST-RB2-160 |  | Executive Consultant Approval | 2d | 2027-01-27 | 2027-01-29 | E-GFC-ST-RB2-135 | CSD-LKO-Design (5 Day + Holiday)-25 | Design Consultnacy Charges; Physical Progress [1020 h]; TATA Projects Ltd-25 |  |
| E-GFC-ST-RB2-185 |  | Peer Reviewer Approval | 2d | 2027-01-29 | 2027-02-02 | E-GFC-ST-RB2-160 | CSD-LKO-Design (5 Day + Holiday)-25 | Design Consultnacy Charges; Physical Progress [1020 h]; Peer Reviewer-25 |  |
| E-GFC-ST-RB2-210 |  | TPL Design Team Approval | 2d | 2027-02-02 | 2027-02-04 | E-GFC-ST-RB2-185 | CSD-LKO-Design (5 Day + Holiday)-25 | Design Consultnacy Charges [128903 INR]; Physical Progress [1020 h]; TATA Projects Ltd-25 | 128,903 |
| E-GFC-ST-RB2-235 |  | Issue of Hard Copy on Site | 4d | 2027-02-04 | 2027-02-10 | E-GFC-ST-RB2-210 | CSD-LKO-Design (5 Day + Holiday)-25 | Design Consultnacy Charges; Physical Progress [510 h]; TATA Projects Ltd-25 |  |
|  | 8 | **Sixth Floor** |  | 2027-01-22 | 2027-02-19 |  |  |  |  |
| E-GFC-ST-RB2-55 |  | Drawings Preparation& Submission | 7d | 2027-01-22 | 2027-02-03 | E-DD-ST-RB2-15, E-GFC-ST-RB2-50 | CSD-LKO-Design (5 Day + Holiday)-25 | Design Consultnacy Charges; Physical Progress [23030 h]; TATA Projects Ltd-25 |  |
| E-GFC-ST-RB2-140 |  | Domain Expert Approval | 2d | 2027-02-03 | 2027-02-05 | E-GFC-ST-RB2-55 | CSD-LKO-Design (5 Day + Holiday)-25 | Design Consultnacy Charges; Physical Progress [1020 h]; TATA Projects Ltd-25 |  |
| E-GFC-ST-RB2-165 |  | Executive Consultant Approval | 2d | 2027-02-05 | 2027-02-09 | E-GFC-ST-RB2-140 | CSD-LKO-Design (5 Day + Holiday)-25 | Design Consultnacy Charges; Physical Progress [1020 h]; TATA Projects Ltd-25 |  |
| E-GFC-ST-RB2-190 |  | Peer Reviewer Approval | 2d | 2027-02-09 | 2027-02-11 | E-GFC-ST-RB2-165 | CSD-LKO-Design (5 Day + Holiday)-25 | Design Consultnacy Charges; Physical Progress [1020 h]; Peer Reviewer-25 |  |
| E-GFC-ST-RB2-215 |  | TPL Design Team Approval | 2d | 2027-02-11 | 2027-02-15 | E-GFC-ST-RB2-190 | CSD-LKO-Design (5 Day + Holiday)-25 | Design Consultnacy Charges [128903 INR]; Physical Progress [1020 h]; TATA Projects Ltd-25 | 128,903 |
| E-GFC-ST-RB2-240 |  | Issue of Hard Copy on Site | 4d | 2027-02-15 | 2027-02-19 | E-GFC-ST-RB2-215 | CSD-LKO-Design (5 Day + Holiday)-25 | Design Consultnacy Charges; Physical Progress [510 h]; TATA Projects Ltd-25 |  |
|  | 9 | **Terrace** |  | 2027-02-03 | 2027-03-02 |  |  |  |  |
| E-GFC-ST-RB2-60 |  | Drawings Preparation& Submission | 7d | 2027-02-03 | 2027-02-12 | E-DD-ST-RB2-15, E-GFC-ST-RB2-55 | CSD-LKO-Design (5 Day + Holiday)-25 | Design Consultnacy Charges; Physical Progress [23030 h]; TATA Projects Ltd-25 |  |
| E-GFC-ST-RB2-145 |  | Domain Expert Approval | 2d | 2027-02-12 | 2027-02-16 | E-GFC-ST-RB2-60 | CSD-LKO-Design (5 Day + Holiday)-25 | Design Consultnacy Charges; Physical Progress [1020 h]; TATA Projects Ltd-25 |  |
| E-GFC-ST-RB2-170 |  | Executive Consultant Approval | 2d | 2027-02-16 | 2027-02-18 | E-GFC-ST-RB2-145 | CSD-LKO-Design (5 Day + Holiday)-25 | Design Consultnacy Charges; Physical Progress [1020 h]; TATA Projects Ltd-25 |  |
| E-GFC-ST-RB2-195 |  | Peer Reviewer Approval | 2d | 2027-02-18 | 2027-02-22 | E-GFC-ST-RB2-170 | CSD-LKO-Design (5 Day + Holiday)-25 | Design Consultnacy Charges; Physical Progress [1020 h]; Peer Reviewer-25 |  |
| E-GFC-ST-RB2-220 |  | TPL Design Team Approval | 2d | 2027-02-22 | 2027-02-24 | E-GFC-ST-RB2-195 | CSD-LKO-Design (5 Day + Holiday)-25 | Design Consultnacy Charges [128903 INR]; Physical Progress [1020 h]; TATA Projects Ltd-25 | 128,903 |
| E-GFC-ST-RB2-245 |  | Issue of Hard Copy on Site | 4d | 2027-02-24 | 2027-03-02 | E-GFC-ST-RB2-220 | CSD-LKO-Design (5 Day + Holiday)-25 | Design Consultnacy Charges; Physical Progress [510 h]; TATA Projects Ltd-25 |  |
|  | 1 | **Roof** |  | 2027-02-12 | 2027-03-12 |  |  |  |  |
| E-GFC-ST-RB2-25 |  | Drawings Preparation& Submission | 7d | 2027-02-12 | 2027-02-23 | E-DD-ST-RB2-15, E-GFC-ST-RB2-60 | CSD-LKO-Design (5 Day + Holiday)-25 | Design Consultnacy Charges; Physical Progress [23030 h]; TATA Projects Ltd-25 |  |
| E-GFC-ST-RB2-125 |  | Domain Expert Approval | 2d | 2027-02-23 | 2027-02-25 | E-GFC-ST-RB2-25 | CSD-LKO-Design (5 Day + Holiday)-25 | Design Consultnacy Charges; Physical Progress [1020 h]; TATA Projects Ltd-25 |  |
| E-GFC-ST-RB2-150 |  | Executive Consultant Approval | 2d | 2027-02-25 | 2027-03-01 | E-GFC-ST-RB2-125 | CSD-LKO-Design (5 Day + Holiday)-25 | Design Consultnacy Charges; Physical Progress [1020 h]; TATA Projects Ltd-25 |  |
| E-GFC-ST-RB2-175 |  | Peer Reviewer Approval | 2d | 2027-03-01 | 2027-03-03 | E-GFC-ST-RB2-150 | CSD-LKO-Design (5 Day + Holiday)-25 | Design Consultnacy Charges; Physical Progress [1020 h]; Peer Reviewer-25 |  |
| E-GFC-ST-RB2-200 |  | TPL Design Team Approval | 2d | 2027-03-03 | 2027-03-05 | E-GFC-ST-RB2-175 | CSD-LKO-Design (5 Day + Holiday)-25 | Design Consultnacy Charges [128903 INR]; Physical Progress [1020 h]; TATA Projects Ltd-25 | 128,903 |
| E-GFC-ST-RB2-225 |  | Issue of Hard Copy on Site | 4d | 2027-03-05 | 2027-03-12 | E-GFC-ST-RB2-200 | CSD-LKO-Design (5 Day + Holiday)-25 | Design Consultnacy Charges; Physical Progress [510 h]; TATA Projects Ltd-25 |  |

| ID | WBS | Activity | Duration | Start | Finish | Predecessors | Calendar | Resources | Cost |
| --- | --- | --- | --- | --- | --- | --- | --- | --- | --- |
|  | 5 | **Retail Block 1** |  | 2026-11-20 | 2027-02-05 |  |  |  |  |
|  | 2 | **First Floor** |  | 2026-11-20 | 2026-12-15 |  |  |  |  |
| E-GFC-ST-RB1-10 |  | Drawings Preparation& Submission | 5d | 2026-11-20 | 2026-11-27 | E-DD-ST-RB1-15, E-GFC-ST-CC-15 | CSD-LKO-Design (5 Day + Holiday)-25 | Design Consultnacy Charges; Physical Progress [3580 h]; TATA Projects Ltd-25 |  |
| E-GFC-ST-RB1-30 |  | Domain Expert Approval | 2d | 2026-11-27 | 2026-12-01 | E-GFC-ST-RB1-10 | CSD-LKO-Design (5 Day + Holiday)-25 | Design Consultnacy Charges; Physical Progress [1020 h]; TATA Projects Ltd-25 |  |
| E-GFC-ST-RB1-55 |  | Executive Consultant Approval | 2d | 2026-12-01 | 2026-12-03 | E-GFC-ST-RB1-30 | CSD-LKO-Design (5 Day + Holiday)-25 | Design Consultnacy Charges; Physical Progress [1020 h]; TATA Projects Ltd-25 |  |
| E-GFC-ST-RB1-70 |  | Peer Reviewer Approval | 2d | 2026-12-03 | 2026-12-07 | E-GFC-ST-RB1-55 | CSD-LKO-Design (5 Day + Holiday)-25 | Design Consultnacy Charges; Physical Progress [1020 h]; Peer Reviewer-25 |  |
| E-GFC-ST-RB1-85 |  | TPL Design Team Approval | 2d | 2026-12-07 | 2026-12-09 | E-GFC-ST-RB1-70 | CSD-LKO-Design (5 Day + Holiday)-25 | Design Consultnacy Charges [128903 INR]; Physical Progress [1020 h]; TATA Projects Ltd-25 | 128,903 |
| E-GFC-ST-RB1-100 |  | Issue of Hard Copy on Site | 4d | 2026-12-09 | 2026-12-15 | E-GFC-ST-RB1-85 | CSD-LKO-Design (5 Day + Holiday)-25 | Design Consultnacy Charges; Physical Progress [510 h]; TATA Projects Ltd-25 |  |
|  | 4 | **Second Floor** |  | 2026-11-27 | 2026-12-24 |  |  |  |  |
| E-GFC-ST-RB1-15 |  | Drawings Preparation& Submission | 7d | 2026-11-27 | 2026-12-08 | E-DD-ST-RB1-15, E-GFC-ST-RB1-10 | CSD-LKO-Design (5 Day + Holiday)-25 | Design Consultnacy Charges; Physical Progress [3580 h]; TATA Projects Ltd-25 |  |
| E-GFC-ST-RB1-35 |  | Domain Expert Approval | 2d | 2026-12-08 | 2026-12-10 | E-GFC-ST-RB1-15 | CSD-LKO-Design (5 Day + Holiday)-25 | Design Consultnacy Charges; Physical Progress [1020 h]; TATA Projects Ltd-25 |  |
| E-GFC-ST-RB1-60 |  | Executive Consultant Approval | 2d | 2026-12-10 | 2026-12-14 | E-GFC-ST-RB1-35 | CSD-LKO-Design (5 Day + Holiday)-25 | Design Consultnacy Charges; Physical Progress [1020 h]; TATA Projects Ltd-25 |  |
| E-GFC-ST-RB1-75 |  | Peer Reviewer Approval | 2d | 2026-12-14 | 2026-12-16 | E-GFC-ST-RB1-60 | CSD-LKO-Design (5 Day + Holiday)-25 | Design Consultnacy Charges; Physical Progress [1020 h]; Peer Reviewer-25 |  |
| E-GFC-ST-RB1-90 |  | TPL Design Team Approval | 2d | 2026-12-16 | 2026-12-18 | E-GFC-ST-RB1-75 | CSD-LKO-Design (5 Day + Holiday)-25 | Design Consultnacy Charges [128903 INR]; Physical Progress [1020 h]; TATA Projects Ltd-25 | 128,903 |
| E-GFC-ST-RB1-105 |  | Issue of Hard Copy on Site | 4d | 2026-12-18 | 2026-12-24 | E-GFC-ST-RB1-90 | CSD-LKO-Design (5 Day + Holiday)-25 | Design Consultnacy Charges; Physical Progress [510 h]; TATA Projects Ltd-25 |  |
|  | 5 | **Third Floor** |  | 2026-12-08 | 2027-01-06 |  |  |  |  |
| E-GFC-ST-RB1-20 |  | Drawings Preparation& Submission | 7d | 2026-12-08 | 2026-12-17 | E-DD-ST-RB1-15, E-GFC-ST-RB1-15 | CSD-LKO-Design (5 Day + Holiday)-25 | Design Consultnacy Charges; Physical Progress [3580 h]; TATA Projects Ltd-25 |  |
| E-GFC-ST-RB1-40 |  | Domain Expert Approval | 2d | 2026-12-17 | 2026-12-21 | E-GFC-ST-RB1-20 | CSD-LKO-Design (5 Day + Holiday)-25 | Design Consultnacy Charges; Physical Progress [1020 h]; TATA Projects Ltd-25 |  |
| E-GFC-ST-RB1-65 |  | Executive Consultant Approval | 2d | 2026-12-21 | 2026-12-23 | E-GFC-ST-RB1-40 | CSD-LKO-Design (5 Day + Holiday)-25 | Design Consultnacy Charges; Physical Progress [1020 h]; TATA Projects Ltd-25 |  |
| E-GFC-ST-RB1-80 |  | Peer Reviewer Approval | 2d | 2026-12-23 | 2026-12-28 | E-GFC-ST-RB1-65 | CSD-LKO-Design (5 Day + Holiday)-25 | Design Consultnacy Charges; Physical Progress [1020 h]; Peer Reviewer-25 |  |
| E-GFC-ST-RB1-95 |  | TPL Design Team Approval | 2d | 2026-12-28 | 2026-12-30 | E-GFC-ST-RB1-80 | CSD-LKO-Design (5 Day + Holiday)-25 | Design Consultnacy Charges [128903 INR]; Physical Progress [1020 h]; TATA Projects Ltd-25 | 128,903 |
| E-GFC-ST-RB1-110 |  | Issue of Hard Copy on Site | 4d | 2026-12-30 | 2027-01-06 | E-GFC-ST-RB1-95 | CSD-LKO-Design (5 Day + Holiday)-25 | Design Consultnacy Charges; Physical Progress [510 h]; TATA Projects Ltd-25 |  |
|  | 6 | **Fourth Floor** |  | 2026-12-17 | 2027-01-15 |  |  |  |  |
| E-GFC-ST-RB1-45 |  | Drawings Preparation& Submission | 7d | 2026-12-17 | 2026-12-29 | E-DD-ST-RB1-15, E-GFC-ST-RB1-20, E-GFC-ST-RB1-20 FF | CSD-LKO-Design (5 Day + Holiday)-25 | Design Consultnacy Charges; Physical Progress [23030 h]; TATA Projects Ltd-25 |  |
| E-GFC-ST-RB1-120 |  | Domain Expert Approval | 2d | 2026-12-29 | 2026-12-31 | E-GFC-ST-RB1-45 | CSD-LKO-Design (5 Day + Holiday)-25 | Design Consultnacy Charges; Physical Progress [1020 h]; TATA Projects Ltd-25 |  |
| E-GFC-ST-RB1-135 |  | Executive Consultant Approval | 2d | 2026-12-31 | 2027-01-05 | E-GFC-ST-RB1-120 | CSD-LKO-Design (5 Day + Holiday)-25 | Design Consultnacy Charges; Physical Progress [1020 h]; TATA Projects Ltd-25 |  |
| E-GFC-ST-RB1-150 |  | Peer Reviewer Approval | 2d | 2027-01-05 | 2027-01-07 | E-GFC-ST-RB1-135 | CSD-LKO-Design (5 Day + Holiday)-25 | Design Consultnacy Charges; Physical Progress [1020 h]; Peer Reviewer-25 |  |
| E-GFC-ST-RB1-165 |  | TPL Design Team Approval | 2d | 2027-01-07 | 2027-01-11 | E-GFC-ST-RB1-150 | CSD-LKO-Design (5 Day + Holiday)-25 | Design Consultnacy Charges [128903 INR]; Physical Progress [1020 h]; TATA Projects Ltd-25 | 128,903 |
| E-GFC-ST-RB1-180 |  | Issue of Hard Copy on Site | 4d | 2027-01-11 | 2027-01-15 | E-GFC-ST-RB1-165 | CSD-LKO-Design (5 Day + Holiday)-25 | Design Consultnacy Charges; Physical Progress [510 h]; TATA Projects Ltd-25 |  |

| ID | WBS | Activity | Duration | Start | Finish | Predecessors | Calendar | Resources | Cost |
| --- | --- | --- | --- | --- | --- | --- | --- | --- | --- |
|  | 9 | **Terrace** |  | 2026-12-29 | 2027-01-27 |  |  |  |  |
| E-GFC-ST-RB1-50 |  | Drawings Preparation& Submission | 7d | 2026-12-29 | 2027-01-08 | E-GFC-ST-RB1-20, E-GFC-ST-RB1-45 | CSD-LKO-Design (5 Day + Holiday)-25 | Design Consultnacy Charges; Physical Progress [23030 h]; TATA Projects Ltd-25 |  |
| E-GFC-ST-RB1-125 |  | Domain Expert Approval | 2d | 2027-01-08 | 2027-01-12 | E-GFC-ST-RB1-50 | CSD-LKO-Design (5 Day + Holiday)-25 | Design Consultnacy Charges; Physical Progress [1020 h]; TATA Projects Ltd-25 |  |
| E-GFC-ST-RB1-140 |  | Executive Consultant Approval | 2d | 2027-01-12 | 2027-01-14 | E-GFC-ST-RB1-125 | CSD-LKO-Design (5 Day + Holiday)-25 | Design Consultnacy Charges; Physical Progress [1020 h]; TATA Projects Ltd-25 |  |
| E-GFC-ST-RB1-155 |  | Peer Reviewer Approval | 2d | 2027-01-14 | 2027-01-18 | E-GFC-ST-RB1-140 | CSD-LKO-Design (5 Day + Holiday)-25 | Design Consultnacy Charges; Physical Progress [1020 h]; Peer Reviewer-25 |  |
| E-GFC-ST-RB1-170 |  | TPL Design Team Approval | 2d | 2027-01-18 | 2027-01-20 | E-GFC-ST-RB1-155 | CSD-LKO-Design (5 Day + Holiday)-25 | Design Consultnacy Charges [128903 INR]; Physical Progress [1020 h]; TATA Projects Ltd-25 | 128,903 |
| E-GFC-ST-RB1-185 |  | Issue of Hard Copy on Site | 4d | 2027-01-20 | 2027-01-27 | E-GFC-ST-RB1-170 | CSD-LKO-Design (5 Day + Holiday)-25 | Design Consultnacy Charges; Physical Progress [510 h]; TATA Projects Ltd-25 |  |
|  | 1 | **Roof** |  | 2027-01-08 | 2027-02-05 |  |  |  |  |
| E-GFC-ST-RB1-25 |  | Drawings Preparation& Submission | 7d | 2027-01-08 | 2027-01-19 | E-GFC-ST-RB1-20, E-GFC-ST-RB1-50 | CSD-LKO-Design (5 Day + Holiday)-25 | Design Consultnacy Charges; Physical Progress [23030 h]; TATA Projects Ltd-25 |  |
| E-GFC-ST-RB1-115 |  | Domain Expert Approval | 2d | 2027-01-19 | 2027-01-21 | E-GFC-ST-RB1-25 | CSD-LKO-Design (5 Day + Holiday)-25 | Design Consultnacy Charges; Physical Progress [1020 h]; TATA Projects Ltd-25 |  |
| E-GFC-ST-RB1-130 |  | Executive Consultant Approval | 2d | 2027-01-21 | 2027-01-25 | E-GFC-ST-RB1-115 | CSD-LKO-Design (5 Day + Holiday)-25 | Design Consultnacy Charges; Physical Progress [1020 h]; TATA Projects Ltd-25 |  |
| E-GFC-ST-RB1-145 |  | Peer Reviewer Approval | 2d | 2027-01-25 | 2027-01-28 | E-GFC-ST-RB1-130 | CSD-LKO-Design (5 Day + Holiday)-25 | Design Consultnacy Charges; Physical Progress [1020 h]; Peer Reviewer-25 |  |
| E-GFC-ST-RB1-160 |  | TPL Design Team Approval | 2d | 2027-01-28 | 2027-02-01 | E-GFC-ST-RB1-145 | CSD-LKO-Design (5 Day + Holiday)-25 | Design Consultnacy Charges [128903 INR]; Physical Progress [1020 h]; TATA Projects Ltd-25 | 128,903 |
| E-GFC-ST-RB1-175 |  | Issue of Hard Copy on Site | 4d | 2027-02-01 | 2027-02-05 | E-GFC-ST-RB1-160 | CSD-LKO-Design (5 Day + Holiday)-25 | Design Consultnacy Charges; Physical Progress [510 h]; TATA Projects Ltd-25 |  |
|  | 6 | **Convention Center** |  | 2026-11-13 | 2027-02-09 |  |  |  |  |
|  | 5 | **First Mezzanine** |  | 2026-11-13 | 2026-12-08 |  |  |  |  |
| E-GFC-ST-CC-15 |  | Drawings Preparation& Submission | 5d | 2026-11-13 | 2026-11-20 | E-DD-ST-CC-15, E-GFC-ST-3S-10 | CSD-LKO-Design (5 Day + Holiday)-25 | Design Consultnacy Charges; Physical Progress [3580 h]; TATA Projects Ltd-25 |  |
| E-GFC-ST-CC-40 |  | Domain Expert Approval | 2d | 2026-11-20 | 2026-11-24 | E-GFC-ST-CC-15 | CSD-LKO-Design (5 Day + Holiday)-25 | Design Consultnacy Charges; Physical Progress [1020 h]; TATA Projects Ltd-25 |  |
| E-GFC-ST-CC-65 |  | Executive Consultant Approval | 2d | 2026-11-24 | 2026-11-26 | E-GFC-ST-CC-40 | CSD-LKO-Design (5 Day + Holiday)-25 | Design Consultnacy Charges; Physical Progress [1020 h]; TATA Projects Ltd-25 |  |
| E-GFC-ST-CC-80 |  | Peer Reviewer Approval | 2d | 2026-11-26 | 2026-11-30 | E-GFC-ST-CC-65 | CSD-LKO-Design (5 Day + Holiday)-25 | Design Consultnacy Charges; Physical Progress [1020 h]; Peer Reviewer-25 |  |
| E-GFC-ST-CC-95 |  | TPL Design Team Approval | 2d | 2026-11-30 | 2026-12-02 | E-GFC-ST-CC-80 | CSD-LKO-Design (5 Day + Holiday)-25 | Design Consultnacy Charges [128903 INR]; Physical Progress [1020 h]; TATA Projects Ltd-25 | 128,903 |
| E-GFC-ST-CC-110 |  | Issue of Hard Copy on Site | 4d | 2026-12-02 | 2026-12-08 | E-GFC-ST-CC-95 | CSD-LKO-Design (5 Day + Holiday)-25 | Design Consultnacy Charges; Physical Progress [510 h]; TATA Projects Ltd-25 |  |
|  | 6 | **Second Mezzanine** |  | 2026-11-20 | 2026-12-17 |  |  |  |  |
| E-GFC-ST-CC-20 |  | Drawings Preparation& Submission | 7d | 2026-11-20 | 2026-12-01 | E-DD-ST-CC-15, E-GFC-ST-CC-15 | CSD-LKO-Design (5 Day + Holiday)-25 | Design Consultnacy Charges; Physical Progress [3580 h]; TATA Projects Ltd-25 |  |
| E-GFC-ST-CC-45 |  | Domain Expert Approval | 2d | 2026-12-01 | 2026-12-03 | E-GFC-ST-CC-20 | CSD-LKO-Design (5 Day + Holiday)-25 | Design Consultnacy Charges; Physical Progress [1020 h]; TATA Projects Ltd-25 |  |
| E-GFC-ST-CC-70 |  | Executive Consultant Approval | 2d | 2026-12-03 | 2026-12-07 | E-GFC-ST-CC-45 | CSD-LKO-Design (5 Day + Holiday)-25 | Design Consultnacy Charges; Physical Progress [1020 h]; TATA Projects Ltd-25 |  |
| E-GFC-ST-CC-85 |  | Peer Reviewer Approval | 2d | 2026-12-07 | 2026-12-09 | E-GFC-ST-CC-70 | CSD-LKO-Design (5 Day + Holiday)-25 | Design Consultnacy Charges; Physical Progress [1020 h]; Peer Reviewer-25 |  |
| E-GFC-ST-CC-100 |  | TPL Design Team Approval | 2d | 2026-12-09 | 2026-12-11 | E-GFC-ST-CC-85 | CSD-LKO-Design (5 Day + Holiday)-25 | Design Consultnacy Charges [128903 INR]; Physical Progress [1020 h]; TATA Projects Ltd-25 | 128,903 |
| E-GFC-ST-CC-115 |  | Issue of Hard Copy on Site | 4d | 2026-12-11 | 2026-12-17 | E-GFC-ST-CC-100 | CSD-LKO-Design (5 Day + Holiday)-25 | Design Consultnacy Charges; Physical Progress [510 h]; TATA Projects Ltd-25 |  |

| ID | WBS | Activity | Duration | Start | Finish | Predecessors | Calendar | Resources | Cost |
| --- | --- | --- | --- | --- | --- | --- | --- | --- | --- |
|  | 2 | **First Floor** |  | 2026-12-01 | 2026-12-29 |  |  |  |  |
| E-GFC-ST-CC-10 |  | Drawings Preparation& Submission | 7d | 2026-12-01 | 2026-12-10 | E-DD-ST-CC-15, E-GFC-ST-CC-20 | CSD-LKO-Design (5 Day + Holiday)-25 | Design Consultnacy Charges; Physical Progress [3580 h]; TATA Projects Ltd-25 |  |
| E-GFC-ST-CC-30 |  | Domain Expert Approval | 2d | 2026-12-10 | 2026-12-14 | E-GFC-ST-CC-10 | CSD-LKO-Design (5 Day + Holiday)-25 | Design Consultnacy Charges; Physical Progress [1020 h]; TATA Projects Ltd-25 |  |
| E-GFC-ST-CC-60 |  | Executive Consultant Approval | 2d | 2026-12-14 | 2026-12-16 | E-GFC-ST-CC-30 | CSD-LKO-Design (5 Day + Holiday)-25 | Design Consultnacy Charges; Physical Progress [1020 h]; TATA Projects Ltd-25 |  |
| E-GFC-ST-CC-75 |  | Peer Reviewer Approval | 2d | 2026-12-16 | 2026-12-18 | E-GFC-ST-CC-60 | CSD-LKO-Design (5 Day + Holiday)-25 | Design Consultnacy Charges; Physical Progress [1020 h]; Peer Reviewer-25 |  |
| E-GFC-ST-CC-90 |  | TPL Design Team Approval | 2d | 2026-12-18 | 2026-12-22 | E-GFC-ST-CC-75 | CSD-LKO-Design (5 Day + Holiday)-25 | Design Consultnacy Charges [128903 INR]; Physical Progress [1020 h]; TATA Projects Ltd-25 | 128,903 |
| E-GFC-ST-CC-105 |  | Issue of Hard Copy on Site | 4d | 2026-12-22 | 2026-12-29 | E-GFC-ST-CC-90 | CSD-LKO-Design (5 Day + Holiday)-25 | Design Consultnacy Charges; Physical Progress [510 h]; TATA Projects Ltd-25 |  |
|  | 7 | **Third Mezzanine** |  | 2026-12-10 | 2027-01-08 |  |  |  |  |
| E-GFC-ST-CC-50 |  | Drawings Preparation& Submission | 7d | 2026-12-10 | 2026-12-21 | E-DD-ST-CC-15, E-GFC-ST-CC-10 | CSD-LKO-Design (5 Day + Holiday)-25 | Design Consultnacy Charges; Physical Progress [23030 h]; TATA Projects Ltd-25 |  |
| E-GFC-ST-CC-130 |  | Domain Expert Approval | 2d | 2026-12-21 | 2026-12-23 | E-GFC-ST-CC-50 | CSD-LKO-Design (5 Day + Holiday)-25 | Design Consultnacy Charges; Physical Progress [1020 h]; TATA Projects Ltd-25 |  |
| E-GFC-ST-CC-150 |  | Executive Consultant Approval | 2d | 2026-12-23 | 2026-12-28 | E-GFC-ST-CC-130 | CSD-LKO-Design (5 Day + Holiday)-25 | Design Consultnacy Charges; Physical Progress [1020 h]; TATA Projects Ltd-25 |  |
| E-GFC-ST-CC-170 |  | Peer Reviewer Approval | 2d | 2026-12-28 | 2026-12-30 | E-GFC-ST-CC-150 | CSD-LKO-Design (5 Day + Holiday)-25 | Design Consultnacy Charges; Physical Progress [1020 h]; Peer Reviewer-25 |  |
| E-GFC-ST-CC-190 |  | TPL Design Team Approval | 2d | 2026-12-30 | 2027-01-04 | E-GFC-ST-CC-170 | CSD-LKO-Design (5 Day + Holiday)-25 | Design Consultnacy Charges [128903 INR]; Physical Progress [1020 h]; TATA Projects Ltd-25 | 128,903 |
| E-GFC-ST-CC-210 |  | Issue of Hard Copy on Site | 4d | 2027-01-04 | 2027-01-08 | E-GFC-ST-CC-190 | CSD-LKO-Design (5 Day + Holiday)-25 | Design Consultnacy Charges; Physical Progress [510 h]; TATA Projects Ltd-25 |  |
|  | 4 | **Second Floor** |  | 2026-12-21 | 2027-01-19 |  |  |  |  |
| E-GFC-ST-CC-35 |  | Drawings Preparation& Submission | 7d | 2026-12-21 | 2026-12-31 | E-DD-ST-CC-15, E-GFC-ST-CC-50 | CSD-LKO-Design (5 Day + Holiday)-25 | Design Consultnacy Charges; Physical Progress [23030 h]; TATA Projects Ltd-25 |  |
| E-GFC-ST-CC-125 |  | Domain Expert Approval | 2d | 2026-12-31 | 2027-01-05 | E-GFC-ST-CC-35 | CSD-LKO-Design (5 Day + Holiday)-25 | Design Consultnacy Charges; Physical Progress [1020 h]; TATA Projects Ltd-25 |  |
| E-GFC-ST-CC-145 |  | Executive Consultant Approval | 2d | 2027-01-05 | 2027-01-07 | E-GFC-ST-CC-125 | CSD-LKO-Design (5 Day + Holiday)-25 | Design Consultnacy Charges; Physical Progress [1020 h]; TATA Projects Ltd-25 |  |
| E-GFC-ST-CC-165 |  | Peer Reviewer Approval | 2d | 2027-01-07 | 2027-01-11 | E-GFC-ST-CC-145 | CSD-LKO-Design (5 Day + Holiday)-25 | Design Consultnacy Charges; Physical Progress [1020 h]; Peer Reviewer-25 |  |
| E-GFC-ST-CC-185 |  | TPL Design Team Approval | 2d | 2027-01-11 | 2027-01-13 | E-GFC-ST-CC-165 | CSD-LKO-Design (5 Day + Holiday)-25 | Design Consultnacy Charges [128903 INR]; Physical Progress [1020 h]; TATA Projects Ltd-25 | 128,903 |
| E-GFC-ST-CC-205 |  | Issue of Hard Copy on Site | 4d | 2027-01-13 | 2027-01-19 | E-GFC-ST-CC-185 | CSD-LKO-Design (5 Day + Holiday)-25 | Design Consultnacy Charges; Physical Progress [510 h]; TATA Projects Ltd-25 |  |
|  | 9 | **Terrace** |  | 2026-12-31 | 2027-01-29 |  |  |  |  |
| E-GFC-ST-CC-55 |  | Drawings Preparation& Submission | 7d | 2026-12-31 | 2027-01-12 | E-DD-ST-CC-15, E-GFC-ST-CC-35 | CSD-LKO-Design (5 Day + Holiday)-25 | Design Consultnacy Charges; Physical Progress [23030 h]; TATA Projects Ltd-25 |  |
| E-GFC-ST-CC-135 |  | Domain Expert Approval | 2d | 2027-01-12 | 2027-01-14 | E-GFC-ST-CC-55 | CSD-LKO-Design (5 Day + Holiday)-25 | Design Consultnacy Charges; Physical Progress [1020 h]; TATA Projects Ltd-25 |  |
| E-GFC-ST-CC-155 |  | Executive Consultant Approval | 2d | 2027-01-14 | 2027-01-18 | E-GFC-ST-CC-135 | CSD-LKO-Design (5 Day + Holiday)-25 | Design Consultnacy Charges; Physical Progress [1020 h]; TATA Projects Ltd-25 |  |
| E-GFC-ST-CC-175 |  | Peer Reviewer Approval | 2d | 2027-01-18 | 2027-01-20 | E-GFC-ST-CC-155 | CSD-LKO-Design (5 Day + Holiday)-25 | Design Consultnacy Charges; Physical Progress [1020 h]; Peer Reviewer-25 |  |
| E-GFC-ST-CC-195 |  | TPL Design Team Approval | 2d | 2027-01-20 | 2027-01-22 | E-GFC-ST-CC-175 | CSD-LKO-Design (5 Day + Holiday)-25 | Design Consultnacy Charges [128903 INR]; Physical Progress [1020 h]; TATA Projects Ltd-25 | 128,903 |
| E-GFC-ST-CC-215 |  | Issue of Hard Copy on Site | 4d | 2027-01-22 | 2027-01-29 | E-GFC-ST-CC-195 | CSD-LKO-Design (5 Day + Holiday)-25 | Design Consultnacy Charges; Physical Progress [510 h]; TATA Projects Ltd-25 |  |

| ID | WBS | Activity | Duration | Start | Finish | Predecessors | Calendar | Resources | Cost |
| --- | --- | --- | --- | --- | --- | --- | --- | --- | --- |
|  | 1 | **Roof** |  | 2027-01-12 | 2027-02-09 |  |  |  |  |
| E-GFC-ST-CC-25 |  | Drawings Preparation& Submission | 7d | 2027-01-12 | 2027-01-21 | E-DD-ST-CC-15, E-GFC-ST-CC-55 | CSD-LKO-Design (5 Day + Holiday)-25 | Design Consultnacy Charges; Physical Progress [23030 h]; TATA Projects Ltd-25 |  |
| E-GFC-ST-CC-120 |  | Domain Expert Approval | 2d | 2027-01-21 | 2027-01-25 | E-GFC-ST-CC-25 | CSD-LKO-Design (5 Day + Holiday)-25 | Design Consultnacy Charges; Physical Progress [1020 h]; TATA Projects Ltd-25 |  |
| E-GFC-ST-CC-140 |  | Executive Consultant Approval | 2d | 2027-01-25 | 2027-01-28 | E-GFC-ST-CC-120 | CSD-LKO-Design (5 Day + Holiday)-25 | Design Consultnacy Charges; Physical Progress [1020 h]; TATA Projects Ltd-25 |  |
| E-GFC-ST-CC-160 |  | Peer Reviewer Approval | 2d | 2027-01-28 | 2027-02-01 | E-GFC-ST-CC-140 | CSD-LKO-Design (5 Day + Holiday)-25 | Design Consultnacy Charges; Physical Progress [1020 h]; Peer Reviewer-25 |  |
| E-GFC-ST-CC-180 |  | TPL Design Team Approval | 2d | 2027-02-01 | 2027-02-03 | E-GFC-ST-CC-160 | CSD-LKO-Design (5 Day + Holiday)-25 | Design Consultnacy Charges [128903 INR]; Physical Progress [1020 h]; TATA Projects Ltd-25 | 128,903 |
| E-GFC-ST-CC-200 |  | Issue of Hard Copy on Site | 4d | 2027-02-03 | 2027-02-09 | E-GFC-ST-CC-180 | CSD-LKO-Design (5 Day + Holiday)-25 | Design Consultnacy Charges; Physical Progress [510 h]; TATA Projects Ltd-25 |  |
|  | 3 | **MEPF** |  | 2026-10-05 | 2027-05-03 |  |  |  |  |
|  | 2 | **Common Basements** |  | 2026-10-05 | 2026-12-21 |  |  |  |  |
|  | 1 | **Basement 03** |  | 2026-10-05 | 2026-12-07 |  |  |  |  |
| E-GFC-MEP-CB-10 |  | Drawings Preparation& Submission | 32d | 2026-10-05 | 2026-11-19 | E-DD-MEP-CB-15 | CSD-LKO-Design (5 Day + Holiday)-25 | Design Consultnacy Charges; Physical Progress [4610 h]; TATA Projects Ltd-25 |  |
| E-GFC-MEP-CB-25 |  | Domain Expert Approval | 2d | 2026-11-19 | 2026-11-23 | E-GFC-MEP-CB-10 | CSD-LKO-Design (5 Day + Holiday)-25 | Design Consultnacy Charges; Physical Progress [1020 h]; TATA Projects Ltd-25 |  |
| E-GFC-MEP-CB-30 |  | Executive Consultant Approval | 2d | 2026-11-23 | 2026-11-25 | E-GFC-MEP-CB-25 | CSD-LKO-Design (5 Day + Holiday)-25 | Design Consultnacy Charges; Physical Progress [1020 h]; TATA Projects Ltd-25 |  |
| E-GFC-MEP-CB-35 |  | Peer Reviewer Approval | 2d | 2026-11-25 | 2026-11-27 | E-GFC-MEP-CB-30 | CSD-LKO-Design (5 Day + Holiday)-25 | Design Consultnacy Charges; Physical Progress [1020 h]; Peer Reviewer-25 |  |
| E-GFC-MEP-CB-40 |  | TPL Design Team Approval | 2d | 2026-11-27 | 2026-12-01 | E-GFC-MEP-CB-35 | CSD-LKO-Design (5 Day + Holiday)-25 | Design Consultnacy Charges [88427 INR]; Physical Progress [1020 h]; TATA Projects Ltd-25 | 88,427 |
| E-GFC-MEP-CB-45 |  | Issue of Hard Copy on Site | 4d | 2026-12-01 | 2026-12-07 | E-GFC-MEP-CB-40 | CSD-LKO-Design (5 Day + Holiday)-25 | Design Consultnacy Charges; Physical Progress [510 h]; TATA Projects Ltd-25 |  |
|  | 2 | **Basement 02** |  | 2026-10-05 | 2026-12-07 |  |  |  |  |
| E-GFC-MEP-CB-15 |  | Drawings Preparation& Submission | 32d | 2026-10-05 | 2026-11-19 | E-DD-MEP-CB-15 | CSD-LKO-Design (5 Day + Holiday)-25 | Design Consultnacy Charges; Physical Progress [13300 h]; TATA Projects Ltd-25 |  |
| E-GFC-MEP-CB-50 |  | Domain Expert Approval | 2d | 2026-11-19 | 2026-11-23 | E-GFC-MEP-CB-15 | CSD-LKO-Design (5 Day + Holiday)-25 | Design Consultnacy Charges; Physical Progress [1020 h]; TATA Projects Ltd-25 |  |
| E-GFC-MEP-CB-60 |  | Executive Consultant Approval | 2d | 2026-11-23 | 2026-11-25 | E-GFC-MEP-CB-50 | CSD-LKO-Design (5 Day + Holiday)-25 | Design Consultnacy Charges; Physical Progress [1020 h]; TATA Projects Ltd-25 |  |
| E-GFC-MEP-CB-70 |  | Peer Reviewer Approval | 2d | 2026-11-25 | 2026-11-27 | E-GFC-MEP-CB-60 | CSD-LKO-Design (5 Day + Holiday)-25 | Design Consultnacy Charges; Physical Progress [1020 h]; Peer Reviewer-25 |  |
| E-GFC-MEP-CB-80 |  | TPL Design Team Approval | 2d | 2026-11-27 | 2026-12-01 | E-GFC-MEP-CB-70 | CSD-LKO-Design (5 Day + Holiday)-25 | Design Consultnacy Charges [88427 INR]; Physical Progress [1020 h]; TATA Projects Ltd-25 | 88,427 |
| E-GFC-MEP-CB-90 |  | Issue of Hard Copy on Site | 4d | 2026-12-01 | 2026-12-07 | E-GFC-MEP-CB-80 | CSD-LKO-Design (5 Day + Holiday)-25 | Design Consultnacy Charges; Physical Progress [510 h]; TATA Projects Ltd-25 |  |
|  | 4 | **Basement 01** |  | 2026-11-19 | 2026-12-21 |  |  |  |  |
| E-GFC-MEP-CB-20 |  | Drawings Preparation& Submission | 10d | 2026-11-19 | 2026-12-03 | E-DD-MEP-CB-15, E-GFC-MEP-CB-15 | CSD-LKO-Design (5 Day + Holiday)-25 | Design Consultnacy Charges; Physical Progress [13300 h]; TATA Projects Ltd-25 |  |
| E-GFC-MEP-CB-55 |  | Domain Expert Approval | 2d | 2026-12-03 | 2026-12-07 | E-GFC-MEP-CB-20 | CSD-LKO-Design (5 Day + Holiday)-25 | Design Consultnacy Charges; Physical Progress [1020 h]; TATA Projects Ltd-25 |  |
| E-GFC-MEP-CB-65 |  | Executive Consultant Approval | 2d | 2026-12-07 | 2026-12-09 | E-GFC-MEP-CB-55 | CSD-LKO-Design (5 Day + Holiday)-25 | Design Consultnacy Charges; Physical Progress [1020 h]; TATA Projects Ltd-25 |  |
| E-GFC-MEP-CB-75 |  | Peer Reviewer Approval | 2d | 2026-12-09 | 2026-12-11 | E-GFC-MEP-CB-65 | CSD-LKO-Design (5 Day + Holiday)-25 | Design Consultnacy Charges; Physical Progress [1020 h]; Peer Reviewer-25 |  |
| E-GFC-MEP-CB-85 |  | TPL Design Team Approval | 2d | 2026-12-11 | 2026-12-15 | E-GFC-MEP-CB-75 | CSD-LKO-Design (5 Day + Holiday)-25 | Design Consultnacy Charges [88427 INR]; Physical Progress [1020 h]; TATA Projects Ltd-25 | 88,427 |
| E-GFC-MEP-CB-95 |  | Issue of Hard Copy on Site | 4d | 2026-12-15 | 2026-12-21 | E-GFC-MEP-CB-85 | CSD-LKO-Design (5 Day + Holiday)-25 | Design Consultnacy Charges; Physical Progress [510 h]; TATA Projects Ltd-25 |  |

| ID | WBS | Activity | Duration | Start | Finish | Predecessors | Calendar | Resources | Cost |
| --- | --- | --- | --- | --- | --- | --- | --- | --- | --- |
|  | 1 | **Hotel 4 Star** |  | 2026-11-06 | 2027-02-25 |  |  |  |  |
|  | 1 | **Ground Floor** |  | 2026-11-06 | 2026-12-15 |  |  |  |  |
| E-GFC-MEP-4S-10 |  | Drawings Preparation& Submission | 15d | 2026-11-06 | 2026-11-27 | E-DD-MEP-4S-15, E-GFC-ST-4S-10 | CSD-LKO-Design (5 Day + Holiday)-25 | Design Consultnacy Charges; Physical Progress [20980 h]; TATA Projects Ltd-25 |  |
| E-GFC-MEP-4S-55 |  | Domain Expert Approval | 2d | 2026-11-27 | 2026-12-01 | E-GFC-MEP-4S-10 | CSD-LKO-Design (5 Day + Holiday)-25 | Design Consultnacy Charges; Physical Progress [1020 h]; TATA Projects Ltd-25 |  |
| E-GFC-MEP-4S-100 |  | Executive Consultant Approval | 2d | 2026-12-01 | 2026-12-03 | E-GFC-MEP-4S-55 | CSD-LKO-Design (5 Day + Holiday)-25 | Design Consultnacy Charges; Physical Progress [1020 h]; TATA Projects Ltd-25 |  |
| E-GFC-MEP-4S-145 |  | Peer Reviewer Approval | 2d | 2026-12-03 | 2026-12-07 | E-GFC-MEP-4S-100 | CSD-LKO-Design (5 Day + Holiday)-25 | Design Consultnacy Charges; Physical Progress [1020 h]; Peer Reviewer-25 |  |
| E-GFC-MEP-4S-190 |  | TPL Design Team Approval | 2d | 2026-12-07 | 2026-12-09 | E-GFC-MEP-4S-145 | CSD-LKO-Design (5 Day + Holiday)-25 | Design Consultnacy Charges [88427 INR]; Physical Progress [1020 h]; TATA Projects Ltd-25 | 88,427 |
| E-GFC-MEP-4S-235 |  | Issue of Hard Copy on Site | 4d | 2026-12-09 | 2026-12-15 | E-GFC-MEP-4S-190 | CSD-LKO-Design (5 Day + Holiday)-25 | Design Consultnacy Charges; Physical Progress [510 h]; TATA Projects Ltd-25 |  |
|  | 2 | **First Floor** |  | 2026-11-06 | 2026-12-15 |  |  |  |  |
| E-GFC-MEP-4S-15 |  | Drawings Preparation& Submission | 15d | 2026-11-06 | 2026-11-27 | E-DD-MEP-4S-15, E-GFC-ST-4S-10 | CSD-LKO-Design (5 Day + Holiday)-25 | Design Consultnacy Charges; Physical Progress [20980 h]; TATA Projects Ltd-25 |  |
| E-GFC-MEP-4S-60 |  | Domain Expert Approval | 2d | 2026-11-27 | 2026-12-01 | E-GFC-MEP-4S-15 | CSD-LKO-Design (5 Day + Holiday)-25 | Design Consultnacy Charges; Physical Progress [1020 h]; TATA Projects Ltd-25 |  |
| E-GFC-MEP-4S-105 |  | Executive Consultant Approval | 2d | 2026-12-01 | 2026-12-03 | E-GFC-MEP-4S-60 | CSD-LKO-Design (5 Day + Holiday)-25 | Design Consultnacy Charges; Physical Progress [1020 h]; TATA Projects Ltd-25 |  |
| E-GFC-MEP-4S-150 |  | Peer Reviewer Approval | 2d | 2026-12-03 | 2026-12-07 | E-GFC-MEP-4S-105 | CSD-LKO-Design (5 Day + Holiday)-25 | Design Consultnacy Charges; Physical Progress [1020 h]; Peer Reviewer-25 |  |
| E-GFC-MEP-4S-195 |  | TPL Design Team Approval | 2d | 2026-12-07 | 2026-12-09 | E-GFC-MEP-4S-150 | CSD-LKO-Design (5 Day + Holiday)-25 | Design Consultnacy Charges [88427 INR]; Physical Progress [1020 h]; TATA Projects Ltd-25 | 88,427 |
| E-GFC-MEP-4S-240 |  | Issue of Hard Copy on Site | 4d | 2026-12-09 | 2026-12-15 | E-GFC-MEP-4S-195 | CSD-LKO-Design (5 Day + Holiday)-25 | Design Consultnacy Charges; Physical Progress [510 h]; TATA Projects Ltd-25 |  |
|  | 3 | **Service Floor** |  | 2026-11-17 | 2026-12-24 |  |  |  |  |
| E-GFC-MEP-4S-20 |  | Drawings Preparation& Submission | 15d | 2026-11-17 | 2026-12-08 | E-DD-MEP-4S-15, E-GFC-ST-4S-15 | CSD-LKO-Design (5 Day + Holiday)-25 | Design Consultnacy Charges; Physical Progress [20980 h]; TATA Projects Ltd-25 |  |
| E-GFC-MEP-4S-65 |  | Domain Expert Approval | 2d | 2026-12-08 | 2026-12-10 | E-GFC-MEP-4S-20 | CSD-LKO-Design (5 Day + Holiday)-25 | Design Consultnacy Charges; Physical Progress [1020 h]; TATA Projects Ltd-25 |  |
| E-GFC-MEP-4S-110 |  | Executive Consultant Approval | 2d | 2026-12-10 | 2026-12-14 | E-GFC-MEP-4S-65 | CSD-LKO-Design (5 Day + Holiday)-25 | Design Consultnacy Charges; Physical Progress [1020 h]; TATA Projects Ltd-25 |  |
| E-GFC-MEP-4S-155 |  | Peer Reviewer Approval | 2d | 2026-12-14 | 2026-12-16 | E-GFC-MEP-4S-110 | CSD-LKO-Design (5 Day + Holiday)-25 | Design Consultnacy Charges; Physical Progress [1020 h]; Peer Reviewer-25 |  |
| E-GFC-MEP-4S-200 |  | TPL Design Team Approval | 2d | 2026-12-16 | 2026-12-18 | E-GFC-MEP-4S-155 | CSD-LKO-Design (5 Day + Holiday)-25 | Design Consultnacy Charges [88427 INR]; Physical Progress [1020 h]; TATA Projects Ltd-25 | 88,427 |
| E-GFC-MEP-4S-245 |  | Issue of Hard Copy on Site | 4d | 2026-12-18 | 2026-12-24 | E-GFC-MEP-4S-200 | CSD-LKO-Design (5 Day + Holiday)-25 | Design Consultnacy Charges; Physical Progress [510 h]; TATA Projects Ltd-25 |  |
|  | 4 | **Second Floor** |  | 2026-11-26 | 2027-01-06 |  |  |  |  |
| E-GFC-MEP-4S-25 |  | Drawings Preparation& Submission | 15d | 2026-11-26 | 2026-12-17 | E-DD-MEP-4S-15, E-GFC-ST-4S-35 | CSD-LKO-Design (5 Day + Holiday)-25 | Design Consultnacy Charges; Physical Progress [20980 h]; TATA Projects Ltd-25 |  |
| E-GFC-MEP-4S-70 |  | Domain Expert Approval | 2d | 2026-12-17 | 2026-12-21 | E-GFC-MEP-4S-25 | CSD-LKO-Design (5 Day + Holiday)-25 | Design Consultnacy Charges; Physical Progress [1020 h]; TATA Projects Ltd-25 |  |
| E-GFC-MEP-4S-115 |  | Executive Consultant Approval | 2d | 2026-12-21 | 2026-12-23 | E-GFC-MEP-4S-70 | CSD-LKO-Design (5 Day + Holiday)-25 | Design Consultnacy Charges; Physical Progress [1020 h]; TATA Projects Ltd-25 |  |
| E-GFC-MEP-4S-160 |  | Peer Reviewer Approval | 2d | 2026-12-23 | 2026-12-28 | E-GFC-MEP-4S-115 | CSD-LKO-Design (5 Day + Holiday)-25 | Design Consultnacy Charges; Physical Progress [1020 h]; Peer Reviewer-25 |  |
| E-GFC-MEP-4S-205 |  | TPL Design Team Approval | 2d | 2026-12-28 | 2026-12-30 | E-GFC-MEP-4S-160 | CSD-LKO-Design (5 Day + Holiday)-25 | Design Consultnacy Charges [88427 INR]; Physical Progress [1020 h]; TATA Projects Ltd-25 | 88,427 |
| E-GFC-MEP-4S-250 |  | Issue of Hard Copy on Site | 4d | 2026-12-30 | 2027-01-06 | E-GFC-MEP-4S-205 | CSD-LKO-Design (5 Day + Holiday)-25 | Design Consultnacy Charges; Physical Progress [510 h]; TATA Projects Ltd-25 |  |

| ID | WBS | Activity | Duration | Start | Finish | Predecessors | Calendar | Resources | Cost |
| --- | --- | --- | --- | --- | --- | --- | --- | --- | --- |
|  | 5 | **Third Floor** |  | 2026-12-07 | 2027-01-15 |  |  |  |  |
| E-GFC-MEP-4S-30 |  | Drawings Preparation& Submission | 15d | 2026-12-07 | 2026-12-29 | E-DD-MEP-4S-15, E-GFC-ST-4S-40 | CSD-LKO-Design (5 Day + Holiday)-25 | Design Consultnacy Charges; Physical Progress [20980 h]; TATA Projects Ltd-25 |  |
| E-GFC-MEP-4S-75 |  | Domain Expert Approval | 2d | 2026-12-29 | 2026-12-31 | E-GFC-MEP-4S-30 | CSD-LKO-Design (5 Day + Holiday)-25 | Design Consultnacy Charges; Physical Progress [1020 h]; TATA Projects Ltd-25 |  |
| E-GFC-MEP-4S-120 |  | Executive Consultant Approval | 2d | 2026-12-31 | 2027-01-05 | E-GFC-MEP-4S-75 | CSD-LKO-Design (5 Day + Holiday)-25 | Design Consultnacy Charges; Physical Progress [1020 h]; TATA Projects Ltd-25 |  |
| E-GFC-MEP-4S-165 |  | Peer Reviewer Approval | 2d | 2027-01-05 | 2027-01-07 | E-GFC-MEP-4S-120 | CSD-LKO-Design (5 Day + Holiday)-25 | Design Consultnacy Charges; Physical Progress [1020 h]; Peer Reviewer-25 |  |
| E-GFC-MEP-4S-210 |  | TPL Design Team Approval | 2d | 2027-01-07 | 2027-01-11 | E-GFC-MEP-4S-165 | CSD-LKO-Design (5 Day + Holiday)-25 | Design Consultnacy Charges [88427 INR]; Physical Progress [1020 h]; TATA Projects Ltd-25 | 88,427 |
| E-GFC-MEP-4S-255 |  | Issue of Hard Copy on Site | 4d | 2027-01-11 | 2027-01-15 | E-GFC-MEP-4S-210 | CSD-LKO-Design (5 Day + Holiday)-25 | Design Consultnacy Charges; Physical Progress [510 h]; TATA Projects Ltd-25 |  |
|  | 6 | **Fourth Floor** |  | 2026-12-16 | 2027-01-27 |  |  |  |  |
| E-GFC-MEP-4S-35 |  | Drawings Preparation& Submission | 15d | 2026-12-16 | 2027-01-08 | E-DD-MEP-4S-15, E-GFC-ST-4S-45 | CSD-LKO-Design (5 Day + Holiday)-25 | Design Consultnacy Charges; Physical Progress [20980 h]; TATA Projects Ltd-25 |  |
| E-GFC-MEP-4S-80 |  | Domain Expert Approval | 2d | 2027-01-08 | 2027-01-12 | E-GFC-MEP-4S-35 | CSD-LKO-Design (5 Day + Holiday)-25 | Design Consultnacy Charges; Physical Progress [1020 h]; TATA Projects Ltd-25 |  |
| E-GFC-MEP-4S-125 |  | Executive Consultant Approval | 2d | 2027-01-12 | 2027-01-14 | E-GFC-MEP-4S-80 | CSD-LKO-Design (5 Day + Holiday)-25 | Design Consultnacy Charges; Physical Progress [1020 h]; TATA Projects Ltd-25 |  |
| E-GFC-MEP-4S-170 |  | Peer Reviewer Approval | 2d | 2027-01-14 | 2027-01-18 | E-GFC-MEP-4S-125 | CSD-LKO-Design (5 Day + Holiday)-25 | Design Consultnacy Charges; Physical Progress [1020 h]; Peer Reviewer-25 |  |
| E-GFC-MEP-4S-215 |  | TPL Design Team Approval | 2d | 2027-01-18 | 2027-01-20 | E-GFC-MEP-4S-170 | CSD-LKO-Design (5 Day + Holiday)-25 | Design Consultnacy Charges [88427 INR]; Physical Progress [1020 h]; TATA Projects Ltd-25 | 88,427 |
| E-GFC-MEP-4S-260 |  | Issue of Hard Copy on Site | 4d | 2027-01-20 | 2027-01-27 | E-GFC-MEP-4S-215 | CSD-LKO-Design (5 Day + Holiday)-25 | Design Consultnacy Charges; Physical Progress [510 h]; TATA Projects Ltd-25 |  |
|  | 7 | **Fifth Floor** |  | 2026-12-28 | 2027-02-05 |  |  |  |  |
| E-GFC-MEP-4S-40 |  | Drawings Preparation& Submission | 15d | 2026-12-28 | 2027-01-19 | E-DD-MEP-4S-15, E-GFC-ST-4S-50 | CSD-LKO-Design (5 Day + Holiday)-25 | Design Consultnacy Charges; Physical Progress [20980 h]; TATA Projects Ltd-25 |  |
| E-GFC-MEP-4S-85 |  | Domain Expert Approval | 2d | 2027-01-19 | 2027-01-21 | E-GFC-MEP-4S-40 | CSD-LKO-Design (5 Day + Holiday)-25 | Design Consultnacy Charges; Physical Progress [1020 h]; TATA Projects Ltd-25 |  |
| E-GFC-MEP-4S-130 |  | Executive Consultant Approval | 2d | 2027-01-21 | 2027-01-25 | E-GFC-MEP-4S-85 | CSD-LKO-Design (5 Day + Holiday)-25 | Design Consultnacy Charges; Physical Progress [1020 h]; TATA Projects Ltd-25 |  |
| E-GFC-MEP-4S-175 |  | Peer Reviewer Approval | 2d | 2027-01-25 | 2027-01-28 | E-GFC-MEP-4S-130 | CSD-LKO-Design (5 Day + Holiday)-25 | Design Consultnacy Charges; Physical Progress [1020 h]; Peer Reviewer-25 |  |
| E-GFC-MEP-4S-220 |  | TPL Design Team Approval | 2d | 2027-01-28 | 2027-02-01 | E-GFC-MEP-4S-175 | CSD-LKO-Design (5 Day + Holiday)-25 | Design Consultnacy Charges [88427 INR]; Physical Progress [1020 h]; TATA Projects Ltd-25 | 88,427 |
| E-GFC-MEP-4S-265 |  | Issue of Hard Copy on Site | 4d | 2027-02-01 | 2027-02-05 | E-GFC-MEP-4S-220 | CSD-LKO-Design (5 Day + Holiday)-25 | Design Consultnacy Charges; Physical Progress [510 h]; TATA Projects Ltd-25 |  |
|  | 8 | **Sixth Floor** |  | 2027-01-07 | 2027-02-16 |  |  |  |  |
| E-GFC-MEP-4S-45 |  | Drawings Preparation& Submission | 15d | 2027-01-07 | 2027-01-29 | E-DD-MEP-4S-15, E-GFC-ST-4S-55 | CSD-LKO-Design (5 Day + Holiday)-25 | Design Consultnacy Charges; Physical Progress [20980 h]; TATA Projects Ltd-25 |  |
| E-GFC-MEP-4S-90 |  | Domain Expert Approval | 2d | 2027-01-29 | 2027-02-02 | E-GFC-MEP-4S-45 | CSD-LKO-Design (5 Day + Holiday)-25 | Design Consultnacy Charges; Physical Progress [1020 h]; TATA Projects Ltd-25 |  |
| E-GFC-MEP-4S-135 |  | Executive Consultant Approval | 2d | 2027-02-02 | 2027-02-04 | E-GFC-MEP-4S-90 | CSD-LKO-Design (5 Day + Holiday)-25 | Design Consultnacy Charges; Physical Progress [1020 h]; TATA Projects Ltd-25 |  |
| E-GFC-MEP-4S-180 |  | Peer Reviewer Approval | 2d | 2027-02-04 | 2027-02-08 | E-GFC-MEP-4S-135 | CSD-LKO-Design (5 Day + Holiday)-25 | Design Consultnacy Charges; Physical Progress [1020 h]; Peer Reviewer-25 |  |
| E-GFC-MEP-4S-225 |  | TPL Design Team Approval | 2d | 2027-02-08 | 2027-02-10 | E-GFC-MEP-4S-180 | CSD-LKO-Design (5 Day + Holiday)-25 | Design Consultnacy Charges [88427 INR]; Physical Progress [1020 h]; TATA Projects Ltd-25 | 88,427 |
| E-GFC-MEP-4S-270 |  | Issue of Hard Copy on Site | 4d | 2027-02-10 | 2027-02-16 | E-GFC-MEP-4S-225 | CSD-LKO-Design (5 Day + Holiday)-25 | Design Consultnacy Charges; Physical Progress [510 h]; TATA Projects Ltd-25 |  |

| ID | WBS | Activity | Duration | Start | Finish | Predecessors | Calendar | Resources | Cost |
| --- | --- | --- | --- | --- | --- | --- | --- | --- | --- |
|  | 9 | **Terrace** |  | 2027-01-18 | 2027-02-25 |  |  |  |  |
| E-GFC-MEP-4S-50 |  | Drawings Preparation& Submission | 15d | 2027-01-18 | 2027-02-09 | E-DD-MEP-4S-15, E-GFC-ST-4S-60 | CSD-LKO-Design (5 Day + Holiday)-25 | Design Consultnacy Charges; Physical Progress [20980 h]; TATA Projects Ltd-25 |  |
| E-GFC-MEP-4S-95 |  | Domain Expert Approval | 2d | 2027-02-09 | 2027-02-11 | E-GFC-MEP-4S-50 | CSD-LKO-Design (5 Day + Holiday)-25 | Design Consultnacy Charges; Physical Progress [1020 h]; TATA Projects Ltd-25 |  |
| E-GFC-MEP-4S-140 |  | Executive Consultant Approval | 2d | 2027-02-11 | 2027-02-15 | E-GFC-MEP-4S-95 | CSD-LKO-Design (5 Day + Holiday)-25 | Design Consultnacy Charges; Physical Progress [1020 h]; TATA Projects Ltd-25 |  |
| E-GFC-MEP-4S-185 |  | Peer Reviewer Approval | 2d | 2027-02-15 | 2027-02-17 | E-GFC-MEP-4S-140 | CSD-LKO-Design (5 Day + Holiday)-25 | Design Consultnacy Charges; Physical Progress [1020 h]; Peer Reviewer-25 |  |
| E-GFC-MEP-4S-230 |  | TPL Design Team Approval | 2d | 2027-02-17 | 2027-02-19 | E-GFC-MEP-4S-185 | CSD-LKO-Design (5 Day + Holiday)-25 | Design Consultnacy Charges [88427 INR]; Physical Progress [1020 h]; TATA Projects Ltd-25 | 88,427 |
| E-GFC-MEP-4S-275 |  | Issue of Hard Copy on Site | 4d | 2027-02-19 | 2027-02-25 | E-GFC-MEP-4S-230 | CSD-LKO-Design (5 Day + Holiday)-25 | Design Consultnacy Charges; Physical Progress [510 h]; TATA Projects Ltd-25 |  |
|  | 3 | **Hotel 3 Star** |  | 2026-11-13 | 2027-03-16 |  |  |  |  |
|  | 1 | **Ground Floor** |  | 2026-11-13 | 2026-12-22 |  |  |  |  |
| E-GFC-MEP-3S-10 |  | Drawings Preparation& Submission | 15d | 2026-11-13 | 2026-12-04 | E-DD-MEP-3S-15, E-GFC-ST-3S-10 | CSD-LKO-Design (5 Day + Holiday)-25 | Design Consultnacy Charges; Physical Progress [20980 h]; TATA Projects Ltd-25 |  |
| E-GFC-MEP-3S-60 |  | Domain Expert Approval | 2d | 2026-12-04 | 2026-12-08 | E-GFC-MEP-3S-10 | CSD-LKO-Design (5 Day + Holiday)-25 | Design Consultnacy Charges; Physical Progress [1020 h]; TATA Projects Ltd-25 |  |
| E-GFC-MEP-3S-110 |  | Executive Consultant Approval | 2d | 2026-12-08 | 2026-12-10 | E-GFC-MEP-3S-60 | CSD-LKO-Design (5 Day + Holiday)-25 | Design Consultnacy Charges; Physical Progress [1020 h]; TATA Projects Ltd-25 |  |
| E-GFC-MEP-3S-160 |  | Peer Reviewer Approval | 2d | 2026-12-10 | 2026-12-14 | E-GFC-MEP-3S-110 | CSD-LKO-Design (5 Day + Holiday)-25 | Design Consultnacy Charges; Physical Progress [1020 h]; Peer Reviewer-25 |  |
| E-GFC-MEP-3S-210 |  | TPL Design Team Approval | 2d | 2026-12-14 | 2026-12-16 | E-GFC-MEP-3S-160 | CSD-LKO-Design (5 Day + Holiday)-25 | Design Consultnacy Charges [88427 INR]; Physical Progress [1020 h]; TATA Projects Ltd-25 | 88,427 |
| E-GFC-MEP-3S-260 |  | Issue of Hard Copy on Site | 4d | 2026-12-16 | 2026-12-22 | E-GFC-MEP-3S-210 | CSD-LKO-Design (5 Day + Holiday)-25 | Design Consultnacy Charges; Physical Progress [510 h]; TATA Projects Ltd-25 |  |
|  | 2 | **First Floor** |  | 2026-11-13 | 2026-12-22 |  |  |  |  |
| E-GFC-MEP-3S-15 |  | Drawings Preparation& Submission | 15d | 2026-11-13 | 2026-12-04 | E-DD-MEP-3S-15, E-GFC-ST-3S-10 | CSD-LKO-Design (5 Day + Holiday)-25 | Design Consultnacy Charges; Physical Progress [20980 h]; TATA Projects Ltd-25 |  |
| E-GFC-MEP-3S-65 |  | Domain Expert Approval | 2d | 2026-12-04 | 2026-12-08 | E-GFC-MEP-3S-15 | CSD-LKO-Design (5 Day + Holiday)-25 | Design Consultnacy Charges; Physical Progress [1020 h]; TATA Projects Ltd-25 |  |
| E-GFC-MEP-3S-115 |  | Executive Consultant Approval | 2d | 2026-12-08 | 2026-12-10 | E-GFC-MEP-3S-65 | CSD-LKO-Design (5 Day + Holiday)-25 | Design Consultnacy Charges; Physical Progress [1020 h]; TATA Projects Ltd-25 |  |
| E-GFC-MEP-3S-165 |  | Peer Reviewer Approval | 2d | 2026-12-10 | 2026-12-14 | E-GFC-MEP-3S-115 | CSD-LKO-Design (5 Day + Holiday)-25 | Design Consultnacy Charges; Physical Progress [1020 h]; Peer Reviewer-25 |  |
| E-GFC-MEP-3S-215 |  | TPL Design Team Approval | 2d | 2026-12-14 | 2026-12-16 | E-GFC-MEP-3S-165 | CSD-LKO-Design (5 Day + Holiday)-25 | Design Consultnacy Charges [88427 INR]; Physical Progress [1020 h]; TATA Projects Ltd-25 | 88,427 |
| E-GFC-MEP-3S-265 |  | Issue of Hard Copy on Site | 4d | 2026-12-16 | 2026-12-22 | E-GFC-MEP-3S-215 | CSD-LKO-Design (5 Day + Holiday)-25 | Design Consultnacy Charges; Physical Progress [510 h]; TATA Projects Ltd-25 |  |
|  | 3 | **Service Floor** |  | 2026-12-03 | 2027-01-13 |  |  |  |  |
| E-GFC-MEP-3S-20 |  | Drawings Preparation& Submission | 15d | 2026-12-03 | 2026-12-24 | E-GFC-MEP-CB-20, E-GFC-ST-3S-15 | CSD-LKO-Design (5 Day + Holiday)-25 | Design Consultnacy Charges; Physical Progress [20980 h]; TATA Projects Ltd-25 |  |
| E-GFC-MEP-3S-70 |  | Domain Expert Approval | 2d | 2026-12-24 | 2026-12-29 | E-GFC-MEP-3S-20 | CSD-LKO-Design (5 Day + Holiday)-25 | Design Consultnacy Charges; Physical Progress [1020 h]; TATA Projects Ltd-25 |  |
| E-GFC-MEP-3S-120 |  | Executive Consultant Approval | 2d | 2026-12-29 | 2026-12-31 | E-GFC-MEP-3S-70 | CSD-LKO-Design (5 Day + Holiday)-25 | Design Consultnacy Charges; Physical Progress [1020 h]; TATA Projects Ltd-25 |  |
| E-GFC-MEP-3S-170 |  | Peer Reviewer Approval | 2d | 2026-12-31 | 2027-01-05 | E-GFC-MEP-3S-120 | CSD-LKO-Design (5 Day + Holiday)-25 | Design Consultnacy Charges; Physical Progress [1020 h]; Peer Reviewer-25 |  |
| E-GFC-MEP-3S-220 |  | TPL Design Team Approval | 2d | 2027-01-05 | 2027-01-07 | E-GFC-MEP-3S-170 | CSD-LKO-Design (5 Day + Holiday)-25 | Design Consultnacy Charges [88427 INR]; Physical Progress [1020 h]; TATA Projects Ltd-25 | 88,427 |
| E-GFC-MEP-3S-270 |  | Issue of Hard Copy on Site | 4d | 2027-01-07 | 2027-01-13 | E-GFC-MEP-3S-220 | CSD-LKO-Design (5 Day + Holiday)-25 | Design Consultnacy Charges; Physical Progress [510 h]; TATA Projects Ltd-25 |  |

| ID | WBS | Activity | Duration | Start | Finish | Predecessors | Calendar | Resources | Cost |
| --- | --- | --- | --- | --- | --- | --- | --- | --- | --- |
|  | 4 | **Second Floor** |  | 2026-12-03 | 2027-01-13 |  |  |  |  |
| E-GFC-MEP-3S-25 |  | Drawings Preparation& Submission | 15d | 2026-12-03 | 2026-12-24 | E-DD-MEP-3S-15, E-GFC-ST-3S-35 | CSD-LKO-Design (5 Day + Holiday)-25 | Design Consultnacy Charges; Physical Progress [20980 h]; TATA Projects Ltd-25 |  |
| E-GFC-MEP-3S-75 |  | Domain Expert Approval | 2d | 2026-12-24 | 2026-12-29 | E-GFC-MEP-3S-25 | CSD-LKO-Design (5 Day + Holiday)-25 | Design Consultnacy Charges; Physical Progress [1020 h]; TATA Projects Ltd-25 |  |
| E-GFC-MEP-3S-125 |  | Executive Consultant Approval | 2d | 2026-12-29 | 2026-12-31 | E-GFC-MEP-3S-75 | CSD-LKO-Design (5 Day + Holiday)-25 | Design Consultnacy Charges; Physical Progress [1020 h]; TATA Projects Ltd-25 |  |
| E-GFC-MEP-3S-175 |  | Peer Reviewer Approval | 2d | 2026-12-31 | 2027-01-05 | E-GFC-MEP-3S-125 | CSD-LKO-Design (5 Day + Holiday)-25 | Design Consultnacy Charges; Physical Progress [1020 h]; Peer Reviewer-25 |  |
| E-GFC-MEP-3S-225 |  | TPL Design Team Approval | 2d | 2027-01-05 | 2027-01-07 | E-GFC-MEP-3S-175 | CSD-LKO-Design (5 Day + Holiday)-25 | Design Consultnacy Charges [88427 INR]; Physical Progress [1020 h]; TATA Projects Ltd-25 | 88,427 |
| E-GFC-MEP-3S-275 |  | Issue of Hard Copy on Site | 4d | 2027-01-07 | 2027-01-13 | E-GFC-MEP-3S-225 | CSD-LKO-Design (5 Day + Holiday)-25 | Design Consultnacy Charges; Physical Progress [510 h]; TATA Projects Ltd-25 |  |
|  | 5 | **Third Floor** |  | 2026-12-14 | 2027-01-22 |  |  |  |  |
| E-GFC-MEP-3S-30 |  | Drawings Preparation& Submission | 15d | 2026-12-14 | 2027-01-06 | E-DD-MEP-3S-15, E-GFC-ST-3S-40 | CSD-LKO-Design (5 Day + Holiday)-25 | Design Consultnacy Charges; Physical Progress [20980 h]; TATA Projects Ltd-25 |  |
| E-GFC-MEP-3S-80 |  | Domain Expert Approval | 2d | 2027-01-06 | 2027-01-08 | E-GFC-MEP-3S-30 | CSD-LKO-Design (5 Day + Holiday)-25 | Design Consultnacy Charges; Physical Progress [1020 h]; TATA Projects Ltd-25 |  |
| E-GFC-MEP-3S-130 |  | Executive Consultant Approval | 2d | 2027-01-08 | 2027-01-12 | E-GFC-MEP-3S-80 | CSD-LKO-Design (5 Day + Holiday)-25 | Design Consultnacy Charges; Physical Progress [1020 h]; TATA Projects Ltd-25 |  |
| E-GFC-MEP-3S-180 |  | Peer Reviewer Approval | 2d | 2027-01-12 | 2027-01-14 | E-GFC-MEP-3S-130 | CSD-LKO-Design (5 Day + Holiday)-25 | Design Consultnacy Charges; Physical Progress [1020 h]; Peer Reviewer-25 |  |
| E-GFC-MEP-3S-230 |  | TPL Design Team Approval | 2d | 2027-01-14 | 2027-01-18 | E-GFC-MEP-3S-180 | CSD-LKO-Design (5 Day + Holiday)-25 | Design Consultnacy Charges [88427 INR]; Physical Progress [1020 h]; TATA Projects Ltd-25 | 88,427 |
| E-GFC-MEP-3S-280 |  | Issue of Hard Copy on Site | 4d | 2027-01-18 | 2027-01-22 | E-GFC-MEP-3S-230 | CSD-LKO-Design (5 Day + Holiday)-25 | Design Consultnacy Charges; Physical Progress [510 h]; TATA Projects Ltd-25 |  |
|  | 6 | **Fourth Floor** |  | 2026-12-23 | 2027-02-03 |  |  |  |  |
| E-GFC-MEP-3S-35 |  | Drawings Preparation& Submission | 15d | 2026-12-23 | 2027-01-15 | E-DD-MEP-3S-15, E-GFC-ST-3S-45 | CSD-LKO-Design (5 Day + Holiday)-25 | Design Consultnacy Charges; Physical Progress [20980 h]; TATA Projects Ltd-25 |  |
| E-GFC-MEP-3S-85 |  | Domain Expert Approval | 2d | 2027-01-15 | 2027-01-19 | E-GFC-MEP-3S-35 | CSD-LKO-Design (5 Day + Holiday)-25 | Design Consultnacy Charges; Physical Progress [1020 h]; TATA Projects Ltd-25 |  |
| E-GFC-MEP-3S-135 |  | Executive Consultant Approval | 2d | 2027-01-19 | 2027-01-21 | E-GFC-MEP-3S-85 | CSD-LKO-Design (5 Day + Holiday)-25 | Design Consultnacy Charges; Physical Progress [1020 h]; TATA Projects Ltd-25 |  |
| E-GFC-MEP-3S-185 |  | Peer Reviewer Approval | 2d | 2027-01-21 | 2027-01-25 | E-GFC-MEP-3S-135 | CSD-LKO-Design (5 Day + Holiday)-25 | Design Consultnacy Charges; Physical Progress [1020 h]; Peer Reviewer-25 |  |
| E-GFC-MEP-3S-235 |  | TPL Design Team Approval | 2d | 2027-01-25 | 2027-01-28 | E-GFC-MEP-3S-185 | CSD-LKO-Design (5 Day + Holiday)-25 | Design Consultnacy Charges [88427 INR]; Physical Progress [1020 h]; TATA Projects Ltd-25 | 88,427 |
| E-GFC-MEP-3S-285 |  | Issue of Hard Copy on Site | 4d | 2027-01-28 | 2027-02-03 | E-GFC-MEP-3S-235 | CSD-LKO-Design (5 Day + Holiday)-25 | Design Consultnacy Charges; Physical Progress [510 h]; TATA Projects Ltd-25 |  |
|  | 7 | **Fifth Floor** |  | 2027-01-05 | 2027-02-12 |  |  |  |  |
| E-GFC-MEP-3S-40 |  | Drawings Preparation& Submission | 15d | 2027-01-05 | 2027-01-27 | E-DD-MEP-3S-15, E-GFC-ST-3S-50 | CSD-LKO-Design (5 Day + Holiday)-25 | Design Consultnacy Charges; Physical Progress [20980 h]; TATA Projects Ltd-25 |  |
| E-GFC-MEP-3S-90 |  | Domain Expert Approval | 2d | 2027-01-27 | 2027-01-29 | E-GFC-MEP-3S-40 | CSD-LKO-Design (5 Day + Holiday)-25 | Design Consultnacy Charges; Physical Progress [1020 h]; TATA Projects Ltd-25 |  |
| E-GFC-MEP-3S-140 |  | Executive Consultant Approval | 2d | 2027-01-29 | 2027-02-02 | E-GFC-MEP-3S-90 | CSD-LKO-Design (5 Day + Holiday)-25 | Design Consultnacy Charges; Physical Progress [1020 h]; TATA Projects Ltd-25 |  |
| E-GFC-MEP-3S-190 |  | Peer Reviewer Approval | 2d | 2027-02-02 | 2027-02-04 | E-GFC-MEP-3S-140 | CSD-LKO-Design (5 Day + Holiday)-25 | Design Consultnacy Charges; Physical Progress [1020 h]; Peer Reviewer-25 |  |
| E-GFC-MEP-3S-240 |  | TPL Design Team Approval | 2d | 2027-02-04 | 2027-02-08 | E-GFC-MEP-3S-190 | CSD-LKO-Design (5 Day + Holiday)-25 | Design Consultnacy Charges [88427 INR]; Physical Progress [1020 h]; TATA Projects Ltd-25 | 88,427 |
| E-GFC-MEP-3S-290 |  | Issue of Hard Copy on Site | 4d | 2027-02-08 | 2027-02-12 | E-GFC-MEP-3S-240 | CSD-LKO-Design (5 Day + Holiday)-25 | Design Consultnacy Charges; Physical Progress [510 h]; TATA Projects Ltd-25 |  |

| ID | WBS | Activity | Duration | Start | Finish | Predecessors | Calendar | Resources | Cost |
| --- | --- | --- | --- | --- | --- | --- | --- | --- | --- |
|  | 8 | **Sixth Floor** |  | 2027-01-14 | 2027-02-23 |  |  |  |  |
| E-GFC-MEP-3S-45 |  | Drawings Preparation& Submission | 15d | 2027-01-14 | 2027-02-05 | E-DD-MEP-3S-15, E-GFC-ST-3S-55 | CSD-LKO-Design (5 Day + Holiday)-25 | Design Consultnacy Charges; Physical Progress [20980 h]; TATA Projects Ltd-25 |  |
| E-GFC-MEP-3S-95 |  | Domain Expert Approval | 2d | 2027-02-05 | 2027-02-09 | E-GFC-MEP-3S-45 | CSD-LKO-Design (5 Day + Holiday)-25 | Design Consultnacy Charges; Physical Progress [1020 h]; TATA Projects Ltd-25 |  |
| E-GFC-MEP-3S-145 |  | Executive Consultant Approval | 2d | 2027-02-09 | 2027-02-11 | E-GFC-MEP-3S-95 | CSD-LKO-Design (5 Day + Holiday)-25 | Design Consultnacy Charges; Physical Progress [1020 h]; TATA Projects Ltd-25 |  |
| E-GFC-MEP-3S-195 |  | Peer Reviewer Approval | 2d | 2027-02-11 | 2027-02-15 | E-GFC-MEP-3S-145 | CSD-LKO-Design (5 Day + Holiday)-25 | Design Consultnacy Charges; Physical Progress [1020 h]; Peer Reviewer-25 |  |
| E-GFC-MEP-3S-245 |  | TPL Design Team Approval | 2d | 2027-02-15 | 2027-02-17 | E-GFC-MEP-3S-195 | CSD-LKO-Design (5 Day + Holiday)-25 | Design Consultnacy Charges [88427 INR]; Physical Progress [1020 h]; TATA Projects Ltd-25 | 88,427 |
| E-GFC-MEP-3S-295 |  | Issue of Hard Copy on Site | 4d | 2027-02-17 | 2027-02-23 | E-GFC-MEP-3S-245 | CSD-LKO-Design (5 Day + Holiday)-25 | Design Consultnacy Charges; Physical Progress [510 h]; TATA Projects Ltd-25 |  |
|  | 10 | **Seventh Floor** |  | 2027-01-25 | 2027-03-04 |  |  |  |  |
| E-GFC-MEP-3S-55 |  | Drawings Preparation& Submission | 15d | 2027-01-25 | 2027-02-16 | E-DD-MEP-3S-15, E-GFC-ST-3S-65 | CSD-LKO-Design (5 Day + Holiday)-25 | Design Consultnacy Charges; Physical Progress [20980 h]; TATA Projects Ltd-25 |  |
| E-GFC-MEP-3S-105 |  | Domain Expert Approval | 2d | 2027-02-16 | 2027-02-18 | E-GFC-MEP-3S-55 | CSD-LKO-Design (5 Day + Holiday)-25 | Design Consultnacy Charges; Physical Progress [1020 h]; TATA Projects Ltd-25 |  |
| E-GFC-MEP-3S-155 |  | Executive Consultant Approval | 2d | 2027-02-18 | 2027-02-22 | E-GFC-MEP-3S-105 | CSD-LKO-Design (5 Day + Holiday)-25 | Design Consultnacy Charges; Physical Progress [1020 h]; TATA Projects Ltd-25 |  |
| E-GFC-MEP-3S-205 |  | Peer Reviewer Approval | 2d | 2027-02-22 | 2027-02-24 | E-GFC-MEP-3S-155 | CSD-LKO-Design (5 Day + Holiday)-25 | Design Consultnacy Charges; Physical Progress [1020 h]; Peer Reviewer-25 |  |
| E-GFC-MEP-3S-255 |  | TPL Design Team Approval | 2d | 2027-02-24 | 2027-02-26 | E-GFC-MEP-3S-205 | CSD-LKO-Design (5 Day + Holiday)-25 | Design Consultnacy Charges [88427 INR]; Physical Progress [1020 h]; TATA Projects Ltd-25 | 88,427 |
| E-GFC-MEP-3S-300 |  | Issue of Hard Copy on Site | 4d | 2027-02-26 | 2027-03-04 | E-GFC-MEP-3S-255 | CSD-LKO-Design (5 Day + Holiday)-25 | Design Consultnacy Charges; Physical Progress [510 h]; TATA Projects Ltd-25 |  |
|  | 9 | **Terrace** |  | 2027-02-04 | 2027-03-16 |  |  |  |  |
| E-GFC-MEP-3S-50 |  | Drawings Preparation& Submission | 15d | 2027-02-04 | 2027-02-25 | E-DD-MEP-3S-15, E-GFC-ST-3S-60 | CSD-LKO-Design (5 Day + Holiday)-25 | Design Consultnacy Charges; Physical Progress [20980 h]; TATA Projects Ltd-25 |  |
| E-GFC-MEP-3S-100 |  | Domain Expert Approval | 2d | 2027-02-25 | 2027-03-01 | E-GFC-MEP-3S-50 | CSD-LKO-Design (5 Day + Holiday)-25 | Design Consultnacy Charges; Physical Progress [1020 h]; TATA Projects Ltd-25 |  |
| E-GFC-MEP-3S-150 |  | Executive Consultant Approval | 2d | 2027-03-01 | 2027-03-03 | E-GFC-MEP-3S-100 | CSD-LKO-Design (5 Day + Holiday)-25 | Design Consultnacy Charges; Physical Progress [1020 h]; TATA Projects Ltd-25 |  |
| E-GFC-MEP-3S-200 |  | Peer Reviewer Approval | 2d | 2027-03-03 | 2027-03-05 | E-GFC-MEP-3S-150 | CSD-LKO-Design (5 Day + Holiday)-25 | Design Consultnacy Charges; Physical Progress [1020 h]; Peer Reviewer-25 |  |
| E-GFC-MEP-3S-250 |  | TPL Design Team Approval | 2d | 2027-03-05 | 2027-03-09 | E-GFC-MEP-3S-200 | CSD-LKO-Design (5 Day + Holiday)-25 | Design Consultnacy Charges [88427 INR]; Physical Progress [1020 h]; TATA Projects Ltd-25 | 88,427 |
| E-GFC-MEP-3S-305 |  | Issue of Hard Copy on Site | 4d | 2027-03-09 | 2027-03-16 | E-GFC-MEP-3S-250 | CSD-LKO-Design (5 Day + Holiday)-25 | Design Consultnacy Charges; Physical Progress [510 h]; TATA Projects Ltd-25 |  |
|  | 4 | **Retail Block 2** |  | 2026-12-04 | 2027-03-25 |  |  |  |  |
|  | 1 | **Ground Floor** |  | 2026-12-04 | 2027-01-14 |  |  |  |  |
| E-GFC-MEP-RB2-10 |  | Drawings Preparation& Submission | 15d | 2026-12-04 | 2026-12-28 | E-DD-MEP-RB2-15, E-GFC-ST-RB2-10 | CSD-LKO-Design (5 Day + Holiday)-25 | Design Consultnacy Charges; Physical Progress [16370 h]; TATA Projects Ltd-25 |  |
| E-GFC-MEP-RB2-50 |  | Domain Expert Approval | 2d | 2026-12-28 | 2026-12-30 | E-GFC-MEP-RB2-10 | CSD-LKO-Design (5 Day + Holiday)-25 | Design Consultnacy Charges; Physical Progress [1020 h]; TATA Projects Ltd-25 |  |
| E-GFC-MEP-RB2-90 |  | Executive Consultant Approval | 2d | 2026-12-30 | 2027-01-04 | E-GFC-MEP-RB2-50 | CSD-LKO-Design (5 Day + Holiday)-25 | Design Consultnacy Charges; Physical Progress [1020 h]; TATA Projects Ltd-25 |  |
| E-GFC-MEP-RB2-130 |  | Peer Reviewer Approval | 2d | 2027-01-04 | 2027-01-06 | E-GFC-MEP-RB2-90 | CSD-LKO-Design (5 Day + Holiday)-25 | Design Consultnacy Charges; Physical Progress [1020 h]; Peer Reviewer-25 |  |
| E-GFC-MEP-RB2-170 |  | TPL Design Team Approval | 2d | 2027-01-06 | 2027-01-08 | E-GFC-MEP-RB2-130 | CSD-LKO-Design (5 Day + Holiday)-25 | Design Consultnacy Charges [88427 INR]; Physical Progress [1020 h]; TATA Projects Ltd-25 | 88,427 |
| E-GFC-MEP-RB2-210 |  | Issue of Hard Copy on Site | 4d | 2027-01-08 | 2027-01-14 | E-GFC-MEP-RB2-170 | CSD-LKO-Design (5 Day + Holiday)-25 | Design Consultnacy Charges; Physical Progress [510 h]; TATA Projects Ltd-25 |  |

| ID | WBS | Activity | Duration | Start | Finish | Predecessors | Calendar | Resources | Cost |
| --- | --- | --- | --- | --- | --- | --- | --- | --- | --- |
|  | 2 | **First Floor** |  | 2026-12-04 | 2027-01-14 |  |  |  |  |
| E-GFC-MEP-RB2-15 |  | Drawings Preparation& Submission | 15d | 2026-12-04 | 2026-12-28 | E-DD-MEP-RB2-15, E-GFC-ST-RB2-10 | CSD-LKO-Design (5 Day + Holiday)-25 | Design Consultnacy Charges; Physical Progress [16370 h]; TATA Projects Ltd-25 |  |
| E-GFC-MEP-RB2-55 |  | Domain Expert Approval | 2d | 2026-12-28 | 2026-12-30 | E-GFC-MEP-RB2-15 | CSD-LKO-Design (5 Day + Holiday)-25 | Design Consultnacy Charges; Physical Progress [1020 h]; TATA Projects Ltd-25 |  |
| E-GFC-MEP-RB2-95 |  | Executive Consultant Approval | 2d | 2026-12-30 | 2027-01-04 | E-GFC-MEP-RB2-55 | CSD-LKO-Design (5 Day + Holiday)-25 | Design Consultnacy Charges; Physical Progress [1020 h]; TATA Projects Ltd-25 |  |
| E-GFC-MEP-RB2-135 |  | Peer Reviewer Approval | 2d | 2027-01-04 | 2027-01-06 | E-GFC-MEP-RB2-95 | CSD-LKO-Design (5 Day + Holiday)-25 | Design Consultnacy Charges; Physical Progress [1020 h]; Peer Reviewer-25 |  |
| E-GFC-MEP-RB2-175 |  | TPL Design Team Approval | 2d | 2027-01-06 | 2027-01-08 | E-GFC-MEP-RB2-135 | CSD-LKO-Design (5 Day + Holiday)-25 | Design Consultnacy Charges [88427 INR]; Physical Progress [1020 h]; TATA Projects Ltd-25 | 88,427 |
| E-GFC-MEP-RB2-215 |  | Issue of Hard Copy on Site | 4d | 2027-01-08 | 2027-01-14 | E-GFC-MEP-RB2-175 | CSD-LKO-Design (5 Day + Holiday)-25 | Design Consultnacy Charges; Physical Progress [510 h]; TATA Projects Ltd-25 |  |
|  | 4 | **Second Floor** |  | 2026-12-15 | 2027-01-25 |  |  |  |  |
| E-GFC-MEP-RB2-20 |  | Drawings Preparation& Submission | 15d | 2026-12-15 | 2027-01-07 | E-DD-MEP-RB2-15, E-GFC-ST-RB2-15 | CSD-LKO-Design (5 Day + Holiday)-25 | Design Consultnacy Charges; Physical Progress [16370 h]; TATA Projects Ltd-25 |  |
| E-GFC-MEP-RB2-60 |  | Domain Expert Approval | 2d | 2027-01-07 | 2027-01-11 | E-GFC-MEP-RB2-20 | CSD-LKO-Design (5 Day + Holiday)-25 | Design Consultnacy Charges; Physical Progress [1020 h]; TATA Projects Ltd-25 |  |
| E-GFC-MEP-RB2-100 |  | Executive Consultant Approval | 2d | 2027-01-11 | 2027-01-13 | E-GFC-MEP-RB2-60 | CSD-LKO-Design (5 Day + Holiday)-25 | Design Consultnacy Charges; Physical Progress [1020 h]; TATA Projects Ltd-25 |  |
| E-GFC-MEP-RB2-140 |  | Peer Reviewer Approval | 2d | 2027-01-13 | 2027-01-15 | E-GFC-MEP-RB2-100 | CSD-LKO-Design (5 Day + Holiday)-25 | Design Consultnacy Charges; Physical Progress [1020 h]; Peer Reviewer-25 |  |
| E-GFC-MEP-RB2-180 |  | TPL Design Team Approval | 2d | 2027-01-15 | 2027-01-19 | E-GFC-MEP-RB2-140 | CSD-LKO-Design (5 Day + Holiday)-25 | Design Consultnacy Charges [88427 INR]; Physical Progress [1020 h]; TATA Projects Ltd-25 | 88,427 |
| E-GFC-MEP-RB2-220 |  | Issue of Hard Copy on Site | 4d | 2027-01-19 | 2027-01-25 | E-GFC-MEP-RB2-180 | CSD-LKO-Design (5 Day + Holiday)-25 | Design Consultnacy Charges; Physical Progress [510 h]; TATA Projects Ltd-25 |  |
|  | 5 | **Third Floor** |  | 2026-12-24 | 2027-02-04 |  |  |  |  |
| E-GFC-MEP-RB2-25 |  | Drawings Preparation& Submission | 15d | 2026-12-24 | 2027-01-18 | E-DD-MEP-RB2-15, E-GFC-ST-RB2-20 | CSD-LKO-Design (5 Day + Holiday)-25 | Design Consultnacy Charges; Physical Progress [16370 h]; TATA Projects Ltd-25 |  |
| E-GFC-MEP-RB2-65 |  | Domain Expert Approval | 2d | 2027-01-18 | 2027-01-20 | E-GFC-MEP-RB2-25 | CSD-LKO-Design (5 Day + Holiday)-25 | Design Consultnacy Charges; Physical Progress [1020 h]; TATA Projects Ltd-25 |  |
| E-GFC-MEP-RB2-105 |  | Executive Consultant Approval | 2d | 2027-01-20 | 2027-01-22 | E-GFC-MEP-RB2-65 | CSD-LKO-Design (5 Day + Holiday)-25 | Design Consultnacy Charges; Physical Progress [1020 h]; TATA Projects Ltd-25 |  |
| E-GFC-MEP-RB2-145 |  | Peer Reviewer Approval | 2d | 2027-01-22 | 2027-01-27 | E-GFC-MEP-RB2-105 | CSD-LKO-Design (5 Day + Holiday)-25 | Design Consultnacy Charges; Physical Progress [1020 h]; Peer Reviewer-25 |  |
| E-GFC-MEP-RB2-185 |  | TPL Design Team Approval | 2d | 2027-01-27 | 2027-01-29 | E-GFC-MEP-RB2-145 | CSD-LKO-Design (5 Day + Holiday)-25 | Design Consultnacy Charges [88427 INR]; Physical Progress [1020 h]; TATA Projects Ltd-25 | 88,427 |
| E-GFC-MEP-RB2-225 |  | Issue of Hard Copy on Site | 4d | 2027-01-29 | 2027-02-04 | E-GFC-MEP-RB2-185 | CSD-LKO-Design (5 Day + Holiday)-25 | Design Consultnacy Charges; Physical Progress [510 h]; TATA Projects Ltd-25 |  |
|  | 6 | **Fourth Floor** |  | 2027-01-06 | 2027-02-15 |  |  |  |  |
| E-GFC-MEP-RB2-30 |  | Drawings Preparation& Submission | 15d | 2027-01-06 | 2027-01-28 | E-DD-MEP-RB2-15, E-GFC-ST-RB2-45 | CSD-LKO-Design (5 Day + Holiday)-25 | Design Consultnacy Charges; Physical Progress [16370 h]; TATA Projects Ltd-25 |  |
| E-GFC-MEP-RB2-70 |  | Domain Expert Approval | 2d | 2027-01-28 | 2027-02-01 | E-GFC-MEP-RB2-30 | CSD-LKO-Design (5 Day + Holiday)-25 | Design Consultnacy Charges; Physical Progress [1020 h]; TATA Projects Ltd-25 |  |
| E-GFC-MEP-RB2-110 |  | Executive Consultant Approval | 2d | 2027-02-01 | 2027-02-03 | E-GFC-MEP-RB2-70 | CSD-LKO-Design (5 Day + Holiday)-25 | Design Consultnacy Charges; Physical Progress [1020 h]; TATA Projects Ltd-25 |  |
| E-GFC-MEP-RB2-150 |  | Peer Reviewer Approval | 2d | 2027-02-03 | 2027-02-05 | E-GFC-MEP-RB2-110 | CSD-LKO-Design (5 Day + Holiday)-25 | Design Consultnacy Charges; Physical Progress [1020 h]; Peer Reviewer-25 |  |
| E-GFC-MEP-RB2-190 |  | TPL Design Team Approval | 2d | 2027-02-05 | 2027-02-09 | E-GFC-MEP-RB2-150 | CSD-LKO-Design (5 Day + Holiday)-25 | Design Consultnacy Charges [88427 INR]; Physical Progress [1020 h]; TATA Projects Ltd-25 | 88,427 |
| E-GFC-MEP-RB2-230 |  | Issue of Hard Copy on Site | 4d | 2027-02-09 | 2027-02-15 | E-GFC-MEP-RB2-190 | CSD-LKO-Design (5 Day + Holiday)-25 | Design Consultnacy Charges; Physical Progress [510 h]; TATA Projects Ltd-25 |  |

| ID | WBS | Activity | Duration | Start | Finish | Predecessors | Calendar | Resources | Cost |
| --- | --- | --- | --- | --- | --- | --- | --- | --- | --- |
|  | 7 | **Fifth Floor** |  | 2027-01-22 | 2027-03-03 |  |  |  |  |
| E-GFC-MEP-RB2-35 |  | Drawings Preparation& Submission | 15d | 2027-01-22 | 2027-02-15 | E-DD-MEP-RB2-15, E-GFC-ST-RB2-50 | CSD-LKO-Design (5 Day + Holiday)-25 | Design Consultnacy Charges; Physical Progress [16370 h]; TATA Projects Ltd-25 |  |
| E-GFC-MEP-RB2-75 |  | Domain Expert Approval | 2d | 2027-02-15 | 2027-02-17 | E-GFC-MEP-RB2-35 | CSD-LKO-Design (5 Day + Holiday)-25 | Design Consultnacy Charges; Physical Progress [1020 h]; TATA Projects Ltd-25 |  |
| E-GFC-MEP-RB2-115 |  | Executive Consultant Approval | 2d | 2027-02-17 | 2027-02-19 | E-GFC-MEP-RB2-75 | CSD-LKO-Design (5 Day + Holiday)-25 | Design Consultnacy Charges; Physical Progress [1020 h]; TATA Projects Ltd-25 |  |
| E-GFC-MEP-RB2-155 |  | Peer Reviewer Approval | 2d | 2027-02-19 | 2027-02-23 | E-GFC-MEP-RB2-115 | CSD-LKO-Design (5 Day + Holiday)-25 | Design Consultnacy Charges; Physical Progress [1020 h]; Peer Reviewer-25 |  |
| E-GFC-MEP-RB2-195 |  | TPL Design Team Approval | 2d | 2027-02-23 | 2027-02-25 | E-GFC-MEP-RB2-155 | CSD-LKO-Design (5 Day + Holiday)-25 | Design Consultnacy Charges [88427 INR]; Physical Progress [1020 h]; TATA Projects Ltd-25 | 88,427 |
| E-GFC-MEP-RB2-235 |  | Issue of Hard Copy on Site | 4d | 2027-02-25 | 2027-03-03 | E-GFC-MEP-RB2-195 | CSD-LKO-Design (5 Day + Holiday)-25 | Design Consultnacy Charges; Physical Progress [510 h]; TATA Projects Ltd-25 |  |
|  | 8 | **Sixth Floor** |  | 2027-02-03 | 2027-03-15 |  |  |  |  |
| E-GFC-MEP-RB2-40 |  | Drawings Preparation& Submission | 15d | 2027-02-03 | 2027-02-24 | E-DD-MEP-RB2-15, E-GFC-ST-RB2-55 | CSD-LKO-Design (5 Day + Holiday)-25 | Design Consultnacy Charges; Physical Progress [16370 h]; TATA Projects Ltd-25 |  |
| E-GFC-MEP-RB2-80 |  | Domain Expert Approval | 2d | 2027-02-24 | 2027-02-26 | E-GFC-MEP-RB2-40 | CSD-LKO-Design (5 Day + Holiday)-25 | Design Consultnacy Charges; Physical Progress [1020 h]; TATA Projects Ltd-25 |  |
| E-GFC-MEP-RB2-120 |  | Executive Consultant Approval | 2d | 2027-02-26 | 2027-03-02 | E-GFC-MEP-RB2-80 | CSD-LKO-Design (5 Day + Holiday)-25 | Design Consultnacy Charges; Physical Progress [1020 h]; TATA Projects Ltd-25 |  |
| E-GFC-MEP-RB2-160 |  | Peer Reviewer Approval | 2d | 2027-03-02 | 2027-03-04 | E-GFC-MEP-RB2-120 | CSD-LKO-Design (5 Day + Holiday)-25 | Design Consultnacy Charges; Physical Progress [1020 h]; Peer Reviewer-25 |  |
| E-GFC-MEP-RB2-200 |  | TPL Design Team Approval | 2d | 2027-03-04 | 2027-03-08 | E-GFC-MEP-RB2-160 | CSD-LKO-Design (5 Day + Holiday)-25 | Design Consultnacy Charges [88427 INR]; Physical Progress [1020 h]; TATA Projects Ltd-25 | 88,427 |
| E-GFC-MEP-RB2-240 |  | Issue of Hard Copy on Site | 4d | 2027-03-08 | 2027-03-15 | E-GFC-MEP-RB2-200 | CSD-LKO-Design (5 Day + Holiday)-25 | Design Consultnacy Charges; Physical Progress [510 h]; TATA Projects Ltd-25 |  |
|  | 9 | **Terrace** |  | 2027-02-12 | 2027-03-25 |  |  |  |  |
| E-GFC-MEP-RB2-45 |  | Drawings Preparation& Submission | 15d | 2027-02-12 | 2027-03-05 | E-DD-MEP-RB2-15, E-GFC-ST-RB2-60 | CSD-LKO-Design (5 Day + Holiday)-25 | Design Consultnacy Charges; Physical Progress [16370 h]; TATA Projects Ltd-25 |  |
| E-GFC-MEP-RB2-85 |  | Domain Expert Approval | 2d | 2027-03-05 | 2027-03-09 | E-GFC-MEP-RB2-45 | CSD-LKO-Design (5 Day + Holiday)-25 | Design Consultnacy Charges; Physical Progress [1020 h]; TATA Projects Ltd-25 |  |
| E-GFC-MEP-RB2-125 |  | Executive Consultant Approval | 2d | 2027-03-09 | 2027-03-12 | E-GFC-MEP-RB2-85 | CSD-LKO-Design (5 Day + Holiday)-25 | Design Consultnacy Charges; Physical Progress [1020 h]; TATA Projects Ltd-25 |  |
| E-GFC-MEP-RB2-165 |  | Peer Reviewer Approval | 2d | 2027-03-12 | 2027-03-16 | E-GFC-MEP-RB2-125 | CSD-LKO-Design (5 Day + Holiday)-25 | Design Consultnacy Charges; Physical Progress [1020 h]; Peer Reviewer-25 |  |
| E-GFC-MEP-RB2-205 |  | TPL Design Team Approval | 2d | 2027-03-16 | 2027-03-18 | E-GFC-MEP-RB2-165 | CSD-LKO-Design (5 Day + Holiday)-25 | Design Consultnacy Charges [88427 INR]; Physical Progress [1020 h]; TATA Projects Ltd-25 | 88,427 |
| E-GFC-MEP-RB2-245 |  | Issue of Hard Copy on Site | 4d | 2027-03-18 | 2027-03-25 | E-GFC-MEP-RB2-205 | CSD-LKO-Design (5 Day + Holiday)-25 | Design Consultnacy Charges; Physical Progress [510 h]; TATA Projects Ltd-25 |  |
|  | 5 | **Retail Block 1** |  | 2026-11-27 | 2027-05-03 |  |  |  |  |
|  | 1 | **Ground Floor** |  | 2026-11-27 | 2027-01-07 |  |  |  |  |
| E-GFC-MEP-RB1-10 |  | Drawings Preparation& Submission | 15d | 2026-11-27 | 2026-12-18 | E-DD-MEP-RB1-15, E-GFC-ST-RB1-10 | CSD-LKO-Design (5 Day + Holiday)-25 | Design Consultnacy Charges; Physical Progress [16370 h]; TATA Projects Ltd-25 |  |
| E-GFC-MEP-RB1-40 |  | Domain Expert Approval | 2d | 2026-12-18 | 2026-12-22 | E-GFC-MEP-RB1-10 | CSD-LKO-Design (5 Day + Holiday)-25 | Design Consultnacy Charges; Physical Progress [1020 h]; TATA Projects Ltd-25 |  |
| E-GFC-MEP-RB1-70 |  | Executive Consultant Approval | 2d | 2026-12-22 | 2026-12-24 | E-GFC-MEP-RB1-40 | CSD-LKO-Design (5 Day + Holiday)-25 | Design Consultnacy Charges; Physical Progress [1020 h]; TATA Projects Ltd-25 |  |
| E-GFC-MEP-RB1-100 |  | Peer Reviewer Approval | 2d | 2026-12-24 | 2026-12-29 | E-GFC-MEP-RB1-70 | CSD-LKO-Design (5 Day + Holiday)-25 | Design Consultnacy Charges; Physical Progress [1020 h]; Peer Reviewer-25 |  |
| E-GFC-MEP-RB1-130 |  | TPL Design Team Approval | 2d | 2026-12-29 | 2026-12-31 | E-GFC-MEP-RB1-100 | CSD-LKO-Design (5 Day + Holiday)-25 | Design Consultnacy Charges [88427 INR]; Physical Progress [1020 h]; TATA Projects Ltd-25 | 88,427 |
| E-GFC-MEP-RB1-160 |  | Issue of Hard Copy on Site | 4d | 2026-12-31 | 2027-01-07 | E-GFC-MEP-RB1-130 | CSD-LKO-Design (5 Day + Holiday)-25 | Design Consultnacy Charges; Physical Progress [510 h]; TATA Projects Ltd-25 |  |

| ID | WBS | Activity | Duration | Start | Finish | Predecessors | Calendar | Resources | Cost |
| --- | --- | --- | --- | --- | --- | --- | --- | --- | --- |
|  | 2 | **First Floor** |  | 2026-11-27 | 2027-01-07 |  |  |  |  |
| E-GFC-MEP-RB1-15 |  | Drawings Preparation& Submission | 15d | 2026-11-27 | 2026-12-18 | E-DD-MEP-RB1-15, E-GFC-ST-RB1-10 | CSD-LKO-Design (5 Day + Holiday)-25 | Design Consultnacy Charges; Physical Progress [16370 h]; TATA Projects Ltd-25 |  |
| E-GFC-MEP-RB1-45 |  | Domain Expert Approval | 2d | 2026-12-18 | 2026-12-22 | E-GFC-MEP-RB1-15 | CSD-LKO-Design (5 Day + Holiday)-25 | Design Consultnacy Charges; Physical Progress [1020 h]; TATA Projects Ltd-25 |  |
| E-GFC-MEP-RB1-75 |  | Executive Consultant Approval | 2d | 2026-12-22 | 2026-12-24 | E-GFC-MEP-RB1-45 | CSD-LKO-Design (5 Day + Holiday)-25 | Design Consultnacy Charges; Physical Progress [1020 h]; TATA Projects Ltd-25 |  |
| E-GFC-MEP-RB1-105 |  | Peer Reviewer Approval | 2d | 2026-12-24 | 2026-12-29 | E-GFC-MEP-RB1-75 | CSD-LKO-Design (5 Day + Holiday)-25 | Design Consultnacy Charges; Physical Progress [1020 h]; Peer Reviewer-25 |  |
| E-GFC-MEP-RB1-135 |  | TPL Design Team Approval | 2d | 2026-12-29 | 2026-12-31 | E-GFC-MEP-RB1-105 | CSD-LKO-Design (5 Day + Holiday)-25 | Design Consultnacy Charges [88427 INR]; Physical Progress [1020 h]; TATA Projects Ltd-25 | 88,427 |
| E-GFC-MEP-RB1-165 |  | Issue of Hard Copy on Site | 4d | 2026-12-31 | 2027-01-07 | E-GFC-MEP-RB1-135 | CSD-LKO-Design (5 Day + Holiday)-25 | Design Consultnacy Charges; Physical Progress [510 h]; TATA Projects Ltd-25 |  |
|  | 4 | **Second Floor** |  | 2026-12-08 | 2027-03-02 |  |  |  |  |
| E-GFC-MEP-RB1-20 |  | Drawings Preparation& Submission | 45d | 2026-12-08 | 2027-02-12 | E-DD-MEP-RB1-15, E-GFC-ST-RB1-15 | CSD-LKO-Design (5 Day + Holiday)-25 | Design Consultnacy Charges; Physical Progress [16370 h]; TATA Projects Ltd-25 |  |
| E-GFC-MEP-RB1-50 |  | Domain Expert Approval | 2d | 2027-02-12 | 2027-02-16 | E-GFC-MEP-RB1-20 | CSD-LKO-Design (5 Day + Holiday)-25 | Design Consultnacy Charges; Physical Progress [1020 h]; TATA Projects Ltd-25 |  |
| E-GFC-MEP-RB1-80 |  | Executive Consultant Approval | 2d | 2027-02-16 | 2027-02-18 | E-GFC-MEP-RB1-50 | CSD-LKO-Design (5 Day + Holiday)-25 | Design Consultnacy Charges; Physical Progress [1020 h]; TATA Projects Ltd-25 |  |
| E-GFC-MEP-RB1-110 |  | Peer Reviewer Approval | 2d | 2027-02-18 | 2027-02-22 | E-GFC-MEP-RB1-80 | CSD-LKO-Design (5 Day + Holiday)-25 | Design Consultnacy Charges; Physical Progress [1020 h]; Peer Reviewer-25 |  |
| E-GFC-MEP-RB1-140 |  | TPL Design Team Approval | 2d | 2027-02-22 | 2027-02-24 | E-GFC-MEP-RB1-110 | CSD-LKO-Design (5 Day + Holiday)-25 | Design Consultnacy Charges [88427 INR]; Physical Progress [1020 h]; TATA Projects Ltd-25 | 88,427 |
| E-GFC-MEP-RB1-170 |  | Issue of Hard Copy on Site | 4d | 2027-02-24 | 2027-03-02 | E-GFC-MEP-RB1-140 | CSD-LKO-Design (5 Day + Holiday)-25 | Design Consultnacy Charges; Physical Progress [510 h]; TATA Projects Ltd-25 |  |
|  | 5 | **Third Floor** |  | 2026-12-17 | 2027-03-24 |  |  |  |  |
| E-GFC-MEP-RB1-25 |  | Drawings Preparation& Submission | 52d | 2026-12-17 | 2027-03-04 | E-DD-MEP-RB1-15, E-GFC-ST-RB1-20 | CSD-LKO-Design (5 Day + Holiday)-25 | Design Consultnacy Charges; Physical Progress [16370 h]; TATA Projects Ltd-25 |  |
| E-GFC-MEP-RB1-55 |  | Domain Expert Approval | 2d | 2027-03-04 | 2027-03-08 | E-GFC-MEP-RB1-25 | CSD-LKO-Design (5 Day + Holiday)-25 | Design Consultnacy Charges; Physical Progress [1020 h]; TATA Projects Ltd-25 |  |
| E-GFC-MEP-RB1-85 |  | Executive Consultant Approval | 2d | 2027-03-08 | 2027-03-11 | E-GFC-MEP-RB1-55 | CSD-LKO-Design (5 Day + Holiday)-25 | Design Consultnacy Charges; Physical Progress [1020 h]; TATA Projects Ltd-25 |  |
| E-GFC-MEP-RB1-115 |  | Peer Reviewer Approval | 2d | 2027-03-11 | 2027-03-15 | E-GFC-MEP-RB1-85 | CSD-LKO-Design (5 Day + Holiday)-25 | Design Consultnacy Charges; Physical Progress [1020 h]; Peer Reviewer-25 |  |
| E-GFC-MEP-RB1-145 |  | TPL Design Team Approval | 2d | 2027-03-15 | 2027-03-17 | E-GFC-MEP-RB1-115 | CSD-LKO-Design (5 Day + Holiday)-25 | Design Consultnacy Charges [88427 INR]; Physical Progress [1020 h]; TATA Projects Ltd-25 | 88,427 |
| E-GFC-MEP-RB1-175 |  | Issue of Hard Copy on Site | 4d | 2027-03-17 | 2027-03-24 | E-GFC-MEP-RB1-145 | CSD-LKO-Design (5 Day + Holiday)-25 | Design Consultnacy Charges; Physical Progress [510 h]; TATA Projects Ltd-25 |  |
|  | 6 | **Fourth Floor** |  | 2026-12-29 | 2027-04-13 |  |  |  |  |
| E-GFC-MEP-RB1-30 |  | Drawings Preparation& Submission | 58d | 2026-12-29 | 2027-03-25 | E-DD-MEP-RB1-15, E-GFC-ST-RB1-45 | CSD-LKO-Design (5 Day + Holiday)-25 | Design Consultnacy Charges; Physical Progress [16370 h]; TATA Projects Ltd-25 |  |
| E-GFC-MEP-RB1-60 |  | Domain Expert Approval | 2d | 2027-03-25 | 2027-03-30 | E-GFC-MEP-RB1-30 | CSD-LKO-Design (5 Day + Holiday)-25 | Design Consultnacy Charges; Physical Progress [1020 h]; TATA Projects Ltd-25 |  |
| E-GFC-MEP-RB1-90 |  | Executive Consultant Approval | 2d | 2027-03-30 | 2027-04-01 | E-GFC-MEP-RB1-60 | CSD-LKO-Design (5 Day + Holiday)-25 | Design Consultnacy Charges; Physical Progress [1020 h]; TATA Projects Ltd-25 |  |
| E-GFC-MEP-RB1-120 |  | Peer Reviewer Approval | 2d | 2027-04-01 | 2027-04-05 | E-GFC-MEP-RB1-90 | CSD-LKO-Design (5 Day + Holiday)-25 | Design Consultnacy Charges; Physical Progress [1020 h]; Peer Reviewer-25 |  |
| E-GFC-MEP-RB1-150 |  | TPL Design Team Approval | 2d | 2027-04-05 | 2027-04-07 | E-GFC-MEP-RB1-120 | CSD-LKO-Design (5 Day + Holiday)-25 | Design Consultnacy Charges [88427 INR]; Physical Progress [1020 h]; TATA Projects Ltd-25 | 88,427 |
| E-GFC-MEP-RB1-180 |  | Issue of Hard Copy on Site | 4d | 2027-04-07 | 2027-04-13 | E-GFC-MEP-RB1-150 | CSD-LKO-Design (5 Day + Holiday)-25 | Design Consultnacy Charges; Physical Progress [510 h]; TATA Projects Ltd-25 |  |

| ID | WBS | Activity | Duration | Start | Finish | Predecessors | Calendar | Resources | Cost |
| --- | --- | --- | --- | --- | --- | --- | --- | --- | --- |
|  | 9 | **Terrace** |  | 2027-01-08 | 2027-05-03 |  |  |  |  |
| E-GFC-MEP-RB1-35 |  | Drawings Preparation& Submission | 65d | 2027-01-08 | 2027-04-15 | E-DD-MEP-RB1-15, E-GFC-ST-RB1-50 | CSD-LKO-Design (5 Day + Holiday)-25 | Design Consultnacy Charges; Physical Progress [16370 h]; TATA Projects Ltd-25 |  |
| E-GFC-MEP-RB1-65 |  | Domain Expert Approval | 2d | 2027-04-15 | 2027-04-19 | E-GFC-MEP-RB1-35 | CSD-LKO-Design (5 Day + Holiday)-25 | Design Consultnacy Charges; Physical Progress [1020 h]; TATA Projects Ltd-25 |  |
| E-GFC-MEP-RB1-95 |  | Executive Consultant Approval | 2d | 2027-04-19 | 2027-04-21 | E-GFC-MEP-RB1-65 | CSD-LKO-Design (5 Day + Holiday)-25 | Design Consultnacy Charges; Physical Progress [1020 h]; TATA Projects Ltd-25 |  |
| E-GFC-MEP-RB1-125 |  | Peer Reviewer Approval | 2d | 2027-04-21 | 2027-04-23 | E-GFC-MEP-RB1-95 | CSD-LKO-Design (5 Day + Holiday)-25 | Design Consultnacy Charges; Physical Progress [1020 h]; Peer Reviewer-25 |  |
| E-GFC-MEP-RB1-155 |  | TPL Design Team Approval | 2d | 2027-04-23 | 2027-04-27 | E-GFC-MEP-RB1-125 | CSD-LKO-Design (5 Day + Holiday)-25 | Design Consultnacy Charges [88427 INR]; Physical Progress [1020 h]; TATA Projects Ltd-25 | 88,427 |
| E-GFC-MEP-RB1-185 |  | Issue of Hard Copy on Site | 4d | 2027-04-27 | 2027-05-03 | E-GFC-MEP-RB1-155 | CSD-LKO-Design (5 Day + Holiday)-25 | Design Consultnacy Charges; Physical Progress [510 h]; TATA Projects Ltd-25 |  |
|  | 6 | **Convention Center** |  | 2026-11-20 | 2027-02-19 |  |  |  |  |
|  | 1 | **Ground Floor** |  | 2026-11-20 | 2026-12-30 |  |  |  |  |
| E-GFC-MEP-CC-10 |  | Drawings Preparation& Submission | 15d | 2026-11-20 | 2026-12-11 | E-DD-MEP-CC-15, E-GFC-ST-CC-15 | CSD-LKO-Design (5 Day + Holiday)-25 | Design Consultnacy Charges; Physical Progress [16370 h]; TATA Projects Ltd-25 |  |
| E-GFC-MEP-CC-45 |  | Domain Expert Approval | 2d | 2026-12-11 | 2026-12-15 | E-GFC-MEP-CC-10 | CSD-LKO-Design (5 Day + Holiday)-25 | Design Consultnacy Charges; Physical Progress [1020 h]; TATA Projects Ltd-25 |  |
| E-GFC-MEP-CC-80 |  | Executive Consultant Approval | 2d | 2026-12-15 | 2026-12-17 | E-GFC-MEP-CC-45 | CSD-LKO-Design (5 Day + Holiday)-25 | Design Consultnacy Charges; Physical Progress [1020 h]; TATA Projects Ltd-25 |  |
| E-GFC-MEP-CC-115 |  | Peer Reviewer Approval | 2d | 2026-12-17 | 2026-12-21 | E-GFC-MEP-CC-80 | CSD-LKO-Design (5 Day + Holiday)-25 | Design Consultnacy Charges; Physical Progress [1020 h]; Peer Reviewer-25 |  |
| E-GFC-MEP-CC-150 |  | TPL Design Team Approval | 2d | 2026-12-21 | 2026-12-23 | E-GFC-MEP-CC-115 | CSD-LKO-Design (5 Day + Holiday)-25 | Design Consultnacy Charges [88427 INR]; Physical Progress [1020 h]; TATA Projects Ltd-25 | 88,427 |
| E-GFC-MEP-CC-185 |  | Issue of Hard Copy on Site | 4d | 2026-12-23 | 2026-12-30 | E-GFC-MEP-CC-150 | CSD-LKO-Design (5 Day + Holiday)-25 | Design Consultnacy Charges; Physical Progress [510 h]; TATA Projects Ltd-25 |  |
|  | 5 | **First Mezzanine** |  | 2026-11-20 | 2026-12-30 |  |  |  |  |
| E-GFC-MEP-CC-25 |  | Drawings Preparation& Submission | 15d | 2026-11-20 | 2026-12-11 | E-DD-MEP-CC-15, E-GFC-ST-CC-15 | CSD-LKO-Design (5 Day + Holiday)-25 | Design Consultnacy Charges; Physical Progress [16370 h]; TATA Projects Ltd-25 |  |
| E-GFC-MEP-CC-60 |  | Domain Expert Approval | 2d | 2026-12-11 | 2026-12-15 | E-GFC-MEP-CC-25 | CSD-LKO-Design (5 Day + Holiday)-25 | Design Consultnacy Charges; Physical Progress [1020 h]; TATA Projects Ltd-25 |  |
| E-GFC-MEP-CC-95 |  | Executive Consultant Approval | 2d | 2026-12-15 | 2026-12-17 | E-GFC-MEP-CC-60 | CSD-LKO-Design (5 Day + Holiday)-25 | Design Consultnacy Charges; Physical Progress [1020 h]; TATA Projects Ltd-25 |  |
| E-GFC-MEP-CC-130 |  | Peer Reviewer Approval | 2d | 2026-12-17 | 2026-12-21 | E-GFC-MEP-CC-95 | CSD-LKO-Design (5 Day + Holiday)-25 | Design Consultnacy Charges; Physical Progress [1020 h]; Peer Reviewer-25 |  |
| E-GFC-MEP-CC-165 |  | TPL Design Team Approval | 2d | 2026-12-21 | 2026-12-23 | E-GFC-MEP-CC-130 | CSD-LKO-Design (5 Day + Holiday)-25 | Design Consultnacy Charges [88427 INR]; Physical Progress [1020 h]; TATA Projects Ltd-25 | 88,427 |
| E-GFC-MEP-CC-195 |  | Issue of Hard Copy on Site | 4d | 2026-12-23 | 2026-12-30 | E-GFC-MEP-CC-165 | CSD-LKO-Design (5 Day + Holiday)-25 | Design Consultnacy Charges; Physical Progress [510 h]; TATA Projects Ltd-25 |  |
|  | 6 | **Second Mezzanine** |  | 2026-12-01 | 2027-01-11 |  |  |  |  |
| E-GFC-MEP-CC-30 |  | Drawings Preparation& Submission | 15d | 2026-12-01 | 2026-12-22 | E-DD-MEP-CC-15, E-GFC-ST-CC-20 | CSD-LKO-Design (5 Day + Holiday)-25 | Design Consultnacy Charges; Physical Progress [16370 h]; TATA Projects Ltd-25 |  |
| E-GFC-MEP-CC-65 |  | Domain Expert Approval | 2d | 2026-12-22 | 2026-12-24 | E-GFC-MEP-CC-30 | CSD-LKO-Design (5 Day + Holiday)-25 | Design Consultnacy Charges; Physical Progress [1020 h]; TATA Projects Ltd-25 |  |
| E-GFC-MEP-CC-100 |  | Executive Consultant Approval | 2d | 2026-12-24 | 2026-12-29 | E-GFC-MEP-CC-65 | CSD-LKO-Design (5 Day + Holiday)-25 | Design Consultnacy Charges; Physical Progress [1020 h]; TATA Projects Ltd-25 |  |
| E-GFC-MEP-CC-135 |  | Peer Reviewer Approval | 2d | 2026-12-29 | 2026-12-31 | E-GFC-MEP-CC-100 | CSD-LKO-Design (5 Day + Holiday)-25 | Design Consultnacy Charges; Physical Progress [1020 h]; Peer Reviewer-25 |  |
| E-GFC-MEP-CC-170 |  | TPL Design Team Approval | 2d | 2026-12-31 | 2027-01-05 | E-GFC-MEP-CC-135 | CSD-LKO-Design (5 Day + Holiday)-25 | Design Consultnacy Charges [88427 INR]; Physical Progress [1020 h]; TATA Projects Ltd-25 | 88,427 |
| E-GFC-MEP-CC-215 |  | Issue of Hard Copy on Site | 4d | 2027-01-05 | 2027-01-11 | E-GFC-MEP-CC-170 | CSD-LKO-Design (5 Day + Holiday)-25 | Design Consultnacy Charges; Physical Progress [510 h]; TATA Projects Ltd-25 |  |

| ID | WBS | Activity | Duration | Start | Finish | Predecessors | Calendar | Resources | Cost |
| --- | --- | --- | --- | --- | --- | --- | --- | --- | --- |
|  | 2 | **First Floor** |  | 2026-12-10 | 2027-01-20 |  |  |  |  |
| E-GFC-MEP-CC-15 |  | Drawings Preparation& Submission | 15d | 2026-12-10 | 2027-01-04 | E-DD-MEP-CC-15, E-GFC-ST-CC-10 | CSD-LKO-Design (5 Day + Holiday)-25 | Design Consultnacy Charges; Physical Progress [16370 h]; TATA Projects Ltd-25 |  |
| E-GFC-MEP-CC-50 |  | Domain Expert Approval | 2d | 2027-01-04 | 2027-01-06 | E-GFC-MEP-CC-15 | CSD-LKO-Design (5 Day + Holiday)-25 | Design Consultnacy Charges; Physical Progress [1020 h]; TATA Projects Ltd-25 |  |
| E-GFC-MEP-CC-85 |  | Executive Consultant Approval | 2d | 2027-01-06 | 2027-01-08 | E-GFC-MEP-CC-50 | CSD-LKO-Design (5 Day + Holiday)-25 | Design Consultnacy Charges; Physical Progress [1020 h]; TATA Projects Ltd-25 |  |
| E-GFC-MEP-CC-120 |  | Peer Reviewer Approval | 2d | 2027-01-08 | 2027-01-12 | E-GFC-MEP-CC-85 | CSD-LKO-Design (5 Day + Holiday)-25 | Design Consultnacy Charges; Physical Progress [1020 h]; Peer Reviewer-25 |  |
| E-GFC-MEP-CC-155 |  | TPL Design Team Approval | 2d | 2027-01-12 | 2027-01-14 | E-GFC-MEP-CC-120 | CSD-LKO-Design (5 Day + Holiday)-25 | Design Consultnacy Charges [88427 INR]; Physical Progress [1020 h]; TATA Projects Ltd-25 | 88,427 |
| E-GFC-MEP-CC-190 |  | Issue of Hard Copy on Site | 4d | 2027-01-14 | 2027-01-20 | E-GFC-MEP-CC-155 | CSD-LKO-Design (5 Day + Holiday)-25 | Design Consultnacy Charges; Physical Progress [510 h]; TATA Projects Ltd-25 |  |
|  | 7 | **Third Mezzanine** |  | 2026-12-21 | 2027-02-01 |  |  |  |  |
| E-GFC-MEP-CC-35 |  | Drawings Preparation& Submission | 15d | 2026-12-21 | 2027-01-13 | E-DD-MEP-CC-15, E-GFC-ST-CC-50 | CSD-LKO-Design (5 Day + Holiday)-25 | Design Consultnacy Charges; Physical Progress [16370 h]; TATA Projects Ltd-25 |  |
| E-GFC-MEP-CC-70 |  | Domain Expert Approval | 2d | 2027-01-13 | 2027-01-15 | E-GFC-MEP-CC-35 | CSD-LKO-Design (5 Day + Holiday)-25 | Design Consultnacy Charges; Physical Progress [1020 h]; TATA Projects Ltd-25 |  |
| E-GFC-MEP-CC-105 |  | Executive Consultant Approval | 2d | 2027-01-15 | 2027-01-19 | E-GFC-MEP-CC-70 | CSD-LKO-Design (5 Day + Holiday)-25 | Design Consultnacy Charges; Physical Progress [1020 h]; TATA Projects Ltd-25 |  |
| E-GFC-MEP-CC-140 |  | Peer Reviewer Approval | 2d | 2027-01-19 | 2027-01-21 | E-GFC-MEP-CC-105 | CSD-LKO-Design (5 Day + Holiday)-25 | Design Consultnacy Charges; Physical Progress [1020 h]; Peer Reviewer-25 |  |
| E-GFC-MEP-CC-175 |  | TPL Design Team Approval | 2d | 2027-01-21 | 2027-01-25 | E-GFC-MEP-CC-140 | CSD-LKO-Design (5 Day + Holiday)-25 | Design Consultnacy Charges [88427 INR]; Physical Progress [1020 h]; TATA Projects Ltd-25 | 88,427 |
| E-GFC-MEP-CC-205 |  | Issue of Hard Copy on Site | 4d | 2027-01-25 | 2027-02-01 | E-GFC-MEP-CC-175 | CSD-LKO-Design (5 Day + Holiday)-25 | Design Consultnacy Charges; Physical Progress [510 h]; TATA Projects Ltd-25 |  |
|  | 4 | **Second Floor** |  | 2026-12-31 | 2027-02-10 |  |  |  |  |
| E-GFC-MEP-CC-20 |  | Drawings Preparation& Submission | 15d | 2026-12-31 | 2027-01-22 | E-DD-MEP-CC-15, E-GFC-ST-CC-35 | CSD-LKO-Design (5 Day + Holiday)-25 | Design Consultnacy Charges; Physical Progress [16370 h]; TATA Projects Ltd-25 |  |
| E-GFC-MEP-CC-55 |  | Domain Expert Approval | 2d | 2027-01-22 | 2027-01-27 | E-GFC-MEP-CC-20 | CSD-LKO-Design (5 Day + Holiday)-25 | Design Consultnacy Charges; Physical Progress [1020 h]; TATA Projects Ltd-25 |  |
| E-GFC-MEP-CC-90 |  | Executive Consultant Approval | 2d | 2027-01-27 | 2027-01-29 | E-GFC-MEP-CC-55 | CSD-LKO-Design (5 Day + Holiday)-25 | Design Consultnacy Charges; Physical Progress [1020 h]; TATA Projects Ltd-25 |  |
| E-GFC-MEP-CC-125 |  | Peer Reviewer Approval | 2d | 2027-01-29 | 2027-02-02 | E-GFC-MEP-CC-90 | CSD-LKO-Design (5 Day + Holiday)-25 | Design Consultnacy Charges; Physical Progress [1020 h]; Peer Reviewer-25 |  |
| E-GFC-MEP-CC-160 |  | TPL Design Team Approval | 2d | 2027-02-02 | 2027-02-04 | E-GFC-MEP-CC-125 | CSD-LKO-Design (5 Day + Holiday)-25 | Design Consultnacy Charges [88427 INR]; Physical Progress [1020 h]; TATA Projects Ltd-25 | 88,427 |
| E-GFC-MEP-CC-200 |  | Issue of Hard Copy on Site | 4d | 2027-02-04 | 2027-02-10 | E-GFC-MEP-CC-160 | CSD-LKO-Design (5 Day + Holiday)-25 | Design Consultnacy Charges; Physical Progress [510 h]; TATA Projects Ltd-25 |  |
|  | 9 | **Terrace** |  | 2027-01-12 | 2027-02-19 |  |  |  |  |
| E-GFC-MEP-CC-40 |  | Drawings Preparation& Submission | 15d | 2027-01-12 | 2027-02-03 | E-DD-MEP-CC-15, E-GFC-ST-CC-55 | CSD-LKO-Design (5 Day + Holiday)-25 | Design Consultnacy Charges; Physical Progress [16370 h]; TATA Projects Ltd-25 |  |
| E-GFC-MEP-CC-75 |  | Domain Expert Approval | 2d | 2027-02-03 | 2027-02-05 | E-GFC-MEP-CC-40 | CSD-LKO-Design (5 Day + Holiday)-25 | Design Consultnacy Charges; Physical Progress [1020 h]; TATA Projects Ltd-25 |  |
| E-GFC-MEP-CC-110 |  | Executive Consultant Approval | 2d | 2027-02-05 | 2027-02-09 | E-GFC-MEP-CC-75 | CSD-LKO-Design (5 Day + Holiday)-25 | Design Consultnacy Charges; Physical Progress [1020 h]; TATA Projects Ltd-25 |  |
| E-GFC-MEP-CC-145 |  | Peer Reviewer Approval | 2d | 2027-02-09 | 2027-02-11 | E-GFC-MEP-CC-110 | CSD-LKO-Design (5 Day + Holiday)-25 | Design Consultnacy Charges; Physical Progress [1020 h]; Peer Reviewer-25 |  |
| E-GFC-MEP-CC-180 |  | TPL Design Team Approval | 2d | 2027-02-11 | 2027-02-15 | E-GFC-MEP-CC-145 | CSD-LKO-Design (5 Day + Holiday)-25 | Design Consultnacy Charges [88427 INR]; Physical Progress [1020 h]; TATA Projects Ltd-25 | 88,427 |
| E-GFC-MEP-CC-210 |  | Issue of Hard Copy on Site | 4d | 2027-02-15 | 2027-02-19 | E-GFC-MEP-CC-180 | CSD-LKO-Design (5 Day + Holiday)-25 | Design Consultnacy Charges; Physical Progress [510 h]; TATA Projects Ltd-25 |  |

| ID | WBS | Activity | Duration | Start | Finish | Predecessors | Calendar | Resources | Cost |
| --- | --- | --- | --- | --- | --- | --- | --- | --- | --- |
|  | 4 | **ID** |  | 2027-08-16 | 2027-12-16 |  |  |  |  |
|  | 5 | **Office & Retail** |  | 2027-08-16 | 2027-11-24 |  |  |  |  |
| E-GFC-ID-R&O-10 |  | Drawings Preparation& Submission | 59d | 2027-08-16 | 2027-11-08 | E-DD-ID-R&O-30 | CSD-LKO-Design (5 Day + Holiday)-25 | Design Consultnacy Charges; Physical Progress [30190 h]; TATA Projects Ltd-25 |  |
| E-GFC-ID-R&O-15 |  | Domain Expert Approval | 2d | 2027-11-08 | 2027-11-10 | E-GFC-ID-R&O-10 | CSD-LKO-Design (5 Day + Holiday)-25 | Design Consultnacy Charges; Physical Progress [1020 h]; TATA Projects Ltd-25 |  |
| E-GFC-ID-R&O-20 |  | Executive Consultant Approval | 2d | 2027-11-10 | 2027-11-12 | E-GFC-ID-R&O-15 | CSD-LKO-Design (5 Day + Holiday)-25 | Design Consultnacy Charges; Physical Progress [1020 h]; TATA Projects Ltd-25 |  |
| E-GFC-ID-R&O-25 |  | Peer Reviewer Approval | 2d | 2027-11-12 | 2027-11-16 | E-GFC-ID-R&O-20 | CSD-LKO-Design (5 Day + Holiday)-25 | Design Consultnacy Charges; Physical Progress [1020 h]; Peer Reviewer-25 |  |
| E-GFC-ID-R&O-30 |  | TPL Design Team Approval | 2d | 2027-11-16 | 2027-11-18 | E-GFC-ID-R&O-25 | CSD-LKO-Design (5 Day + Holiday)-25 | Design Consultnacy Charges [761778 INR]; Physical Progress [1020 h]; TATA Projects Ltd-25 | 761,778 |
| E-GFC-ID-R&O-35 |  | Issue of Hard Copy on Site | 4d | 2027-11-18 | 2027-11-24 | E-GFC-ID-R&O-30 | CSD-LKO-Design (5 Day + Holiday)-25 | Design Consultnacy Charges; Physical Progress [510 h]; TATA Projects Ltd-25 |  |
|  | 4 | **Hotel & Convention center** |  | 2027-09-09 | 2027-12-16 |  |  |  |  |
| E-GFC-ID-H&CC-10 |  | Drawings Preparation& Submission | 58d | 2027-09-09 | 2027-11-30 | E-DD-ID-H&CC-30 | CSD-LKO-Design (5 Day + Holiday)-25 | Design Consultnacy Charges; Physical Progress [30700 h]; TATA Projects Ltd-25 |  |
| E-GFC-ID-H&CC-15 |  | Domain Expert Approval | 2d | 2027-12-01 | 2027-12-02 | E-GFC-ID-H&CC-10 | CSD-LKO-Design (5 Day + Holiday)-25 | Design Consultnacy Charges; Physical Progress [1020 h]; TATA Projects Ltd-25 |  |
| E-GFC-ID-H&CC-20 |  | Executive Consultant Approval | 2d | 2027-12-03 | 2027-12-06 | E-GFC-ID-H&CC-15 | CSD-LKO-Design (5 Day + Holiday)-25 | Design Consultnacy Charges; Physical Progress [1020 h]; TATA Projects Ltd-25 |  |
| E-GFC-ID-H&CC-25 |  | Peer Reviewer Approval | 2d | 2027-12-07 | 2027-12-08 | E-GFC-ID-H&CC-20 | CSD-LKO-Design (5 Day + Holiday)-25 | Design Consultnacy Charges; Physical Progress [1020 h]; Peer Reviewer-25 |  |
| E-GFC-ID-H&CC-30 |  | TPL Design Team Approval | 2d | 2027-12-09 | 2027-12-10 | E-GFC-ID-H&CC-25 | CSD-LKO-Design (5 Day + Holiday)-25 | Design Consultnacy Charges [3841223 INR]; Physical Progress [1020 h]; TATA Projects Ltd-25 | 3,841,223 |
| E-GFC-ID-H&CC-35 |  | Issue of Hard Copy on Site | 4d | 2027-12-13 | 2027-12-16 | E-GFC-ID-H&CC-30 | CSD-LKO-Design (5 Day + Holiday)-25 | Design Consultnacy Charges; Physical Progress [510 h]; TATA Projects Ltd-25 |  |
|  | 6 | **Misc** |  | 2026-10-01 | 2027-12-16 |  |  |  |  |
|  | 1 | **Landscape** |  | 2026-10-01 | 2027-02-08 |  |  |  |  |
| E-GFC-Misc-LS-10 |  | Drawings Preparation& Submission | 75d | 2026-10-01 | 2027-01-20 | E-DD-Misc-LS-30 | CSD-LKO-Design (5 Day + Holiday)-25 | Design Consultnacy Charges; Physical Progress [41960 h]; TATA Projects Ltd-25 |  |
| E-GFC-Misc-LS-15 |  | Domain Expert Approval | 2d | 2027-01-20 | 2027-01-22 | E-GFC-Misc-LS-10 | CSD-LKO-Design (5 Day + Holiday)-25 | Design Consultnacy Charges; Physical Progress [1020 h]; TATA Projects Ltd-25 |  |
| E-GFC-Misc-LS-20 |  | Executive Consultant Approval | 2d | 2027-01-22 | 2027-01-27 | E-GFC-Misc-LS-15 | CSD-LKO-Design (5 Day + Holiday)-25 | Design Consultnacy Charges; Physical Progress [1020 h]; TATA Projects Ltd-25 |  |
| E-GFC-Misc-LS-25 |  | Peer Reviewer Approval | 2d | 2027-01-27 | 2027-01-29 | E-GFC-Misc-LS-20 | CSD-LKO-Design (5 Day + Holiday)-25 | Design Consultnacy Charges; Physical Progress [1020 h]; Peer Reviewer-25 |  |
| E-GFC-Misc-LS-30 |  | TPL Design Team Approval | 2d | 2027-01-29 | 2027-02-02 | E-GFC-Misc-LS-25 | CSD-LKO-Design (5 Day + Holiday)-25 | Design Consultnacy Charges [3007125 INR]; Physical Progress [1020 h]; TATA Projects Ltd-25 | 3,007,125 |
| E-GFC-Misc-LS-35 |  | Issue of Hard Copy on Site | 4d | 2027-02-02 | 2027-02-08 | E-GFC-Misc-LS-30 | CSD-LKO-Design (5 Day + Holiday)-25 | Design Consultnacy Charges; Physical Progress [510 h]; TATA Projects Ltd-25 |  |
|  | 2 | **Kitchen/BOH** |  | 2026-10-29 | 2027-04-19 |  |  |  |  |
| E-GFC-Misc-Kitchen-10 |  | Drawings Preparation& Submission | 104.5d | 2026-10-29 | 2027-04-01 | E-DD-Misc-Kitchen-30 | CSD-LKO-Design (5 Day + Holiday)-25 | Design Consultnacy Charges; Physical Progress [31210 h]; TATA Projects Ltd-25 |  |
| E-GFC-Misc-Kitchen-15 |  | Domain Expert Approval | 2d | 2027-04-01 | 2027-04-05 | E-GFC-Misc-Kitchen-10 | CSD-LKO-Design (5 Day + Holiday)-25 | Design Consultnacy Charges; Physical Progress [1020 h]; TATA Projects Ltd-25 |  |
| E-GFC-Misc-Kitchen-20 |  | Executive Consultant Approval | 2d | 2027-04-05 | 2027-04-07 | E-GFC-Misc-Kitchen-15 | CSD-LKO-Design (5 Day + Holiday)-25 | Design Consultnacy Charges; Physical Progress [1020 h]; TATA Projects Ltd-25 |  |
| E-GFC-Misc-Kitchen-25 |  | Peer Reviewer Approval | 2d | 2027-04-07 | 2027-04-09 | E-GFC-Misc-Kitchen-20 | CSD-LKO-Design (5 Day + Holiday)-25 | Design Consultnacy Charges; Physical Progress [1020 h]; Peer Reviewer-25 |  |
| E-GFC-Misc-Kitchen-30 |  | TPL Design Team Approval | 2d | 2027-04-09 | 2027-04-13 | E-GFC-Misc-Kitchen-25 | CSD-LKO-Design (5 Day + Holiday)-25 | Design Consultnacy Charges [821009 INR]; Physical Progress [1020 h]; TATA Projects Ltd-25 | 821,009 |
| E-GFC-Misc-Kitchen-35 |  | Issue of Hard Copy on Site | 4d | 2027-04-13 | 2027-04-19 | E-GFC-Misc-Kitchen-30 | CSD-LKO-Design (5 Day + Holiday)-25 | Design Consultnacy Charges; Physical Progress [510 h]; TATA Projects Ltd-25 |  |

| ID | WBS | Activity | Duration | Start | Finish | Predecessors | Calendar | Resources | Cost |
| --- | --- | --- | --- | --- | --- | --- | --- | --- | --- |
|  | 4 | **IT/Secutity** |  | 2027-08-24 | 2027-12-01 |  |  |  |  |
| E-GFC-Misc-ICT/Security-10 |  | Drawings Preparation& Submission | 58d | 2027-08-24 | 2027-11-15 | E-DD-Misc-IT/Security-30 | CSD-LKO-Design (5 Day + Holiday)-25 | Design Consultnacy Charges; Physical Progress [30700 h]; TATA Projects Ltd-25 |  |
| E-GFC-Misc-ICT/Security-15 |  | Domain Expert Approval | 2d | 2027-11-15 | 2027-11-17 | E-GFC-Misc-ICT/Security-10 | CSD-LKO-Design (5 Day + Holiday)-25 | Design Consultnacy Charges; Physical Progress [1020 h]; TATA Projects Ltd-25 |  |
| E-GFC-Misc-ICT/Security-20 |  | Executive Consultant Approval | 2d | 2027-11-17 | 2027-11-19 | E-GFC-Misc-ICT/Security-15 | CSD-LKO-Design (5 Day + Holiday)-25 | Design Consultnacy Charges; Physical Progress [1020 h]; TATA Projects Ltd-25 |  |
| E-GFC-Misc-ICT/Security-25 |  | Peer Reviewer Approval | 2d | 2027-11-19 | 2027-11-23 | E-GFC-Misc-ICT/Security-20 | CSD-LKO-Design (5 Day + Holiday)-25 | Design Consultnacy Charges; Physical Progress [1020 h]; Peer Reviewer-25 |  |
| E-GFC-Misc-ICT/Security-30 |  | TPL Design Team Approval | 2d | 2027-11-23 | 2027-11-25 | E-GFC-Misc-ICT/Security-25 | CSD-LKO-Design (5 Day + Holiday)-25 | Design Consultnacy Charges [755090 INR]; Physical Progress [1020 h]; TATA Projects Ltd-25 | 755,090 |
| E-GFC-Misc-ICT/Security-35 |  | Issue of Hard Copy on Site | 4d | 2027-11-25 | 2027-12-01 | E-GFC-Misc-ICT/Security-30 | CSD-LKO-Design (5 Day + Holiday)-25 | Design Consultnacy Charges; Physical Progress [510 h]; TATA Projects Ltd-25 |  |
|  | 5 | **Accoustic & AV** |  | 2027-09-09 | 2027-12-16 |  |  |  |  |
| E-GFC-Misc-Accoustic/AV-10 |  | Drawings Preparation& Submission | 58d | 2027-09-09 | 2027-11-30 | E-DD-Misc-Accoustic/AV-30 | CSD-LKO-Design (5 Day + Holiday)-25 | Design Consultnacy Charges; Physical Progress [30700 h]; TATA Projects Ltd-25 |  |
| E-GFC-Misc-Accoustic/AV-15 |  | Domain Expert Approval | 2d | 2027-12-01 | 2027-12-02 | E-GFC-Misc-Accoustic/AV-10 | CSD-LKO-Design (5 Day + Holiday)-25 | Design Consultnacy Charges; Physical Progress [1020 h]; TATA Projects Ltd-25 |  |
| E-GFC-Misc-Accoustic/AV-20 |  | Executive Consultant Approval | 2d | 2027-12-03 | 2027-12-06 | E-GFC-Misc-Accoustic/AV-15 | CSD-LKO-Design (5 Day + Holiday)-25 | Design Consultnacy Charges; Physical Progress [1020 h]; TATA Projects Ltd-25 |  |
| E-GFC-Misc-Accoustic/AV-25 |  | Peer Reviewer Approval | 2d | 2027-12-07 | 2027-12-08 | E-GFC-Misc-Accoustic/AV-20 | CSD-LKO-Design (5 Day + Holiday)-25 | Design Consultnacy Charges; Physical Progress [1020 h]; Peer Reviewer-25 |  |
| E-GFC-Misc-Accoustic/AV-30 |  | TPL Design Team Approval | 2d | 2027-12-09 | 2027-12-10 | E-GFC-Misc-Accoustic/AV-25 | CSD-LKO-Design (5 Day + Holiday)-25 | Design Consultnacy Charges [392781 INR]; Physical Progress [1020 h]; TATA Projects Ltd-25 | 392,781 |
| E-GFC-Misc-Accoustic/AV-35 |  | Issue of Hard Copy on Site | 4d | 2027-12-13 | 2027-12-16 | E-GFC-Misc-Accoustic/AV-30 | CSD-LKO-Design (5 Day + Holiday)-25 | Design Consultnacy Charges; Physical Progress [510 h]; TATA Projects Ltd-25 |  |
|  | 3 | **Lighting** |  | 2027-09-09 | 2027-12-16 |  |  |  |  |
| E-GFC-Misc-Lighting-10 |  | Drawings Preparation& Submission | 58d | 2027-09-09 | 2027-11-30 | E-DD-Misc-Lighting-30 | CSD-LKO-Design (5 Day + Holiday)-25 | Design Consultnacy Charges; Physical Progress [30700 h]; TATA Projects Ltd-25 |  |
| E-GFC-Misc-Lighting-15 |  | Domain Expert Approval | 2d | 2027-12-01 | 2027-12-02 | E-GFC-Misc-Lighting-10 | CSD-LKO-Design (5 Day + Holiday)-25 | Design Consultnacy Charges; Physical Progress [1020 h]; TATA Projects Ltd-25 |  |
| E-GFC-Misc-Lighting-20 |  | Executive Consultant Approval | 2d | 2027-12-03 | 2027-12-06 | E-GFC-Misc-Lighting-15 | CSD-LKO-Design (5 Day + Holiday)-25 | Design Consultnacy Charges; Physical Progress [1020 h]; TATA Projects Ltd-25 |  |
| E-GFC-Misc-Lighting-25 |  | Peer Reviewer Approval | 2d | 2027-12-07 | 2027-12-08 | E-GFC-Misc-Lighting-20 | CSD-LKO-Design (5 Day + Holiday)-25 | Design Consultnacy Charges; Physical Progress [1020 h]; Peer Reviewer-25 |  |
| E-GFC-Misc-Lighting-30 |  | TPL Design Team Approval | 2d | 2027-12-09 | 2027-12-10 | E-GFC-Misc-Lighting-25 | CSD-LKO-Design (5 Day + Holiday)-25 | Design Consultnacy Charges [589236 INR]; Physical Progress [1020 h]; TATA Projects Ltd-25 | 589,236 |
| E-GFC-Misc-Lighting-35 |  | Issue of Hard Copy on Site | 4d | 2027-12-13 | 2027-12-16 | E-GFC-Misc-Lighting-30 | CSD-LKO-Design (5 Day + Holiday)-25 | Design Consultnacy Charges; Physical Progress [510 h]; TATA Projects Ltd-25 |  |
|  | 7 | **Signage** |  | 2026-11-18 | 2027-04-20 |  |  |  |  |
| E-GFC-Misc-Signage-10 |  | Drawings Preparation& Submission | 91d | 2026-11-18 | 2027-04-02 | E-DD-Misc-Signage-30 | CSD-LKO-Design (5 Day + Holiday)-25 | Design Consultnacy Charges; Physical Progress [41960 h]; TATA Projects Ltd-25 |  |
| E-GFC-Misc-Signage-15 |  | Domain Expert Approval | 2d | 2027-04-02 | 2027-04-06 | E-GFC-Misc-Signage-10 | CSD-LKO-Design (5 Day + Holiday)-25 | Design Consultnacy Charges; Physical Progress [1020 h]; TATA Projects Ltd-25 |  |
| E-GFC-Misc-Signage-20 |  | Executive Consultant Approval | 2d | 2027-04-06 | 2027-04-08 | E-GFC-Misc-Signage-15 | CSD-LKO-Design (5 Day + Holiday)-25 | Design Consultnacy Charges; Physical Progress [1020 h]; TATA Projects Ltd-25 |  |
| E-GFC-Misc-Signage-25 |  | Peer Reviewer Approval | 2d | 2027-04-08 | 2027-04-12 | E-GFC-Misc-Signage-20 | CSD-LKO-Design (5 Day + Holiday)-25 | Design Consultnacy Charges; Physical Progress [1020 h]; Peer Reviewer-25 |  |
| E-GFC-Misc-Signage-30 |  | TPL Design Team Approval | 2d | 2027-04-12 | 2027-04-14 | E-GFC-Misc-Signage-25 | CSD-LKO-Design (5 Day + Holiday)-25 | Design Consultnacy Charges [514493 INR]; Physical Progress [1020 h]; TATA Projects Ltd-25 | 514,493 |
| E-GFC-Misc-Signage-35 |  | Issue of Hard Copy on Site | 4d | 2027-04-14 | 2027-04-20 | E-GFC-Misc-Signage-30 | CSD-LKO-Design (5 Day + Holiday)-25 | Design Consultnacy Charges; Physical Progress [510 h]; TATA Projects Ltd-25 |  |

| ID | WBS | Activity | Duration | Start | Finish | Predecessors | Complete | Remaining | Planned start | Planned finish | Calendar | Resources |
| --- | --- | --- | --- | --- | --- | --- | --- | --- | --- | --- | --- | --- |
|  | 12 | **Shop Drawings** |  | 2026-05-11 | 2028-10-12 |  |  |  |  |  |  |  |
|  | 12 | **Civil work** |  | 2026-05-11 | 2027-08-10 |  |  |  |  |  |  |  |
|  | 4 | **Waterproofing** |  | 2026-06-12 | 2026-06-20 |  |  |  |  |  |  |  |
| E-ShopD-Civil-WP-10 |  | Preparation of Shop Drawings | 4d | 2026-06-12 A | 2026-06-17 A | P-Civil-WP-10 | 100% |  |  |  | CSD-LKO-Design (5 Day + Holiday)-25 | Design review coordination shop drawing BIM charges; Physical Progress [1300 h]; TATA Projects Ltd-25 |
| E-ShopD-Civil-WP-15 |  | Approval of Shop Drawings | 2d | 2026-06-18 A | 2026-06-20 A | E-ShopD-Civil-WP-10 | 100% |  | 2026-06-18 | 2026-06-19 | CSD-LKO-Design (5 Day + Holiday)-25 | Design review coordination shop drawing BIM charges; Physical Progress [860 h]; Adani Airport Holding Ltd.-25 |
|  | 5 | **PT Works** |  | 2026-05-11 | 2027-04-05 |  |  |  |  |  |  |  |
|  | 4 | **Common Basements** |  | 2026-05-11 | 2026-10-21 |  |  |  |  |  |  |  |
|  | 2 | **Basement 02** |  | 2026-05-11 | 2026-09-25 |  |  |  |  |  |  |  |
| E-ShopD-Civil-PT-CB-15 |  | Preparation of Shop Drawings | 92d | 2026-05-11 A | 2026-09-18 A | P-Civil-PT-10, E-GFC-ST-CB-110 SS | 100% |  | 2026-05-11 | 2026-09-17 | CSD-LKO-Design (5 Day + Holiday)-25 | Design review coordination shop drawing BIM charges; Physical Progress [10790 h]; TATA Projects Ltd-25 |
| E-ShopD-Civil-PT-CB-30 |  | Approval of Shop Drawings | 5d | 2026-09-19 A | 2026-09-25 A | E-ShopD-Civil-PT-CB-15 | 100% |  | 2026-09-21 | 2026-09-25 | CSD-LKO-Design (5 Day + Holiday)-25 | Design review coordination shop drawing BIM charges; Physical Progress [4320 h]; Adani Airport Holding Ltd.-25 |
|  | 1 | **Basement 01** |  | 2026-05-11 | 2026-10-15 |  |  |  |  |  |  |  |
| E-ShopD-Civil-PT-CB-10 |  | Preparation of Shop Drawings | 96.31d | 2026-05-11 A | 2026-09-24 A | E-GFC-ST-CB-115 SS | 100% |  |  |  | CSD-LKO-Design (5 Day + Holiday)-25 | Design review coordination shop drawing BIM charges; Physical Progress [10790 h]; TATA Projects Ltd-25 |
| E-ShopD-Civil-PT-CB-20 |  | Approval of Shop Drawings | 10d | 2026-09-30 | 2026-10-15 | E-ShopD-Civil-PT-CB-10 SS+15d |  |  |  |  | CSD-LKO-Design (5 Day + Holiday)-25 | Design review coordination shop drawing BIM charges; Physical Progress [4320 h]; Adani Airport Holding Ltd.-25 |
|  | 3 | **GF** |  | 2026-05-28 | 2026-10-21 |  |  |  |  |  |  |  |
| E-ShopD-Civil-PT-CB-25 |  | Preparation of Shop Drawings | 101.4d | 2026-05-28 A | 2026-10-21 | E-GFC-ST-CB-150 FF | 50% | 12.5d |  |  | CSD-LKO-Design (5 Day + Holiday)-25 | Design review coordination shop drawing BIM charges; Physical Progress [10790 h]; TATA Projects Ltd-25 |
| E-ShopD-Civil-PT-CB-35 |  | Approval of Shop Drawings | 10d | 2026-09-30 | 2026-10-15 | E-ShopD-Civil-PT-CB-25 SS+15d |  |  |  |  | CSD-LKO-Design (5 Day + Holiday)-25 | Design review coordination shop drawing BIM charges; Physical Progress [4320 h]; Adani Airport Holding Ltd.-25 |
|  | 1 | **Hotel 4 Star** |  | 2026-06-08 | 2027-03-05 |  |  |  |  |  |  |  |
|  | 2 | **First Floor to Service Floor** |  | 2026-06-08 | 2026-11-27 |  |  |  |  |  |  |  |
| E-ShopD-Civil-PT-4S-10 |  | Preparation of Shop Drawings | 121.22d | 2026-06-08 A | 2026-11-27 | E-GFC-ST-4S-90 FF | 30% | 17.5d |  |  | CSD-LKO-Design (5 Day + Holiday)-25 | Design review coordination shop drawing BIM charges; Physical Progress [10790 h]; TATA Projects Ltd-25 |
| E-ShopD-Civil-PT-4S-15 |  | Approval of Shop Drawings | 10d | 2026-11-03 | 2026-11-17 | E-ShopD-Civil-PT-4S-10 SS+15d |  |  |  |  | CSD-LKO-Design (5 Day + Holiday)-25 | Design review coordination shop drawing BIM charges; Physical Progress [4320 h]; Adani Airport Holding Ltd.-25 |
|  | 1 | **Second Floor to Terrace** |  | 2027-01-29 | 2027-03-05 |  |  |  |  |  |  |  |
| E-ShopD-Civil-PT-4S-20 |  | Preparation of Shop Drawings | 25d | 2027-01-29 | 2027-03-05 | E-GFC-ST-4S-240 |  |  |  |  | CSD-LKO-Design (5 Day + Holiday)-25 | Design review coordination shop drawing BIM charges; Physical Progress [10790 h]; TATA Projects Ltd-25 |
| E-ShopD-Civil-PT-4S-25 |  | Approval of Shop Drawings | 10d | 2027-02-19 | 2027-03-05 | E-ShopD-Civil-PT-4S-20 SS+15d |  |  |  |  | CSD-LKO-Design (5 Day + Holiday)-25 | Design review coordination shop drawing BIM charges; Physical Progress [4320 h]; Adani Airport Holding Ltd.-25 |
|  | 2 | **Hotel 3 Star** |  | 2026-06-08 | 2027-03-25 |  |  |  |  |  |  |  |
|  | 2 | **First Floor to Service Floor** |  | 2026-06-08 | 2026-12-04 |  |  |  |  |  |  |  |
| E-ShopD-Civil-PT-3S-10 |  | Preparation of Shop Drawings | 126.22d | 2026-06-08 A | 2026-12-04 | E-GFC-ST-3S-95 FF | 30% | 17.5d |  |  | CSD-LKO-Design (5 Day + Holiday)-25 | Design review coordination shop drawing BIM charges; Physical Progress [10790 h]; TATA Projects Ltd-25 |
| E-ShopD-Civil-PT-3S-15 |  | Approval of Shop Drawings | 10d | 2026-11-10 | 2026-11-24 | E-ShopD-Civil-PT-3S-10 SS+15d |  |  |  |  | CSD-LKO-Design (5 Day + Holiday)-25 | Design review coordination shop drawing BIM charges; Physical Progress [4320 h]; Adani Airport Holding Ltd.-25 |

Notes:
- E-ShopD-Civil-WP-10: Notes: This is for Foundation Area only.

| ID | WBS | Activity | Duration | Start | Finish | Predecessors | Calendar | Resources |
| --- | --- | --- | --- | --- | --- | --- | --- | --- |
|  | 1 | **Second Floor to Terrace** |  | 2027-02-16 | 2027-03-25 |  |  |  |
| E-ShopD-Civil-PT-3S-20 |  | Preparation of Shop Drawings | 25d | 2027-02-16 | 2027-03-25 | E-GFC-ST-3S-260 | CSD-LKO-Design (5 Day + Holiday)-25 | Design review coordination shop drawing BIM charges; Physical Progress [10790 h]; TATA Projects Ltd-25 |
| E-ShopD-Civil-PT-3S-25 |  | Approval of Shop Drawings | 10d | 2027-03-09 | 2027-03-25 | E-ShopD-Civil-PT-3S-20 SS+15d | CSD-LKO-Design (5 Day + Holiday)-25 | Design review coordination shop drawing BIM charges; Physical Progress [4320 h]; Adani Airport Holding Ltd.-25 |
|  | 3 | **Retail Block 2** |  | 2027-01-07 | 2027-04-05 |  |  |  |
|  | 2 | **First Floor to Third Floor** |  | 2027-01-07 | 2027-02-12 |  |  |  |
| E-ShopD-Civil-PT-RB2-10 |  | Preparation of Shop Drawings | 25d | 2027-01-07 | 2027-02-12 | E-GFC-ST-RB2-105 | CSD-LKO-Design (5 Day + Holiday)-25 | Design review coordination shop drawing BIM charges; Physical Progress [10790 h]; TATA Projects Ltd-25 |
| E-ShopD-Civil-PT-RB2-15 |  | Approval of Shop Drawings | 10d | 2027-01-29 | 2027-02-12 | E-ShopD-Civil-PT-RB2-10 SS+15d | CSD-LKO-Design (5 Day + Holiday)-25 | Design review coordination shop drawing BIM charges; Physical Progress [4320 h]; Adani Airport Holding Ltd.-25 |
|  | 1 | **Fourth Floor to Terrace** |  | 2027-02-24 | 2027-04-05 |  |  |  |
| E-ShopD-Civil-PT-RB2-20 |  | Preparation of Shop Drawings | 25d | 2027-02-24 | 2027-04-05 | E-GFC-ST-RB2-220 | CSD-LKO-Design (5 Day + Holiday)-25 | Design review coordination shop drawing BIM charges; Physical Progress [10790 h]; TATA Projects Ltd-25 |
| E-ShopD-Civil-PT-RB2-25 |  | Approval of Shop Drawings | 10d | 2027-03-18 | 2027-04-05 | E-ShopD-Civil-PT-RB2-20 SS+15d | CSD-LKO-Design (5 Day + Holiday)-25 | Design review coordination shop drawing BIM charges; Physical Progress [4320 h]; Adani Airport Holding Ltd.-25 |
|  | 5 | **Retail Block 1** |  | 2026-12-30 | 2027-02-25 |  |  |  |
|  | 2 | **First Floor to Third Floor** |  | 2026-12-30 | 2027-02-05 |  |  |  |
| E-ShopD-Civil-PT-RB1-10 |  | Preparation of Shop Drawings | 25d | 2026-12-30 | 2027-02-05 | E-GFC-ST-RB1-95 | CSD-LKO-Design (5 Day + Holiday)-25 | Design review coordination shop drawing BIM charges; Physical Progress [10790 h]; TATA Projects Ltd-25 |
| E-ShopD-Civil-PT-RB1-15 |  | Approval of Shop Drawings | 10d | 2027-01-21 | 2027-02-05 | E-ShopD-Civil-PT-RB1-10 SS+15d | CSD-LKO-Design (5 Day + Holiday)-25 | Design review coordination shop drawing BIM charges; Physical Progress [4320 h]; Adani Airport Holding Ltd.-25 |
|  | 1 | **Fourth Floor to Terrace** |  | 2027-01-20 | 2027-02-25 |  |  |  |
| E-ShopD-Civil-PT-RB1-20 |  | Preparation of Shop Drawings | 25d | 2027-01-20 | 2027-02-25 | E-GFC-ST-RB1-170 | CSD-LKO-Design (5 Day + Holiday)-25 | Design review coordination shop drawing BIM charges; Physical Progress [10790 h]; TATA Projects Ltd-25 |
| E-ShopD-Civil-PT-RB1-25 |  | Approval of Shop Drawings | 10d | 2027-02-11 | 2027-02-25 | E-ShopD-Civil-PT-RB1-20 SS+15d | CSD-LKO-Design (5 Day + Holiday)-25 | Design review coordination shop drawing BIM charges; Physical Progress [4320 h]; Adani Airport Holding Ltd.-25 |
|  | 6 | **Convention Center** |  | 2026-12-22 | 2027-03-01 |  |  |  |
|  | 2 | **First Mezzanine to First Floor** |  | 2026-12-22 | 2027-01-29 |  |  |  |
| E-ShopD-Civil-PT-CC-10 |  | Preparation of Shop Drawings | 25d | 2026-12-22 | 2027-01-29 | E-GFC-ST-CC-90 | CSD-LKO-Design (5 Day + Holiday)-25 | Design review coordination shop drawing BIM charges; Physical Progress [10790 h]; TATA Projects Ltd-25 |
| E-ShopD-Civil-PT-CC-15 |  | Approval of Shop Drawings | 10d | 2027-01-14 | 2027-01-29 | E-ShopD-Civil-PT-CC-10 SS+15d | CSD-LKO-Design (5 Day + Holiday)-25 | Design review coordination shop drawing BIM charges; Physical Progress [4320 h]; Adani Airport Holding Ltd.-25 |
|  | 1 | **Third Mezzanine to Terrace** |  | 2027-01-22 | 2027-03-01 |  |  |  |
| E-ShopD-Civil-PT-CC-20 |  | Preparation of Shop Drawings | 25d | 2027-01-22 | 2027-03-01 | E-GFC-ST-CC-195 | CSD-LKO-Design (5 Day + Holiday)-25 | Design review coordination shop drawing BIM charges; Physical Progress [10790 h]; TATA Projects Ltd-25 |
| E-ShopD-Civil-PT-CC-25 |  | Approval of Shop Drawings | 10d | 2027-02-15 | 2027-03-01 | E-ShopD-Civil-PT-CC-20 SS+15d | CSD-LKO-Design (5 Day + Holiday)-25 | Design review coordination shop drawing BIM charges; Physical Progress [4320 h]; Adani Airport Holding Ltd.-25 |

| ID | WBS | Activity | Duration | Start | Finish | Predecessors | Complete | Remaining | Calendar | Resources |
| --- | --- | --- | --- | --- | --- | --- | --- | --- | --- | --- |
|  | 1 | **Structural steel** |  | 2026-11-25 | 2027-03-08 |  |  |  |  |  |
| E-ShopD-Civil-SS-10 |  | Preparation of Shop Drawings | 60d | 2026-11-25 | 2027-02-22 | P-Civil-SS-10 |  |  | CSD-LKO-Design (5 Day + Holiday)-25 | Design review coordination shop drawing BIM charges; Physical Progress [25910 h]; TATA Projects Ltd-25 |
| E-ShopD-Civil-SS-15 |  | Approval of Shop Drawings | 10d | 2027-02-22 | 2027-03-08 | E-ShopD-Civil-SS-10 |  |  | CSD-LKO-Design (5 Day + Holiday)-25 | Design review coordination shop drawing BIM charges; Physical Progress [4320 h]; Adani Airport Holding Ltd.-25 |
|  | 3 | **Expansion Joint** |  | 2027-05-04 | 2027-08-10 |  |  |  |  |  |
| E-ShopD-Civil-EP-10 |  | Preparation of Shop Drawings | 60d | 2027-05-04 | 2027-07-27 | P-Civil-EP-10, E-GFC-ST-CC-215 |  |  | CSD-LKO-Design (5 Day + Holiday)-25 | Design review coordination shop drawing BIM charges; Physical Progress [25910 h]; TATA Projects Ltd-25 |
| E-ShopD-Civil-EP-15 |  | Approval of Shop Drawings | 10d | 2027-07-27 | 2027-08-10 | E-ShopD-Civil-EP-10 |  |  | CSD-LKO-Design (5 Day + Holiday)-25 | Design review coordination shop drawing BIM charges; Physical Progress [4320 h]; Adani Airport Holding Ltd.-25 |
|  | 1 | **MEP Work** |  | 2026-06-22 | 2027-08-27 |  |  |  |  |  |
|  | 3 | **LPS** |  | 2026-06-22 | 2026-10-07 |  |  |  |  |  |
| E-ShopD-MEP-LPS-10 |  | Preparation of Shop Drawings | 73.9d | 2026-06-22 A | 2026-10-05 | P-MEP-LPS-10 | 50% | 2d | CSD-LKO-Design (5 Day + Holiday)-25 | Design review coordination shop drawing BIM charges; Physical Progress [1730 h]; TATA Projects Ltd-25 |
| E-ShopD-MEP-LPS-15 |  | Approval of Shop Drawings | 2d | 2026-10-05 | 2026-10-07 | E-ShopD-MEP-LPS-10 |  |  | CSD-LKO-Design (5 Day + Holiday)-25 | Design review coordination shop drawing BIM charges; Physical Progress [860 h]; Adani Airport Holding Ltd.-25 |
|  | 2 | **Electrical** |  | 2027-04-19 | 2027-07-09 |  |  |  |  |  |
| E-ShopD-MEP-Elec-10 |  | Preparation of Shop Drawings | 50d | 2027-04-19 | 2027-06-25 | P-MEP-Elec-10, E-GFC-MEP-CC-180, E-ShopD-MEP-LPS-15 FF |  |  | CSD-LKO-Design (5 Day + Holiday)-25 | Design review coordination shop drawing BIM charges; Physical Progress [21580 h]; TATA Projects Ltd-25 |
| E-ShopD-MEP-Elec-15 |  | Approval of Shop Drawings | 10d | 2027-06-28 | 2027-07-09 | E-ShopD-MEP-Elec-10 |  |  | CSD-LKO-Design (5 Day + Holiday)-25 | Design review coordination shop drawing BIM charges; Physical Progress [4320 h]; Adani Airport Holding Ltd.-25 |
|  | 9 | **Plumbing** |  | 2027-04-19 | 2027-07-09 |  |  |  |  |  |
| E-ShopD-MEP-Plumb-10 |  | Preparation of Shop Drawings | 50d | 2027-04-19 | 2027-06-25 | P-MEP-Plumb-10, E-GFC-MEP-CC-180 |  |  | CSD-LKO-Design (5 Day + Holiday)-25 | Design review coordination shop drawing BIM charges; Physical Progress [21590 h]; TATA Projects Ltd-25 |
| E-ShopD-MEP-Plumb-15 |  | Approval of Shop Drawings | 10d | 2027-06-28 | 2027-07-09 | E-ShopD-MEP-Plumb-10 |  |  | CSD-LKO-Design (5 Day + Holiday)-25 | Design review coordination shop drawing BIM charges; Physical Progress [4320 h]; Adani Airport Holding Ltd.-25 |
|  | 6 | **Firefighting** |  | 2027-04-19 | 2027-07-09 |  |  |  |  |  |
| E-ShopD-MEP-FF-10 |  | Preparation of Shop Drawings | 50d | 2027-04-19 | 2027-06-25 | P-MEP-FF-10, E-GFC-MEP-CC-180 |  |  | CSD-LKO-Design (5 Day + Holiday)-25 | Design review coordination shop drawing BIM charges; Physical Progress [21590 h]; TATA Projects Ltd-25 |
| E-ShopD-MEP-FF-15 |  | Approval of Shop Drawings | 10d | 2027-06-28 | 2027-07-09 | E-ShopD-MEP-FF-10 |  |  | CSD-LKO-Design (5 Day + Holiday)-25 | Design review coordination shop drawing BIM charges; Physical Progress [4320 h]; Adani Airport Holding Ltd.-25 |
|  | 4 | **HVAC** |  | 2027-04-19 | 2027-07-09 |  |  |  |  |  |
| E-ShopD-MEP-HVAC-10 |  | Preparation of Shop Drawings | 50d | 2027-04-19 | 2027-06-25 | P-MEP-HVAC-10, E-GFC-MEP-CC-180 |  |  | CSD-LKO-Design (5 Day + Holiday)-25 | Design review coordination shop drawing BIM charges; Physical Progress [21580 h]; TATA Projects Ltd-25 |
| E-ShopD-MEP-HVAC-15 |  | Approval of Shop Drawings | 10d | 2027-06-28 | 2027-07-09 | E-ShopD-MEP-HVAC-10 |  |  | CSD-LKO-Design (5 Day + Holiday)-25 | Design review coordination shop drawing BIM charges; Physical Progress [4320 h]; Adani Airport Holding Ltd.-25 |
|  | 5 | **ELV** |  | 2027-04-19 | 2027-07-09 |  |  |  |  |  |
| E-ShopD-MEP-ELV-10 |  | Preparation of Shop Drawings | 50d | 2027-04-19 | 2027-06-25 | P-MEP-ELV-10, E-GFC-MEP-CC-180 |  |  | CSD-LKO-Design (5 Day + Holiday)-25 | Design review coordination shop drawing BIM charges; Physical Progress [21590 h]; TATA Projects Ltd-25 |
| E-ShopD-MEP-ELV-15 |  | Approval of Shop Drawings | 10d | 2027-06-28 | 2027-07-09 | E-ShopD-MEP-ELV-10 |  |  | CSD-LKO-Design (5 Day + Holiday)-25 | Design review coordination shop drawing BIM charges; Physical Progress [4320 h]; Adani Airport Holding Ltd.-25 |

| ID | WBS | Activity | Duration | Start | Finish | Predecessors | Calendar | Resources |
| --- | --- | --- | --- | --- | --- | --- | --- | --- |
|  | 12 | **STP/ETP** |  | 2026-10-27 | 2026-11-17 |  |  |  |
| E-ShopD-MEP-STP-10 |  | Preparation of Shop Drawings | 10d | 2026-10-27 | 2026-11-10 | P-MEP-STP-10 | CSD-LKO-Design (5 Day + Holiday)-25 | Design review coordination shop drawing BIM charges; Physical Progress [12950 h]; TATA Projects Ltd-25 |
| E-ShopD-MEP-STP-15 |  | Approval of Shop Drawings | 5d | 2026-11-10 | 2026-11-17 | E-ShopD-MEP-STP-10 | CSD-LKO-Design (5 Day + Holiday)-25 | Design review coordination shop drawing BIM charges; Physical Progress [4320 h]; Adani Airport Holding Ltd.-25 |
|  | 11 | **ACO Drain** |  | 2027-07-16 | 2027-08-27 |  |  |  |
| E-ShopD-MEP-ACO-10 |  | Preparation of Shop Drawings | 20d | 2027-07-16 | 2027-08-13 | P-MEP-ACO-10, E-GFC-MEP-CC-180 | CSD-LKO-Design (5 Day + Holiday)-25 | Design review coordination shop drawing BIM charges; Physical Progress [8640 h]; TATA Projects Ltd-25 |
| E-ShopD-MEP-ACO-15 |  | Approval of Shop Drawings | 10d | 2027-08-13 | 2027-08-27 | E-ShopD-MEP-ACO-10 | CSD-LKO-Design (5 Day + Holiday)-25 | Design review coordination shop drawing BIM charges; Physical Progress [4320 h]; Adani Airport Holding Ltd.-25 |
|  | 1 | **Vertical Transport** |  | 2026-12-29 | 2027-02-25 |  |  |  |
| E-ShopD-MEP-VT-10 |  | Preparation of Shop Drawings | 30d | 2026-12-29 | 2027-02-11 | P-MEP-VT-10, E-Tender-10, E-DD-Misc-VT-30 | CSD-LKO-Design (5 Day + Holiday)-25 | Design review coordination shop drawing BIM charges; Physical Progress [12950 h]; TATA Projects Ltd-25 |
| E-ShopD-MEP-VT-15 |  | Approval of Shop Drawings | 10d | 2027-02-11 | 2027-02-25 | E-ShopD-MEP-VT-10 | CSD-LKO-Design (5 Day + Holiday)-25 | Design Consultnacy Charges; Physical Progress [4320 h]; Adani Airport Holding Ltd.-25 |
|  | 18 | **Kitchen Equipments** |  | 2027-03-31 | 2027-06-23 |  |  |  |
| E-ShopD-MEP-Kitchen-10 |  | Preparation of Shop Drawings | 50d | 2027-03-31 | 2027-06-09 | P-MEP-KE-10, E-Tender-40 | CSD-LKO-Design (5 Day + Holiday)-25 | Design review coordination shop drawing BIM charges; Physical Progress [21590 h]; TATA Projects Ltd-25 |
| E-ShopD-MEP-Kitchen-15 |  | Approval of Shop Drawings | 10d | 2027-06-09 | 2027-06-23 | E-ShopD-MEP-Kitchen-10 | CSD-LKO-Design (5 Day + Holiday)-25 | Design review coordination shop drawing BIM charges; Physical Progress [4320 h]; Adani Airport Holding Ltd.-25 |
|  | 8 | **ICT/Security** |  | 2027-03-31 | 2027-06-23 |  |  |  |
| E-ShopD-MEP-ICT/Security-10 |  | Preparation of Shop Drawings | 50d | 2027-03-31 | 2027-06-09 | P-MEP-ICT/Security-10 | CSD-LKO-Design (5 Day + Holiday)-25 | Design review coordination shop drawing BIM charges; Physical Progress [21590 h]; TATA Projects Ltd-25 |
| E-ShopD-MEP-ICT/Security-15 |  | Approval of Shop Drawings | 10d | 2027-06-09 | 2027-06-23 | E-ShopD-MEP-ICT/Security-10 | CSD-LKO-Design (5 Day + Holiday)-25 | Design review coordination shop drawing BIM charges; Physical Progress [4320 h]; Adani Airport Holding Ltd.-25 |
|  | 7 | **BMS** |  | 2027-03-31 | 2027-06-23 |  |  |  |
| E-ShopD-MEP-BMS-10 |  | Preparation of Shop Drawings | 50d | 2027-03-31 | 2027-06-09 | P-MEP-BMS-10, E-GFC-MEP-CC-180 | CSD-LKO-Design (5 Day + Holiday)-25 | Design review coordination shop drawing BIM charges; Physical Progress [21590 h]; TATA Projects Ltd-25 |
| E-ShopD-MEP-BMS-15 |  | Approval of Shop Drawings | 10d | 2027-06-09 | 2027-06-23 | E-ShopD-MEP-BMS-10 | CSD-LKO-Design (5 Day + Holiday)-25 | Design review coordination shop drawing BIM charges; Physical Progress [4320 h]; Adani Airport Holding Ltd.-25 |
|  | 2 | **Finishes/ID Work - Retail & Office** |  | 2027-11-24 | 2028-01-27 |  |  |  |
|  | 8 | **Furniture** |  | 2027-11-24 | 2028-01-27 |  |  |  |
| E-ShopD-ID_R&O-Fur-10 |  | Preparation of Shop Drawings | 35d | 2027-11-24 | 2028-01-12 | P-R&O_ID-Fur-10, E-GFC-ID-R&O-35 | CSD-LKO-Design (5 Day + Holiday)-25 | Design review coordination shop drawing BIM charges; Physical Progress [17270 h]; TATA Projects Ltd-25 |
| E-ShopD-ID_R&O-Fur-15 |  | Approval of Shop Drawings | 10d | 2028-01-12 | 2028-01-27 | E-ShopD-ID_R&O-Fur-10 | CSD-LKO-Design (5 Day + Holiday)-25 | Design review coordination shop drawing BIM charges; Physical Progress [4320 h]; Adani Airport Holding Ltd.-25 |
|  | 7 | **Wall Cladding** |  | 2027-11-24 | 2028-01-27 |  |  |  |
| E-ShopD-ID_R&O-Wall-10 |  | Preparation of Shop Drawings | 35d | 2027-11-24 | 2028-01-12 | P-R&O_ID-Wall-10, E-GFC-ID-R&O-35 | CSD-LKO-Design (5 Day + Holiday)-25 | Design review coordination shop drawing BIM charges; Physical Progress [17270 h]; TATA Projects Ltd-25 |
| E-ShopD-ID_R&O-Wall-15 |  | Approval of Shop Drawings | 10d | 2028-01-12 | 2028-01-27 | E-ShopD-ID_R&O-Wall-10 | CSD-LKO-Design (5 Day + Holiday)-25 | Design review coordination shop drawing BIM charges; Physical Progress [4320 h]; Adani Airport Holding Ltd.-25 |

| ID | WBS | Activity | Duration | Start | Finish | Predecessors | Calendar | Resources |
| --- | --- | --- | --- | --- | --- | --- | --- | --- |
|  | 6 | **ID Flooring** |  | 2027-11-24 | 2028-01-27 |  |  |  |
| E-ShopD-ID_R&O-Floor-10 |  | Preparation of Shop Drawings | 35d | 2027-11-24 | 2028-01-12 | P-R&O_ID-Floor-10, E-GFC-ID-R&O-35 | CSD-LKO-Design (5 Day + Holiday)-25 | Design review coordination shop drawing BIM charges; Physical Progress [17270 h]; TATA Projects Ltd-25 |
| E-ShopD-ID_R&O-Floor-15 |  | Approval of Shop Drawings | 10d | 2028-01-12 | 2028-01-27 | E-ShopD-ID_R&O-Floor-10 | CSD-LKO-Design (5 Day + Holiday)-25 | Design review coordination shop drawing BIM charges; Physical Progress [4320 h]; Adani Airport Holding Ltd.-25 |
|  | 4 | **Soft Furnishing** |  | 2027-11-24 | 2028-01-27 |  |  |  |
| E-ShopD-ID_R&O-SF-10 |  | Preparation of Shop Drawings | 35d | 2027-11-24 | 2028-01-12 | P-R&O_ID-SF-10, E-GFC-ID-R&O-35 | CSD-LKO-Design (5 Day + Holiday)-25 | Design review coordination shop drawing BIM charges; Physical Progress [17270 h]; TATA Projects Ltd-25 |
| E-ShopD-ID_R&O-SF-15 |  | Approval of Shop Drawings | 10d | 2028-01-12 | 2028-01-27 | E-ShopD-ID_R&O-SF-10 | CSD-LKO-Design (5 Day + Holiday)-25 | Design review coordination shop drawing BIM charges; Physical Progress [4320 h]; Adani Airport Holding Ltd.-25 |
|  | 3 | **False Ceiling** |  | 2027-11-24 | 2028-01-27 |  |  |  |
| E-ShopD-ID_R&O-FC-10 |  | Preparation of Shop Drawings | 35d | 2027-11-24 | 2028-01-12 | P-R&O_ID-FC-10, E-GFC-ID-R&O-35 | CSD-LKO-Design (5 Day + Holiday)-25 | Design review coordination shop drawing BIM charges; Physical Progress [17270 h]; TATA Projects Ltd-25 |
| E-ShopD-ID_R&O-FC-15 |  | Approval of Shop Drawings | 10d | 2028-01-12 | 2028-01-27 | E-ShopD-ID_R&O-FC-10 | CSD-LKO-Design (5 Day + Holiday)-25 | Design review coordination shop drawing BIM charges; Physical Progress [4320 h]; Adani Airport Holding Ltd.-25 |
|  | 2 | **Doors** |  | 2027-11-24 | 2028-01-27 |  |  |  |
| E-ShopD-ID_R&O-Doors-10 |  | Preparation of Shop Drawings | 35d | 2027-11-24 | 2028-01-12 | P-R&O_ID-Doors-10, E-GFC-ID-R&O-35 | CSD-LKO-Design (5 Day + Holiday)-25 | Design review coordination shop drawing BIM charges; Physical Progress [17270 h]; TATA Projects Ltd-25 |
| E-ShopD-ID_R&O-Doors-15 |  | Approval of Shop Drawings | 10d | 2028-01-12 | 2028-01-27 | E-ShopD-ID_R&O-Doors-10 | CSD-LKO-Design (5 Day + Holiday)-25 | Design review coordination shop drawing BIM charges; Physical Progress [4320 h]; Adani Airport Holding Ltd.-25 |
|  | 4 | **Finishes/ID Work - Hotel & CC** |  | 2027-12-17 | 2028-02-18 |  |  |  |
|  | 8 | **Furniture** |  | 2027-12-17 | 2028-02-18 |  |  |  |
| E-ShopD-ID_H&CC-Fur-10 |  | Preparation of Shop Drawings | 35d | 2027-12-17 | 2028-02-04 | E-GFC-ID-H&CC-35 | CSD-LKO-Design (5 Day + Holiday)-25 | Design review coordination shop drawing BIM charges; Physical Progress [17270 h]; TATA Projects Ltd-25 |
| E-ShopD-ID_H&CC-Fur-15 |  | Approval of Shop Drawings | 10d | 2028-02-07 | 2028-02-18 | E-ShopD-ID_H&CC-Fur-10 | CSD-LKO-Design (5 Day + Holiday)-25 | Design review coordination shop drawing BIM charges; Physical Progress [4320 h]; Adani Airport Holding Ltd.-25 |
|  | 7 | **Wall Cladding** |  | 2027-12-17 | 2028-02-18 |  |  |  |
| E-ShopD-ID_H&CC-Wall-10 |  | Preparation of Shop Drawings | 35d | 2027-12-17 | 2028-02-04 | E-GFC-ID-H&CC-35 | CSD-LKO-Design (5 Day + Holiday)-25 | Design review coordination shop drawing BIM charges; Physical Progress [17270 h]; TATA Projects Ltd-25 |
| E-ShopD-ID_H&CC-Wall-15 |  | Approval of Shop Drawings | 10d | 2028-02-07 | 2028-02-18 | E-ShopD-ID_H&CC-Wall-10 | CSD-LKO-Design (5 Day + Holiday)-25 | Design review coordination shop drawing BIM charges; Physical Progress [4320 h]; Adani Airport Holding Ltd.-25 |
|  | 6 | **ID Flooring** |  | 2027-12-17 | 2028-02-18 |  |  |  |
| E-ShopD-ID_H&CC-Floor-10 |  | Preparation of Shop Drawings | 35d | 2027-12-17 | 2028-02-04 | E-GFC-ID-H&CC-35 | CSD-LKO-Design (5 Day + Holiday)-25 | Design review coordination shop drawing BIM charges; Physical Progress [17270 h]; TATA Projects Ltd-25 |
| E-ShopD-ID_H&CC-Floor-15 |  | Approval of Shop Drawings | 10d | 2028-02-07 | 2028-02-18 | E-ShopD-ID_H&CC-Floor-10 | CSD-LKO-Design (5 Day + Holiday)-25 | Design review coordination shop drawing BIM charges; Physical Progress [4320 h]; Adani Airport Holding Ltd.-25 |
|  | 4 | **Soft Furnishing** |  | 2027-12-17 | 2028-02-18 |  |  |  |
| E-ShopD-ID_H&CC-SF-10 |  | Preparation of Shop Drawings | 35d | 2027-12-17 | 2028-02-04 | E-GFC-ID-H&CC-35 | CSD-LKO-Design (5 Day + Holiday)-25 | Design review coordination shop drawing BIM charges; Physical Progress [17270 h]; TATA Projects Ltd-25 |
| E-ShopD-ID_H&CC-SF-15 |  | Approval of Shop Drawings | 10d | 2028-02-07 | 2028-02-18 | E-ShopD-ID_H&CC-SF-10 | CSD-LKO-Design (5 Day + Holiday)-25 | Design review coordination shop drawing BIM charges; Physical Progress [4320 h]; Adani Airport Holding Ltd.-25 |

| ID | WBS | Activity | Duration | Start | Finish | Predecessors | Calendar | Resources |
| --- | --- | --- | --- | --- | --- | --- | --- | --- |
|  | 3 | **False Ceiling** |  | 2027-12-17 | 2028-02-18 |  |  |  |
| E-ShopD-ID_H&CC-FC-10 |  | Preparation of Shop Drawings | 35d | 2027-12-17 | 2028-02-04 | E-GFC-ID-H&CC-35 | CSD-LKO-Design (5 Day + Holiday)-25 | Design review coordination shop drawing BIM charges; Physical Progress [17270 h]; TATA Projects Ltd-25 |
| E-ShopD-ID_H&CC-FC-15 |  | Approval of Shop Drawings | 10d | 2028-02-07 | 2028-02-18 | E-ShopD-ID_H&CC-FC-10 | CSD-LKO-Design (5 Day + Holiday)-25 | Design review coordination shop drawing BIM charges; Physical Progress [4320 h]; Adani Airport Holding Ltd.-25 |
|  | 2 | **Doors** |  | 2027-12-17 | 2028-02-18 |  |  |  |
| E-ShopD-ID_H&CC-Doors-10 |  | Preparation of Shop Drawings | 35d | 2027-12-17 | 2028-02-04 | E-GFC-ID-H&CC-35 | CSD-LKO-Design (5 Day + Holiday)-25 | Design review coordination shop drawing BIM charges; Physical Progress [17270 h]; TATA Projects Ltd-25 |
| E-ShopD-ID_H&CC-Doors-15 |  | Approval of Shop Drawings | 10d | 2028-02-07 | 2028-02-18 | E-ShopD-ID_H&CC-Doors-10 | CSD-LKO-Design (5 Day + Holiday)-25 | Design review coordination shop drawing BIM charges; Physical Progress [4320 h]; Adani Airport Holding Ltd.-25 |
|  | 7 | **Facade** |  | 2027-05-17 | 2027-09-21 |  |  |  |
|  | 1 | **Glass Facade** |  | 2027-05-17 | 2027-09-03 |  |  |  |
| E-ShopD-F-Glass-10 |  | Preparation of Shop Drawings | 70d | 2027-05-17 | 2027-08-20 | P-F-Glass-10, Mock Up-F-Glass-15, E-DD-F-CC-30, E-DD-F-RB2-30, E-DD-F-RB1-30, E-DD-F-3S-30, E-DD-F-4S-30 | CSD-LKO-Design (5 Day + Holiday)-25 | Design review coordination shop drawing BIM charges; Physical Progress [30230 h]; TATA Projects Ltd-25 |
| E-ShopD-F-Glass-15 |  | Approval of Shop Drawings | 10d | 2027-08-23 | 2027-09-03 | E-ShopD-F-Glass-10 | CSD-LKO-Design (5 Day + Holiday)-25 | Design Consultnacy Charges; Physical Progress [4320 h]; Adani Airport Holding Ltd.-25 |
|  | 2 | **FRP Facade** |  | 2027-06-01 | 2027-09-21 |  |  |  |
| E-ShopD-F-FRP-10 |  | Preparation of Shop Drawings | 70d | 2027-06-01 | 2027-09-07 | P-F-FRP-10, Mock Up-F-FRP-15, E-DD-F-CC-30, E-DD-F-RB2-30, E-DD-F-RB1-30, E-DD-F-3S-30, E-DD-F-4S-30 | CSD-LKO-Design (5 Day + Holiday)-25 | Design review coordination shop drawing BIM charges; Physical Progress [30230 h]; TATA Projects Ltd-25 |
| E-ShopD-F-FRP-15 |  | Approval of Shop Drawings | 10d | 2027-09-07 | 2027-09-21 | E-ShopD-F-FRP-10 | CSD-LKO-Design (5 Day + Holiday)-25 | Design Consultnacy Charges; Physical Progress [4320 h]; Adani Airport Holding Ltd.-25 |
|  | 3 | **Misc** |  | 2027-02-02 | 2028-10-12 |  |  |  |
|  | 2 | **Landscape** |  | 2027-02-02 | 2027-04-30 |  |  |  |
| E-ShopD-LS-10 |  | Preparation of Shop Drawings | 50d | 2027-02-02 | 2027-04-16 | E-GFC-Misc-LS-30 | CSD-LKO-Design (5 Day + Holiday)-25 | Design review coordination shop drawing BIM charges; Physical Progress [21590 h]; TATA Projects Ltd-25 |
| E-ShopD-LS-15 |  | Approval of Shop Drawings | 10d | 2027-04-16 | 2027-04-30 | E-ShopD-LS-10 | CSD-LKO-Design (5 Day + Holiday)-25 | Design review coordination shop drawing BIM charges; Physical Progress [4320 h]; Adani Airport Holding Ltd.-25 |
|  | 1 | **Swimming Pool/Water Body** |  | 2027-02-16 | 2027-05-14 |  |  |  |
| E-ShopD-SP/WB-10 |  | Preparation of Shop Drawings | 50d | 2027-02-16 | 2027-04-30 | E-DD-SP/WB-20 | CSD-LKO-Design (5 Day + Holiday)-25 | Design review coordination shop drawing BIM charges; Physical Progress [21590 h]; TATA Projects Ltd-25 |
| E-ShopD-SP/WB-15 |  | Approval of Shop Drawings | 10d | 2027-04-30 | 2027-05-14 | E-ShopD-SP/WB-10 | CSD-LKO-Design (5 Day + Holiday)-25 | Design review coordination shop drawing BIM charges; Physical Progress [4320 h]; Adani Airport Holding Ltd.-25 |
|  | 4 | **Accoustic/AV** |  | 2028-07-17 | 2028-10-12 |  |  |  |
| E-ShopD-Accoustic/AV-10 |  | Preparation of Shop Drawings | 50d | 2028-07-17 | 2028-09-26 | P-Misc-Accoustic/AV-10, Mock Up-Accoustic/AV-15 | CSD-LKO-Design (5 Day + Holiday)-25 | Design review coordination shop drawing BIM charges; Physical Progress [21580 h]; TATA Projects Ltd-25 |
| E-ShopD-Accoustic/AV-15 |  | Approval of Shop Drawings | 10d | 2028-09-28 | 2028-10-12 | E-ShopD-Accoustic/AV-10 | CSD-LKO-Design (5 Day + Holiday)-25 | Design review coordination shop drawing BIM charges; Physical Progress [4320 h]; Adani Airport Holding Ltd.-25 |
|  | 3 | **Lighting** |  | 2028-07-17 | 2028-10-12 |  |  |  |
| E-ShopD-Lighting-10 |  | Preparation of Shop Drawings | 50d | 2028-07-17 | 2028-09-26 | P-Misc-Lightining-10, Mock Up-Lighting-15 | CSD-LKO-Design (5 Day + Holiday)-25 | Design review coordination shop drawing BIM charges; Physical Progress [21580 h]; TATA Projects Ltd-25 |
| E-ShopD-Lighting-15 |  | Approval of Shop Drawings | 10d | 2028-09-28 | 2028-10-12 | E-ShopD-Lighting-10 | CSD-LKO-Design (5 Day + Holiday)-25 | Design review coordination shop drawing BIM charges; Physical Progress [4320 h]; Adani Airport Holding Ltd.-25 |

| ID | WBS | Activity | Duration | Start | Finish | Predecessors | Calendar | Resources | Cost |
| --- | --- | --- | --- | --- | --- | --- | --- | --- | --- |
|  | 5 | **Fire Doors** |  | 2028-03-03 | 2028-05-31 |  |  |  |  |
| E-ShopD-FD-10 |  | Preparation of Shop Drawings | 50d | 2028-03-03 | 2028-05-17 | P-Misc-FD-10, E-GFC-MEP-CC-160 | CSD-LKO-Design (5 Day + Holiday)-25 | Design review coordination shop drawing BIM charges; Physical Progress [21580 h]; TATA Projects Ltd-25 |  |
| E-ShopD-FD-15 |  | Approval of Shop Drawings | 10d | 2028-05-17 | 2028-05-31 | E-ShopD-FD-10 | CSD-LKO-Design (5 Day + Holiday)-25 | Design review coordination shop drawing BIM charges; Physical Progress [4320 h]; Adani Airport Holding Ltd.-25 |  |
|  | 6 | **Signage** |  | 2028-03-27 | 2028-06-21 |  |  |  |  |
| E-ShopD-Signage-10 |  | Preparation of Shop Drawings | 50d | 2028-03-27 | 2028-06-07 | P-Misc-Signage-10, E-GFC-Misc-Signage-30 | CSD-LKO-Design (5 Day + Holiday)-25 | Design review coordination shop drawing BIM charges; Physical Progress [21580 h]; TATA Projects Ltd-25 |  |
| E-ShopD-Signage-15 |  | Approval of Shop Drawings | 10d | 2028-06-08 | 2028-06-21 | E-ShopD-Signage-10 | CSD-LKO-Design (5 Day + Holiday)-25 | Design review coordination shop drawing BIM charges; Physical Progress [4320 h]; Adani Airport Holding Ltd.-25 |  |
|  | 5 | **As Built Drawings** |  | 2027-04-23 | 2029-06-06 |  |  |  |  |
|  | 1 | **Architectural** |  | 2027-10-12 | 2028-12-05 |  |  |  |  |
| E-As Built-AR-10 |  | Common Basements | 150d | 2027-10-12 | 2028-05-16 | CB-B01-CC-WMI-25 | CSD-LKO-Design (5 Day + Holiday)-25 | Design Consultnacy Charges [696347 INR]; Physical Progress [46150 h]; TATA Projects Ltd-25 | 696,347 |
| E-As Built-AR-20 |  | Hotel 4 Star | 150d | 2028-02-07 | 2028-09-08 | 4S-WMI-6th15, 4S-WMI-6th80 | CSD-LKO-Design (5 Day + Holiday)-25 | Design Consultnacy Charges [696347 INR]; Physical Progress [46150 h]; TATA Projects Ltd-25 | 696,347 |
| E-As Built-AR-25 |  | Hotel 3 Star | 150d | 2028-03-03 | 2028-10-10 | 3S-WMI-7th15, 3S-WMI-7th80 | CSD-LKO-Design (5 Day + Holiday)-25 | Design Consultnacy Charges [696347 INR]; Physical Progress [46150 h]; TATA Projects Ltd-25 | 696,347 |
| E-As Built-AR-30 |  | Retail Block 2 | 150d | 2028-03-17 | 2028-10-25 | RB2-WMI-6th95 | CSD-LKO-Design (5 Day + Holiday)-25 | Design Consultnacy Charges [696347 INR]; Physical Progress [46150 h]; TATA Projects Ltd-25 | 696,347 |
| E-As Built-AR-15 |  | Retail Block 1 | 150d | 2028-03-22 | 2028-10-27 | RB1-SS-4th.765, RB1-WMI-3rd95 | CSD-LKO-Design (5 Day + Holiday)-25 | Design Consultnacy Charges [696347 INR]; Physical Progress [46150 h]; TATA Projects Ltd-25 | 696,347 |
| E-As Built-AR-35 |  | Convention center | 150d | 2028-04-28 | 2028-12-05 | CC-WMI-2ndF20 | CSD-LKO-Design (5 Day + Holiday)-25 | Design Consultnacy Charges [696347 INR]; Physical Progress [46150 h]; TATA Projects Ltd-25 | 696,347 |
|  | 2 | **Structural** |  | 2027-04-23 | 2028-11-02 |  |  |  |  |
| E-As Built-ST-10 |  | Common Basements | 180d | 2027-04-23 | 2028-01-03 | CC-SS-B01.1085 | CSD-LKO-Design (5 Day + Holiday)-25 | Design Consultnacy Charges [241693 INR]; Physical Progress [55390 h]; TATA Projects Ltd-25 | 241,693 |
| E-As Built-ST-25 |  | Hotel 4 Star | 180d | 2027-11-15 | 2028-07-27 | 4S-SS-Roof40 | CSD-LKO-Design (5 Day + Holiday)-25 | Design Consultnacy Charges [241693 INR]; Physical Progress [55390 h]; TATA Projects Ltd-25 | 241,693 |
| E-As Built-ST-15 |  | Convention center | 180d | 2027-12-10 | 2028-08-28 | CC-SS-2ndF.175 | CSD-LKO-Design (5 Day + Holiday)-25 | Design Consultnacy Charges [241693 INR]; Physical Progress [55390 h]; TATA Projects Ltd-25 | 241,693 |
| E-As Built-ST-35 |  | Hotel 3 Star | 180d | 2028-01-10 | 2028-09-26 | 3S-SS-Roof40 | CSD-LKO-Design (5 Day + Holiday)-25 | Design Consultnacy Charges [241693 INR]; Physical Progress [55390 h]; TATA Projects Ltd-25 | 241,693 |
| E-As Built-ST-30 |  | Retail Block 2 | 180d | 2028-01-24 | 2028-10-11 | RB2-SS-Roof40 | CSD-LKO-Design (5 Day + Holiday)-25 | Design Consultnacy Charges [241693 INR]; Physical Progress [55390 h]; TATA Projects Ltd-25 | 241,693 |
| E-As Built-ST-20 |  | Retail Block 1 | 180d | 2028-02-15 | 2028-11-02 | RB1-SS-4th.775 | CSD-LKO-Design (5 Day + Holiday)-25 | Design Consultnacy Charges [241693 INR]; Physical Progress [55390 h]; TATA Projects Ltd-25 | 241,693 |
|  | 3 | **MEPF** |  | 2028-06-15 | 2029-04-17 |  |  |  |  |
| E-As Built-MEP-20 |  | Hotel 3 Star | 120d | 2028-06-15 | 2028-12-07 | 3S-WMI-5th125, 3S-WMI-5th165, 3S-WMI-5th215, 3S-WMI-5th285, 3S-WMI-5th195 | CSD-LKO-Design (5 Day + Holiday)-25 | Design Consultnacy Charges [211241 INR]; Physical Progress [36910 h]; TATA Projects Ltd-25 | 211,241 |
| E-As Built-MEP-15 |  | Hotel 4 Star | 120d | 2028-07-20 | 2029-01-15 | 4S-WMI-5th125, 4S-WMI-5th165, 4S-WMI-5th215, 4S-WMI-5th230, 4S-WMI-5th195 | CSD-LKO-Design (5 Day + Holiday)-25 | Design Consultnacy Charges [211241 INR]; Physical Progress [36910 h]; TATA Projects Ltd-25 | 211,241 |
| E-As Built-MEP-35 |  | Common Basements | 50d | 2028-09-05 | 2028-11-17 | CB-B01-HS-MEP35, CB-B01-HS-MEP40, ED-E.MEP-30, CB-B01-HS-MEP45, CB-B01-HS-MEP50, CB-B01-HS-MEP90, CB-B01-HS-MEP120, CB-B01-HS-MEP125, CB-B01-HS-MEP130, CB-B01-HS-MEP70, CB-B01-HS-MEP75, CB-B01-HS-MEP55, CB-B01-HS-MEP60, CB-B01-HS-MEP65, CB-B01-HS-MEP10, CB-B01-HS-MEP15, CB-B01-HS-MEP80, CB-B01-HS-MEP85, CB-B01-HS-MEP95, CB-B01-HS-MEP100, CB-B01-HS-MEP105, CB-B01-HS-MEP110, CB-B01-HS-MEP115 | CSD-LKO-Design (5 Day + Holiday)-25 | Design Consultnacy Charges [211241 INR]; Physical Progress [30770 h]; TATA Projects Ltd-25 | 211,241 |
| E-As Built-MEP-10 |  | Convention center | 100d | 2028-10-03 | 2029-02-27 | CC-WMI-3rdM170, CC-WMI-3rdM175, CC-WMI-3rdM180, CC-WMI-3rdM190, CC-WMI-3rdM215 | CSD-LKO-Design (5 Day + Holiday)-25 | Design Consultnacy Charges [211241 INR]; Physical Progress [30770 h]; TATA Projects Ltd-25 | 211,241 |
| E-As Built-MEP-25 |  | Retail Block 2 | 95d | 2028-10-10 | 2029-02-27 | RB2-WMI-6th115, RB2-WMI-6th160, RB2-WMI-6th215, RB2-WMI-6th230, RB2-WMI-6th185 | CSD-LKO-Design (5 Day + Holiday)-25 | Design Consultnacy Charges [211241 INR]; Physical Progress [29230 h]; TATA Projects Ltd-25 | 211,241 |
| E-As Built-MEP-30 |  | Retail Block 1 | 120d | 2028-10-24 | 2029-04-17 | RB1-WMI-4th95, RB1-WMI-4th150, RB1-WMI-4th215, RB1-WMI-4th230, RB1-WMI-4th185 | CSD-LKO-Design (5 Day + Holiday)-25 | Design Consultnacy Charges [211241 INR]; Physical Progress [36910 h]; TATA Projects Ltd-25 | 211,241 |

| ID | WBS | Activity | Duration | Start | Finish | Predecessors | Calendar | Resources | Cost |
| --- | --- | --- | --- | --- | --- | --- | --- | --- | --- |
|  | 5 | **Facade** |  | 2028-10-27 | 2029-03-02 |  |  |  |  |
| E-As Built-F-20 |  | Convention center | 15d | 2028-10-27 | 2028-11-17 | CC-F-(3rdM-Terrace)55, CC-F-Terrace15 | CSD-LKO-Design (5 Day + Holiday)-25 | Design Consultnacy Charges; Physical Progress [4620 h]; TATA Projects Ltd-25 |  |
| E-As Built-F-10 |  | Hotel 3 Star | 15d | 2028-12-14 | 2029-01-08 | 3S-F-Terrace70, 3S-F-Terrace20 | CSD-LKO-Design (5 Day + Holiday)-25 | Design Consultnacy Charges; Physical Progress [4620 h]; TATA Projects Ltd-25 |  |
| E-As Built-F-15 |  | Hotel 4 Star | 15d | 2028-12-18 | 2029-01-09 | 4S-F-Terrace70, 4S-F-Terrace20 | CSD-LKO-Design (5 Day + Holiday)-25 | Design Consultnacy Charges; Physical Progress [4620 h]; TATA Projects Ltd-25 |  |
| E-As Built-F-25 |  | Retail Block 1 | 15d | 2029-02-01 | 2029-02-22 | RB1-F-Terrace55, RB1-F-Terrace65 | CSD-LKO-Design (5 Day + Holiday)-25 | Design Consultnacy Charges; Physical Progress [4620 h]; TATA Projects Ltd-25 |  |
| E-As Built-F-30 |  | Retail Block 2 | 15d | 2029-02-08 | 2029-03-02 | RB2-F-Terrace75, RB2-F-Terrace20 | CSD-LKO-Design (5 Day + Holiday)-25 | Design Consultnacy Charges; Physical Progress [4620 h]; TATA Projects Ltd-25 |  |
|  | 4 | **ID** |  | 2028-10-06 | 2029-05-29 |  |  |  |  |
| E-As Built-ID-10 |  | Hotels | 90d | 2028-10-06 | 2029-02-16 | 3S-WMI-3rd255, 3S-WMI-3rd230, 3S-WMI-3rd325, 3S-WMI-3rd690, 3S-WMI-3rd535, 3S-WMI-3rd695, 3S-WMI-3rd330, 3S-WMI-3rd670, 3S-WMI-3rd645, 3S-WMI-3rd410, 3S-WMI-3rd415 | CSD-LKO-Design (5 Day + Holiday)-25 | Design Consultnacy Charges [672214 INR]; Physical Progress [33850 h]; TATA Projects Ltd-25 | 672,214 |
| E-As Built-ID-15 |  | Office & Retail | 60d | 2029-03-05 | 2029-05-29 | RB2-WMI-6th300 | CSD-LKO-Design (5 Day + Holiday)-25 | Design Consultnacy Charges [190444 INR]; Physical Progress [18460 h]; TATA Projects Ltd-25 | 190,444 |
| E-As Built-ID-20 |  | Convention center | 45d | 2029-03-07 | 2029-05-11 | CC-WMI-2ndF365 | CSD-LKO-Design (5 Day + Holiday)-25 | Design Consultnacy Charges [288092 INR]; Physical Progress [13840 h]; TATA Projects Ltd-25 | 288,092 |
|  | 6 | **Misc** |  | 2028-07-31 | 2029-06-06 |  |  |  |  |
| E-As Built-Misc-15 |  | Vertical Transport | 90d | 2028-07-31 | 2028-12-11 | CC-VT15, RB1-VT25, RB2-VT25, 3S-VT25, 4S-VT25 | CSD-LKO-Design (5 Day + Holiday)-25 | Design Consultnacy Charges [166005 INR]; Physical Progress [27690 h]; TATA Projects Ltd-25 | 166,005 |
| E-As Built-Misc-20 |  | Kitchen/BOH | 45d | 2029-02-09 | 2029-04-17 | 3S-WMI-GF405 | CSD-LKO-Design (5 Day + Holiday)-25 | Design Consultnacy Charges [273670 INR]; Physical Progress [13850 h]; TATA Projects Ltd-25 | 273,670 |
| E-As Built-Misc-30 |  | Traffic | 40d | 2029-02-27 | 2029-04-26 | ED-R10 | CSD-LKO-Design (5 Day + Holiday)-25 | Design Consultnacy Charges; Physical Progress [12310 h]; TATA Projects Ltd-25 |  |
| E-As Built-Misc-35 |  | Landscape | 15d | 2029-03-29 | 2029-04-19 | ED-LS10 | CSD-LKO-Design (5 Day + Holiday)-25 | Design Consultnacy Charges [751781 INR]; Physical Progress [4620 h]; TATA Projects Ltd-25 | 751,781 |
| E-As Built-Misc-10 |  | IT/Secutity | 22d | 2029-04-12 | 2029-05-15 | Milestones-410, Milestones-430, Milestones-455, Milestones-435, Milestones-440 | CSD-LKO-Design (5 Day + Holiday)-25 | Design Consultnacy Charges [251697 INR]; Physical Progress [27690 h]; TATA Projects Ltd-25 | 251,697 |
| E-As Built-Misc-40 |  | Swimming Pool/Water Body | 5d | 2029-04-30 | 2029-05-04 | ED-WB15, ED-WB20, 4S-SP30, 4S-SP20, 4S-SP35 | CSD-LKO-Design (5 Day + Holiday)-25 | Design Consultnacy Charges [61876 INR]; Physical Progress [1540 h]; TATA Projects Ltd-25 | 61,876 |
| E-As Built-Misc-45 |  | Lighting | 5d | 2029-05-03 | 2029-05-09 | ED-LS25 | CSD-LKO-Design (5 Day + Holiday)-25 | Design Consultnacy Charges [147309 INR]; Physical Progress [1540 h]; TATA Projects Ltd-25 | 147,309 |
| E-As Built-Misc-50 |  | Signage | 5d | 2029-05-03 | 2029-05-09 | ED-LS20 | CSD-LKO-Design (5 Day + Holiday)-25 | Design Consultnacy Charges [128623 INR]; Physical Progress [1540 h]; TATA Projects Ltd-25 | 128,623 |
| E-As Built-Misc-25 |  | Accoustic & AV | 15d | 2029-05-17 | 2029-06-06 | MISC15 | CSD-LKO-Design (5 Day + Holiday)-25 | Design Consultnacy Charges [130927 INR]; Physical Progress [9230 h]; TATA Projects Ltd-25 | 130,927 |
|  | 13 | **Mockups** |  | 2026-09-30 | 2028-10-24 |  |  |  |  |
|  | 12 | **Civil work** |  | 2027-08-11 | 2027-10-11 |  |  |  |  |
|  | 3 | **Expansion Joint** |  | 2027-08-11 | 2027-10-11 |  |  |  |  |
| Mock Up-Civil-10 |  | Preparation of Mock Up | 30d | 2027-08-11 | 2027-09-25 | E-ShopD-Civil-EP-15 |  | Physical Progress [75000 h]; TATA Projects Ltd-25 |  |
| Mock Up-Civil-15 |  | Approval of Mock up | 10d | 2027-09-27 | 2027-10-11 | Mock Up-Civil-10 |  | Physical Progress [25000 h]; Adani Airport Holding Ltd.-25 |  |

| ID | WBS | Activity | Duration | Start | Finish | Predecessors | Calendar | Resources |
| --- | --- | --- | --- | --- | --- | --- | --- | --- |
|  | 1 | **MEP Work** |  | 2027-07-10 | 2027-09-14 |  |  |  |
|  | 2 | **Electrical** |  | 2027-07-10 | 2027-09-14 |  |  |  |
| Mock Up-MEP-30 |  | Preparation of Mock Up | 30d | 2027-07-10 | 2027-08-30 | E-ShopD-MEP-Elec-15 |  | Physical Progress [30000 h]; TATA Projects Ltd-25 |
| Mock Up-MEP-55 |  | Approval of Mock up | 10d | 2027-09-02 | 2027-09-14 | Mock Up-MEP-30 |  | Physical Progress [10000 h]; Adani Airport Holding Ltd.-25 |
|  | 6 | **Plumbing** |  | 2027-07-10 | 2027-09-14 |  |  |  |
| Mock Up-MEP-15 |  | Preparation of Mock Up | 30d | 2027-07-10 | 2027-08-30 | E-ShopD-MEP-Plumb-15 |  | Physical Progress [30000 h]; TATA Projects Ltd-25 |
| Mock Up-MEP-40 |  | Approval of Mock up | 10d | 2027-09-02 | 2027-09-14 | Mock Up-MEP-15 |  | Physical Progress [10000 h]; Adani Airport Holding Ltd.-25 |
|  | 4 | **Firefighting** |  | 2027-07-10 | 2027-09-14 |  |  |  |
| Mock Up-MEP-20 |  | Preparation of Mock Up | 30d | 2027-07-10 | 2027-08-30 | E-ShopD-MEP-FF-15 |  | Physical Progress [30000 h]; TATA Projects Ltd-25 |
| Mock Up-MEP-45 |  | Approval of Mock up | 10d | 2027-09-02 | 2027-09-14 | Mock Up-MEP-20 |  | Physical Progress [10000 h]; Adani Airport Holding Ltd.-25 |
|  | 3 | **HVAC** |  | 2027-07-10 | 2027-09-14 |  |  |  |
| Mock Up-MEP-25 |  | Preparation of Mock Up | 30d | 2027-07-10 | 2027-08-30 | E-ShopD-MEP-HVAC-15 |  | Physical Progress [30000 h]; TATA Projects Ltd-25 |
| Mock Up-MEP-50 |  | Approval of Mock up | 10d | 2027-09-02 | 2027-09-14 | Mock Up-MEP-25 |  | Physical Progress [10000 h]; Adani Airport Holding Ltd.-25 |
|  | 5 | **ELV** |  | 2027-07-10 | 2027-09-14 |  |  |  |
| Mock Up-MEP-10 |  | Preparation of Mock Up | 30d | 2027-07-10 | 2027-08-30 | E-ShopD-MEP-ELV-15 |  | Physical Progress [30000 h]; TATA Projects Ltd-25 |
| Mock Up-MEP-35 |  | Approval of Mock up | 10d | 2027-09-02 | 2027-09-14 | Mock Up-MEP-10 |  | Physical Progress [10000 h]; Adani Airport Holding Ltd.-25 |
|  | 7 | **ID Work** |  | 2026-09-30 | 2027-07-30 |  |  |  |
|  | 1 | **Mockup Drawings - Retail & Office** |  | 2026-09-30 | 2027-07-07 |  |  |  |
| Mock Up-ID_R&O-D-10 |  | Preparation of Drawings | 20d | 2026-09-30 | 2026-10-30 | E-SD-ID10 | CSD-LKO-Design (5 Day + Holiday)-25 | Physical Progress [34480 h]; TATA Projects Ltd-25 |
| Mock Up-ID_R&O-D-15 |  | Approval of Drawings | 10d | 2026-10-30 | 2026-11-13 | Mock Up-ID_R&O-D-10 | CSD-LKO-Design (5 Day + Holiday)-25 | Physical Progress [17240 h]; TATA Projects Ltd-25 |
| Mock Up-ID_R&O-D-20 |  | Final Mockup Drawings | 10d | 2027-06-23 | 2027-07-07 | Mock Up-ID_R&O-40, Mock Up-ID_R&O-45, Mock Up-ID_R&O-50, Mock Up-ID_R&O-55, Mock Up-ID_R&O-60, Mock Up-ID_R&O-65 | CSD-LKO-Design (5 Day + Holiday)-25 | Physical Progress [17240 h]; TATA Projects Ltd-25 |
|  | 6 | **Mockup Drawings - Hotel & CC** |  | 2027-02-24 | 2027-07-30 |  |  |  |
| Mock Up-ID_H&CC-D-10 |  | Preparation of Drawings | 20d | 2027-02-24 | 2027-03-29 | E-SD-ID15 | CSD-LKO-Design (5 Day + Holiday)-25 | Physical Progress [34480 h]; TATA Projects Ltd-25 |
| Mock Up-ID_H&CC-D-15 |  | Approval of Drawings | 10d | 2027-03-11 | 2027-03-29 | Mock Up-ID_H&CC-D-10 FF | CSD-LKO-Design (5 Day + Holiday)-25 | Physical Progress [17240 h]; TATA Projects Ltd-25 |
| Mock Up-ID_H&CC-D-20 |  | Final Mockup Drawings | 10d | 2027-07-19 | 2027-07-30 | Mock Up-ID_H&CC-40, Mock Up-ID_H&CC-45, Mock Up-ID_H&CC-50, Mock Up-ID_H&CC-55, Mock Up-ID_H&CC-60, Mock Up-ID_H&CC-65 | CSD-LKO-Design (5 Day + Holiday)-25 | Physical Progress [17240 h]; TATA Projects Ltd-25 |

| ID | WBS | Activity | Duration | Start | Finish | Predecessors | Resources |
| --- | --- | --- | --- | --- | --- | --- | --- |
|  | 2 | **Mockup Execution - Retai & Office** |  | 2027-03-05 | 2027-06-23 |  |  |
|  | 8 | **Furniture** |  | 2027-03-05 | 2027-06-23 |  |  |
| Mock Up-ID_R&O-10 |  | Preparation of Mock Up | 60d | 2027-03-05 | 2027-05-19 | P-R&O_ID-Fur-10, E-SD-ID10, Mock Up-ID_R&O-D-15 | Physical Progress [103450 h]; TATA Projects Ltd-25 |
| Mock Up-ID_R&O-40 |  | Approval of Mock up | 30d | 2027-05-19 | 2027-06-23 | Mock Up-ID_R&O-10 | Physical Progress [51720 h]; Adani Airport Holding Ltd.-25 |
|  | 7 | **Wall Cladding** |  | 2027-03-05 | 2027-06-23 |  |  |
| Mock Up-ID_R&O-15 |  | Preparation of Mock Up | 60d | 2027-03-05 | 2027-05-19 | P-R&O_ID-Wall-10, E-SD-ID10, Mock Up-ID_R&O-D-15 | Physical Progress [103450 h]; TATA Projects Ltd-25 |
| Mock Up-ID_R&O-45 |  | Approval of Mock up | 30d | 2027-05-19 | 2027-06-23 | Mock Up-ID_R&O-15 | Physical Progress [51720 h]; Adani Airport Holding Ltd.-25 |
|  | 6 | **ID Flooring** |  | 2027-03-05 | 2027-06-23 |  |  |
| Mock Up-ID_R&O-20 |  | Preparation of Mock Up | 60d | 2027-03-05 | 2027-05-19 | P-R&O_ID-Floor-10, E-SD-ID10, Mock Up-ID_R&O-D-15 | Physical Progress [103450 h]; TATA Projects Ltd-25 |
| Mock Up-ID_R&O-50 |  | Approval of Mock up | 30d | 2027-05-19 | 2027-06-23 | Mock Up-ID_R&O-20 | Physical Progress [51720 h]; Adani Airport Holding Ltd.-25 |
|  | 4 | **Soft Furnishing** |  | 2027-03-05 | 2027-06-23 |  |  |
| Mock Up-ID_R&O-25 |  | Preparation of Mock Up | 60d | 2027-03-05 | 2027-05-19 | P-R&O_ID-SF-10, E-SD-ID10, Mock Up-ID_R&O-D-15 | Physical Progress [103450 h]; TATA Projects Ltd-25 |
| Mock Up-ID_R&O-55 |  | Approval of Mock up | 30d | 2027-05-19 | 2027-06-23 | Mock Up-ID_R&O-25 | Physical Progress [51720 h]; Adani Airport Holding Ltd.-25 |
|  | 3 | **False Ceiling** |  | 2027-03-05 | 2027-06-23 |  |  |
| Mock Up-ID_R&O-30 |  | Preparation of Mock Up | 60d | 2027-03-05 | 2027-05-19 | P-R&O_ID-FC-10, E-SD-ID10, Mock Up-ID_R&O-D-15 | Physical Progress [103450 h]; TATA Projects Ltd-25 |
| Mock Up-ID_R&O-60 |  | Approval of Mock up | 30d | 2027-05-19 | 2027-06-23 | Mock Up-ID_R&O-30 | Physical Progress [51720 h]; Adani Airport Holding Ltd.-25 |
|  | 2 | **Doors** |  | 2027-03-05 | 2027-06-23 |  |  |
| Mock Up-ID_R&O-35 |  | Preparation of Mock Up | 60d | 2027-03-05 | 2027-05-19 | P-R&O_ID-Doors-10, E-SD-ID10, Mock Up-ID_R&O-D-15 | Physical Progress [103450 h]; TATA Projects Ltd-25 |
| Mock Up-ID_R&O-65 |  | Approval of Mock up | 30d | 2027-05-19 | 2027-06-23 | Mock Up-ID_R&O-35 | Physical Progress [51720 h]; Adani Airport Holding Ltd.-25 |
|  | 5 | **Mockup Execution - Hotel & CC** |  | 2027-03-29 | 2027-07-17 |  |  |
|  | 8 | **Furniture** |  | 2027-03-29 | 2027-07-17 |  |  |
| Mock Up-ID_H&CC-10 |  | Preparation of Mock Up | 60d | 2027-03-29 | 2027-06-08 | E-SD-ID15, Mock Up-ID_H&CC-D-15 | Physical Progress [103450 h]; TATA Projects Ltd-25 |
| Mock Up-ID_H&CC-40 |  | Approval of Mock up | 30d | 2027-06-08 | 2027-07-17 | Mock Up-ID_H&CC-10 | Physical Progress [51720 h]; Adani Airport Holding Ltd.-25 |
|  | 7 | **Wall Cladding** |  | 2027-03-29 | 2027-07-17 |  |  |
| Mock Up-ID_H&CC-15 |  | Preparation of Mock Up | 60d | 2027-03-29 | 2027-06-08 | E-SD-ID15, Mock Up-ID_H&CC-D-15 | Physical Progress [103450 h]; TATA Projects Ltd-25 |
| Mock Up-ID_H&CC-45 |  | Approval of Mock up | 30d | 2027-06-08 | 2027-07-17 | Mock Up-ID_H&CC-15 | Physical Progress [51720 h]; Adani Airport Holding Ltd.-25 |

| ID | WBS | Activity | Duration | Start | Finish | Predecessors | Resources |
| --- | --- | --- | --- | --- | --- | --- | --- |
|  | 6 | **ID Flooring** |  | 2027-03-29 | 2027-07-17 |  |  |
| Mock Up-ID_H&CC-20 |  | Preparation of Mock Up | 60d | 2027-03-29 | 2027-06-08 | E-SD-ID15, Mock Up-ID_H&CC-D-15 | Physical Progress [103450 h]; TATA Projects Ltd-25 |
| Mock Up-ID_H&CC-50 |  | Approval of Mock up | 30d | 2027-06-08 | 2027-07-17 | Mock Up-ID_H&CC-20 | Physical Progress [51720 h]; Adani Airport Holding Ltd.-25 |
|  | 4 | **Soft Furnishing** |  | 2027-03-29 | 2027-07-17 |  |  |
| Mock Up-ID_H&CC-25 |  | Preparation of Mock Up | 60d | 2027-03-29 | 2027-06-08 | E-SD-ID15, Mock Up-ID_H&CC-D-15 | Physical Progress [103450 h]; TATA Projects Ltd-25 |
| Mock Up-ID_H&CC-55 |  | Approval of Mock up | 30d | 2027-06-08 | 2027-07-17 | Mock Up-ID_H&CC-25 | Physical Progress [51720 h]; Adani Airport Holding Ltd.-25 |
|  | 3 | **False Ceiling** |  | 2027-03-29 | 2027-07-17 |  |  |
| Mock Up-ID_H&CC-30 |  | Preparation of Mock Up | 60d | 2027-03-29 | 2027-06-08 | E-SD-ID15, Mock Up-ID_H&CC-D-15 | Physical Progress [103450 h]; TATA Projects Ltd-25 |
| Mock Up-ID_H&CC-60 |  | Approval of Mock up | 30d | 2027-06-08 | 2027-07-17 | Mock Up-ID_H&CC-30 | Physical Progress [51720 h]; Adani Airport Holding Ltd.-25 |
|  | 2 | **Doors** |  | 2027-03-29 | 2027-07-17 |  |  |
| Mock Up-ID_H&CC-35 |  | Preparation of Mock Up | 60d | 2027-03-29 | 2027-06-08 | E-SD-ID15, Mock Up-ID_H&CC-D-15 | Physical Progress [103450 h]; TATA Projects Ltd-25 |
| Mock Up-ID_H&CC-65 |  | Approval of Mock up | 30d | 2027-06-08 | 2027-07-17 | Mock Up-ID_H&CC-35 | Physical Progress [51720 h]; Adani Airport Holding Ltd.-25 |
|  | 3 | **Misc** |  | 2028-03-27 | 2028-10-24 |  |  |
|  | 4 | **Accoustic/AV** |  | 2028-03-27 | 2028-07-14 |  |  |
| Mock Up-Accoustic/AV-10 |  | Preparation of Mock Up | 60d | 2028-03-27 | 2028-06-07 | E-GFC-Misc-Accoustic/AV-35, P-Misc-Accoustic/AV-10 | Physical Progress [33330 h]; TATA Projects Ltd-25 |
| Mock Up-Accoustic/AV-15 |  | Approval of Mock up | 30d | 2028-06-08 | 2028-07-14 | Mock Up-Accoustic/AV-10 | Physical Progress [16680 h]; Adani Airport Holding Ltd.-25 |
|  | 3 | **Lighting** |  | 2028-03-27 | 2028-07-14 |  |  |
| Mock Up-Lighting-10 |  | Preparation of Mock Up | 60d | 2028-03-27 | 2028-06-07 | E-GFC-Misc-Lighting-35, P-Misc-Lightining-10 | Physical Progress [33330 h]; TATA Projects Ltd-25 |
| Mock Up-Lighting-15 |  | Approval of Mock up | 30d | 2028-06-08 | 2028-07-14 | Mock Up-Lighting-10 | Physical Progress [16680 h]; Adani Airport Holding Ltd.-25 |
|  | 6 | **Signage** |  | 2028-06-22 | 2028-10-24 |  |  |
| Mock Up-Signage-10 |  | Preparation of Mock Up | 60d | 2028-06-22 | 2028-09-12 | E-ShopD-Signage-15 | Physical Progress [33330 h]; TATA Projects Ltd-25 |
| Mock Up-Signage-15 |  | Approval of Mock up | 30d | 2028-09-13 | 2028-10-24 | Mock Up-Signage-10 | Physical Progress [16680 h]; Adani Airport Holding Ltd.-25 |
|  | 5 | **Fire Doors** |  | 2028-05-31 | 2028-09-30 |  |  |
| Mock Up-FD-10 |  | Preparation of Mock Up | 60d | 2028-05-31 | 2028-08-17 | E-ShopD-FD-15 | Physical Progress [33330 h]; TATA Projects Ltd-25 |
| Mock Up-FD-15 |  | Approval of Mock up | 30d | 2028-08-17 | 2028-09-30 | Mock Up-FD-10 | Physical Progress [16680 h]; Adani Airport Holding Ltd.-25 |

| ID | WBS | Activity | Duration | Start | Finish | Predecessors | Complete | Planned start | Planned finish | Resources | Cost | Actual cost |
| --- | --- | --- | --- | --- | --- | --- | --- | --- | --- | --- | --- | --- |
|  | 4 | **Facade** |  | 2027-01-25 | 2027-06-01 |  |  |  |  |  |  |  |
|  | 7 | **Glass Facade** |  | 2027-01-25 | 2027-05-15 |  |  |  |  |  |  |  |
| Mock Up-F-Glass-10 |  | Preparation of Mock Up | 60d | 2027-01-25 | 2027-04-09 | E-DD-F-CC-30, P-F-Glass-10 |  |  |  | Physical Progress [166670 h]; TATA Projects Ltd-25 |  |  |
| Mock Up-F-Glass-15 |  | Approval of Mock up | 30d | 2027-04-09 | 2027-05-15 | Mock Up-F-Glass-10 |  |  |  | Physical Progress [83330 h]; Adani Airport Holding Ltd.-25 |  |  |
|  | 5 | **FRP Facade** |  | 2027-02-11 | 2027-06-01 |  |  |  |  |  |  |  |
| Mock Up-F-FRP-10 |  | Preparation of Mock Up | 60d | 2027-02-11 | 2027-04-26 | E-DD-F-CC-30, P-F-FRP-10 |  |  |  | Physical Progress [166670 h]; TATA Projects Ltd-25 |  |  |
| Mock Up-F-FRP-15 |  | Approval of Mock up | 30d | 2027-04-26 | 2027-06-01 | Mock Up-F-FRP-10 |  |  |  | Physical Progress [83330 h]; Adani Airport Holding Ltd.-25 |  |  |
|  | 15 | **Construction** |  | 2026-04-21 | 2029-06-07 |  |  |  |  |  |  |  |
|  | 1 | **Hotel 4 Star** |  | 2026-04-21 | 2029-05-15 |  |  |  |  |  |  |  |
|  | 15 | **Substructure** |  | 2026-04-21 | 2027-03-20 |  |  |  |  |  |  |  |
|  | 2 | **Foundation** |  | 2026-04-21 | 2026-10-16 |  |  |  |  |  |  |  |
|  | 1 | **Pour 1** |  | 2026-05-12 | 2026-09-30 |  |  |  |  |  |  |  |
|  | 1 | **CF32** |  | 2026-05-20 | 2026-09-07 |  |  |  |  |  |  |  |
| 4S-SS-FN10 |  | Pocket Excavation | 4d | 2026-05-20 A | 2026-05-23 A | Mob-SO-20, E-GFC-ST-CB-50, Milestones-50 | 100% |  |  | Physical Progress [5400 h]; Pocket Excavation [1567 m3]; TATA Projects Ltd-25 | 297,730 | 297,730 |
| 4S-SS-FN15 |  | Surface dressing | 0d | 2026-05-25 A | 2026-05-25 A | 4S-SS-FN10 | 100% |  |  | Helper; Physical Progress; Surface Dressing; TATA Projects Ltd-25 |  |  |
| 4S-SS-FN20 |  | ATT | 0d | 2026-06-06 A | 2026-06-06 A | P-Civil-ATT-20, 4S-SS-FN15 | 100% |  |  | Physical Progress; ATT; TATA Projects Ltd-25 |  |  |
| 4S-SS-FN25 |  | PCC | 0d | 2026-06-06 A | 2026-06-06 A | 4S-SS-FN15, 4S-SS-FN20 FF | 100% |  |  | Mason; Helper; Physical Progress; Concrete M10; TATA Projects Ltd-25 |  |  |
| 4S-SS-FN30 |  | Shuttering | 36d | 2026-06-16 A | 2026-08-12 A | 4S-SS-FN25 | 100% |  |  | Carpenter [1610 h]; Helper [810 h]; Physical Progress [3230 h]; Formwork [964 Sq m]; TATA Projects Ltd-25 | 1,123,214.24 | 1,123,214.24 |
| 4S-SS-FN35 |  | Blockwork/Brickwork | 9d | 2026-06-20 A | 2026-06-30 A | 4S-SS-FN25, 4S-SS-FN10 | 100% |  |  | Brickwork for the footing [64 CuM]; Mason [430 h]; Helper [220 h]; Physical Progress [2150 h]; TATA Projects Ltd-25 | 531,200 | 531,200 |
| 4S-SS-FN45 |  | Waterproofing | 0d | 2026-06-20 A | 2026-06-20 A | P-Civil-WP-15, 4S-SS-FN30, 4S-SS-FN25 | 100% |  |  | Waterproofing (Raft/Grade Slab); Waterprrofing Mason; Helper; Physical Progress; TATA Projects Ltd-25 |  |  |
| 4S-SS-FN65 |  | Reinforcement | 13d | 2026-08-07 A | 2026-09-04 A | 4S-SS-FN45 | 100% | 2026-08-07 | 2026-09-03 | Barbender [10470 h]; Helper [5240 h]; Physical Progress [5400 h]; Reinforcement Steel [157 MT1]; TATA Projects Ltd-25 | 15,152,462.5 | 15,152,462.5 |
| 4S-SS-FN90 |  | Concrete | 10.2d | 2026-08-17 A | 2026-09-07 A | 4S-SS-FN65, P-MDC40, P-MDC25, P-MDC30 | 100% |  |  | Mason [50 h]; Helper [50 h]; Physical Progress [1080 h]; Concrete M40 [1306 m3]; TATA Projects Ltd-25 | 12,886,302 | 12,886,302 |
|  | 2 | **CF26** |  | 2026-05-15 | 2026-08-27 |  |  |  |  |  |  |  |
| 4S-SS-FN40 |  | Pocket Excavation | 2d | 2026-05-15 A | 2026-05-16 A | 4S-SS-FN35 | 100% |  |  | Physical Progress [3230 h]; Pocket Excavation [1096 m3]; TATA Projects Ltd-25 | 208,240 | 208,240 |
| 4S-SS-FN50 |  | Surface dressing | 0d | 2026-05-18 A | 2026-05-18 A | 4S-SS-FN40 | 100% |  |  | Helper; Physical Progress; Surface Dressing; TATA Projects Ltd-25 |  |  |
| 4S-SS-FN55 |  | ATT | 0d | 2026-05-25 A | 2026-05-25 A | P-Civil-ATT-20, 4S-SS-FN50 | 100% |  |  | Physical Progress; ATT; TATA Projects Ltd-25 |  |  |
| 4S-SS-FN60 |  | PCC | 0d | 2026-05-25 A | 2026-05-25 A | 4S-SS-FN50, 4S-SS-FN55 FF | 100% |  |  | Mason; Helper; Physical Progress; Concrete M10; TATA Projects Ltd-25 |  |  |
| 4S-SS-FN70 |  | Blockwork/Brickwork | 9d | 2026-06-20 A | 2026-06-30 A | 4S-SS-FN60, 4S-SS-FN40 | 100% |  |  | Brickwork for the footing [64 CuM]; Mason [430 h]; Helper [220 h]; Physical Progress [3230 h]; TATA Projects Ltd-25 | 531,200 | 531,200 |
| 4S-SS-FN120 |  | Reinforcement | 15d | 2026-07-25 A | 2026-08-24 A | 4S-SS-FN80 | 100% |  |  | Barbender [7340 h]; Helper [3670 h]; Physical Progress [3230 h]; Reinforcement Steel [110 MT1]; TATA Projects Ltd-25 | 10,616,375 | 10,616,375 |
| 4S-SS-FN75 |  | Shuttering | 8d | 2026-07-25 A | 2026-08-07 A | 4S-SS-FN60 | 100% |  |  | Carpenter [1130 h]; Helper [570 h]; Physical Progress [3230 h]; Formwork [674 Sq m]; TATA Projects Ltd-25 | 785,317.84 | 785,317.84 |
| 4S-SS-FN80 |  | Waterproofing | 0d | 2026-07-30 A | 2026-07-30 A | P-Civil-WP-15, 4S-SS-FN75, 4S-SS-FN60 | 100% |  |  | Waterproofing (Raft/Grade Slab); Waterprrofing Mason; Helper; Physical Progress; TATA Projects Ltd-25 |  |  |
| 4S-SS-FN135 |  | Concrete | 9d | 2026-08-07 A | 2026-08-27 A | 4S-SS-FN120 | 100% | 2026-08-07 | 2026-08-26 | Mason [50 h]; Helper [50 h]; Physical Progress [1080 h]; Concrete M40 [913 m3]; TATA Projects Ltd-25 | 9,008,571 | 9,008,571 |

| ID | WBS | Activity | Duration | Start | Finish | Predecessors | Complete | Remaining | Planned start | Planned finish | Resources | Cost | Actual cost |
| --- | --- | --- | --- | --- | --- | --- | --- | --- | --- | --- | --- | --- | --- |
|  | 3 | **CF1D, CF1K, CF32A** |  | 2026-05-12 | 2026-09-29 |  |  |  |  |  |  |  |  |
| 4S-SS-FN85 |  | Pocket Excavation | 11d | 2026-05-12 A | 2026-05-24 A | 4S-SS-FN70 | 100% |  | 2026-05-12 | 2026-05-23 | Physical Progress [2150 h]; Pocket Excavation [332 m3]; TATA Projects Ltd-25 | 63,080 | 63,080 |
| 4S-SS-FN95 |  | Surface dressing | 5.7d | 2026-05-19 A | 2026-05-25 A | 4S-SS-FN85 | 100% |  |  |  | Helper [30 h]; Physical Progress [1080 h]; Surface Dressing [185 Sq m]; TATA Projects Ltd-25 | 8,325 | 8,325 |
| 4S-SS-FN115 |  | Shuttering | 11.7d | 2026-09-07 A | 2026-09-29 A | 4S-SS-FN105 | 100% |  |  |  | Carpenter [340 h]; Helper [170 h]; Physical Progress [3230 h]; Formwork [204 Sq m]; TATA Projects Ltd-25 | 237,692.64 | 237,692.64 |
| 4S-SS-FN100 |  | ATT | 5d | 2026-09-09 A | 2026-09-19 A | P-Civil-ATT-20, 4S-SS-FN85 | 100% |  | 2026-09-10 | 2026-09-19 | Physical Progress [1080 h]; ATT [204 Sq m]; TATA Projects Ltd-25 | 27,948 | 27,948 |
| 4S-SS-FN105 |  | PCC | 4.7d | 2026-09-09 A | 2026-09-19 A | 4S-SS-FN95 SS, 4S-SS-FN100 FF | 100% |  | 2026-09-10 | 2026-09-19 | Mason [10 h]; Helper [10 h]; Physical Progress [1080 h]; Concrete M10 [14 m3]; TATA Projects Ltd-25 | 120,946 | 120,946 |
| 4S-SS-FN190 |  | Reinforcement | 9.9d | 2026-09-09 A | 2026-09-28 A | 4S-SS-FN125 FF | 100% |  | 2026-09-10 | 2026-09-28 | Barbender [2200 h]; Helper [1100 h]; Physical Progress [3230 h]; Reinforcement Steel [33 MT1]; TATA Projects Ltd-25 | 3,184,912.5 | 3,184,912.5 |
| 4S-SS-FN110 |  | Blockwork/Brickwork | 5.3d | 2026-09-15 A | 2026-09-25 A | 4S-SS-FN105, 4S-SS-FN85 | 100% |  | 2026-09-15 | 2026-09-24 | Brickwork for the footing [64 CuM]; Mason [430 h]; Helper [220 h]; Physical Progress [3230 h]; TATA Projects Ltd-25 | 531,200 | 531,200 |
| 4S-SS-FN210 |  | Concrete | 7.7d | 2026-09-15 A | 2026-09-29 A | 4S-SS-FN190 FF | 100% |  |  |  | Mason [50 h]; Helper [50 h]; Physical Progress [1080 h]; Concrete M40 [277 m3]; TATA Projects Ltd-25 | 2,733,159 | 2,733,159 |
| 4S-SS-FN125 |  | Waterproofing | 1d | 2026-09-28 A | 2026-09-29 A | P-Civil-WP-15, 4S-SS-FN115, 4S-SS-FN105 | 100% |  |  |  | Waterproofing (Raft/Grade Slab); Waterprrofing Mason; Helper; Physical Progress; TATA Projects Ltd-25 |  |  |
|  | 4 | **CF14A, F6** |  | 2026-05-20 | 2026-09-30 |  |  |  |  |  |  |  |  |
| 4S-SS-FN130 |  | Pocket Excavation | 5d | 2026-05-20 A | 2026-05-25 A | 4S-SS-FN110 SS | 100% |  |  |  | Physical Progress [1080 h]; Pocket Excavation [196 m3]; TATA Projects Ltd-25 | 37,240 | 37,240 |
| 4S-SS-FN140 |  | Surface dressing | 79.95d | 2026-05-23 A | 2026-09-30 | 4S-SS-FN130 | 95% | 0.05d |  |  | Helper [30 h]; Physical Progress [1080 h]; Surface Dressing [138 Sq m]; TATA Projects Ltd-25 | 6,210 | 6,206.12 |
| 4S-SS-FN150 |  | ATT | 78.95d | 2026-05-25 A | 2026-09-30 | P-Civil-ATT-20, 4S-SS-FN140 SS | 95% | 0.05d |  |  | Physical Progress [1080 h]; ATT [152 Sq m]; TATA Projects Ltd-25 | 20,824 | 20,810.81 |
| 4S-SS-FN160 |  | PCC | 78.95d | 2026-05-25 A | 2026-09-30 | 4S-SS-FN150 SS | 95% | 0.05d |  |  | Mason [10 h]; Helper [10 h]; Physical Progress [1080 h]; Concrete M10 [10 m3]; TATA Projects Ltd-25 | 86,390 | 86,335.29 |
| 4S-SS-FN175 |  | Shuttering | 13.25d | 2026-09-07 A | 2026-09-30 | 4S-SS-FN160 SS | 95% | 0.05d |  |  | Carpenter [200 h]; Helper [100 h]; Physical Progress [2150 h]; Formwork [120 Sq m]; TATA Projects Ltd-25 | 139,819.2 | 139,291.58 |
| 4S-SS-FN225 |  | Reinforcement | 12d | 2026-09-09 A | 2026-09-30 | 4S-SS-FN195 FF | 95% | 0.1d | 2026-09-10 | 2026-09-30 | Barbender [1340 h]; Helper [670 h]; Physical Progress [2150 h]; Reinforcement Steel [20 MT1]; TATA Projects Ltd-25 | 1,930,250 | 1,914,164.58 |
| 4S-SS-FN260 |  | Concrete | 9.25d | 2026-09-15 A | 2026-09-30 | 4S-SS-FN225 SS | 95% | 0.05d |  |  | Mason [50 h]; Helper [50 h]; Physical Progress [1080 h]; Concrete M40 [163 m3]; TATA Projects Ltd-25 | 1,608,321 | 1,599,627.37 |
| 4S-SS-FN195 |  | Waterproofing | 0d | 2026-09-30 | 2026-09-30 | P-Civil-WP-15, 4S-SS-FN175, 4S-SS-FN160 |  |  |  |  | Waterproofing (Raft/Grade Slab); Waterprrofing Mason; Helper; Physical Progress; TATA Projects Ltd-25 |  |  |
|  | 2 | **Pour 2** |  | 2026-05-08 | 2026-10-14 |  |  |  |  |  |  |  |  |
|  | 1 | **CF41A** |  | 2026-05-19 | 2026-07-25 |  |  |  |  |  |  |  |  |
| 4S-SS-FN145 |  | Pocket Excavation | 0d | 2026-05-19 A | 2026-05-19 A | 4S-SS-FN130 | 100% |  |  |  | Physical Progress; Pocket Excavation; TATA Projects Ltd-25 |  |  |
| 4S-SS-FN155 |  | Surface dressing | 0d | 2026-05-20 A | 2026-05-20 A | 4S-SS-FN145 | 100% |  |  |  | Helper; Physical Progress; Surface Dressing; TATA Projects Ltd-25 |  |  |
| 4S-SS-FN165 |  | ATT | 0d | 2026-07-16 A | 2026-07-16 A | 4S-SS-FN155 | 100% |  |  |  | Physical Progress; ATT; TATA Projects Ltd-25 |  |  |
| 4S-SS-FN170 |  | PCC | 0d | 2026-07-17 A | 2026-07-18 A | 4S-SS-FN165 FF | 100% |  | 2026-07-18 | 2026-07-18 | Mason; Helper; Physical Progress; Concrete M10; TATA Projects Ltd-25 |  |  |
| 4S-SS-FN180 |  | Shuttering | 2d | 2026-07-18 A | 2026-07-20 A | 4S-SS-FN170 | 100% |  |  |  | Carpenter [250 h]; Helper [130 h]; Physical Progress [2150 h]; Formwork [150 Sq m]; TATA Projects Ltd-25 | 174,774 | 174,774 |
| 4S-SS-FN185 |  | Blockwork/Brickwork | 2d | 2026-07-18 A | 2026-07-20 A | 4S-SS-FN170, 4S-SS-FN155 | 100% |  |  |  | Brickwork for the footing [64 CuM]; Mason [430 h]; Helper [220 h]; Physical Progress [2150 h]; TATA Projects Ltd-25 | 531,200 | 531,200 |
| 4S-SS-FN200 |  | Waterproofing | 0d | 2026-07-20 A | 2026-07-20 A | 4S-SS-FN180, 4S-SS-FN170 | 100% |  |  |  | Waterproofing (Raft/Grade Slab); Waterprrofing Mason; Helper; Physical Progress; TATA Projects Ltd-25 |  |  |
| 4S-SS-FN230 |  | Reinforcement | 2d | 2026-07-21 A | 2026-07-24 A | 4S-SS-FN200 | 100% |  | 2026-07-21 | 2026-07-23 | Barbender [1600 h]; Helper [800 h]; Physical Progress [2150 h]; Reinforcement Steel [24 MT1]; TATA Projects Ltd-25 | 2,316,300 | 2,316,300 |
| 4S-SS-FN265 |  | Concrete | 0d | 2026-07-25 A | 2026-07-25 A | 4S-SS-FN230 | 100% |  |  |  | Mason; Helper; Physical Progress; Concrete M40; TATA Projects Ltd-25 |  |  |

| ID | WBS | Activity | Duration | Start | Finish | Predecessors | Complete | Planned start | Planned finish | Resources | Cost | Actual cost |
| --- | --- | --- | --- | --- | --- | --- | --- | --- | --- | --- | --- | --- |
|  | 2 | **CF26B** |  | 2026-05-08 | 2026-09-21 |  |  |  |  |  |  |  |
| 4S-SS-FN205 |  | Pocket Excavation | 0d | 2026-05-08 A | 2026-05-08 A | 4S-SS-FN185, 4S-SS-FN145 | 100% |  |  | Physical Progress; Pocket Excavation; TATA Projects Ltd-25 |  |  |
| 4S-SS-FN215 |  | Surface dressing | 0d | 2026-05-09 A | 2026-05-09 A | 4S-SS-FN205 | 100% |  |  | Helper; Physical Progress; Surface Dressing; TATA Projects Ltd-25 |  |  |
| 4S-SS-FN235 |  | ATT | 0d | 2026-05-14 A | 2026-05-14 A | 4S-SS-FN215 | 100% |  |  | Physical Progress; ATT; TATA Projects Ltd-25 |  |  |
| 4S-SS-FN240 |  | PCC | 0d | 2026-05-14 A | 2026-05-14 A | 4S-SS-FN235 FF | 100% |  |  | Mason; Helper; Physical Progress; Concrete M10; TATA Projects Ltd-25 |  |  |
| 4S-SS-FN270 |  | Blockwork/Brickwork | 0d | 2026-07-16 A | 2026-07-16 A | 4S-SS-FN240, 4S-SS-FN215 | 100% |  |  | Brickwork for the footing; Mason; Helper; Physical Progress; TATA Projects Ltd-25 |  |  |
| 4S-SS-FN275 |  | Shuttering | 3d | 2026-08-05 A | 2026-08-11 A | 4S-SS-FN240 | 100% | 2026-08-05 | 2026-08-10 | Carpenter [1510 h]; Helper [760 h]; Physical Progress [3230 h]; Formwork [903 Sq m]; TATA Projects Ltd-25 | 1,052,139.48 | 1,052,139.48 |
| 4S-SS-FN290 |  | Waterproofing | 0d | 2026-08-05 A | 2026-08-05 A | 4S-SS-FN275, 4S-SS-FN240 | 100% |  |  | Waterproofing (Raft/Grade Slab); Waterprrofing Mason; Helper; Physical Progress; TATA Projects Ltd-25 |  |  |
| 4S-SS-FN335 |  | Reinforcement | 22d | 2026-08-05 A | 2026-09-20 A | 4S-SS-FN290 | 100% | 2026-08-05 | 2026-09-19 | Barbender [9800 h]; Helper [4900 h]; Physical Progress [3230 h]; Reinforcement Steel [147 MT1]; TATA Projects Ltd-25 | 14,187,337.5 | 14,187,337.5 |
| 4S-SS-FN355 |  | Concrete | 0d | 2026-09-21 A | 2026-09-21 A | 4S-SS-FN335 | 100% |  |  | Mason; Helper; Physical Progress; Concrete M40; TATA Projects Ltd-25 |  |  |
|  | 5 | **Sump** |  | 2026-09-30 | 2026-10-14 |  |  |  |  |  |  |  |
| 4S-SS-FN220 |  | Pocket Excavation | 1d | 2026-09-30 | 2026-10-01 | 4S-SS-FN270 |  |  |  | Physical Progress [1080 h]; Pocket Excavation; TATA Projects Ltd-25 |  |  |
| 4S-SS-FN245 |  | Surface dressing | 1d | 2026-10-01 | 2026-10-03 | 4S-SS-FN220 |  |  |  | Helper [30 h]; Physical Progress [1080 h]; Surface Dressing [22 Sq m]; TATA Projects Ltd-25 | 990 |  |
| 4S-SS-FN250 |  | ATT | 1d | 2026-10-03 | 2026-10-05 | 4S-SS-FN245 |  |  |  | Physical Progress [1080 h]; ATT [24 Sq m]; TATA Projects Ltd-25 | 3,288 |  |
| 4S-SS-FN255 |  | PCC | 1d | 2026-10-03 | 2026-10-05 | 4S-SS-FN250 FF |  |  |  | Mason [10 h]; Helper [10 h]; Physical Progress [1080 h]; Concrete M10 [2 m3]; TATA Projects Ltd-25 | 17,278 |  |
| 4S-SS-FN280 |  | Shuttering | 1d | 2026-10-05 | 2026-10-06 | 4S-SS-FN255 |  |  |  | Carpenter [40 h]; Helper [20 h]; Physical Progress [2150 h]; Formwork [24 Sq m]; TATA Projects Ltd-25 | 27,963.84 |  |
| 4S-SS-FN285 |  | Waterproofing | 1d | 2026-10-06 | 2026-10-07 | 4S-SS-FN255, 4S-SS-FN280 |  |  |  | Waterproofing (Raft/Grade Slab); Waterprrofing Mason; Helper; Physical Progress; TATA Projects Ltd-25 |  |  |
| 4S-SS-FN300 |  | Reinforcement | 2d | 2026-10-07 | 2026-10-09 | 4S-SS-FN285 |  |  |  | Barbender [70 h]; Helper [40 h]; Physical Progress [2150 h]; Reinforcement Steel [1 MT1]; TATA Projects Ltd-25 | 96,512.5 |  |
| 4S-SS-FN320 |  | MEP Services | 3d | 2026-10-09 | 2026-10-13 | 4S-SS-FN300 |  |  |  | Physical Progress [3230 h]; TATA Projects Ltd-25 |  |  |
| 4S-SS-FN340 |  | Concrete | 1d | 2026-10-13 | 2026-10-14 | 4S-SS-FN300, 4S-SS-FN320 |  |  |  | Mason [50 h]; Helper [50 h]; Physical Progress [1080 h]; Concrete M40 [8 m3]; TATA Projects Ltd-25 | 78,936 |  |
|  | 3 | **CF43, CF1M, CF1E** |  | 2026-05-15 | 2026-08-01 |  |  |  |  |  |  |  |
| 4S-SS-FN295 |  | Pocket Excavation | 3d | 2026-05-15 A | 2026-05-18 A | 4S-SS-FN270 | 100% |  |  | Physical Progress [2150 h]; Pocket Excavation [425 m3]; TATA Projects Ltd-25 | 80,750 | 80,750 |
| 4S-SS-FN305 |  | Surface dressing | 3d | 2026-05-16 A | 2026-05-19 A | 4S-SS-FN295 | 100% |  |  | Helper [30 h]; Physical Progress [1080 h]; Surface Dressing [230 Sq m]; TATA Projects Ltd-25 | 10,350 | 10,350 |
| 4S-SS-FN310 |  | ATT | 0d | 2026-05-23 A | 2026-05-23 A | 4S-SS-FN305 | 100% |  |  | Physical Progress; ATT; TATA Projects Ltd-25 |  |  |
| 4S-SS-FN315 |  | PCC | 0d | 2026-05-23 A | 2026-05-23 A | 4S-SS-FN310 FF | 100% |  |  | Mason; Helper; Physical Progress; Concrete M10; TATA Projects Ltd-25 |  |  |
| 4S-SS-FN330 |  | Shuttering | 13d | 2026-06-22 A | 2026-07-10 A | 4S-SS-FN315 | 100% | 2026-06-22 | 2026-07-09 | Carpenter [440 h]; Helper [220 h]; Physical Progress [3230 h]; Formwork [261 Sq m]; TATA Projects Ltd-25 | 304,106.76 | 304,106.76 |
| 4S-SS-FN325 |  | Blockwork/Brickwork | 0d | 2026-07-02 A | 2026-07-02 A | 4S-SS-FN315, 4S-SS-FN305 | 100% |  |  | Brickwork for the footing; Mason; Helper; Physical Progress; TATA Projects Ltd-25 |  |  |
| 4S-SS-FN345 |  | Waterproofing | 4d | 2026-07-11 A | 2026-07-16 A | 4S-SS-FN330, 4S-SS-FN315 | 100% |  |  | Waterproofing (Raft/Grade Slab) [259 Sq m]; Waterprrofing Mason [220 h]; Helper [110 h]; Physical Progress [5390 h]; TATA Projects Ltd-25 | 161,616 | 161,616 |
| 4S-SS-FN390 |  | Reinforcement | 9d | 2026-07-15 A | 2026-07-31 A | 4S-SS-FN345 | 100% | 2026-07-16 | 2026-07-30 | Barbender [2800 h]; Helper [1400 h]; Physical Progress [3230 h]; Reinforcement Steel [42 MT1]; TATA Projects Ltd-25 | 4,053,525 | 4,053,525 |
| 4S-SS-FN420 |  | Concrete | 7d | 2026-07-21 A | 2026-08-01 A | 4S-SS-FN390 | 100% |  |  | Mason [50 h]; Helper [50 h]; Physical Progress [1080 h]; Concrete M40 [354 m3]; TATA Projects Ltd-25 | 3,492,918 | 3,492,918 |

| ID | WBS | Activity | Duration | Start | Finish | Predecessors | Complete | Planned start | Planned finish | Resources | Cost | Actual cost |
| --- | --- | --- | --- | --- | --- | --- | --- | --- | --- | --- | --- | --- |
|  | 4 | **CF42, F4 - 5, F6, F8-2** |  | 2026-05-13 | 2026-08-11 |  |  |  |  |  |  |  |
| 4S-SS-FN350 |  | Pocket Excavation | 8d | 2026-05-13 A | 2026-05-21 A | Mob-P&M-TC25 SS, 4S-SS-FN325 | 100% |  |  | Physical Progress [2150 h]; Pocket Excavation [248 m3]; TATA Projects Ltd-25 | 47,120 | 47,120 |
| 4S-SS-FN360 |  | Surface dressing | 8d | 2026-05-14 A | 2026-05-22 A | 4S-SS-FN350 | 100% |  |  | Helper [30 h]; Physical Progress [1080 h]; Surface Dressing [189 Sq m]; TATA Projects Ltd-25 | 8,505 | 8,505 |
| 4S-SS-FN370 |  | ATT | 57d | 2026-05-14 A | 2026-07-31 A | 4S-SS-FN360 | 100% | 2026-05-14 | 2026-07-30 | Physical Progress [1080 h]; ATT [208 Sq m]; TATA Projects Ltd-25 | 28,496 | 28,496 |
| 4S-SS-FN375 |  | PCC | 58d | 2026-05-14 A | 2026-08-01 A | 4S-SS-FN370 FF | 100% |  |  | Mason [10 h]; Helper [10 h]; Physical Progress [1080 h]; Concrete M10 [14 m3]; TATA Projects Ltd-25 | 120,946 | 120,946 |
| 4S-SS-FN380 |  | Shuttering | 42d | 2026-06-08 A | 2026-08-11 A | 4S-SS-FN375 | 100% | 2026-06-08 | 2026-08-10 | Carpenter [260 h]; Helper [130 h]; Physical Progress [3230 h]; Formwork [153 Sq m]; TATA Projects Ltd-25 | 178,269.48 | 178,269.48 |
| 4S-SS-FN415 |  | Waterproofing | 35d | 2026-06-15 A | 2026-08-07 A | 4S-SS-FN380, 4S-SS-FN375 | 100% |  |  | Waterproofing (Raft/Grade Slab) [213 Sq m]; Waterprrofing Mason [180 h]; Helper [90 h]; Physical Progress [5390 h]; TATA Projects Ltd-25 | 132,912 | 132,912 |
| 4S-SS-FN460 |  | Reinforcement | 33d | 2026-06-17 A | 2026-08-08 A | 4S-SS-FN415 | 100% | 2026-06-17 | 2026-08-07 | Barbender [1670 h]; Helper [840 h]; Physical Progress [3230 h]; Reinforcement Steel [25 MT1]; TATA Projects Ltd-25 | 2,412,812.5 | 2,412,812.5 |
| 4S-SS-FN490 |  | Concrete | 25d | 2026-06-27 A | 2026-08-11 A | 4S-SS-FN460 | 100% | 2026-06-27 | 2026-08-10 | Mason [50 h]; Helper [50 h]; Physical Progress [1080 h]; Concrete M40 [207 m3]; TATA Projects Ltd-25 | 2,042,469 | 2,042,469 |
|  | 3 | **Pour 3** |  | 2026-04-28 | 2026-10-14 |  |  |  |  |  |  |  |
|  | 1 | **CF17** |  | 2026-05-04 | 2026-07-31 |  |  |  |  |  |  |  |
| 4S-SS-FN365 |  | Pocket Excavation | 0d | 2026-05-04 A | 2026-05-04 A | 4S-SS-FN205 | 100% |  |  | Physical Progress; Pocket Excavation; TATA Projects Ltd-25 |  |  |
| 4S-SS-FN385 |  | Surface dressing | 0d | 2026-05-05 A | 2026-05-05 A | 4S-SS-FN365 | 100% |  |  | Helper; Physical Progress; Surface Dressing; TATA Projects Ltd-25 |  |  |
| 4S-SS-FN395 |  | ATT | 0d | 2026-05-05 A | 2026-05-05 A | 4S-SS-FN385 | 100% |  |  | Physical Progress; ATT; TATA Projects Ltd-25 |  |  |
| 4S-SS-FN400 |  | PCC | 0d | 2026-05-05 A | 2026-05-05 A | 4S-SS-FN395 FF | 100% |  |  | Mason; Helper; Physical Progress; Concrete M10; TATA Projects Ltd-25 |  |  |
| 4S-SS-FN410 |  | Blockwork/Brickwork | 0d | 2026-06-30 A | 2026-06-30 A | 4S-SS-FN400, 4S-SS-FN385 | 100% |  |  | Brickwork for the footing; Mason; Helper; Physical Progress; TATA Projects Ltd-25 |  |  |
| 4S-SS-FN425 |  | Waterproofing | 0d | 2026-07-18 A | 2026-07-18 A | 4S-SS-FN405, 4S-SS-FN400 | 100% |  |  | Waterproofing (Raft/Grade Slab); Waterprrofing Mason; Helper; Physical Progress; TATA Projects Ltd-25 |  |  |
| 4S-SS-FN470 |  | Reinforcement | 4d | 2026-07-23 A | 2026-07-29 A | 4S-SS-FN425 | 100% | 2026-07-23 | 2026-07-28 | Barbender [2800 h]; Helper [1400 h]; Physical Progress [2150 h]; Reinforcement Steel [42 MT1]; TATA Projects Ltd-25 | 4,053,525 | 4,053,525 |
| 4S-SS-FN405 |  | Shuttering | 2d | 2026-07-26 A | 2026-07-29 A | 4S-SS-FN400 | 100% | 2026-07-27 | 2026-07-28 | Carpenter [430 h]; Helper [220 h]; Physical Progress [2150 h]; Formwork [255 Sq m]; TATA Projects Ltd-25 | 297,115.8 | 297,115.8 |
| 4S-SS-FN495 |  | Concrete | 1d | 2026-07-30 A | 2026-07-31 A | 4S-SS-FN470 | 100% | 2026-07-30 | 2026-07-30 | Mason [50 h]; Helper [50 h]; Physical Progress [1080 h]; Concrete M40 [346 m3]; TATA Projects Ltd-25 | 3,413,982 | 3,413,982 |
|  | 4 | **Sump** |  | 2026-07-20 | 2026-10-14 |  |  |  |  |  |  |  |
| 4S-SS-FN435 |  | Pocket Excavation | 2d | 2026-07-20 A | 2026-07-21 A | 4S-SS-FN410 | 100% |  |  | Physical Progress [1080 h]; Pocket Excavation; TATA Projects Ltd-25 |  |  |
| 4S-SS-FN440 |  | Surface dressing | 1d | 2026-07-21 A | 2026-07-22 A | 4S-SS-FN435 | 100% | 2026-07-21 | 2026-07-21 | Helper [30 h]; Physical Progress [1080 h]; Surface Dressing [22 Sq m]; TATA Projects Ltd-25 | 990 | 990 |
| 4S-SS-FN445 |  | ATT | 0d | 2026-07-22 A | 2026-07-22 A | 4S-SS-FN440 | 100% | 2026-07-23 | 2026-07-23 | Physical Progress; ATT; TATA Projects Ltd-25 |  |  |
| 4S-SS-FN450 |  | PCC | 0d | 2026-07-22 A | 2026-07-23 A | 4S-SS-FN445 FF | 100% | 2026-07-23 | 2026-07-23 | Mason; Helper; Physical Progress; Concrete M10; TATA Projects Ltd-25 |  |  |
| 4S-SS-FN455 |  | Shuttering | 1d | 2026-09-30 | 2026-10-01 | 4S-SS-FN450 |  |  |  | Carpenter [40 h]; Helper [20 h]; Physical Progress [2150 h]; Formwork [24 Sq m]; TATA Projects Ltd-25 | 27,963.84 |  |
| 4S-SS-FN485 |  | Waterproofing | 1d | 2026-10-01 | 2026-10-03 | 4S-SS-FN455, 4S-SS-FN450 |  |  |  | Waterproofing (Raft/Grade Slab); Waterprrofing Mason; Helper; Physical Progress; TATA Projects Ltd-25 |  |  |
| 4S-SS-FN510 |  | Reinforcement | 2d | 2026-10-03 | 2026-10-06 | 4S-SS-FN485 |  |  |  | Barbender [70 h]; Helper [40 h]; Physical Progress [2150 h]; Reinforcement Steel [1 MT1]; TATA Projects Ltd-25 | 96,512.5 |  |
| 4S-SS-FN515 |  | MEP Services | 3d | 2026-10-06 | 2026-10-09 | 4S-SS-FN510 |  |  |  | Physical Progress [3230 h]; TATA Projects Ltd-25 |  |  |
| 4S-SS-FN525 |  | Concrete | 1d | 2026-10-13 | 2026-10-14 | 4S-SS-FN510, 4S-SS-FN515, 4S-SS-FN340 FF |  |  |  | Mason [50 h]; Helper [50 h]; Physical Progress [1080 h]; Concrete M40 [8 m3]; TATA Projects Ltd-25 | 78,936 |  |

| ID | WBS | Activity | Duration | Start | Finish | Predecessors | Complete | Planned start | Planned finish | Resources | Cost | Actual cost |
| --- | --- | --- | --- | --- | --- | --- | --- | --- | --- | --- | --- | --- |
|  | 2 | **CF30, CF1F** |  | 2026-05-07 | 2026-08-11 |  |  |  |  |  |  |  |
| 4S-SS-FN430 |  | Pocket Excavation | 4d | 2026-05-07 A | 2026-05-11 A | 4S-SS-FN410, 4S-SS-FN365 | 100% |  |  | Physical Progress [4310 h]; Pocket Excavation [824 m3]; TATA Projects Ltd-25 | 156,560 | 156,560 |
| 4S-SS-FN465 |  | Surface dressing | 4d | 2026-05-08 A | 2026-05-12 A | 4S-SS-FN430 | 100% |  |  | Helper [30 h]; Physical Progress [1080 h]; Surface Dressing [465 Sq m]; TATA Projects Ltd-25 | 20,925 | 20,925 |
| 4S-SS-FN475 |  | ATT | 5d | 2026-05-08 A | 2026-05-13 A | 4S-SS-FN465 | 100% |  |  | Physical Progress [2150 h]; ATT [512 Sq m]; TATA Projects Ltd-25 | 70,144 | 70,144 |
| 4S-SS-FN480 |  | PCC | 5d | 2026-05-08 A | 2026-05-13 A | 4S-SS-FN475 FF | 100% |  |  | Mason [20 h]; Helper [20 h]; Physical Progress [2150 h]; Concrete M10 [35 m3]; TATA Projects Ltd-25 | 302,365 | 302,365 |
| 4S-SS-FN505 |  | Shuttering | 12d | 2026-06-23 A | 2026-07-10 A | 4S-SS-FN480 | 100% | 2026-06-23 | 2026-07-09 | Carpenter [850 h]; Helper [430 h]; Physical Progress [3230 h]; Formwork [507 Sq m]; TATA Projects Ltd-25 | 590,736.12 | 590,736.12 |
| 4S-SS-FN500 |  | Blockwork/Brickwork | 0d | 2026-07-02 A | 2026-07-02 A | 4S-SS-FN480, 4S-SS-FN465 | 100% |  |  | Brickwork for the footing; Mason; Helper; Physical Progress; TATA Projects Ltd-25 |  |  |
| 4S-SS-FN520 |  | Waterproofing | 6d | 2026-07-06 A | 2026-07-15 A | 4S-SS-FN505, 4S-SS-FN480 | 100% | 2026-07-06 | 2026-07-14 | Waterproofing (Raft/Grade Slab) [523 Sq m]; Waterprrofing Mason [440 h]; Helper [220 h]; Physical Progress [5390 h]; TATA Projects Ltd-25 | 326,352 | 326,352 |
| 4S-SS-FN535 |  | Reinforcement | 18d | 2026-07-07 A | 2026-08-09 A | 4S-SS-FN520 | 100% | 2026-07-07 | 2026-08-07 | Barbender [5470 h]; Helper [2740 h]; Physical Progress [3230 h]; Reinforcement Steel [82 MT1]; TATA Projects Ltd-25 | 7,914,025 | 7,914,025 |
| 4S-SS-FN575 |  | Concrete | 14d | 2026-07-15 A | 2026-08-11 A | 4S-SS-FN535 | 100% | 2026-07-16 | 2026-08-10 | Mason [50 h]; Helper [50 h]; Physical Progress [1080 h]; Concrete M40 [687 m3]; TATA Projects Ltd-25 | 6,778,629 | 6,778,629 |
|  | 3 | **F4 - 2, CF12, F3, F6-2, F5-2, F8-2, CF1N** |  | 2026-04-28 | 2026-08-01 |  |  |  |  |  |  |  |
| 4S-SS-FN530 |  | Pocket Excavation | 7d | 2026-04-28 A | 2026-05-06 A | 4S-SS-FN500 | 100% |  |  | Physical Progress [2150 h]; Pocket Excavation [301 m3]; TATA Projects Ltd-25 | 57,190 | 57,190 |
| 4S-SS-FN540 |  | Surface dressing | 7d | 2026-04-29 A | 2026-05-07 A | 4S-SS-FN530 | 100% |  |  | Helper [30 h]; Physical Progress [1080 h]; Surface Dressing [219 Sq m]; TATA Projects Ltd-25 | 9,855 | 9,855 |
| 4S-SS-FN550 |  | ATT | 18d | 2026-05-05 A | 2026-05-25 A | 4S-SS-FN540 | 100% |  |  | Physical Progress [2150 h]; ATT [241 Sq m]; TATA Projects Ltd-25 | 33,017 | 33,017 |
| 4S-SS-FN555 |  | PCC | 18d | 2026-05-05 A | 2026-05-25 A | 4S-SS-FN550 FF | 100% |  |  | Mason [20 h]; Helper [20 h]; Physical Progress [2150 h]; Concrete M10 [16 m3]; TATA Projects Ltd-25 | 138,224 | 138,224 |
| 4S-SS-FN580 |  | Shuttering | 17d | 2026-06-11 A | 2026-06-30 A | 4S-SS-FN555 | 100% |  |  | Carpenter [310 h]; Helper [160 h]; Physical Progress [3230 h]; Formwork [185 Sq m]; TATA Projects Ltd-25 | 215,554.6 | 215,554.6 |
| 4S-SS-FN595 |  | Waterproofing | 23d | 2026-06-15 A | 2026-07-16 A | 4S-SS-FN580, 4S-SS-FN555 | 100% |  |  | Waterproofing (Raft/Grade Slab) [246 Sq m]; Waterprrofing Mason [210 h]; Helper [110 h]; Physical Progress [5390 h]; TATA Projects Ltd-25 | 153,504 | 153,504 |
| 4S-SS-FN610 |  | Reinforcement | 29d | 2026-06-17 A | 2026-07-31 A | 4S-SS-FN595 | 100% | 2026-06-17 | 2026-07-30 | Barbender [2000 h]; Helper [1000 h]; Physical Progress [3230 h]; Reinforcement Steel [30 MT1]; TATA Projects Ltd-25 | 2,895,375 | 2,895,375 |
| 4S-SS-FN625 |  | Concrete | 23d | 2026-06-25 A | 2026-08-01 A | 4S-SS-FN610 | 100% |  |  | Mason [50 h]; Helper [50 h]; Physical Progress [1080 h]; Concrete M40 [251 m3]; TATA Projects Ltd-25 | 2,476,617 | 2,476,617 |
|  | 4 | **Pour 4** |  | 2026-04-21 | 2026-10-16 |  |  |  |  |  |  |  |
|  | 2 | **Sump** |  | 2026-09-30 | 2026-10-16 |  |  |  |  |  |  |  |
| 4S-SS-FN545 |  | Pocket Excavation | 1d | 2026-09-30 | 2026-10-01 | 4S-SS-FN530 |  |  |  | Physical Progress [1080 h]; Pocket Excavation; TATA Projects Ltd-25 |  |  |
| 4S-SS-FN560 |  | Surface dressing | 1d | 2026-10-01 | 2026-10-03 | 4S-SS-FN545 |  |  |  | Helper [30 h]; Physical Progress [1080 h]; Surface Dressing [22 Sq m]; TATA Projects Ltd-25 | 990 |  |
| 4S-SS-FN565 |  | ATT | 1d | 2026-10-03 | 2026-10-05 | 4S-SS-FN560 |  |  |  | Physical Progress [1080 h]; ATT [24 Sq m]; TATA Projects Ltd-25 | 3,288 |  |
| 4S-SS-FN570 |  | PCC | 1d | 2026-10-03 | 2026-10-05 | 4S-SS-FN565 FF |  |  |  | Mason [10 h]; Helper [10 h]; Physical Progress [1080 h]; Concrete M10 [2 m3]; TATA Projects Ltd-25 | 17,278 |  |
| 4S-SS-FN585 |  | Shuttering | 2d | 2026-10-05 | 2026-10-07 | 4S-SS-FN570 |  |  |  | Carpenter [40 h]; Helper [20 h]; Physical Progress [2150 h]; Formwork [24 Sq m]; TATA Projects Ltd-25 | 27,963.84 |  |
| 4S-SS-FN590 |  | Waterproofing | 2d | 2026-10-07 | 2026-10-09 | 4S-SS-FN585, 4S-SS-FN570 |  |  |  | Waterproofing (Raft/Grade Slab) [25 Sq m]; Waterprrofing Mason [20 h]; Helper [20 h]; Physical Progress [2150 h]; TATA Projects Ltd-25 | 15,600 |  |
| 4S-SS-FN600 |  | Reinforcement | 2d | 2026-10-09 | 2026-10-12 | 4S-SS-FN590 |  |  |  | Barbender [70 h]; Helper [40 h]; Physical Progress [2150 h]; Reinforcement Steel [1 MT1]; TATA Projects Ltd-25 | 96,512.5 |  |
| 4S-SS-FN605 |  | MEP Services | 3d | 2026-10-12 | 2026-10-15 | 4S-SS-FN600 |  |  |  | Physical Progress [3230 h]; TATA Projects Ltd-25 |  |  |
| 4S-SS-FN615 |  | Concrete | 1d | 2026-10-15 | 2026-10-16 | 4S-SS-FN605, 4S-SS-FN600, 4S-SS-FN525 FF |  |  |  | Mason [50 h]; Helper [50 h]; Physical Progress [1080 h]; Concrete M40 [8 m3]; TATA Projects Ltd-25 | 78,936 |  |

| ID | WBS | Activity | Duration | Start | Finish | Predecessors | Complete | Planned start | Planned finish | Resources | Cost | Actual cost |
| --- | --- | --- | --- | --- | --- | --- | --- | --- | --- | --- | --- | --- |
|  | 1 | **F5-4, F6-5, F3, F7** |  | 2026-04-21 | 2026-07-18 |  |  |  |  |  |  |  |
| 4S-SS-FN620 |  | Pocket Excavation | 8d | 2026-04-21 A | 2026-04-29 A | Milestones-50 SS | 100% |  |  | Physical Progress [2150 h]; Pocket Excavation [265 m3]; TATA Projects Ltd-25 | 50,350 | 50,350 |
| 4S-SS-FN630 |  | Surface dressing | 11d | 2026-04-22 A | 2026-05-05 A | 4S-SS-FN620 | 100% |  |  | Helper [30 h]; Physical Progress [1080 h]; Surface Dressing [219 Sq m]; TATA Projects Ltd-25 | 9,855 | 9,855 |
| 4S-SS-FN635 |  | ATT | 12d | 2026-04-22 A | 2026-05-06 A | 4S-SS-FN630 | 100% |  |  | Physical Progress [2150 h]; ATT [241 Sq m]; TATA Projects Ltd-25 | 33,017 | 33,017 |
| 4S-SS-FN640 |  | PCC | 12d | 2026-04-22 A | 2026-05-06 A | 4S-SS-FN635 FF | 100% |  |  | Mason [20 h]; Helper [20 h]; Physical Progress [2150 h]; Concrete M10 [16 m3]; TATA Projects Ltd-25 | 138,224 | 138,224 |
| 4S-SS-FN645 |  | Shuttering | 28d | 2026-05-26 A | 2026-06-27 A | 4S-SS-FN640 | 100% |  |  | Carpenter [280 h]; Helper [140 h]; Physical Progress [2150 h]; Formwork [163 Sq m]; TATA Projects Ltd-25 | 189,921.08 | 189,921.08 |
| 4S-SS-FN650 |  | Waterproofing | 21d | 2026-06-04 A | 2026-06-27 A | 4S-SS-FN645, 4S-SS-FN640 | 100% |  |  | Waterproofing (Raft/Grade Slab) [246 Sq m]; Waterprrofing Mason [210 h]; Helper [110 h]; Physical Progress [5390 h]; TATA Projects Ltd-25 | 153,504 | 153,504 |
| 4S-SS-FN655 |  | Reinforcement | 28d | 2026-06-09 A | 2026-07-17 A | 4S-SS-FN650 | 100% | 2026-06-09 | 2026-07-16 | Barbender [1800 h]; Helper [900 h]; Physical Progress [2150 h]; Reinforcement Steel [27 MT1]; TATA Projects Ltd-25 | 2,605,837.5 | 2,605,837.5 |
| 4S-SS-FN660 |  | Concrete | 27d | 2026-06-11 A | 2026-07-18 A | 4S-SS-FN655 | 100% |  |  | Mason [50 h]; Helper [50 h]; Physical Progress [1080 h]; Concrete M40 [221 m3]; TATA Projects Ltd-25 | 2,180,607 | 2,180,607 |
|  | 5 | **Basement 03(Grade Slab)** |  | 2027-01-04 | 2027-03-20 |  |  |  |  |  |  |  |
|  | 1 | **Pour 1** |  | 2027-02-18 | 2027-03-20 |  |  |  |  |  |  |  |
| 4S-SS-GS10 |  | Deshuttering | 4d | 2027-02-18 | 2027-02-23 | 4S-SS-B-01.300 |  |  |  | Physical Progress [4310 h]; TATA Projects Ltd-25 |  |  |
| 4S-SS-GS15 |  | Waterproofing | 5d | 2027-02-23 | 2027-03-01 | 4S-SS-GS10 |  |  |  | Waterproofing (Raft/Grade Slab) [2020 Sq m]; Waterprrofing Mason [1700.83 h]; Helper [850.42 h]; Physical Progress [15034.2 h]; TATA Projects Ltd-25 | 1,260,480 |  |
| 4S-SS-GS20 |  | Reinforcement | 10d | 2027-03-01 | 2027-03-13 | E-GFC-ST-CB-130, 4S-SS-GS15 |  |  |  | Barbender [340 h]; Helper [170 h]; Physical Progress [10770 h]; Reinforcement Steel [5 MT1]; TATA Projects Ltd-25 | 482,562.5 |  |
| 4S-SS-GS25 |  | Shuttering | 2d | 2027-03-13 | 2027-03-16 | 4S-SS-GS20 |  |  |  | Carpenter [20 h]; Helper [10 h]; Physical Progress [2150 h]; Formwork [10 Sq m]; TATA Projects Ltd-25 | 11,651.6 |  |
| 4S-SS-GS30 |  | MEP Coordination | 2d | 2027-03-13 | 2027-03-16 | 4S-SS-GS20 |  |  |  | Physical Progress [2150 h]; TATA Projects Ltd-25 |  |  |
| 4S-SS-GS40 |  | Concrete | 4d | 2027-03-16 | 2027-03-20 | 4S-SS-FN615 FF, 4S-SS-GS30, 4S-SS-GS25 |  |  |  | Mason [200 h]; Helper [200 h]; Physical Progress [4310 h]; Concrete M40 [310 m3]; TATA Projects Ltd-25 | 3,058,770 |  |
|  | 2 | **Pour 2** |  | 2027-02-10 | 2027-03-12 |  |  |  |  |  |  |  |
| 4S-SS-GS35 |  | Deshuttering | 4d | 2027-02-10 | 2027-02-15 | 4S-SS-B-01.535 |  |  |  | Physical Progress [4310 h]; TATA Projects Ltd-25 |  |  |
| 4S-SS-GS45 |  | Waterproofing | 5d | 2027-02-15 | 2027-02-20 | 4S-SS-GS35 |  |  |  | Waterproofing (Raft/Grade Slab) [2056 Sq m]; Waterprrofing Mason [1714.17 h]; Helper [857.08 h]; Physical Progress [15034.2 h]; TATA Projects Ltd-25 | 1,282,944 |  |
| 4S-SS-GS50 |  | Reinforcement | 10d | 2027-02-20 | 2027-03-04 | 4S-SS-GS35, 4S-SS-GS45 |  |  |  | Barbender [340 h]; Helper [170 h]; Physical Progress [10770 h]; Reinforcement Steel [5 MT1]; TATA Projects Ltd-25 | 482,562.5 |  |
| 4S-SS-GS60 |  | Shuttering | 2d | 2027-03-04 | 2027-03-06 | 4S-SS-GS50 |  |  |  | Carpenter [20 h]; Helper [10 h]; Physical Progress [2150 h]; Formwork [10 Sq m]; TATA Projects Ltd-25 | 11,651.6 |  |
| 4S-SS-GS65 |  | MEP Coordination | 2d | 2027-03-04 | 2027-03-06 | 4S-SS-GS50 |  |  |  | Physical Progress [2150 h]; TATA Projects Ltd-25 |  |  |
| 4S-SS-GS70 |  | Concrete | 4d | 2027-03-06 | 2027-03-12 | 4S-SS-GS65, 4S-SS-GS60 |  |  |  | Mason [200 h]; Helper [200 h]; Physical Progress [4310 h]; Concrete M40 [312 m3]; TATA Projects Ltd-25 | 3,078,504 |  |

| ID | WBS | Activity | Duration | Start | Finish | Predecessors | Resources | Cost |
| --- | --- | --- | --- | --- | --- | --- | --- | --- |
|  | 3 | **Pour 3** |  | 2027-02-02 | 2027-03-02 |  |  |  |
| 4S-SS-GS75 |  | Deshuttering | 4d | 2027-02-02 | 2027-02-06 | 4S-SS-B-01.700 | Physical Progress [4310 h]; TATA Projects Ltd-25 |  |
| 4S-SS-GS85 |  | Waterproofing | 5d | 2027-02-06 | 2027-02-12 | 4S-SS-GS75 | Waterproofing (Raft/Grade Slab) [1775 Sq m]; Waterprrofing Mason [1479.17 h]; Helper [739.58 h]; Physical Progress [15034.2 h]; TATA Projects Ltd-25 | 1,107,600 |
| 4S-SS-GS95 |  | Reinforcement | 10d | 2027-02-12 | 2027-02-24 | 4S-SS-GS75, 4S-SS-GS85 | Barbender [340 h]; Helper [170 h]; Physical Progress [10770 h]; Reinforcement Steel [5 MT1]; TATA Projects Ltd-25 | 482,562.5 |
| 4S-SS-GS115 |  | Shuttering | 2d | 2027-02-24 | 2027-02-26 | 4S-SS-GS95 | Carpenter [20 h]; Helper [10 h]; Physical Progress [2150 h]; Formwork [10 Sq m]; TATA Projects Ltd-25 | 11,651.6 |
| 4S-SS-GS120 |  | MEP Coordination | 2d | 2027-02-24 | 2027-02-26 | 4S-SS-GS95 | Physical Progress [2150 h]; TATA Projects Ltd-25 |  |
| 4S-SS-GS125 |  | Concrete | 3d | 2027-02-26 | 2027-03-02 | 4S-SS-GS120, 4S-SS-GS115 | Mason [150 h]; Helper [150 h]; Physical Progress [3230 h]; Concrete M40 [269 m3]; TATA Projects Ltd-25 | 2,654,223 |
|  | 4 | **Pour 4** |  | 2027-01-04 | 2027-01-21 |  |  |  |
| 4S-SS-GS55 |  | Deshuttering | 4d | 2027-01-04 | 2027-01-08 | 4S-SS-B-01.680 | Physical Progress [4310 h]; TATA Projects Ltd-25 |  |
| 4S-SS-GS80 |  | Waterproofing | 3d | 2027-01-08 | 2027-01-12 | 4S-SS-GS55 | Waterproofing (Raft/Grade Slab) [1007 Sq m]; Waterprrofing Mason [839.17 h]; Helper [419.58 h]; Physical Progress [12874.2 h]; TATA Projects Ltd-25 | 628,368 |
| 4S-SS-GS90 |  | Reinforcement | 5d | 2027-01-12 | 2027-01-18 | 4S-SS-GS80 | Barbender [200 h]; Helper [100 h]; Physical Progress [10770 h]; Reinforcement Steel [3 MT1]; TATA Projects Ltd-25 | 289,537.5 |
| 4S-SS-GS100 |  | Shuttering | 2d | 2027-01-18 | 2027-01-20 | 4S-SS-GS90 | Carpenter [20 h]; Helper [10 h]; Physical Progress [2150 h]; Formwork [10 Sq m]; TATA Projects Ltd-25 | 11,651.6 |
| 4S-SS-GS105 |  | MEP Coordination | 2d | 2027-01-18 | 2027-01-20 | 4S-SS-GS90 | Physical Progress [2150 h]; TATA Projects Ltd-25 |  |
| 4S-SS-GS110 |  | Concrete | 1d | 2027-01-20 | 2027-01-21 | 4S-SS-GS105, 4S-SS-GS100 | Mason [50 h]; Helper [50 h]; Physical Progress [1080 h]; Concrete M40 [153 m3]; TATA Projects Ltd-25 | 1,509,651 |
|  | 3 | **Basement 03** |  | 2026-07-25 | 2026-12-09 |  |  |  |
|  | 1 | **Pour 1** |  | 2026-09-30 | 2026-12-09 |  |  |  |
|  | 6 | **Soil Filling & PCC for Grade Slab** |  | 2026-10-09 | 2026-11-05 |  |  |  |
| 4S-SS-B-03.40 |  | LPS | 5d | 2026-10-09 | 2026-10-15 | 4S-SS-B-03.10 | LPS [961303 INR]; Physical Progress [5390 h]; TATA Projects Ltd-25 | 961,303 |
| 4S-SS-B-03.75 |  | Soil Filling/Plum Concrete | 10d | 2026-10-21 | 2026-11-02 | 4S-SS-B-03.65, 4S-SS-B-03.40 | Physical Progress [10770 h]; Plum Concrete [172 m3]; Soil Filling [1023 m3]; Sand Filling [758 m3]; TATA Projects Ltd-25 | 3,495,842 |
| 4S-SS-B-03.85 |  | Surface dressing | 8d | 2026-10-24 | 2026-11-03 | 4S-SS-B-03.75 FF+1d | Helper [240 h]; Physical Progress [8620 h]; Surface Dressing [732 Sq m]; TATA Projects Ltd-25 | 32,940 |
| 4S-SS-B-03.115 |  | ATT | 4d | 2026-10-30 | 2026-11-04 | 4S-SS-B-03.85 FF+1d | Physical Progress [4310 h]; ATT [810 Sq m]; TATA Projects Ltd-25 | 110,970 |
| 4S-SS-B-03.120 |  | PCC | 4d | 2026-10-31 | 2026-11-05 | 4S-SS-B-03.115 FF+1d | Mason [40 h]; Helper [40 h]; Physical Progress [4310 h]; Concrete M10 [185 m3]; TATA Projects Ltd-25 | 1,598,215 |
|  | 1 | **Column, Core Wall, Shear Wall** |  | 2026-09-30 | 2026-10-21 |  |  |  |
| 4S-SS-B-03.10 |  | Reinforcement | 7d | 2026-09-30 | 2026-10-09 | 4S-SS-FN90, 4S-SS-FN210, 4S-SS-FN135, 4S-SS-FN260 | Barbender [5140 h]; Helper [2570 h]; Physical Progress [7540 h]; Reinforcement Steel [77 MT1]; TATA Projects Ltd-25 | 7,431,462.5 |
| 4S-SS-B-03.35 |  | LPS | 1d | 2026-10-09 | 2026-10-10 | P-MEP-LPS-20, 4S-SS-B-03.10 | LPS [41809 INR]; Physical Progress [1080 h]; TATA Projects Ltd-25 | 41,809 |
| 4S-SS-B-03.45 |  | Shuttering | 7d | 2026-10-10 | 2026-10-19 | 4S-SS-B-03.10, 4S-SS-B-03.35 | Carpenter [2990 h]; Helper [1500 h]; Physical Progress [7540 h]; Formwork [1789 Sq m]; TATA Projects Ltd-25 | 2,084,471.24 |
| 4S-SS-B-03.65 |  | Concrete | 1d | 2026-10-19 | 2026-10-21 | 4S-SS-B-03.45 | Mason [100 h]; Helper [100 h]; Physical Progress [2150 h]; Concrete M40 [480 m3]; TATA Projects Ltd-25 | 4,736,160 |

| ID | WBS | Activity | Duration | Start | Finish | Predecessors | Resources | Cost |
| --- | --- | --- | --- | --- | --- | --- | --- | --- |
|  | 4 | **Staircase** |  | 2026-09-30 | 2026-11-04 |  |  |  |
| 4S-SS-B-03.15 |  | Reinforcement of wall upto Flight 1 | 3d | 2026-09-30 | 2026-10-05 | 4S-SS-FN210, 4S-SS-FN90, 4S-SS-FN135, 4S-SS-FN260 | Barbender [70 h]; Helper [40 h]; Physical Progress [3230 h]; Reinforcement Steel [1 MT1]; TATA Projects Ltd-25 | 96,512.5 |
| 4S-SS-B-03.20 |  | Shuttering of wall upto Flight 1 | 3d | 2026-10-05 | 2026-10-08 | 4S-SS-B-03.15 | Carpenter [20 h]; Helper [10 h]; Physical Progress [3230 h]; Formwork [10 Sq m]; TATA Projects Ltd-25 | 11,651.6 |
| 4S-SS-B-03.25 |  | Casting of wall upto Flight 1 | 1d | 2026-10-08 | 2026-10-09 | 4S-SS-B-03.20 | Mason; Helper; Physical Progress [1080 h]; Concrete M40 [3 m3]; TATA Projects Ltd-25 | 29,601 |
| 4S-SS-B-03.30 |  | Shuttering of Staircase upto Flight 1 | 3d | 2026-10-09 | 2026-10-13 | 4S-SS-B-03.25 | Carpenter [20 h]; Helper [10 h]; Physical Progress [3230 h]; Formwork [10 Sq m]; TATA Projects Ltd-25 | 11,651.6 |
| 4S-SS-B-03.50 |  | Reinforcement of Staircase upto Flight 1 | 3d | 2026-10-13 | 2026-10-16 | 4S-SS-B-03.30 | Barbender [70 h]; Helper [40 h]; Physical Progress [3230 h]; Reinforcement Steel [1 MT1]; TATA Projects Ltd-25 | 96,512.5 |
| 4S-SS-B-03.55 |  | MEP coordination upto Flight 1 | 1d | 2026-10-16 | 2026-10-17 | 4S-SS-B-03.50 | Physical Progress [1080 h]; TATA Projects Ltd-25 |  |
| 4S-SS-B-03.60 |  | Casting of Staircase upto Flight 1 | 1d | 2026-10-17 | 2026-10-19 | 4S-SS-B-03.55 | Mason; Helper; Physical Progress [1080 h]; Concrete M40 [3 m3]; TATA Projects Ltd-25 | 29,601 |
| 4S-SS-B-03.70 |  | Reinforcement of wall upto Flight 2 | 3d | 2026-10-19 | 2026-10-23 | 4S-SS-B-03.60 | Barbender [70 h]; Helper [40 h]; Physical Progress [3230 h]; Reinforcement Steel [1 MT1]; TATA Projects Ltd-25 | 96,512.5 |
| 4S-SS-B-03.80 |  | Shuttering of wall upto Flight 2 | 3d | 2026-10-23 | 2026-10-27 | 4S-SS-B-03.70 | Carpenter [20 h]; Helper [10 h]; Physical Progress [3230 h]; Formwork [10 Sq m]; TATA Projects Ltd-25 | 11,651.6 |
| 4S-SS-B-03.90 |  | Casting of wall upto Flight 2 | 1d | 2026-10-27 | 2026-10-28 | 4S-SS-B-03.80 | Mason; Helper; Physical Progress [1080 h]; Concrete M40 [3 m3]; TATA Projects Ltd-25 | 29,601 |
| 4S-SS-B-03.95 |  | Shuttering of Staircase upto Flight 2 | 3d | 2026-10-28 | 2026-10-31 | 4S-SS-B-03.90 | Carpenter [20 h]; Helper [10 h]; Physical Progress [3230 h]; Formwork [10 Sq m]; TATA Projects Ltd-25 | 11,651.6 |
| 4S-SS-B-03.100 |  | Reinforcement of Staircase upto Flight 2 | 3d | 2026-10-31 | 2026-11-04 | 4S-SS-B-03.95 | Barbender [70 h]; Helper [40 h]; Physical Progress [3230 h]; Reinforcement Steel [1 MT1]; TATA Projects Ltd-25 | 96,512.5 |
|  | 3 | **Slab** |  | 2026-11-05 | 2026-12-09 |  |  |  |
| 4S-SS-B-03.130 |  | Shuttering | 5d | 2026-11-05 | 2026-11-11 | 4S-SS-B-03.120, E-GFC-ST-CB-120, 4S-SS-B-03.65 | Carpenter [4120 h]; Helper [2060 h]; Physical Progress [5390 h]; Formwork [2470 Sq m]; TATA Projects Ltd-25 | 2,877,945.2 |
| 4S-SS-B-03.160 |  | Reinforcement Bottom Net with chairs | 3d | 2026-11-11 | 2026-11-14 | 4S-SS-B-03.130 | Barbender [1000 h]; Helper [500 h]; Physical Progress [3230 h]; Reinforcement Steel [15 MT1]; TATA Projects Ltd-25 | 1,447,687.5 |
| 4S-SS-B-03.200 |  | Laying of PT Tendon | 4d | 2026-11-14 | 2026-11-19 | P-Civil-PT-20, 4S-SS-B-03.160 | Physical Progress [4310 h]; TATA Projects Ltd-25 |  |
| 4S-SS-B-03.230 |  | Reinforcement Top Net | 3d | 2026-11-19 | 2026-11-23 | 4S-SS-B-03.200 | Barbender [1000 h]; Helper [500 h]; Physical Progress [3230 h]; Reinforcement Steel [15 MT1]; TATA Projects Ltd-25 | 1,447,687.5 |
| 4S-SS-B-03.235 |  | MEP Coordination | 1d | 2026-11-23 | 2026-11-24 | 4S-SS-B-03.100, 4S-SS-B-03.230 | Physical Progress [1080 h]; TATA Projects Ltd-25 |  |
| 4S-SS-B-03.255 |  | Concrete of Slab | 1d | 2026-11-24 | 2026-11-25 | 4S-SS-B-03.235 | Mason [50 h]; Helper [50 h]; Physical Progress [1080 h]; Concrete M40 [618 m3]; TATA Projects Ltd-25 | 6,097,806 |
| 4S-SS-B-03.265 |  | Wait for Strength Gain | 6d | 2026-11-25 | 2026-12-02 | 4S-SS-B-03.255 | Physical Progress [6460 h]; TATA Projects Ltd-25 |  |
| 4S-SS-B-03.305 |  | PT Work | 6d | 2026-12-02 | 2026-12-09 | 4S-SS-B-03.265 | PT [8 MT1]; Helper [100 h]; PT Fitter [100 h]; Physical Progress [5390 h]; TATA Projects Ltd-25 | 1,520,000 |
|  | 2 | **Pour 2** |  | 2026-08-05 | 2026-12-01 |  |  |  |
|  | 6 | **Soil Filling & PCC for Grade Slab** |  | 2026-09-30 | 2026-10-28 |  |  |  |
| 4S-SS-B-03.150 |  | LPS | 5d | 2026-09-30 | 2026-10-07 | 4S-SS-B-03.105 | LPS [968912 INR]; Physical Progress [5390 h]; TATA Projects Ltd-25 | 968,912 |
| 4S-SS-B-03.190 |  | Soil Filling/Plum Concrete | 10d | 2026-10-12 | 2026-10-24 | 4S-SS-B-03.180, 4S-SS-B-03.150, 4S-SS-FN490 | Physical Progress [10770 h]; Plum Concrete [172 m3]; Soil Filling [1031 m3]; Sand Filling [764 m3]; TATA Projects Ltd-25 | 3,514,236 |
| 4S-SS-B-03.205 |  | Surface dressing | 8d | 2026-10-15 | 2026-10-26 | 4S-SS-B-03.190 FF+1d | Helper [240 h]; Physical Progress [8620 h]; Surface Dressing [738 Sq m]; TATA Projects Ltd-25 | 33,210 |
| 4S-SS-B-03.250 |  | ATT | 4d | 2026-10-22 | 2026-10-27 | 4S-SS-B-03.205 FF+1d | Physical Progress [4310 h]; ATT [816 Sq m]; TATA Projects Ltd-25 | 111,792 |
| 4S-SS-B-03.260 |  | PCC | 4d | 2026-10-23 | 2026-10-28 | 4S-SS-B-03.250 FF+1d | Mason [40 h]; Helper [40 h]; Physical Progress [4310 h]; Concrete M10 [186 m3]; TATA Projects Ltd-25 | 1,606,854 |

| ID | WBS | Activity | Duration | Start | Finish | Predecessors | Complete | Remaining | Planned start | Planned finish | Resources | Cost | Actual cost |
| --- | --- | --- | --- | --- | --- | --- | --- | --- | --- | --- | --- | --- | --- |
|  | 1 | **Column, Core Wall, Shear Wall** |  | 2026-08-05 | 2026-10-12 |  |  |  |  |  |  |  |  |
| 4S-SS-B-03.105 |  | Reinforcement | 25d | 2026-08-05 A | 2026-09-25 A | 4S-SS-FN265, 4S-SS-FN420, 4S-SS-FN355, 4S-SS-FN490 | 100% |  | 2026-08-05 | 2026-09-24 | Barbender [5200 h]; Helper [2600 h]; Physical Progress [7540 h]; Reinforcement Steel [78 MT1]; TATA Projects Ltd-25 | 7,527,975 | 7,527,975 |
| 4S-SS-B-03.145 |  | LPS | 17.9d | 2026-08-17 A | 2026-09-21 A | 4S-SS-B-03.105 SS | 100% |  |  |  | LPS [41809 INR]; Physical Progress [1080 h]; TATA Projects Ltd-25 | 41,809 | 41,809 |
| 4S-SS-B-03.155 |  | Shuttering | 27.4d | 2026-08-17 A | 2026-10-06 | 4S-SS-B-03.105 SS, 4S-SS-B-03.145 SS | 50% | 3.5d |  |  | Carpenter [3010 h]; Helper [1510 h]; Physical Progress [7540 h]; Formwork [1803 Sq m]; TATA Projects Ltd-25 | 2,100,783.48 | 1,832,435.23 |
| 4S-SS-B-03.180 |  | Concrete | 31.4d | 2026-08-18 A | 2026-10-12 | 4S-SS-B-03.155 FF+5d | 32% | 1.36d | 2026-08-19 | 2026-10-12 | Mason [100 h]; Helper [100 h]; Physical Progress [2150 h]; Concrete M40 [484 m3]; TATA Projects Ltd-25 | 4,775,628 | 4,568,785.51 |
|  | 4 | **Staircase** |  | 2026-09-30 | 2026-11-04 |  |  |  |  |  |  |  |  |
| 4S-SS-B-03.110 |  | Reinforcement of wall upto Flight 1 | 3d | 2026-09-30 | 2026-10-05 | 4S-SS-FN355, 4S-SS-FN490 |  |  |  |  | Barbender [70 h]; Helper [40 h]; Physical Progress [3230 h]; Reinforcement Steel [1 MT1]; TATA Projects Ltd-25 | 96,512.5 |  |
| 4S-SS-B-03.125 |  | Shuttering of wall upto Flight 1 | 3d | 2026-10-05 | 2026-10-08 | 4S-SS-B-03.110 |  |  |  |  | Carpenter [20 h]; Helper [10 h]; Physical Progress [3230 h]; Formwork [10 Sq m]; TATA Projects Ltd-25 | 11,651.6 |  |
| 4S-SS-B-03.135 |  | Casting of wall upto Flight 1 | 1d | 2026-10-08 | 2026-10-09 | 4S-SS-B-03.125 |  |  |  |  | Mason; Helper; Physical Progress [1080 h]; Concrete M40 [3 m3]; TATA Projects Ltd-25 | 29,601 |  |
| 4S-SS-B-03.140 |  | Shuttering of Staircase upto Flight 1 | 3d | 2026-10-09 | 2026-10-13 | 4S-SS-B-03.135 |  |  |  |  | Carpenter [20 h]; Helper [10 h]; Physical Progress [3230 h]; Formwork [10 Sq m]; TATA Projects Ltd-25 | 11,651.6 |  |
| 4S-SS-B-03.165 |  | Reinforcement of Staircase upto Flight 1 | 3d | 2026-10-13 | 2026-10-16 | 4S-SS-B-03.140 |  |  |  |  | Barbender [70 h]; Helper [40 h]; Physical Progress [3230 h]; Reinforcement Steel [1 MT1]; TATA Projects Ltd-25 | 96,512.5 |  |
| 4S-SS-B-03.170 |  | MEP coordination upto Flight 1 | 1d | 2026-10-16 | 2026-10-17 | 4S-SS-B-03.165 |  |  |  |  | Physical Progress [1080 h]; TATA Projects Ltd-25 |  |  |
| 4S-SS-B-03.175 |  | Casting of Staircase upto Flight 1 | 1d | 2026-10-17 | 2026-10-19 | 4S-SS-B-03.170 |  |  |  |  | Mason; Helper; Physical Progress [1080 h]; Concrete M40 [3 m3]; TATA Projects Ltd-25 | 29,601 |  |
| 4S-SS-B-03.185 |  | Reinforcement of wall upto Flight 2 | 3d | 2026-10-19 | 2026-10-23 | 4S-SS-B-03.175 |  |  |  |  | Barbender [70 h]; Helper [40 h]; Physical Progress [3230 h]; Reinforcement Steel [1 MT1]; TATA Projects Ltd-25 | 96,512.5 |  |
| 4S-SS-B-03.195 |  | Shuttering of wall upto Flight 2 | 3d | 2026-10-23 | 2026-10-27 | 4S-SS-B-03.185 |  |  |  |  | Carpenter [20 h]; Helper [10 h]; Physical Progress [3230 h]; Formwork [10 Sq m]; TATA Projects Ltd-25 | 11,651.6 |  |
| 4S-SS-B-03.210 |  | Casting of wall upto Flight 2 | 1d | 2026-10-27 | 2026-10-28 | 4S-SS-B-03.195 |  |  |  |  | Mason; Helper; Physical Progress [1080 h]; Concrete M40 [3 m3]; TATA Projects Ltd-25 | 29,601 |  |
| 4S-SS-B-03.215 |  | Shuttering of Staircase upto Flight 2 | 3d | 2026-10-28 | 2026-10-31 | 4S-SS-B-03.210 |  |  |  |  | Carpenter [20 h]; Helper [10 h]; Physical Progress [3230 h]; Formwork [10 Sq m]; TATA Projects Ltd-25 | 11,651.6 |  |
| 4S-SS-B-03.240 |  | Reinforcement of Staircase upto Flight 2 | 3d | 2026-10-31 | 2026-11-04 | 4S-SS-B-03.215 |  |  |  |  | Barbender [70 h]; Helper [40 h]; Physical Progress [3230 h]; Reinforcement Steel [1 MT1]; TATA Projects Ltd-25 | 96,512.5 |  |
|  | 3 | **Slab** |  | 2026-10-28 | 2026-12-01 |  |  |  |  |  |  |  |  |
| 4S-SS-B-03.290 |  | Shuttering | 5d | 2026-10-28 | 2026-11-03 | 4S-SS-B-03.260, E-GFC-ST-CB-120, 4S-SS-B-03.180 |  |  |  |  | Carpenter [4150 h]; Helper [2080 h]; Physical Progress [5390 h]; Formwork [2490 Sq m]; TATA Projects Ltd-25 | 2,901,248.4 |  |
| 4S-SS-B-03.310 |  | Reinforcement Bottom Net with chairs | 3d | 2026-11-03 | 2026-11-06 | 4S-SS-B-03.290 |  |  |  |  | Barbender [1000 h]; Helper [500 h]; Physical Progress [3230 h]; Reinforcement Steel [15 MT1]; TATA Projects Ltd-25 | 1,447,687.5 |  |
| 4S-SS-B-03.340 |  | Laying of PT Tendon | 4d | 2026-11-06 | 2026-11-11 | 4S-SS-B-03.310 |  |  |  |  | Physical Progress [4310 h]; TATA Projects Ltd-25 |  |  |
| 4S-SS-B-03.375 |  | Reinforcement Top Net | 3d | 2026-11-11 | 2026-11-14 | 4S-SS-B-03.340 |  |  |  |  | Barbender [1000 h]; Helper [500 h]; Physical Progress [3230 h]; Reinforcement Steel [15 MT1]; TATA Projects Ltd-25 | 1,447,687.5 |  |
| 4S-SS-B-03.390 |  | MEP Coordination | 1d | 2026-11-14 | 2026-11-16 | 4S-SS-B-03.240, 4S-SS-B-03.375 |  |  |  |  | Physical Progress [1080 h]; TATA Projects Ltd-25 |  |  |
| 4S-SS-B-03.395 |  | Concrete of Slab | 1d | 2026-11-16 | 2026-11-17 | 4S-SS-B-03.390 |  |  |  |  | Mason [50 h]; Helper [50 h]; Physical Progress [1080 h]; Concrete M40 [622 m3]; TATA Projects Ltd-25 | 6,137,274 |  |
| 4S-SS-B-03.410 |  | Wait for Strength Gain | 6d | 2026-11-17 | 2026-11-24 | 4S-SS-B-03.395 |  |  |  |  | Physical Progress [6460 h]; TATA Projects Ltd-25 |  |  |
| 4S-SS-B-03.440 |  | PT Work | 6d | 2026-11-24 | 2026-12-01 | 4S-SS-B-03.410 |  |  |  |  | PT [8 MT1]; Helper [100 h]; PT Fitter [100 h]; Physical Progress [10770 h]; TATA Projects Ltd-25 | 1,520,000 |  |

| ID | WBS | Activity | Duration | Start | Finish | Predecessors | Complete | Remaining | Resources | Cost | Actual cost |
| --- | --- | --- | --- | --- | --- | --- | --- | --- | --- | --- | --- |
|  | 3 | **Pour 3** |  | 2026-07-25 | 2026-11-25 |  |  |  |  |  |  |
|  | 6 | **Soil Filling & PCC for Grade Slab** |  | 2026-09-30 | 2026-10-22 |  |  |  |  |  |  |
| 4S-SS-B-03.285 |  | LPS | 5d | 2026-09-30 | 2026-10-07 | 4S-SS-B-03.220 |  |  | LPS [836004 INR]; Physical Progress [5390 h]; TATA Projects Ltd-25 | 836,004 |  |
| 4S-SS-B-03.345 |  | Soil Filling/Plum Concrete | 10d | 2026-10-07 | 2026-10-19 | 4S-SS-B-03.330, 4S-SS-B-03.285, 4S-SS-FN625 |  |  | Physical Progress [10770 h]; Plum Concrete [148 m3]; Soil Filling [890 m3]; Sand Filling [659 m3]; TATA Projects Ltd-25 | 3,028,941 |  |
| 4S-SS-B-03.370 |  | Surface dressing | 8d | 2026-10-09 | 2026-10-19 | 4S-SS-B-03.345 FF |  |  | Helper [240 h]; Physical Progress [8620 h]; Surface Dressing [636 Sq m]; TATA Projects Ltd-25 | 28,620 |  |
| 4S-SS-B-03.405 |  | ATT | 4d | 2026-10-15 | 2026-10-21 | 4S-SS-B-03.370 FF+1d |  |  | Physical Progress [4310 h]; ATT [704 Sq m]; TATA Projects Ltd-25 | 96,448 |  |
| 4S-SS-B-03.420 |  | PCC | 4d | 2026-10-16 | 2026-10-22 | 4S-SS-B-03.405 FF+1d |  |  | Mason [40 h]; Helper [40 h]; Physical Progress [4310 h]; Concrete M10 [161 m3]; TATA Projects Ltd-25 | 1,390,879 |  |
|  | 1 | **Column, Core Wall, Shear Wall** |  | 2026-07-25 | 2026-10-03 |  |  |  |  |  |  |
| 4S-SS-B-03.220 |  | Reinforcement | 27.9d | 2026-07-25 A | 2026-09-19 A | 4S-SS-FN495, 4S-SS-FN575, 4S-SS-FN625 | 100% |  | Barbender [4470 h]; Helper [2240 h]; Physical Progress [7540 h]; Reinforcement Steel [67 MT1]; TATA Projects Ltd-25 | 6,466,337.5 | 6,466,337.5 |
| 4S-SS-B-03.280 |  | LPS | 19.9d | 2026-08-01 A | 2026-09-10 A | 4S-SS-B-03.220 SS | 100% |  | LPS [41809 INR]; Physical Progress [1080 h]; TATA Projects Ltd-25 | 41,809 | 41,809 |
| 4S-SS-B-03.295 |  | Shuttering | 32.3d | 2026-08-01 A | 2026-10-03 | 4S-SS-B-03.220 SS, 4S-SS-B-03.280 SS | 80% | 1.4d | Carpenter [2600 h]; Helper [1300 h]; Physical Progress [7540 h]; Formwork [1556 Sq m]; TATA Projects Ltd-25 | 1,812,988.96 | 1,734,407.4 |
| 4S-SS-B-03.330 |  | Concrete | 29.3d | 2026-08-07 A | 2026-10-03 | 4S-SS-B-03.295 FF | 80% | 0.4d | Mason [100 h]; Helper [100 h]; Physical Progress [2150 h]; Concrete M40 [417 m3]; TATA Projects Ltd-25 | 4,114,539 | 4,058,367.82 |
|  | 7 | **Staircase** |  | 2026-09-30 | 2026-11-04 |  |  |  |  |  |  |
| 4S-SS-B-03.225 |  | Reinforcement of wall upto Flight 1 | 3d | 2026-09-30 | 2026-10-05 | 4S-SS-FN575, 4S-SS-FN625 |  |  | Barbender [70 h]; Helper [40 h]; Physical Progress [3230 h]; Reinforcement Steel [1 MT1]; TATA Projects Ltd-25 | 96,512.5 |  |
| 4S-SS-B-03.245 |  | Shuttering of wall upto Flight 1 | 3d | 2026-10-05 | 2026-10-08 | 4S-SS-B-03.225 |  |  | Carpenter [20 h]; Helper [10 h]; Physical Progress [3230 h]; Formwork [10 Sq m]; TATA Projects Ltd-25 | 11,651.6 |  |
| 4S-SS-B-03.270 |  | Casting of wall upto Flight 1 | 1d | 2026-10-08 | 2026-10-09 | 4S-SS-B-03.245 |  |  | Mason; Helper; Physical Progress [1080 h]; Concrete M40 [3 m3]; TATA Projects Ltd-25 | 29,601 |  |
| 4S-SS-B-03.275 |  | Shuttering of Staircase upto Flight 1 | 3d | 2026-10-09 | 2026-10-13 | 4S-SS-B-03.270 |  |  | Carpenter [20 h]; Helper [10 h]; Physical Progress [3230 h]; Formwork [10 Sq m]; TATA Projects Ltd-25 | 11,651.6 |  |
| 4S-SS-B-03.300 |  | Reinforcement of Staircase upto Flight 1 | 3d | 2026-10-13 | 2026-10-16 | 4S-SS-B-03.275 |  |  | Barbender [70 h]; Helper [40 h]; Physical Progress [3230 h]; Reinforcement Steel [1 MT1]; TATA Projects Ltd-25 | 96,512.5 |  |
| 4S-SS-B-03.315 |  | MEP coordination upto Flight 1 | 1d | 2026-10-16 | 2026-10-17 | 4S-SS-B-03.300 |  |  | Physical Progress [1080 h]; TATA Projects Ltd-25 |  |  |
| 4S-SS-B-03.325 |  | Casting of Staircase upto Flight 1 | 1d | 2026-10-17 | 2026-10-19 | 4S-SS-B-03.315 |  |  | Mason; Helper; Physical Progress [1080 h]; Concrete M40 [3 m3]; TATA Projects Ltd-25 | 29,601 |  |
| 4S-SS-B-03.335 |  | Reinforcement of wall upto Flight 2 | 3d | 2026-10-19 | 2026-10-23 | 4S-SS-B-03.325 |  |  | Barbender [70 h]; Helper [40 h]; Physical Progress [3230 h]; Reinforcement Steel [1 MT1]; TATA Projects Ltd-25 | 96,512.5 |  |
| 4S-SS-B-03.350 |  | Shuttering of wall upto Flight 2 | 3d | 2026-10-23 | 2026-10-27 | 4S-SS-B-03.335 |  |  | Carpenter [20 h]; Helper [10 h]; Physical Progress [3230 h]; Formwork [10 Sq m]; TATA Projects Ltd-25 | 11,651.6 |  |
| 4S-SS-B-03.380 |  | Casting of wall upto Flight 2 | 1d | 2026-10-27 | 2026-10-28 | 4S-SS-B-03.350 |  |  | Mason; Helper; Physical Progress [1080 h]; Concrete M40 [3 m3]; TATA Projects Ltd-25 | 29,601 |  |
| 4S-SS-B-03.385 |  | Shuttering of Staircase upto Flight 2 | 3d | 2026-10-28 | 2026-10-31 | 4S-SS-B-03.380 |  |  | Carpenter [20 h]; Helper [10 h]; Physical Progress [3230 h]; Formwork [10 Sq m]; TATA Projects Ltd-25 | 11,651.6 |  |
| 4S-SS-B-03.415 |  | Reinforcement of Staircase upto Flight 2 | 3d | 2026-10-31 | 2026-11-04 | 4S-SS-B-03.385 |  |  | Barbender [70 h]; Helper [40 h]; Physical Progress [3230 h]; Reinforcement Steel [1 MT1]; TATA Projects Ltd-25 | 96,512.5 |  |

| ID | WBS | Activity | Duration | Start | Finish | Predecessors | Complete | Remaining | Planned start | Planned finish | Resources | Cost | Actual cost |
| --- | --- | --- | --- | --- | --- | --- | --- | --- | --- | --- | --- | --- | --- |
|  | 4 | **Slab** |  | 2026-10-22 | 2026-11-25 |  |  |  |  |  |  |  |  |
| 4S-SS-B-03.430 |  | Shuttering | 5d | 2026-10-22 | 2026-10-28 | 4S-SS-B-03.420, E-GFC-ST-CB-120, 4S-SS-B-03.330 |  |  |  |  | Carpenter [3580 h]; Helper [1790 h]; Physical Progress [5390 h]; Formwork [2148 Sq m]; TATA Projects Ltd-25 | 2,502,763.68 |  |
| 4S-SS-B-03.445 |  | Reinforcement Bottom Net with chairs | 3d | 2026-10-28 | 2026-10-31 | 4S-SS-B-03.430 |  |  |  |  | Barbender [870 h]; Helper [440 h]; Physical Progress [3230 h]; Reinforcement Steel [13 MT1]; TATA Projects Ltd-25 | 1,254,662.5 |  |
| 4S-SS-B-03.460 |  | Laying of PT Tendon | 4d | 2026-10-31 | 2026-11-05 | 4S-SS-B-03.445 |  |  |  |  | Physical Progress [4310 h]; TATA Projects Ltd-25 |  |  |
| 4S-SS-B-03.470 |  | Reinforcement Top Net | 3d | 2026-11-05 | 2026-11-09 | 4S-SS-B-03.460 |  |  |  |  | Barbender [870 h]; Helper [440 h]; Physical Progress [3230 h]; Reinforcement Steel [13 MT1]; TATA Projects Ltd-25 | 1,254,662.5 |  |
| 4S-SS-B-03.480 |  | MEP Coordination | 1d | 2026-11-09 | 2026-11-10 | 4S-SS-B-03.470, 4S-SS-B-03.415 |  |  |  |  | Physical Progress [1080 h]; TATA Projects Ltd-25 |  |  |
| 4S-SS-B-03.485 |  | Concrete of Slab | 1d | 2026-11-10 | 2026-11-11 | 4S-SS-B-03.480 |  |  |  |  | Mason [50 h]; Helper [50 h]; Physical Progress [1080 h]; Concrete M40 [537 m3]; TATA Projects Ltd-25 | 5,298,579 |  |
| 4S-SS-B-03.495 |  | Wait for Strength Gain | 6d | 2026-11-11 | 2026-11-18 | 4S-SS-B-03.485 |  |  |  |  | Physical Progress [6460 h]; TATA Projects Ltd-25 |  |  |
| 4S-SS-B-03.510 |  | PT Work | 6d | 2026-11-18 | 2026-11-25 | 4S-SS-B-03.495 |  |  |  |  | PT [7 MT1]; Helper [100 h]; PT Fitter [100 h]; Physical Progress [10770 h]; TATA Projects Ltd-25 | 1,330,000 |  |
|  | 4 | **Pour 4** |  | 2026-07-25 | 2026-11-06 |  |  |  |  |  |  |  |  |
|  | 6 | **Soil Filling & PCC for Grade Slab** |  | 2026-08-01 | 2026-10-06 |  |  |  |  |  |  |  |  |
| 4S-SS-B-03.360 |  | LPS | 25.1d | 2026-08-01 A | 2026-09-23 A | 4S-SS-B-03.320 | 100% |  | 2026-08-01 | 2026-09-22 | LPS [474310 INR]; Physical Progress [5390 h]; TATA Projects Ltd-25 | 474,310 | 474,310 |
| 4S-SS-B-03.425 |  | Soil Filling/Plum Concrete | 7.1d | 2026-09-10 A | 2026-09-25 A | 4S-SS-B-03.400, 4S-SS-B-03.360, 4S-SS-FN660 | 100% |  | 2026-09-10 | 2026-09-24 | Physical Progress [8620 h]; Plum Concrete [84 m3]; Soil Filling [505 m3]; Sand Filling [374 m3]; TATA Projects Ltd-25 | 1,719,026 | 1,719,026 |
| 4S-SS-B-03.435 |  | Surface dressing | 6.7d | 2026-09-23 A | 2026-10-03 | 4S-SS-B-03.425 SS+1d | 70% | 1.8d | 2026-09-24 | 2026-10-03 | Helper [180 h]; Physical Progress [6460 h]; Surface Dressing [361 Sq m]; TATA Projects Ltd-25 | 16,245 | 11,880.67 |
| 4S-SS-B-03.450 |  | ATT | 7.7d | 2026-09-23 A | 2026-10-05 | 4S-SS-B-03.435 FF+1d | 30% | 1.4d | 2026-09-24 | 2026-10-05 | Physical Progress [2150 h]; ATT [400 Sq m]; TATA Projects Ltd-25 | 54,800 | 44,836.36 |
| 4S-SS-B-03.455 |  | PCC | 8.7d | 2026-09-23 A | 2026-10-06 | 4S-SS-B-03.450 FF+1d | 30% | 1.4d | 2026-09-24 | 2026-10-06 | Mason [20 h]; Helper [20 h]; Physical Progress [2150 h]; Concrete M10 [91 m3]; TATA Projects Ltd-25 | 786,149 | 659,642.26 |
|  | 2 | **Columns** |  | 2026-07-25 | 2026-09-04 |  |  |  |  |  |  |  |  |
| 4S-SS-B-03.320 |  | Reinforcement | 19d | 2026-07-25 A | 2026-09-02 A | 4S-SS-FN660 | 100% |  | 2026-07-25 | 2026-09-01 | Barbender [2540 h]; Helper [1270 h]; Physical Progress [5390 h]; Reinforcement Steel [38 MT1]; TATA Projects Ltd-25 | 3,667,475 | 3,667,475 |
| 4S-SS-B-03.355 |  | LPS | 18d | 2026-07-28 A | 2026-09-03 A | 4S-SS-B-03.320 | 100% |  |  |  | LPS [41809 INR]; Physical Progress [1080 h]; TATA Projects Ltd-25 | 41,809 | 41,809 |
| 4S-SS-B-03.365 |  | Shuttering | 14d | 2026-08-04 A | 2026-09-04 A | 4S-SS-B-03.320, 4S-SS-B-03.355 | 100% |  | 2026-08-05 | 2026-09-03 | Carpenter [1480 h]; Helper [740 h]; Physical Progress [5390 h]; Formwork [883 Sq m]; TATA Projects Ltd-25 | 1,028,836.28 | 1,028,836.28 |
| 4S-SS-B-03.400 |  | Concrete | 13d | 2026-08-07 A | 2026-09-04 A | 4S-SS-B-03.365 | 100% |  | 2026-08-07 | 2026-09-03 | Mason [100 h]; Helper [100 h]; Physical Progress [2150 h]; Concrete M40 [237 m3]; TATA Projects Ltd-25 | 2,338,479 | 2,338,479 |
|  | 3 | **Slab** |  | 2026-09-24 | 2026-11-06 |  |  |  |  |  |  |  |  |
| 4S-SS-B-03.465 |  | Shuttering | 11.8d | 2026-09-24 A | 2026-10-09 | E-GFC-ST-CB-120 SS, 4S-SS-B-03.455 SS, 4S-SS-B-03.400 | 10% | 4.5d |  |  | Carpenter [2040 h]; Helper [1020 h]; Physical Progress [5390 h]; Formwork [1219 Sq m]; TATA Projects Ltd-25 | 1,420,330.04 | 878,678.75 |
| 4S-SS-B-03.475 |  | Reinforcement Bottom Net with chairs | 3d | 2026-10-09 | 2026-10-13 | 4S-SS-B-03.465 |  |  |  |  | Barbender [540 h]; Helper [270 h]; Physical Progress [3230 h]; Reinforcement Steel [8 MT1]; TATA Projects Ltd-25 | 772,100 |  |
| 4S-SS-B-03.490 |  | Laying of PT Tendon | 4d | 2026-10-13 | 2026-10-17 | 4S-SS-B-03.475 |  |  |  |  | Physical Progress [4310 h]; TATA Projects Ltd-25 |  |  |
| 4S-SS-B-03.500 |  | Reinforcement Top Net | 2d | 2026-10-17 | 2026-10-21 | 4S-SS-B-03.490 |  |  |  |  | Barbender [540 h]; Helper [270 h]; Physical Progress [2150 h]; Reinforcement Steel [8 MT1]; TATA Projects Ltd-25 | 772,100 |  |
| 4S-SS-B-03.505 |  | MEP Coordination | 1d | 2026-10-21 | 2026-10-22 | 4S-SS-B-03.500 |  |  |  |  | Physical Progress [1080 h]; TATA Projects Ltd-25 |  |  |
| 4S-SS-B-03.515 |  | Concrete of Slab | 1d | 2026-10-22 | 2026-10-23 | 4S-SS-B-03.505 |  |  |  |  | Mason [50 h]; Helper [50 h]; Physical Progress [1080 h]; Concrete M40 [305 m3]; TATA Projects Ltd-25 | 3,009,435 |  |
| 4S-SS-B-03.520 |  | Wait for Strength Gain | 6d | 2026-10-23 | 2026-10-30 | 4S-SS-B-03.515 |  |  |  |  | Physical Progress [6460 h]; TATA Projects Ltd-25 |  |  |
| 4S-SS-B-03.525 |  | PT Work | 6d | 2026-10-30 | 2026-11-06 | 4S-SS-B-03.520 |  |  |  |  | PT [4 MT1]; Helper [100 h]; PT Fitter [100 h]; Physical Progress [10770 h]; TATA Projects Ltd-25 | 760,000 |  |

| ID | WBS | Activity | Duration | Start | Finish | Predecessors | Resources | Cost |
| --- | --- | --- | --- | --- | --- | --- | --- | --- |
|  | 1 | **Basement 02** |  | 2026-10-23 | 2027-01-19 |  |  |  |
|  | 1 | **Pour 1** |  | 2026-11-25 | 2027-01-19 |  |  |  |
|  | 1 | **Column, Core Wall, Shear Wall** |  | 2026-11-25 | 2026-12-14 |  |  |  |
| 4S-SS-B-02.10 |  | Reinforcement | 7d | 2026-11-25 | 2026-12-03 | 4S-SS-B-03.255 | Barbender [4400 h]; Helper [2200 h]; Physical Progress [7540 h]; Reinforcement Steel [66 MT1]; TATA Projects Ltd-25 | 6,369,825 |
| 4S-SS-B-02.30 |  | LPS | 1d | 2026-12-03 | 2026-12-04 | 4S-SS-B-02.10 | LPS [41809 INR]; Physical Progress [1080 h]; TATA Projects Ltd-25 | 41,809 |
| 4S-SS-B-02.40 |  | Shuttering | 7d | 2026-12-04 | 2026-12-12 | 4S-SS-B-02.10, 4S-SS-B-02.30 | Carpenter [2090 h]; Helper [1050 h]; Physical Progress [7540 h]; Formwork [1249 Sq m]; TATA Projects Ltd-25 | 1,455,284.84 |
| 4S-SS-B-02.60 |  | Concrete | 1d | 2026-12-12 | 2026-12-14 | 4S-SS-B-02.40 | Mason [50 h]; Helper [50 h]; Physical Progress [1080 h]; Concrete M40 [312 m3]; TATA Projects Ltd-25 | 3,078,504 |
|  | 3 | **Staircase** |  | 2026-11-25 | 2026-12-29 |  |  |  |
| 4S-SS-B-02.15 |  | Reinforcement of wall upto Flight 1 | 3d | 2026-11-25 | 2026-11-28 | 4S-SS-B-03.255 | Barbender [70 h]; Helper [40 h]; Physical Progress [3230 h]; Reinforcement Steel [1 MT1]; TATA Projects Ltd-25 | 96,512.5 |
| 4S-SS-B-02.20 |  | Shuttering of wall upto Flight 1 | 3d | 2026-11-28 | 2026-12-02 | 4S-SS-B-02.15 | Carpenter [20 h]; Helper [10 h]; Physical Progress [3230 h]; Formwork [10 Sq m]; TATA Projects Ltd-25 | 11,651.6 |
| 4S-SS-B-02.25 |  | Casting of wall upto Flight 1 | 1d | 2026-12-02 | 2026-12-03 | 4S-SS-B-02.20 | Mason; Helper; Physical Progress [1080 h]; Concrete M40 [3 m3]; TATA Projects Ltd-25 | 29,601 |
| 4S-SS-B-02.35 |  | Shuttering of Staircase upto Flight 1 | 3d | 2026-12-03 | 2026-12-07 | 4S-SS-B-02.25 | Carpenter [20 h]; Helper [10 h]; Physical Progress [3230 h]; Formwork [10 Sq m]; TATA Projects Ltd-25 | 11,651.6 |
| 4S-SS-B-02.45 |  | Reinforcement of Staircase upto Flight 1 | 3d | 2026-12-07 | 2026-12-10 | 4S-SS-B-02.35 | Barbender [70 h]; Helper [40 h]; Physical Progress [3230 h]; Reinforcement Steel [1 MT1]; TATA Projects Ltd-25 | 96,512.5 |
| 4S-SS-B-02.50 |  | MEP coordination upto Flight 1 | 1d | 2026-12-10 | 2026-12-11 | 4S-SS-B-02.45 | Physical Progress [1080 h]; TATA Projects Ltd-25 |  |
| 4S-SS-B-02.55 |  | Casting of Staircase upto Flight 1 | 1d | 2026-12-11 | 2026-12-12 | 4S-SS-B-02.50 | Mason; Helper; Physical Progress [1080 h]; Concrete M40 [3 m3]; TATA Projects Ltd-25 | 29,601 |
| 4S-SS-B-02.65 |  | Reinforcement of wall upto Flight 2 | 3d | 2026-12-12 | 2026-12-16 | 4S-SS-B-02.55 | Barbender [70 h]; Helper [40 h]; Physical Progress [3230 h]; Reinforcement Steel [1 MT1]; TATA Projects Ltd-25 | 96,512.5 |
| 4S-SS-B-02.75 |  | Shuttering of wall upto Flight 2 | 3d | 2026-12-16 | 2026-12-19 | 4S-SS-B-02.65 | Carpenter [20 h]; Helper [10 h]; Physical Progress [3230 h]; Formwork [10 Sq m]; TATA Projects Ltd-25 | 11,651.6 |
| 4S-SS-B-02.95 |  | Casting of wall upto Flight 2 | 1d | 2026-12-19 | 2026-12-21 | 4S-SS-B-02.75 | Mason; Helper; Physical Progress [1080 h]; Concrete M40 [3 m3]; TATA Projects Ltd-25 | 29,601 |
| 4S-SS-B-02.100 |  | Shuttering of Staircase upto Flight 2 | 3d | 2026-12-21 | 2026-12-24 | 4S-SS-B-02.95 | Carpenter [20 h]; Helper [10 h]; Physical Progress [3230 h]; Formwork [10 Sq m]; TATA Projects Ltd-25 | 11,651.6 |
| 4S-SS-B-02.115 |  | Reinforcement of Staircase upto Flight 2 | 3d | 2026-12-24 | 2026-12-29 | 4S-SS-B-02.100 | Barbender [70 h]; Helper [40 h]; Physical Progress [3230 h]; Reinforcement Steel [1 MT1]; TATA Projects Ltd-25 | 96,512.5 |
|  | 2 | **Slab** |  | 2026-12-14 | 2027-01-19 |  |  |  |
| 4S-SS-B-02.70 |  | Shuttering | 5d | 2026-12-14 | 2026-12-19 | E-GFC-ST-CB-125, 4S-SS-B-02.60 | Carpenter [5360 h]; Helper [2680 h]; Physical Progress [5390 h]; Formwork [3212 Sq m]; TATA Projects Ltd-25 | 3,742,493.92 |
| 4S-SS-B-02.90 |  | Reinforcement Bottom Net with chairs | 3d | 2026-12-19 | 2026-12-23 | 4S-SS-B-02.70 | Barbender [1200 h]; Helper [600 h]; Physical Progress [3230 h]; Reinforcement Steel [18 MT1]; TATA Projects Ltd-25 | 1,737,225 |
| 4S-SS-B-02.110 |  | Laying of PT Tendon | 4d | 2026-12-23 | 2026-12-29 | E-ShopD-Civil-PT-CB-30, 4S-SS-B-02.90 | Physical Progress [4310 h]; TATA Projects Ltd-25 |  |
| 4S-SS-B-02.140 |  | Reinforcement Top Net | 3d | 2026-12-29 | 2027-01-02 | 4S-SS-B-02.110 | Barbender [1200 h]; Helper [600 h]; Physical Progress [3230 h]; Reinforcement Steel [18 MT1]; TATA Projects Ltd-25 | 1,737,225 |
| 4S-SS-B-02.150 |  | MEP Coordination | 1d | 2027-01-02 | 2027-01-04 | 4S-SS-B-02.90, 4S-SS-B-02.115, 4S-SS-B-02.140 | Physical Progress [1080 h]; TATA Projects Ltd-25 |  |
| 4S-SS-B-02.155 |  | Concrete of Slab | 1d | 2027-01-04 | 2027-01-05 | 4S-SS-B-02.150 | Mason [50 h]; Helper [50 h]; Physical Progress [1080 h]; Concrete M40 [803 m3]; TATA Projects Ltd-25 | 7,923,201 |
| 4S-SS-B-02.160 |  | Wait for Strength Gain | 6d | 2027-01-05 | 2027-01-12 | 4S-SS-B-02.155 | Physical Progress [6460 h]; TATA Projects Ltd-25 |  |
| 4S-SS-B-02.195 |  | PT Work | 6d | 2027-01-12 | 2027-01-19 | 4S-SS-B-03.305, 4S-SS-B-02.160 | PT [9 MT1]; Helper [100 h]; PT Fitter [100 h]; Physical Progress [8620 h]; TATA Projects Ltd-25 | 1,710,000 |

| ID | WBS | Activity | Duration | Start | Finish | Predecessors | Resources | Cost |
| --- | --- | --- | --- | --- | --- | --- | --- | --- |
|  | 2 | **Pour 2** |  | 2026-11-17 | 2027-01-11 |  |  |  |
|  | 1 | **Column, Core Wall, Shear Wall** |  | 2026-11-17 | 2026-12-05 |  |  |  |
| 4S-SS-B-02.80 |  | Reinforcement | 7d | 2026-11-17 | 2026-11-25 | 4S-SS-B-03.395 | Barbender [4400 h]; Helper [2200 h]; Physical Progress [7540 h]; Reinforcement Steel [66 MT1]; TATA Projects Ltd-25 | 6,369,825 |
| 4S-SS-B-02.125 |  | LPS | 1d | 2026-11-25 | 2026-11-26 | 4S-SS-B-02.80 | LPS [41809 INR]; Physical Progress [1080 h]; TATA Projects Ltd-25 | 41,809 |
| 4S-SS-B-02.135 |  | Shuttering | 7d | 2026-11-26 | 2026-12-04 | 4S-SS-B-02.80, 4S-SS-B-02.125 | Carpenter [2100 h]; Helper [1050 h]; Physical Progress [7540 h]; Formwork [1259 Sq m]; TATA Projects Ltd-25 | 1,466,936.44 |
| 4S-SS-B-02.175 |  | Concrete | 1d | 2026-12-04 | 2026-12-05 | 4S-SS-B-02.135 | Mason [50 h]; Helper [50 h]; Physical Progress [1080 h]; Concrete M40 [315 m3]; TATA Projects Ltd-25 | 3,108,105 |
|  | 3 | **Staircase** |  | 2026-11-17 | 2026-12-19 |  |  |  |
| 4S-SS-B-02.85 |  | Reinforcement of wall upto Flight 1 | 3d | 2026-11-17 | 2026-11-20 | 4S-SS-B-03.395 | Barbender [70 h]; Helper [40 h]; Physical Progress [3230 h]; Reinforcement Steel [1 MT1]; TATA Projects Ltd-25 | 96,512.5 |
| 4S-SS-B-02.105 |  | Shuttering of wall upto Flight 1 | 3d | 2026-11-20 | 2026-11-24 | 4S-SS-B-02.85 | Carpenter [20 h]; Helper [10 h]; Physical Progress [3230 h]; Formwork [10 Sq m]; TATA Projects Ltd-25 | 11,651.6 |
| 4S-SS-B-02.120 |  | Casting of wall upto Flight 1 | 1d | 2026-11-24 | 2026-11-25 | 4S-SS-B-02.105 | Mason; Helper; Physical Progress [1080 h]; Concrete M40 [3 m3]; TATA Projects Ltd-25 | 29,601 |
| 4S-SS-B-02.130 |  | Shuttering of Staircase upto Flight 1 | 3d | 2026-11-25 | 2026-11-28 | 4S-SS-B-02.120 | Carpenter [20 h]; Helper [10 h]; Physical Progress [3230 h]; Formwork [10 Sq m]; TATA Projects Ltd-25 | 11,651.6 |
| 4S-SS-B-02.145 |  | Reinforcement of Staircase upto Flight 1 | 3d | 2026-11-28 | 2026-12-02 | 4S-SS-B-02.130 | Barbender [70 h]; Helper [40 h]; Physical Progress [3230 h]; Reinforcement Steel [1 MT1]; TATA Projects Ltd-25 | 96,512.5 |
| 4S-SS-B-02.165 |  | MEP coordination upto Flight 1 | 1d | 2026-12-02 | 2026-12-03 | 4S-SS-B-02.145 | Physical Progress [1080 h]; TATA Projects Ltd-25 |  |
| 4S-SS-B-02.170 |  | Casting of Staircase upto Flight 1 | 1d | 2026-12-03 | 2026-12-04 | 4S-SS-B-02.165 | Mason; Helper; Physical Progress [1080 h]; Concrete M40 [3 m3]; TATA Projects Ltd-25 | 29,601 |
| 4S-SS-B-02.180 |  | Reinforcement of wall upto Flight 2 | 3d | 2026-12-04 | 2026-12-08 | 4S-SS-B-02.170 | Barbender [70 h]; Helper [40 h]; Physical Progress [3230 h]; Reinforcement Steel [1 MT1]; TATA Projects Ltd-25 | 96,512.5 |
| 4S-SS-B-02.190 |  | Shuttering of wall upto Flight 2 | 3d | 2026-12-08 | 2026-12-11 | 4S-SS-B-02.180 | Carpenter [20 h]; Helper [10 h]; Physical Progress [3230 h]; Formwork [10 Sq m]; TATA Projects Ltd-25 | 11,651.6 |
| 4S-SS-B-02.205 |  | Casting of wall upto Flight 2 | 1d | 2026-12-11 | 2026-12-12 | 4S-SS-B-02.190 | Mason; Helper; Physical Progress [1080 h]; Concrete M40 [3 m3]; TATA Projects Ltd-25 | 29,601 |
| 4S-SS-B-02.220 |  | Shuttering of Staircase upto Flight 2 | 3d | 2026-12-12 | 2026-12-16 | 4S-SS-B-02.205 | Carpenter [20 h]; Helper [10 h]; Physical Progress [3230 h]; Formwork [10 Sq m]; TATA Projects Ltd-25 | 11,651.6 |
| 4S-SS-B-02.235 |  | Reinforcement of Staircase upto Flight 2 | 3d | 2026-12-16 | 2026-12-19 | 4S-SS-B-02.220 | Barbender [70 h]; Helper [40 h]; Physical Progress [3230 h]; Reinforcement Steel [1 MT1]; TATA Projects Ltd-25 | 96,512.5 |
|  | 2 | **Slab** |  | 2026-12-05 | 2027-01-11 |  |  |  |
| 4S-SS-B-02.185 |  | Shuttering | 5d | 2026-12-05 | 2026-12-11 | E-GFC-ST-CB-125, 4S-SS-B-02.175 | Carpenter [5400 h]; Helper [2700 h]; Physical Progress [5390 h]; Formwork [3238 Sq m]; TATA Projects Ltd-25 | 3,772,788.08 |
| 4S-SS-B-02.200 |  | Reinforcement Bottom Net with chairs | 3d | 2026-12-11 | 2026-12-15 | 4S-SS-B-02.185 | Barbender [1200 h]; Helper [600 h]; Physical Progress [3230 h]; Reinforcement Steel [18 MT1]; TATA Projects Ltd-25 | 1,737,225 |
| 4S-SS-B-02.230 |  | Laying of PT Tendon | 4d | 2026-12-15 | 2026-12-19 | 4S-SS-B-02.200 | Physical Progress [4310 h]; TATA Projects Ltd-25 |  |
| 4S-SS-B-02.260 |  | Reinforcement Top Net | 3d | 2026-12-19 | 2026-12-23 | 4S-SS-B-02.230 | Barbender [1200 h]; Helper [600 h]; Physical Progress [3230 h]; Reinforcement Steel [18 MT1]; TATA Projects Ltd-25 | 1,737,225 |
| 4S-SS-B-02.270 |  | MEP Coordination | 1d | 2026-12-23 | 2026-12-24 | 4S-SS-B-02.200, 4S-SS-B-02.235, 4S-SS-B-02.260 | Physical Progress [1080 h]; TATA Projects Ltd-25 |  |
| 4S-SS-B-02.280 |  | Concrete of Slab | 1d | 2026-12-24 | 2026-12-26 | 4S-SS-B-02.270 | Mason [50 h]; Helper [50 h]; Physical Progress [1080 h]; Concrete M40 [809 m3]; TATA Projects Ltd-25 | 7,982,403 |
| 4S-SS-B-02.285 |  | Wait for Strength Gain | 6d | 2026-12-26 | 2027-01-04 | 4S-SS-B-02.280 | Physical Progress [6460 h]; TATA Projects Ltd-25 |  |
| 4S-SS-B-02.325 |  | PT Work | 6d | 2027-01-04 | 2027-01-11 | 4S-SS-B-03.440, 4S-SS-B-02.285 | PT [9 MT1]; Helper [100 h]; PT Fitter [100 h]; Physical Progress [8620 h]; TATA Projects Ltd-25 | 1,710,000 |

| ID | WBS | Activity | Duration | Start | Finish | Predecessors | Resources | Cost |
| --- | --- | --- | --- | --- | --- | --- | --- | --- |
|  | 3 | **Pour 3** |  | 2026-11-11 | 2027-01-02 |  |  |  |
|  | 1 | **Column, Core Wall, Shear Wall** |  | 2026-11-11 | 2026-11-27 |  |  |  |
| 4S-SS-B-02.210 |  | Reinforcement | 7d | 2026-11-11 | 2026-11-19 | 4S-SS-B-03.485 | Barbender [3800 h]; Helper [1900 h]; Physical Progress [7540 h]; Reinforcement Steel [57 MT1]; TATA Projects Ltd-25 | 5,501,212.5 |
| 4S-SS-B-02.245 |  | LPS | 1d | 2026-11-19 | 2026-11-20 | 4S-SS-B-02.210 | LPS [41809 INR]; Physical Progress [1080 h]; TATA Projects Ltd-25 | 41,809 |
| 4S-SS-B-02.265 |  | Shuttering | 5d | 2026-11-20 | 2026-11-26 | 4S-SS-B-02.210, 4S-SS-B-02.245 | Carpenter [1810 h]; Helper [910 h]; Physical Progress [7540 h]; Formwork [1086 Sq m]; TATA Projects Ltd-25 | 1,265,363.76 |
| 4S-SS-B-02.310 |  | Concrete | 1d | 2026-11-26 | 2026-11-27 | 4S-SS-B-02.265 | Mason [50 h]; Helper [50 h]; Physical Progress [1080 h]; Concrete M40 [272 m3]; TATA Projects Ltd-25 | 2,683,824 |
|  | 3 | **Staircase** |  | 2026-11-11 | 2026-12-14 |  |  |  |
| 4S-SS-B-02.215 |  | Reinforcement of wall upto Flight 1 | 3d | 2026-11-11 | 2026-11-14 | 4S-SS-B-03.485 | Barbender [70 h]; Helper [40 h]; Physical Progress [3230 h]; Reinforcement Steel [1 MT1]; TATA Projects Ltd-25 | 96,512.5 |
| 4S-SS-B-02.225 |  | Shuttering of wall upto Flight 1 | 3d | 2026-11-14 | 2026-11-18 | 4S-SS-B-02.215 | Carpenter [20 h]; Helper [10 h]; Physical Progress [3230 h]; Formwork [10 Sq m]; TATA Projects Ltd-25 | 11,651.6 |
| 4S-SS-B-02.240 |  | Casting of wall upto Flight 1 | 1d | 2026-11-18 | 2026-11-19 | 4S-SS-B-02.225 | Mason; Helper; Physical Progress [1080 h]; Concrete M40 [3 m3]; TATA Projects Ltd-25 | 29,601 |
| 4S-SS-B-02.250 |  | Shuttering of Staircase upto Flight 1 | 3d | 2026-11-19 | 2026-11-23 | 4S-SS-B-02.240 | Carpenter [20 h]; Helper [10 h]; Physical Progress [3230 h]; Formwork [10 Sq m]; TATA Projects Ltd-25 | 11,651.6 |
| 4S-SS-B-02.275 |  | Reinforcement of Staircase upto Flight 1 | 3d | 2026-11-23 | 2026-11-26 | 4S-SS-B-02.250 | Barbender [70 h]; Helper [40 h]; Physical Progress [3230 h]; Reinforcement Steel [1 MT1]; TATA Projects Ltd-25 | 96,512.5 |
| 4S-SS-B-02.295 |  | MEP coordination upto Flight 1 | 1d | 2026-11-26 | 2026-11-27 | 4S-SS-B-02.275 | Physical Progress [1080 h]; TATA Projects Ltd-25 |  |
| 4S-SS-B-02.305 |  | Casting of Staircase upto Flight 1 | 1d | 2026-11-27 | 2026-11-28 | 4S-SS-B-02.295 | Mason; Helper; Physical Progress [1080 h]; Concrete M40 [3 m3]; TATA Projects Ltd-25 | 29,601 |
| 4S-SS-B-02.315 |  | Reinforcement of wall upto Flight 2 | 3d | 2026-11-28 | 2026-12-02 | 4S-SS-B-02.305 | Barbender [70 h]; Helper [40 h]; Physical Progress [3230 h]; Reinforcement Steel [1 MT1]; TATA Projects Ltd-25 | 96,512.5 |
| 4S-SS-B-02.330 |  | Shuttering of wall upto Flight 2 | 3d | 2026-12-02 | 2026-12-05 | 4S-SS-B-02.315 | Carpenter [20 h]; Helper [10 h]; Physical Progress [3230 h]; Formwork [10 Sq m]; TATA Projects Ltd-25 | 11,651.6 |
| 4S-SS-B-02.350 |  | Casting of wall upto Flight 2 | 1d | 2026-12-05 | 2026-12-07 | 4S-SS-B-02.330 | Mason; Helper; Physical Progress [1080 h]; Concrete M40 [3 m3]; TATA Projects Ltd-25 | 29,601 |
| 4S-SS-B-02.355 |  | Shuttering of Staircase upto Flight 2 | 3d | 2026-12-07 | 2026-12-10 | 4S-SS-B-02.350 | Carpenter [20 h]; Helper [10 h]; Physical Progress [3230 h]; Formwork [10 Sq m]; TATA Projects Ltd-25 | 11,651.6 |
| 4S-SS-B-02.370 |  | Reinforcement of Staircase upto Flight 2 | 3d | 2026-12-10 | 2026-12-14 | 4S-SS-B-02.355 | Barbender [70 h]; Helper [40 h]; Physical Progress [3230 h]; Reinforcement Steel [1 MT1]; TATA Projects Ltd-25 | 96,512.5 |
|  | 2 | **Slab** |  | 2026-11-27 | 2027-01-02 |  |  |  |
| 4S-SS-B-02.320 |  | Shuttering | 5d | 2026-11-27 | 2026-12-03 | E-GFC-ST-CB-125, 4S-SS-B-02.310 | Carpenter [4660 h]; Helper [2330 h]; Physical Progress [5390 h]; Formwork [2793 Sq m]; TATA Projects Ltd-25 | 3,254,291.88 |
| 4S-SS-B-02.345 |  | Reinforcement Bottom Net with chairs | 3d | 2026-12-03 | 2026-12-07 | 4S-SS-B-02.320 | Barbender [1070 h]; Helper [540 h]; Physical Progress [3230 h]; Reinforcement Steel [16 MT1]; TATA Projects Ltd-25 | 1,544,200 |
| 4S-SS-B-02.365 |  | Laying of PT Tendon | 4d | 2026-12-07 | 2026-12-11 | 4S-SS-B-02.345 | Physical Progress [4310 h]; TATA Projects Ltd-25 |  |
| 4S-SS-B-02.380 |  | Reinforcement Top Net | 3d | 2026-12-11 | 2026-12-15 | 4S-SS-B-02.365 | Barbender [1070 h]; Helper [540 h]; Physical Progress [3230 h]; Reinforcement Steel [16 MT1]; TATA Projects Ltd-25 | 1,544,200 |
| 4S-SS-B-02.385 |  | MEP Coordination | 1d | 2026-12-15 | 2026-12-16 | 4S-SS-B-02.345, 4S-SS-B-02.370, 4S-SS-B-02.380 | Physical Progress [1080 h]; TATA Projects Ltd-25 |  |
| 4S-SS-B-02.395 |  | Concrete of Slab | 1d | 2026-12-16 | 2026-12-17 | 4S-SS-B-02.385 | Mason [50 h]; Helper [50 h]; Physical Progress [1080 h]; Concrete M40 [698 m3]; TATA Projects Ltd-25 | 6,887,166 |
| 4S-SS-B-02.400 |  | Wait for Strength Gain | 6d | 2026-12-17 | 2026-12-24 | 4S-SS-B-02.395 | Physical Progress [6460 h]; TATA Projects Ltd-25 |  |
| 4S-SS-B-02.420 |  | PT Work | 6d | 2026-12-24 | 2027-01-02 | 4S-SS-B-03.510, 4S-SS-B-02.400 | PT [8 MT1]; Helper [100 h]; PT Fitter [100 h]; Physical Progress [8620 h]; TATA Projects Ltd-25 | 1,520,000 |

| ID | WBS | Activity | Duration | Start | Finish | Predecessors | Resources | Cost |
| --- | --- | --- | --- | --- | --- | --- | --- | --- |
|  | 4 | **Pour 4** |  | 2026-10-23 | 2026-12-09 |  |  |  |
|  | 1 | **Column** |  | 2026-10-23 | 2026-11-06 |  |  |  |
| 4S-SS-B-02.255 |  | Reinforcement | 5d | 2026-10-23 | 2026-10-29 | 4S-SS-B-03.515 | Barbender [2140 h]; Helper [1070 h]; Physical Progress [5390 h]; Reinforcement Steel [32 MT1]; TATA Projects Ltd-25 | 3,088,400 |
| 4S-SS-B-02.290 |  | LPS | 1d | 2026-10-29 | 2026-10-30 | 4S-SS-B-02.255 | LPS [41809 INR]; Physical Progress [1080 h]; TATA Projects Ltd-25 | 41,809 |
| 4S-SS-B-02.300 |  | Shuttering | 5d | 2026-10-30 | 2026-11-05 | 4S-SS-B-02.255, 4S-SS-B-02.290 | Carpenter [1030 h]; Helper [520 h]; Physical Progress [5390 h]; Formwork [616 Sq m]; TATA Projects Ltd-25 | 717,738.56 |
| 4S-SS-B-02.335 |  | Concrete | 1d | 2026-11-05 | 2026-11-06 | 4S-SS-B-02.300 | Mason [50 h]; Helper [50 h]; Physical Progress [1080 h]; Concrete M40 [154 m3]; TATA Projects Ltd-25 | 1,519,518 |
|  | 2 | **Slab** |  | 2026-11-06 | 2026-12-09 |  |  |  |
| 4S-SS-B-02.340 |  | Shuttering | 5d | 2026-11-06 | 2026-11-12 | E-GFC-ST-CB-125, 4S-SS-B-02.335 | Carpenter [2650 h]; Helper [1330 h]; Physical Progress [5390 h]; Formwork [1585 Sq m]; TATA Projects Ltd-25 | 1,846,778.6 |
| 4S-SS-B-02.360 |  | Reinforcement Bottom Net with chairs | 3d | 2026-11-12 | 2026-11-16 | 4S-SS-B-02.340 | Barbender [600 h]; Helper [300 h]; Physical Progress [3230 h]; Reinforcement Steel [9 MT1]; TATA Projects Ltd-25 | 868,612.5 |
| 4S-SS-B-02.375 |  | Laying of PT Tendon | 4d | 2026-11-16 | 2026-11-20 | 4S-SS-B-02.360 | Physical Progress [4310 h]; TATA Projects Ltd-25 |  |
| 4S-SS-B-02.390 |  | Reinforcement Top Net | 2d | 2026-11-20 | 2026-11-23 | 4S-SS-B-02.375 | Barbender [600 h]; Helper [300 h]; Physical Progress [2150 h]; Reinforcement Steel [9 MT1]; TATA Projects Ltd-25 | 868,612.5 |
| 4S-SS-B-02.405 |  | MEP Coordination | 1d | 2026-11-23 | 2026-11-24 | 4S-SS-B-02.360, 4S-SS-B-02.390 | Physical Progress [1080 h]; TATA Projects Ltd-25 |  |
| 4S-SS-B-02.410 |  | Concrete of Slab | 1d | 2026-11-24 | 2026-11-25 | 4S-SS-B-02.405 | Mason [50 h]; Helper [50 h]; Physical Progress [1080 h]; Concrete M40 [396 m3]; TATA Projects Ltd-25 | 3,907,332 |
| 4S-SS-B-02.415 |  | Wait for Strength Gain | 6d | 2026-11-25 | 2026-12-02 | 4S-SS-B-02.410 | Physical Progress [6460 h]; TATA Projects Ltd-25 |  |
| 4S-SS-B-02.425 |  | PT Work | 6d | 2026-12-02 | 2026-12-09 | 4S-SS-B-03.525, 4S-SS-B-02.415 | PT [4 MT1]; Helper [100 h]; PT Fitter [100 h]; Physical Progress [8620 h]; TATA Projects Ltd-25 | 760,000 |
|  | 4 | **Basement 01** |  | 2026-11-25 | 2027-03-04 |  |  |  |
|  | 1 | **Pour 1** |  | 2027-01-05 | 2027-03-04 |  |  |  |
|  | 1 | **Column, Core Wall, Shear Wall - First Lift** |  | 2027-01-05 | 2027-01-16 |  |  |  |
| 4S-SS-B-01.10 |  | Reinforcement | 4d | 2027-01-05 | 2027-01-09 | 4S-SS-B-02.155 | Barbender [2200 h]; Helper [1100 h]; Physical Progress [4310 h]; Reinforcement Steel [33 MT1]; TATA Projects Ltd-25 | 3,184,912.5 |
| 4S-SS-B-01.25 |  | LPS | 1d | 2027-01-09 | 2027-01-11 | 4S-SS-B-01.10 | LPS [41809 INR]; Physical Progress [1080 h]; TATA Projects Ltd-25 | 41,809 |
| 4S-SS-B-01.35 |  | Shuttering | 4d | 2027-01-11 | 2027-01-15 | 4S-SS-B-01.10, 4S-SS-B-01.25 | Carpenter [1040 h]; Helper [520 h]; Physical Progress [4310 h]; Formwork [624 Sq m]; TATA Projects Ltd-25 | 727,059.84 |
| 4S-SS-B-01.60 |  | Concrete | 1d | 2027-01-15 | 2027-01-16 | 4S-SS-B-01.35 | Mason [50 h]; Helper [50 h]; Physical Progress [1080 h]; Concrete M40 [156 m3]; TATA Projects Ltd-25 | 1,539,252 |
|  | 4 | **Column, Core Wall, Shear Wall - Second Lift** |  | 2027-01-16 | 2027-01-29 |  |  |  |
| 4S-SS-B-01.70 |  | Reinforcement | 4d | 2027-01-16 | 2027-01-21 | 4S-SS-B-01.60 | Barbender [2200 h]; Helper [1100 h]; Physical Progress [4310 h]; Reinforcement Steel [33 MT1]; TATA Projects Ltd-25 | 3,184,912.5 |
| 4S-SS-B-01.90 |  | LPS | 1d | 2027-01-21 | 2027-01-22 | 4S-SS-B-01.70 | LPS [41809 INR]; Physical Progress [1080 h]; TATA Projects Ltd-25 | 41,809 |
| 4S-SS-B-01.95 |  | Shuttering | 4d | 2027-01-22 | 2027-01-28 | 4S-SS-B-01.70, 4S-SS-B-01.90 | Carpenter [1040 h]; Helper [520 h]; Physical Progress [4310 h]; Formwork [624 Sq m]; TATA Projects Ltd-25 | 727,059.84 |
| 4S-SS-B-01.120 |  | Concrete | 1d | 2027-01-28 | 2027-01-29 | 4S-SS-B-01.95 | Mason [50 h]; Helper [50 h]; Physical Progress [1080 h]; Concrete M40 [156 m3]; TATA Projects Ltd-25 | 1,539,252 |

| ID | WBS | Activity | Duration | Start | Finish | Predecessors | Resources | Cost |
| --- | --- | --- | --- | --- | --- | --- | --- | --- |
|  | 3 | **Staircase** |  | 2027-01-05 | 2027-02-15 |  |  |  |
| 4S-SS-B-01.15 |  | Reinforcement of wall upto Flight 1 | 2d | 2027-01-05 | 2027-01-07 | 4S-SS-B-02.155 | Barbender [70 h]; Helper [40 h]; Physical Progress [2150 h]; Reinforcement Steel [1 MT1]; TATA Projects Ltd-25 | 96,512.5 |
| 4S-SS-B-01.20 |  | Shuttering of wall upto Flight 1 | 2d | 2027-01-07 | 2027-01-09 | 4S-SS-B-01.15 | Carpenter [20 h]; Helper [10 h]; Physical Progress [2150 h]; Formwork [10 Sq m]; TATA Projects Ltd-25 | 11,651.6 |
| 4S-SS-B-01.30 |  | Casting of wall upto Flight 1 | 1d | 2027-01-09 | 2027-01-11 | 4S-SS-B-01.20 | Mason; Helper; Physical Progress [1080 h]; Concrete M40 [3 m3]; TATA Projects Ltd-25 | 29,601 |
| 4S-SS-B-01.40 |  | Shuttering of Staircase upto Flight 1 | 1d | 2027-01-11 | 2027-01-12 | 4S-SS-B-01.30 | Carpenter [20 h]; Helper [10 h]; Physical Progress [1080 h]; Formwork [10 Sq m]; TATA Projects Ltd-25 | 11,651.6 |
| 4S-SS-B-01.45 |  | Reinforcement of Staircase upto Flight 1 | 1d | 2027-01-12 | 2027-01-13 | 4S-SS-B-01.40 | Barbender [70 h]; Helper [40 h]; Physical Progress [1080 h]; Reinforcement Steel [1 MT1]; TATA Projects Ltd-25 | 96,512.5 |
| 4S-SS-B-01.50 |  | MEP coordination upto Flight 1 | 1d | 2027-01-13 | 2027-01-14 | 4S-SS-B-01.45 | Physical Progress [1080 h]; TATA Projects Ltd-25 |  |
| 4S-SS-B-01.55 |  | Casting of Staircase upto Flight 1 | 1d | 2027-01-14 | 2027-01-15 | 4S-SS-B-01.50 | Mason; Helper; Physical Progress [1080 h]; Concrete M40 [3 m3]; TATA Projects Ltd-25 | 29,601 |
| 4S-SS-B-01.65 |  | Reinforcement of wall upto Flight 2 | 2d | 2027-01-15 | 2027-01-18 | 4S-SS-B-01.55 | Barbender [70 h]; Helper [40 h]; Physical Progress [2150 h]; Reinforcement Steel [1 MT1]; TATA Projects Ltd-25 | 96,512.5 |
| 4S-SS-B-01.75 |  | Shuttering of wall upto Flight 2 | 2d | 2027-01-18 | 2027-01-20 | 4S-SS-B-01.65 | Carpenter [20 h]; Helper [10 h]; Physical Progress [2150 h]; Formwork [10 Sq m]; TATA Projects Ltd-25 | 11,651.6 |
| 4S-SS-B-01.80 |  | Casting of wall upto Flight 2 | 1d | 2027-01-20 | 2027-01-21 | 4S-SS-B-01.75 | Mason; Helper; Physical Progress [1080 h]; Concrete M40 [3 m3]; TATA Projects Ltd-25 | 29,601 |
| 4S-SS-B-01.85 |  | Shuttering of Staircase upto Flight 2 | 1d | 2027-01-21 | 2027-01-22 | 4S-SS-B-01.80 | Carpenter [20 h]; Helper [10 h]; Physical Progress [1080 h]; Formwork [10 Sq m]; TATA Projects Ltd-25 | 11,651.6 |
| 4S-SS-B-01.100 |  | Reinforcement of Staircase upto Flight 2 | 1d | 2027-01-22 | 2027-01-23 | 4S-SS-B-01.85 | Barbender [70 h]; Helper [40 h]; Physical Progress [1080 h]; Reinforcement Steel [1 MT1]; TATA Projects Ltd-25 | 96,512.5 |
| 4S-SS-B-01.105 |  | MEP coordination upto Flight 2 | 1d | 2027-01-23 | 2027-01-25 | 4S-SS-B-01.100 | Physical Progress [1080 h]; TATA Projects Ltd-25 |  |
| 4S-SS-B-01.110 |  | Casting of Staircase upto Flight 2 | 1d | 2027-01-25 | 2027-01-27 | 4S-SS-B-01.105 | Mason; Helper; Physical Progress [1080 h]; Concrete M40 [3 m3]; TATA Projects Ltd-25 | 29,601 |
| 4S-SS-B-01.115 |  | Reinforcement of wall upto Flight 3 | 2d | 2027-01-27 | 2027-01-29 | 4S-SS-B-01.110 | Barbender [70 h]; Helper [40 h]; Physical Progress [2150 h]; Reinforcement Steel [1 MT1]; TATA Projects Ltd-25 | 96,512.5 |
| 4S-SS-B-01.135 |  | Shuttering of wall upto Flight 3 | 2d | 2027-01-29 | 2027-02-01 | 4S-SS-B-01.115 | Carpenter [20 h]; Helper [10 h]; Physical Progress [2150 h]; Formwork [10 Sq m]; TATA Projects Ltd-25 | 11,651.6 |
| 4S-SS-B-01.145 |  | Casting of wall upto Flight 3 | 1d | 2027-02-01 | 2027-02-02 | 4S-SS-B-01.135 | Mason; Helper; Physical Progress [1080 h]; Concrete M40 [3 m3]; TATA Projects Ltd-25 | 29,601 |
| 4S-SS-B-01.155 |  | Shuttering of Staircase upto Flight 3 | 1d | 2027-02-02 | 2027-02-03 | 4S-SS-B-01.145 | Carpenter [20 h]; Helper [10 h]; Physical Progress [1080 h]; Formwork [10 Sq m]; TATA Projects Ltd-25 | 11,651.6 |
| 4S-SS-B-01.165 |  | Reinforcement of Staircase upto Flight 3 | 1d | 2027-02-03 | 2027-02-04 | 4S-SS-B-01.155 | Barbender [70 h]; Helper [40 h]; Physical Progress [1080 h]; Reinforcement Steel [1 MT1]; TATA Projects Ltd-25 | 96,512.5 |
| 4S-SS-B-01.185 |  | MEP coordination upto Flight 3 | 1d | 2027-02-04 | 2027-02-05 | 4S-SS-B-01.165 | Physical Progress [1080 h]; TATA Projects Ltd-25 |  |
| 4S-SS-B-01.195 |  | Casting of Staircase upto Flight 3 | 1d | 2027-02-05 | 2027-02-06 | 4S-SS-B-01.185 | Mason; Helper; Physical Progress [1080 h]; Concrete M40 [3 m3]; TATA Projects Ltd-25 | 29,601 |
| 4S-SS-B-01.205 |  | Reinforcement of wall upto Flight 4 | 2d | 2027-02-06 | 2027-02-09 | 4S-SS-B-01.195 | Barbender [70 h]; Helper [40 h]; Physical Progress [2150 h]; Reinforcement Steel [1 MT1]; TATA Projects Ltd-25 | 96,512.5 |
| 4S-SS-B-01.230 |  | Shuttering of wall upto Flight 4 | 2d | 2027-02-09 | 2027-02-11 | 4S-SS-B-01.205 | Carpenter [20 h]; Helper [10 h]; Physical Progress [2150 h]; Formwork [10 Sq m]; TATA Projects Ltd-25 | 11,651.6 |
| 4S-SS-B-01.245 |  | Casting of wall upto Flight 4 | 1d | 2027-02-11 | 2027-02-12 | 4S-SS-B-01.230 | Mason; Helper; Physical Progress [1080 h]; Concrete M40 [3 m3]; TATA Projects Ltd-25 | 29,601 |
| 4S-SS-B-01.260 |  | Shuttering of Staircase upto Flight 4 | 1d | 2027-02-12 | 2027-02-13 | 4S-SS-B-01.245 | Carpenter [20 h]; Helper [10 h]; Physical Progress [1080 h]; Formwork [10 Sq m]; TATA Projects Ltd-25 | 11,651.6 |
| 4S-SS-B-01.265 |  | Reinforcement of Staircase upto Flight 4 | 1d | 2027-02-13 | 2027-02-15 | 4S-SS-B-01.260 | Barbender [70 h]; Helper [40 h]; Physical Progress [1080 h]; Reinforcement Steel [1 MT1]; TATA Projects Ltd-25 | 96,512.5 |

| ID | WBS | Activity | Duration | Start | Finish | Predecessors | Resources | Cost |
| --- | --- | --- | --- | --- | --- | --- | --- | --- |
|  | 2 | **Slab** |  | 2027-01-29 | 2027-03-04 |  |  |  |
| 4S-SS-B-01.125 |  | Shuttering | 5d | 2027-01-29 | 2027-02-04 | 4S-SS-B-01.120, E-GFC-ST-CB-155 | Carpenter [6500 h]; Helper [3250 h]; Physical Progress [5390 h]; Formwork [3898 Sq m]; TATA Projects Ltd-25 | 4,541,793.68 |
| 4S-SS-B-01.175 |  | Reinforcement Bottom Net with chairs | 3d | 2027-02-04 | 2027-02-08 | 4S-SS-B-01.125 | Barbender [1600 h]; Helper [800 h]; Physical Progress [3230 h]; Reinforcement Steel [24 MT1]; TATA Projects Ltd-25 | 2,316,300 |
| 4S-SS-B-01.215 |  | Laying of PT Tendon | 4d | 2027-02-08 | 2027-02-12 | E-ShopD-Civil-PT-CB-20, 4S-SS-B-01.175 | Physical Progress [4310 h]; TATA Projects Ltd-25 |  |
| 4S-SS-B-01.255 |  | Reinforcement Top Net | 3d | 2027-02-12 | 2027-02-16 | 4S-SS-B-01.215 | Barbender [1600 h]; Helper [800 h]; Physical Progress [3230 h]; Reinforcement Steel [24 MT1]; TATA Projects Ltd-25 | 2,316,300 |
| 4S-SS-B-01.285 |  | MEP Coordination | 1d | 2027-02-16 | 2027-02-17 | 4S-SS-B-01.175, 4S-SS-B-01.265, 4S-SS-B-01.255 | Physical Progress [1080 h]; TATA Projects Ltd-25 |  |
| 4S-SS-B-01.300 |  | Concrete of Slab | 1d | 2027-02-17 | 2027-02-18 | Milestones-150, 4S-SS-B-01.285 | Mason [50 h]; Helper [50 h]; Physical Progress [1080 h]; Concrete M40 [975 m3]; TATA Projects Ltd-25 | 9,620,325 |
| 4S-SS-B-01.310 |  | Wait for Strength Gain | 6d | 2027-02-18 | 2027-02-25 | 4S-SS-B-01.300 | Physical Progress [6460 h]; TATA Projects Ltd-25 |  |
| 4S-SS-B-01.355 |  | PT Work | 6d | 2027-02-25 | 2027-03-04 | 4S-SS-B-02.195, 4S-SS-B-01.310 | PT [10 MT1]; Helper [100 h]; PT Fitter [100 h]; Physical Progress [8620 h]; TATA Projects Ltd-25 | 1,900,000 |
|  | 2 | **Pour 2** |  | 2026-12-26 | 2027-02-24 |  |  |  |
|  | 1 | **Column, Core Wall, Shear Wall - First Lift** |  | 2026-12-26 | 2027-01-08 |  |  |  |
| 4S-SS-B-01.130 |  | Reinforcement | 4d | 2026-12-26 | 2026-12-31 | 4S-SS-B-02.280 | Barbender [2200 h]; Helper [1100 h]; Physical Progress [4310 h]; Reinforcement Steel [33 MT1]; TATA Projects Ltd-25 | 3,184,912.5 |
| 4S-SS-B-01.160 |  | LPS | 1d | 2026-12-31 | 2027-01-02 | 4S-SS-B-01.130 | LPS [41809 INR]; Physical Progress [1080 h]; TATA Projects Ltd-25 | 41,809 |
| 4S-SS-B-01.180 |  | Shuttering | 4d | 2027-01-02 | 2027-01-07 | 4S-SS-B-01.130, 4S-SS-B-01.160 | Carpenter [1050 h]; Helper [530 h]; Physical Progress [4310 h]; Formwork [629 Sq m]; TATA Projects Ltd-25 | 732,885.64 |
| 4S-SS-B-01.225 |  | Concrete | 1d | 2027-01-07 | 2027-01-08 | 4S-SS-B-01.180 | Mason [50 h]; Helper [50 h]; Physical Progress [1080 h]; Concrete M40 [157 m3]; TATA Projects Ltd-25 | 1,549,119 |
|  | 4 | **Column, Core Wall, Shear Wall - Second Lift** |  | 2027-01-08 | 2027-01-20 |  |  |  |
| 4S-SS-B-01.240 |  | Reinforcement | 4d | 2027-01-08 | 2027-01-13 | 4S-SS-B-01.225 | Barbender [2200 h]; Helper [1100 h]; Physical Progress [4310 h]; Reinforcement Steel [33 MT1]; TATA Projects Ltd-25 | 3,184,912.5 |
| 4S-SS-B-01.275 |  | LPS | 1d | 2027-01-13 | 2027-01-14 | 4S-SS-B-01.240 | LPS [41809 INR]; Physical Progress [1080 h]; TATA Projects Ltd-25 | 41,809 |
| 4S-SS-B-01.290 |  | Shuttering | 4d | 2027-01-14 | 2027-01-19 | 4S-SS-B-01.240, 4S-SS-B-01.275 | Carpenter [1050 h]; Helper [530 h]; Physical Progress [4310 h]; Formwork [629 Sq m]; TATA Projects Ltd-25 | 732,885.64 |
| 4S-SS-B-01.325 |  | Concrete | 1d | 2027-01-19 | 2027-01-20 | 4S-SS-B-01.290 | Mason [50 h]; Helper [50 h]; Physical Progress [1080 h]; Concrete M40 [157 m3]; TATA Projects Ltd-25 | 1,549,119 |
|  | 3 | **Staircase** |  | 2026-12-26 | 2027-02-06 |  |  |  |
| 4S-SS-B-01.140 |  | Reinforcement of wall upto Flight 1 | 2d | 2026-12-26 | 2026-12-29 | 4S-SS-B-02.280 | Barbender [70 h]; Helper [40 h]; Physical Progress [2150 h]; Reinforcement Steel [1 MT1]; TATA Projects Ltd-25 | 96,512.5 |
| 4S-SS-B-01.150 |  | Shuttering of wall upto Flight 1 | 2d | 2026-12-29 | 2026-12-31 | 4S-SS-B-01.140 | Carpenter [20 h]; Helper [10 h]; Physical Progress [2150 h]; Formwork [10 Sq m]; TATA Projects Ltd-25 | 11,651.6 |
| 4S-SS-B-01.170 |  | Casting of wall upto Flight 1 | 1d | 2026-12-31 | 2027-01-02 | 4S-SS-B-01.150 | Mason; Helper; Physical Progress [1080 h]; Concrete M40 [3 m3]; TATA Projects Ltd-25 | 29,601 |
| 4S-SS-B-01.190 |  | Shuttering of Staircase upto Flight 1 | 1d | 2027-01-02 | 2027-01-04 | 4S-SS-B-01.170 | Carpenter [20 h]; Helper [10 h]; Physical Progress [1080 h]; Formwork [10 Sq m]; TATA Projects Ltd-25 | 11,651.6 |
| 4S-SS-B-01.200 |  | Reinforcement of Staircase upto Flight 1 | 1d | 2027-01-04 | 2027-01-05 | 4S-SS-B-01.190 | Barbender [70 h]; Helper [40 h]; Physical Progress [1080 h]; Reinforcement Steel [1 MT1]; TATA Projects Ltd-25 | 96,512.5 |
| 4S-SS-B-01.210 |  | MEP coordination upto Flight 1 | 1d | 2027-01-05 | 2027-01-06 | 4S-SS-B-01.200 | Physical Progress [1080 h]; TATA Projects Ltd-25 |  |
| 4S-SS-B-01.220 |  | Casting of Staircase upto Flight 1 | 1d | 2027-01-06 | 2027-01-07 | 4S-SS-B-01.210 | Mason; Helper; Physical Progress [1080 h]; Concrete M40 [3 m3]; TATA Projects Ltd-25 | 29,601 |
| 4S-SS-B-01.235 |  | Reinforcement of wall upto Flight 2 | 2d | 2027-01-07 | 2027-01-09 | 4S-SS-B-01.220 | Barbender [70 h]; Helper [40 h]; Physical Progress [2150 h]; Reinforcement Steel [1 MT1]; TATA Projects Ltd-25 | 96,512.5 |
| 4S-SS-B-01.250 |  | Shuttering of wall upto Flight 2 | 2d | 2027-01-09 | 2027-01-12 | 4S-SS-B-01.235 | Carpenter [20 h]; Helper [10 h]; Physical Progress [2150 h]; Formwork [10 Sq m]; TATA Projects Ltd-25 | 11,651.6 |
| 4S-SS-B-01.270 |  | Casting of wall upto Flight 2 | 1d | 2027-01-12 | 2027-01-13 | 4S-SS-B-01.250 | Mason; Helper; Physical Progress [1080 h]; Concrete M40 [3 m3]; TATA Projects Ltd-25 | 29,601 |
| 4S-SS-B-01.280 |  | Shuttering of Staircase upto Flight 2 | 1d | 2027-01-13 | 2027-01-14 | 4S-SS-B-01.270 | Carpenter [20 h]; Helper [10 h]; Physical Progress [1080 h]; Formwork [10 Sq m]; TATA Projects Ltd-25 | 11,651.6 |
| 4S-SS-B-01.295 |  | Reinforcement of Staircase upto Flight 2 | 1d | 2027-01-14 | 2027-01-15 | 4S-SS-B-01.280 | Barbender [70 h]; Helper [40 h]; Physical Progress [1080 h]; Reinforcement Steel [1 MT1]; TATA Projects Ltd-25 | 96,512.5 |
| 4S-SS-B-01.305 |  | MEP coordination upto Flight 2 | 1d | 2027-01-15 | 2027-01-16 | 4S-SS-B-01.295 | Physical Progress [1080 h]; TATA Projects Ltd-25 |  |
| 4S-SS-B-01.315 |  | Casting of Staircase upto Flight 2 | 1d | 2027-01-16 | 2027-01-18 | 4S-SS-B-01.305 | Mason; Helper; Physical Progress [1080 h]; Concrete M40 [3 m3]; TATA Projects Ltd-25 | 29,601 |
| 4S-SS-B-01.320 |  | Reinforcement of wall upto Flight 3 | 2d | 2027-01-18 | 2027-01-20 | 4S-SS-B-01.315 | Barbender [70 h]; Helper [40 h]; Physical Progress [2150 h]; Reinforcement Steel [1 MT1]; TATA Projects Ltd-25 | 96,512.5 |
| 4S-SS-B-01.335 |  | Shuttering of wall upto Flight 3 | 2d | 2027-01-20 | 2027-01-22 | 4S-SS-B-01.320 | Carpenter [20 h]; Helper [10 h]; Physical Progress [2150 h]; Formwork [10 Sq m]; TATA Projects Ltd-25 | 11,651.6 |
| 4S-SS-B-01.350 |  | Casting of wall upto Flight 3 | 1d | 2027-01-22 | 2027-01-23 | 4S-SS-B-01.335 | Mason; Helper; Physical Progress [1080 h]; Concrete M40 [3 m3]; TATA Projects Ltd-25 | 29,601 |
| 4S-SS-B-01.365 |  | Shuttering of Staircase upto Flight 3 | 1d | 2027-01-23 | 2027-01-25 | 4S-SS-B-01.350 | Carpenter [20 h]; Helper [10 h]; Physical Progress [1080 h]; Formwork [10 Sq m]; TATA Projects Ltd-25 | 11,651.6 |
| 4S-SS-B-01.375 |  | Reinforcement of Staircase upto Flight 3 | 1d | 2027-01-25 | 2027-01-27 | 4S-SS-B-01.365 | Barbender [70 h]; Helper [40 h]; Physical Progress [1080 h]; Reinforcement Steel [1 MT1]; TATA Projects Ltd-25 | 96,512.5 |
| 4S-SS-B-01.390 |  | MEP coordination upto Flight 3 | 1d | 2027-01-27 | 2027-01-28 | 4S-SS-B-01.375 | Physical Progress [1080 h]; TATA Projects Ltd-25 |  |
| 4S-SS-B-01.410 |  | Casting of Staircase upto Flight 3 | 1d | 2027-01-28 | 2027-01-29 | 4S-SS-B-01.390 | Mason; Helper; Physical Progress [1080 h]; Concrete M40 [3 m3]; TATA Projects Ltd-25 | 29,601 |
| 4S-SS-B-01.425 |  | Reinforcement of wall upto Flight 4 | 2d | 2027-01-29 | 2027-02-01 | 4S-SS-B-01.410 | Barbender [70 h]; Helper [40 h]; Physical Progress [2150 h]; Reinforcement Steel [1 MT1]; TATA Projects Ltd-25 | 96,512.5 |
| 4S-SS-B-01.445 |  | Shuttering of wall upto Flight 4 | 2d | 2027-02-01 | 2027-02-03 | 4S-SS-B-01.425 | Carpenter [20 h]; Helper [10 h]; Physical Progress [2150 h]; Formwork [10 Sq m]; TATA Projects Ltd-25 | 11,651.6 |
| 4S-SS-B-01.480 |  | Casting of wall upto Flight 4 | 1d | 2027-02-03 | 2027-02-04 | 4S-SS-B-01.445 | Mason; Helper; Physical Progress [1080 h]; Concrete M40 [3 m3]; TATA Projects Ltd-25 | 29,601 |
| 4S-SS-B-01.490 |  | Shuttering of Staircase upto Flight 4 | 1d | 2027-02-04 | 2027-02-05 | 4S-SS-B-01.480 | Carpenter [20 h]; Helper [10 h]; Physical Progress [1080 h]; Formwork [10 Sq m]; TATA Projects Ltd-25 | 11,651.6 |
| 4S-SS-B-01.500 |  | Reinforcement of Staircase upto Flight 4 | 1d | 2027-02-05 | 2027-02-06 | 4S-SS-B-01.490 | Barbender [70 h]; Helper [40 h]; Physical Progress [1080 h]; Reinforcement Steel [1 MT1]; TATA Projects Ltd-25 | 96,512.5 |

| ID | WBS | Activity | Duration | Start | Finish | Predecessors | Resources | Cost |
| --- | --- | --- | --- | --- | --- | --- | --- | --- |
|  | 2 | **Slab** |  | 2027-01-20 | 2027-02-24 |  |  |  |
| 4S-SS-B-01.330 |  | Shuttering | 5d | 2027-01-20 | 2027-01-27 | 4S-SS-B-01.325, E-GFC-ST-CB-155 | Carpenter [6550 h]; Helper [3280 h]; Physical Progress [5390 h]; Formwork [3929 Sq m]; TATA Projects Ltd-25 | 4,577,913.64 |
| 4S-SS-B-01.380 |  | Reinforcement Bottom Net with chairs | 3d | 2027-01-27 | 2027-01-30 | 4S-SS-B-01.330 | Barbender [1600 h]; Helper [800 h]; Physical Progress [3230 h]; Reinforcement Steel [24 MT1]; TATA Projects Ltd-25 | 2,316,300 |
| 4S-SS-B-01.435 |  | Laying of PT Tendon | 4d | 2027-01-30 | 2027-02-04 | 4S-SS-B-01.380 | Physical Progress [4310 h]; TATA Projects Ltd-25 |  |
| 4S-SS-B-01.485 |  | Reinforcement Top Net | 3d | 2027-02-04 | 2027-02-08 | 4S-SS-B-01.435 | Barbender [1600 h]; Helper [800 h]; Physical Progress [3230 h]; Reinforcement Steel [24 MT1]; TATA Projects Ltd-25 | 2,316,300 |
| 4S-SS-B-01.515 |  | MEP Coordination | 1d | 2027-02-08 | 2027-02-09 | 4S-SS-B-01.500, 4S-SS-B-01.380, 4S-SS-B-01.485 | Physical Progress [1080 h]; TATA Projects Ltd-25 |  |
| 4S-SS-B-01.535 |  | Concrete of Slab | 1d | 2027-02-09 | 2027-02-10 | 4S-SS-B-01.515 | Mason [50 h]; Helper [50 h]; Physical Progress [1080 h]; Concrete M40 [982 m3]; TATA Projects Ltd-25 | 9,689,394 |
| 4S-SS-B-01.550 |  | Wait for Strength Gain | 6d | 2027-02-10 | 2027-02-17 | 4S-SS-B-01.535 | Physical Progress [6460 h]; TATA Projects Ltd-25 |  |
| 4S-SS-B-01.595 |  | PT Work | 6d | 2027-02-17 | 2027-02-24 | 4S-SS-B-02.325, 4S-SS-B-01.550 | PT [10 MT1]; Helper [100 h]; PT Fitter [100 h]; Physical Progress [8620 h]; TATA Projects Ltd-25 | 1,900,000 |
|  | 3 | **Pour 3** |  | 2026-12-17 | 2027-02-16 |  |  |  |
|  | 1 | **Column, Core Wall, Shear Wall - First Lift** |  | 2026-12-17 | 2026-12-30 |  |  |  |
| 4S-SS-B-01.340 |  | Reinforcement | 4d | 2026-12-17 | 2026-12-22 | 4S-SS-B-02.395 | Barbender [1940 h]; Helper [970 h]; Physical Progress [4310 h]; Reinforcement Steel [29 MT1]; TATA Projects Ltd-25 | 2,798,862.5 |
| 4S-SS-B-01.385 |  | LPS | 1d | 2026-12-22 | 2026-12-23 | 4S-SS-B-01.340 | LPS [41809 INR]; Physical Progress [1080 h]; TATA Projects Ltd-25 | 41,809 |
| 4S-SS-B-01.400 |  | Shuttering | 4d | 2026-12-23 | 2026-12-29 | 4S-SS-B-01.340, 4S-SS-B-01.385 | Carpenter [910 h]; Helper [460 h]; Physical Progress [4310 h]; Formwork [543 Sq m]; TATA Projects Ltd-25 | 632,681.88 |
| 4S-SS-B-01.455 |  | Concrete | 1d | 2026-12-29 | 2026-12-30 | 4S-SS-B-01.400 | Mason [50 h]; Helper [50 h]; Physical Progress [1080 h]; Concrete M40 [136 m3]; TATA Projects Ltd-25 | 1,341,912 |
|  | 4 | **Column, Core Wall, Shear Wall - Second Lift** |  | 2026-12-30 | 2027-01-12 |  |  |  |
| 4S-SS-B-01.470 |  | Reinforcement | 4d | 2026-12-30 | 2027-01-05 | 4S-SS-B-01.455 | Barbender [1940 h]; Helper [970 h]; Physical Progress [4310 h]; Reinforcement Steel [29 MT1]; TATA Projects Ltd-25 | 2,798,862.5 |
| 4S-SS-B-01.520 |  | LPS | 1d | 2027-01-05 | 2027-01-06 | 4S-SS-B-01.470 | LPS [41809 INR]; Physical Progress [1080 h]; TATA Projects Ltd-25 | 41,809 |
| 4S-SS-B-01.540 |  | Shuttering | 4d | 2027-01-06 | 2027-01-11 | 4S-SS-B-01.470, 4S-SS-B-01.520 | Carpenter [910 h]; Helper [460 h]; Physical Progress [4310 h]; Formwork [543 Sq m]; TATA Projects Ltd-25 | 632,681.88 |
| 4S-SS-B-01.580 |  | Concrete | 1d | 2027-01-11 | 2027-01-12 | 4S-SS-B-01.540 | Mason [50 h]; Helper [50 h]; Physical Progress [1080 h]; Concrete M40 [136 m3]; TATA Projects Ltd-25 | 1,341,912 |
|  | 3 | **Staircase** |  | 2026-12-17 | 2027-01-29 |  |  |  |
| 4S-SS-B-01.345 |  | Reinforcement of wall upto Flight 1 | 2d | 2026-12-17 | 2026-12-19 | 4S-SS-B-02.395 | Barbender [70 h]; Helper [40 h]; Physical Progress [2150 h]; Reinforcement Steel [1 MT1]; TATA Projects Ltd-25 | 96,512.5 |
| 4S-SS-B-01.370 |  | Shuttering of wall upto Flight 1 | 2d | 2026-12-19 | 2026-12-22 | 4S-SS-B-01.345 | Carpenter [20 h]; Helper [10 h]; Physical Progress [2150 h]; Formwork [10 Sq m]; TATA Projects Ltd-25 | 11,651.6 |
| 4S-SS-B-01.395 |  | Casting of wall upto Flight 1 | 1d | 2026-12-22 | 2026-12-23 | 4S-SS-B-01.370 | Mason; Helper; Physical Progress [1080 h]; Concrete M40 [3 m3]; TATA Projects Ltd-25 | 29,601 |
| 4S-SS-B-01.415 |  | Shuttering of Staircase upto Flight 1 | 1d | 2026-12-23 | 2026-12-24 | 4S-SS-B-01.395 | Carpenter [20 h]; Helper [10 h]; Physical Progress [1080 h]; Formwork [10 Sq m]; TATA Projects Ltd-25 | 11,651.6 |
| 4S-SS-B-01.430 |  | Reinforcement of Staircase upto Flight 1 | 1d | 2026-12-24 | 2026-12-26 | 4S-SS-B-01.415 | Barbender [70 h]; Helper [40 h]; Physical Progress [1080 h]; Reinforcement Steel [1 MT1]; TATA Projects Ltd-25 | 96,512.5 |
| 4S-SS-B-01.440 |  | MEP coordination upto Flight 1 | 1d | 2026-12-26 | 2026-12-28 | 4S-SS-B-01.430 | Physical Progress [1080 h]; TATA Projects Ltd-25 |  |
| 4S-SS-B-01.450 |  | Casting of Staircase upto Flight 1 | 1d | 2026-12-28 | 2026-12-29 | 4S-SS-B-01.440 | Mason; Helper; Physical Progress [1080 h]; Concrete M40 [3 m3]; TATA Projects Ltd-25 | 29,601 |
| 4S-SS-B-01.465 |  | Reinforcement of wall upto Flight 2 | 2d | 2026-12-29 | 2026-12-31 | 4S-SS-B-01.450 | Barbender [70 h]; Helper [40 h]; Physical Progress [2150 h]; Reinforcement Steel [1 MT1]; TATA Projects Ltd-25 | 96,512.5 |
| 4S-SS-B-01.495 |  | Shuttering of wall upto Flight 2 | 2d | 2026-12-31 | 2027-01-04 | 4S-SS-B-01.465 | Carpenter [20 h]; Helper [10 h]; Physical Progress [2150 h]; Formwork [10 Sq m]; TATA Projects Ltd-25 | 11,651.6 |
| 4S-SS-B-01.510 |  | Casting of wall upto Flight 2 | 1d | 2027-01-04 | 2027-01-05 | 4S-SS-B-01.495 | Mason; Helper; Physical Progress [1080 h]; Concrete M40 [3 m3]; TATA Projects Ltd-25 | 29,601 |
| 4S-SS-B-01.530 |  | Shuttering of Staircase upto Flight 2 | 1d | 2027-01-05 | 2027-01-06 | 4S-SS-B-01.510 | Carpenter [20 h]; Helper [10 h]; Physical Progress [1080 h]; Formwork [10 Sq m]; TATA Projects Ltd-25 | 11,651.6 |
| 4S-SS-B-01.545 |  | Reinforcement of Staircase upto Flight 2 | 1d | 2027-01-06 | 2027-01-07 | 4S-SS-B-01.530 | Barbender [70 h]; Helper [40 h]; Physical Progress [1080 h]; Reinforcement Steel [1 MT1]; TATA Projects Ltd-25 | 96,512.5 |
| 4S-SS-B-01.555 |  | MEP coordination upto Flight 2 | 1d | 2027-01-07 | 2027-01-08 | 4S-SS-B-01.545 | Physical Progress [1080 h]; TATA Projects Ltd-25 |  |
| 4S-SS-B-01.565 |  | Casting of Staircase upto Flight 2 | 1d | 2027-01-08 | 2027-01-09 | 4S-SS-B-01.555 | Mason; Helper; Physical Progress [1080 h]; Concrete M40 [3 m3]; TATA Projects Ltd-25 | 29,601 |
| 4S-SS-B-01.575 |  | Reinforcement of wall upto Flight 3 | 2d | 2027-01-09 | 2027-01-12 | 4S-SS-B-01.565 | Barbender [70 h]; Helper [40 h]; Physical Progress [2150 h]; Reinforcement Steel [1 MT1]; TATA Projects Ltd-25 | 96,512.5 |
| 4S-SS-B-01.590 |  | Shuttering of wall upto Flight 3 | 2d | 2027-01-12 | 2027-01-14 | 4S-SS-B-01.575 | Carpenter [20 h]; Helper [10 h]; Physical Progress [2150 h]; Formwork [10 Sq m]; TATA Projects Ltd-25 | 11,651.6 |
| 4S-SS-B-01.600 |  | Casting of wall upto Flight 3 | 1d | 2027-01-14 | 2027-01-15 | 4S-SS-B-01.590 | Mason; Helper; Physical Progress [1080 h]; Concrete M40 [3 m3]; TATA Projects Ltd-25 | 29,601 |
| 4S-SS-B-01.610 |  | Shuttering of Staircase upto Flight 3 | 1d | 2027-01-15 | 2027-01-16 | 4S-SS-B-01.600 | Carpenter [20 h]; Helper [10 h]; Physical Progress [1080 h]; Formwork [10 Sq m]; TATA Projects Ltd-25 | 11,651.6 |
| 4S-SS-B-01.615 |  | Reinforcement of Staircase upto Flight 3 | 1d | 2027-01-16 | 2027-01-18 | 4S-SS-B-01.610 | Barbender [70 h]; Helper [40 h]; Physical Progress [1080 h]; Reinforcement Steel [1 MT1]; TATA Projects Ltd-25 | 96,512.5 |
| 4S-SS-B-01.625 |  | MEP coordination upto Flight 3 | 1d | 2027-01-18 | 2027-01-19 | 4S-SS-B-01.615 | Physical Progress [1080 h]; TATA Projects Ltd-25 |  |
| 4S-SS-B-01.635 |  | Casting of Staircase upto Flight 3 | 1d | 2027-01-19 | 2027-01-20 | 4S-SS-B-01.625 | Mason; Helper; Physical Progress [1080 h]; Concrete M40 [3 m3]; TATA Projects Ltd-25 | 29,601 |
| 4S-SS-B-01.640 |  | Reinforcement of wall upto Flight 4 | 2d | 2027-01-20 | 2027-01-22 | 4S-SS-B-01.635 | Barbender [70 h]; Helper [40 h]; Physical Progress [2150 h]; Reinforcement Steel [1 MT1]; TATA Projects Ltd-25 | 96,512.5 |
| 4S-SS-B-01.650 |  | Shuttering of wall upto Flight 4 | 2d | 2027-01-22 | 2027-01-25 | 4S-SS-B-01.640 | Carpenter [20 h]; Helper [10 h]; Physical Progress [2150 h]; Formwork [10 Sq m]; TATA Projects Ltd-25 | 11,651.6 |
| 4S-SS-B-01.660 |  | Casting of wall upto Flight 4 | 1d | 2027-01-25 | 2027-01-27 | 4S-SS-B-01.650 | Mason; Helper; Physical Progress [1080 h]; Concrete M40 [3 m3]; TATA Projects Ltd-25 | 29,601 |
| 4S-SS-B-01.675 |  | Shuttering of Staircase upto Flight 4 | 1d | 2027-01-27 | 2027-01-28 | 4S-SS-B-01.660 | Carpenter [20 h]; Helper [10 h]; Physical Progress [1080 h]; Formwork [10 Sq m]; TATA Projects Ltd-25 | 11,651.6 |
| 4S-SS-B-01.685 |  | Reinforcement of Staircase upto Flight 4 | 1d | 2027-01-28 | 2027-01-29 | 4S-SS-B-01.675 | Barbender [70 h]; Helper [40 h]; Physical Progress [1080 h]; Reinforcement Steel [1 MT1]; TATA Projects Ltd-25 | 96,512.5 |

| ID | WBS | Activity | Duration | Start | Finish | Predecessors | Resources | Cost |
| --- | --- | --- | --- | --- | --- | --- | --- | --- |
|  | 2 | **Slab** |  | 2027-01-12 | 2027-02-16 |  |  |  |
| 4S-SS-B-01.585 |  | Shuttering | 5d | 2027-01-12 | 2027-01-18 | 4S-SS-B-01.580, E-GFC-ST-CB-155 | Carpenter [5650 h]; Helper [2830 h]; Physical Progress [5390 h]; Formwork [3390 Sq m]; TATA Projects Ltd-25 | 3,949,892.4 |
| 4S-SS-B-01.620 |  | Reinforcement Bottom Net with chairs | 3d | 2027-01-18 | 2027-01-21 | 4S-SS-B-01.585 | Barbender [1400 h]; Helper [700 h]; Physical Progress [3230 h]; Reinforcement Steel [21 MT1]; TATA Projects Ltd-25 | 2,026,762.5 |
| 4S-SS-B-01.645 |  | Laying of PT Tendon | 4d | 2027-01-21 | 2027-01-27 | 4S-SS-B-01.620 | Physical Progress [4310 h]; TATA Projects Ltd-25 |  |
| 4S-SS-B-01.670 |  | Reinforcement Top Net | 3d | 2027-01-27 | 2027-01-30 | 4S-SS-B-01.645 | Barbender [1400 h]; Helper [700 h]; Physical Progress [3230 h]; Reinforcement Steel [21 MT1]; TATA Projects Ltd-25 | 2,026,762.5 |
| 4S-SS-B-01.695 |  | MEP Coordination | 1d | 2027-01-30 | 2027-02-01 | 4S-SS-B-01.685, 4S-SS-B-01.620, 4S-SS-B-01.670 | Physical Progress [1080 h]; TATA Projects Ltd-25 |  |
| 4S-SS-B-01.700 |  | Concrete of Slab | 1d | 2027-02-01 | 2027-02-02 | 4S-SS-B-01.695 | Mason [50 h]; Helper [50 h]; Physical Progress [1080 h]; Concrete M40 [848 m3]; TATA Projects Ltd-25 | 8,367,216 |
| 4S-SS-B-01.705 |  | Wait for Strength Gain | 6d | 2027-02-02 | 2027-02-09 | 4S-SS-B-01.700 | Physical Progress [6460 h]; TATA Projects Ltd-25 |  |
| 4S-SS-B-01.715 |  | PT Work | 6d | 2027-02-09 | 2027-02-16 | 4S-SS-B-02.420, 4S-SS-B-01.705 | PT [9 MT1]; Helper [100 h]; PT Fitter [100 h]; Physical Progress [8620 h]; TATA Projects Ltd-25 | 1,710,000 |
|  | 4 | **Pour 4** |  | 2026-11-25 | 2027-01-18 |  |  |  |
|  | 1 | **Column - First Lift** |  | 2026-11-25 | 2026-12-04 |  |  |  |
| 4S-SS-B-01.360 |  | Reinforcement | 3d | 2026-11-25 | 2026-11-28 | 4S-SS-B-02.410 | Barbender [1070 h]; Helper [540 h]; Physical Progress [3230 h]; Reinforcement Steel [16 MT1]; TATA Projects Ltd-25 | 1,544,200 |
| 4S-SS-B-01.405 |  | LPS | 1d | 2026-11-28 | 2026-11-30 | 4S-SS-B-01.360 | LPS [41809 INR]; Physical Progress [1080 h]; TATA Projects Ltd-25 | 41,809 |
| 4S-SS-B-01.420 |  | Shuttering | 3d | 2026-11-30 | 2026-12-03 | 4S-SS-B-01.360, 4S-SS-B-01.405 | Carpenter [520 h]; Helper [260 h]; Physical Progress [3230 h]; Formwork [308 Sq m]; TATA Projects Ltd-25 | 358,869.28 |
| 4S-SS-B-01.460 |  | Concrete | 1d | 2026-12-03 | 2026-12-04 | 4S-SS-B-01.420 | Mason [50 h]; Helper [50 h]; Physical Progress [1080 h]; Concrete M40 [77 m3]; TATA Projects Ltd-25 | 759,759 |
|  | 4 | **Column - Second Lift** |  | 2026-12-04 | 2026-12-14 |  |  |  |
| 4S-SS-B-01.475 |  | Reinforcement | 3d | 2026-12-04 | 2026-12-08 | 4S-SS-B-01.460 | Barbender [1070 h]; Helper [540 h]; Physical Progress [3230 h]; Reinforcement Steel [16 MT1]; TATA Projects Ltd-25 | 1,544,200 |
| 4S-SS-B-01.505 |  | LPS | 1d | 2026-12-08 | 2026-12-09 | 4S-SS-B-01.475 | LPS [41809 INR]; Physical Progress [1080 h]; TATA Projects Ltd-25 | 41,809 |
| 4S-SS-B-01.525 |  | Shuttering | 3d | 2026-12-09 | 2026-12-12 | 4S-SS-B-01.475, 4S-SS-B-01.505 | Carpenter [520 h]; Helper [260 h]; Physical Progress [3230 h]; Formwork [308 Sq m]; TATA Projects Ltd-25 | 358,869.28 |
| 4S-SS-B-01.560 |  | Concrete | 1d | 2026-12-12 | 2026-12-14 | 4S-SS-B-01.525 | Mason [50 h]; Helper [50 h]; Physical Progress [1080 h]; Concrete M40 [77 m3]; TATA Projects Ltd-25 | 759,759 |
|  | 2 | **Slab** |  | 2026-12-14 | 2027-01-18 |  |  |  |
| 4S-SS-B-01.570 |  | Shuttering | 5d | 2026-12-14 | 2026-12-19 | 4S-SS-B-01.560, E-GFC-ST-CB-155 | Carpenter [3210 h]; Helper [1610 h]; Physical Progress [5390 h]; Formwork [1923 Sq m]; TATA Projects Ltd-25 | 2,240,602.68 |
| 4S-SS-B-01.605 |  | Reinforcement Bottom Net with chairs | 3d | 2026-12-19 | 2026-12-23 | 4S-SS-B-01.570 | Barbender [800 h]; Helper [400 h]; Physical Progress [3230 h]; Reinforcement Steel [12 MT1]; TATA Projects Ltd-25 | 1,158,150 |
| 4S-SS-B-01.630 |  | Laying of PT Tendon | 4d | 2026-12-23 | 2026-12-29 | 4S-SS-B-01.605 | Physical Progress [4310 h]; TATA Projects Ltd-25 |  |
| 4S-SS-B-01.655 |  | Reinforcement Top Net | 2d | 2026-12-29 | 2026-12-31 | 4S-SS-B-01.630 | Barbender [800 h]; Helper [400 h]; Physical Progress [2150 h]; Reinforcement Steel [12 MT1]; TATA Projects Ltd-25 | 1,158,150 |
| 4S-SS-B-01.665 |  | MEP Coordination | 1d | 2026-12-31 | 2027-01-02 | 4S-SS-B-01.605, 4S-SS-B-01.655 | Physical Progress [1080 h]; TATA Projects Ltd-25 |  |
| 4S-SS-B-01.680 |  | Concrete of Slab | 1d | 2027-01-02 | 2027-01-04 | 4S-SS-B-01.665 | Mason [50 h]; Helper [50 h]; Physical Progress [1080 h]; Concrete M40 [481 m3]; TATA Projects Ltd-25 | 4,746,027 |
| 4S-SS-B-01.690 |  | Wait for Strength Gain | 6d | 2027-01-04 | 2027-01-11 | 4S-SS-B-01.680 | Physical Progress [6460 h]; TATA Projects Ltd-25 |  |
| 4S-SS-B-01.710 |  | PT Work | 6d | 2027-01-11 | 2027-01-18 | 4S-SS-B-02.425, 4S-SS-B-01.690 | PT [5 MT1]; Helper [100 h]; PT Fitter [100 h]; Physical Progress [8620 h]; TATA Projects Ltd-25 | 950,000 |

| ID | WBS | Activity | Duration | Start | Finish | Predecessors | Resources | Cost |
| --- | --- | --- | --- | --- | --- | --- | --- | --- |
|  | 1 | **Superstructure** |  | 2027-02-02 | 2027-11-13 |  |  |  |
|  | 6 | **Ground Floor** |  | 2027-02-02 | 2027-04-08 |  |  |  |
|  | 1 | **Pour 1** |  | 2027-02-18 | 2027-04-08 |  |  |  |
|  | 5 | **Column, Core Wall, Shear Wall - First Lift** |  | 2027-02-18 | 2027-02-27 |  |  |  |
| 4S-SS-GF.20 |  | Reinforcement | 3d | 2027-02-18 | 2027-02-22 | 4S-SS-B-01.300 | Barbender [740 h]; Helper [370 h]; Physical Progress [4340 h]; Reinforcement Steel [11 MT1]; TATA Projects Ltd-25 | 1,061,637.5 |
| 4S-SS-GF.35 |  | LPS | 1d | 2027-02-22 | 2027-02-23 | 4S-SS-GF.20 | LPS [41809 INR]; Physical Progress [1440 h]; TATA Projects Ltd-25 | 41,809 |
| 4S-SS-GF.50 |  | Shuttering | 3d | 2027-02-23 | 2027-02-26 | 4S-SS-GF.20, 4S-SS-GF.35 | Carpenter [430 h]; Helper [220 h]; Physical Progress [4340 h]; Formwork [256 Sq m]; TATA Projects Ltd-25 | 298,280.96 |
| 4S-SS-GF.85 |  | Concrete | 1d | 2027-02-26 | 2027-02-27 | 4S-SS-GF.50 | Mason [50 h]; Helper [50 h]; Physical Progress [1440 h]; Concrete M40 [64 m3]; TATA Projects Ltd-25 | 631,488 |
|  | 1 | **Column, Core Wall, Shear Wall - Second Lift** |  | 2027-02-27 | 2027-03-09 |  |  |  |
| 4S-SS-GF.90 |  | Reinforcement | 3d | 2027-02-27 | 2027-03-03 | 4S-SS-GF.85 | Barbender [740 h]; Helper [370 h]; Physical Progress [4340 h]; Reinforcement Steel [11 MT1]; TATA Projects Ltd-25 | 1,061,637.5 |
| 4S-SS-GF.115 |  | LPS | 1d | 2027-03-03 | 2027-03-04 | 4S-SS-GF.90 | LPS [41809 INR]; Physical Progress [1440 h]; TATA Projects Ltd-25 | 41,809 |
| 4S-SS-GF.130 |  | Shuttering | 3d | 2027-03-04 | 2027-03-08 | 4S-SS-GF.90, 4S-SS-GF.115 | Carpenter [430 h]; Helper [220 h]; Physical Progress [4340 h]; Formwork [256 Sq m]; TATA Projects Ltd-25 | 298,280.96 |
| 4S-SS-GF.155 |  | Concrete | 1d | 2027-03-08 | 2027-03-09 | 4S-SS-GF.130 | Mason [50 h]; Helper [50 h]; Physical Progress [1440 h]; Concrete M40 [64 m3]; TATA Projects Ltd-25 | 631,488 |
|  | 3 | **Staircase - 1** |  | 2027-02-18 | 2027-03-20 |  |  |  |
| 4S-SS-GF.10 |  | Reinforcement of wall upto Flight 1 | 2d | 2027-02-18 | 2027-02-20 | 4S-SS-B-01.300 | Barbender [70 h]; Helper [40 h]; Physical Progress [2890 h]; Reinforcement Steel [1 MT1]; TATA Projects Ltd-25 | 96,512.5 |
| 4S-SS-GF.25 |  | Shuttering of wall upto Flight 1 | 2d | 2027-02-20 | 2027-02-23 | 4S-SS-GF.10 | Carpenter [20 h]; Helper [10 h]; Physical Progress [2890 h]; Formwork [10 Sq m]; TATA Projects Ltd-25 | 11,651.6 |
| 4S-SS-GF.40 |  | Casting of wall upto Flight 1 | 1d | 2027-02-23 | 2027-02-24 | 4S-SS-GF.25 | Mason; Helper; Physical Progress [1440 h]; Concrete M40 [3 m3]; TATA Projects Ltd-25 | 29,601 |
| 4S-SS-GF.55 |  | Shuttering of Staircase upto Flight 1 | 1d | 2027-02-24 | 2027-02-25 | 4S-SS-GF.40 | Carpenter [20 h]; Helper [10 h]; Physical Progress [1440 h]; Formwork [10 Sq m]; TATA Projects Ltd-25 | 11,651.6 |
| 4S-SS-GF.65 |  | Reinforcement of Staircase upto Flight 1 | 1d | 2027-02-25 | 2027-02-26 | 4S-SS-GF.55 | Barbender [70 h]; Helper [40 h]; Physical Progress [1440 h]; Reinforcement Steel [1 MT1]; TATA Projects Ltd-25 | 96,512.5 |
| 4S-SS-GF.75 |  | MEP coordination upto Flight 1 | 1d | 2027-02-26 | 2027-02-27 | 4S-SS-GF.65 | Physical Progress [1440 h]; TATA Projects Ltd-25 |  |
| 4S-SS-GF.95 |  | Casting of Staircase upto Flight 1 | 1d | 2027-02-27 | 2027-03-01 | 4S-SS-GF.75 | Mason; Helper; Physical Progress [1440 h]; Concrete M40 [3 m3]; TATA Projects Ltd-25 | 29,601 |
| 4S-SS-GF.105 |  | Reinforcement of wall upto Flight 2 | 2d | 2027-03-01 | 2027-03-03 | 4S-SS-GF.95 | Barbender [70 h]; Helper [40 h]; Physical Progress [2890 h]; Reinforcement Steel [1 MT1]; TATA Projects Ltd-25 | 96,512.5 |
| 4S-SS-GF.120 |  | Shuttering of wall upto Flight 2 | 2d | 2027-03-03 | 2027-03-05 | 4S-SS-GF.105 | Carpenter [20 h]; Helper [10 h]; Physical Progress [2890 h]; Formwork [10 Sq m]; TATA Projects Ltd-25 | 11,651.6 |
| 4S-SS-GF.135 |  | Casting of wall upto Flight 2 | 1d | 2027-03-05 | 2027-03-06 | 4S-SS-GF.120 | Mason; Helper; Physical Progress [1440 h]; Concrete M40 [3 m3]; TATA Projects Ltd-25 | 29,601 |
| 4S-SS-GF.145 |  | Shuttering of Staircase upto Flight 2 | 1d | 2027-03-06 | 2027-03-08 | 4S-SS-GF.135 | Carpenter [20 h]; Helper [10 h]; Physical Progress [1440 h]; Formwork [10 Sq m]; TATA Projects Ltd-25 | 11,651.6 |
| 4S-SS-GF.160 |  | Reinforcement of Staircase upto Flight 2 | 1d | 2027-03-08 | 2027-03-09 | 4S-SS-GF.145 | Barbender [70 h]; Helper [40 h]; Physical Progress [1440 h]; Reinforcement Steel [1 MT1]; TATA Projects Ltd-25 | 96,512.5 |
| 4S-SS-GF.175 |  | MEP coordination upto Flight 2 | 1d | 2027-03-09 | 2027-03-11 | 4S-SS-GF.160 | Physical Progress [1440 h]; TATA Projects Ltd-25 |  |
| 4S-SS-GF.185 |  | Casting of Staircase upto Flight 2 | 1d | 2027-03-11 | 2027-03-12 | 4S-SS-GF.175 | Mason; Helper; Physical Progress [1440 h]; Concrete M40 [3 m3]; TATA Projects Ltd-25 | 29,601 |
| 4S-SS-GF.195 |  | Reinforcement of wall upto Flight 3 | 2d | 2027-03-12 | 2027-03-15 | 4S-SS-GF.185 | Barbender [70 h]; Helper [40 h]; Physical Progress [2890 h]; Reinforcement Steel [1 MT1]; TATA Projects Ltd-25 | 96,512.5 |
| 4S-SS-GF.210 |  | Shuttering of wall upto Flight 3 | 2d | 2027-03-15 | 2027-03-17 | 4S-SS-GF.195 | Carpenter [20 h]; Helper [10 h]; Physical Progress [2890 h]; Formwork [10 Sq m]; TATA Projects Ltd-25 | 11,651.6 |
| 4S-SS-GF.235 |  | Casting of wall upto Flight 3 | 1d | 2027-03-17 | 2027-03-18 | 4S-SS-GF.210 | Mason; Helper; Physical Progress [1440 h]; Concrete M40 [3 m3]; TATA Projects Ltd-25 | 29,601 |
| 4S-SS-GF.245 |  | Shuttering of Staircase upto Flight 3 | 1d | 2027-03-18 | 2027-03-19 | 4S-SS-GF.235 | Carpenter [20 h]; Helper [10 h]; Physical Progress [1440 h]; Formwork [10 Sq m]; TATA Projects Ltd-25 | 11,651.6 |
| 4S-SS-GF.270 |  | Reinforcement of Staircase upto Flight 3 | 1d | 2027-03-19 | 2027-03-20 | 4S-SS-GF.245 | Barbender [70 h]; Helper [40 h]; Physical Progress [1440 h]; Reinforcement Steel [1 MT1]; TATA Projects Ltd-25 | 96,512.5 |

| ID | WBS | Activity | Duration | Start | Finish | Predecessors | Resources | Cost |
| --- | --- | --- | --- | --- | --- | --- | --- | --- |
|  | 4 | **Staircase - 2** |  | 2027-02-18 | 2027-03-20 |  |  |  |
| 4S-SS-GF.15 |  | Reinforcement of wall upto Flight 1 | 2d | 2027-02-18 | 2027-02-20 | 4S-SS-B-01.300 | Barbender [70 h]; Helper [40 h]; Physical Progress [2890 h]; Reinforcement Steel [1 MT1]; TATA Projects Ltd-25 | 96,512.5 |
| 4S-SS-GF.30 |  | Shuttering of wall upto Flight 1 | 2d | 2027-02-20 | 2027-02-23 | 4S-SS-GF.15 | Carpenter [20 h]; Helper [10 h]; Physical Progress [2890 h]; Formwork [10 Sq m]; TATA Projects Ltd-25 | 11,651.6 |
| 4S-SS-GF.45 |  | Casting of wall upto Flight 1 | 1d | 2027-02-23 | 2027-02-24 | 4S-SS-GF.30 | Mason; Helper; Physical Progress [1440 h]; Concrete M40 [3 m3]; TATA Projects Ltd-25 | 29,601 |
| 4S-SS-GF.60 |  | Shuttering of Staircase upto Flight 1 | 1d | 2027-02-24 | 2027-02-25 | 4S-SS-GF.45 | Carpenter [20 h]; Helper [10 h]; Physical Progress [1440 h]; Formwork [10 Sq m]; TATA Projects Ltd-25 | 11,651.6 |
| 4S-SS-GF.70 |  | Reinforcement of Staircase upto Flight 1 | 1d | 2027-02-25 | 2027-02-26 | 4S-SS-GF.60 | Barbender [70 h]; Helper [40 h]; Physical Progress [1440 h]; Reinforcement Steel [1 MT1]; TATA Projects Ltd-25 | 96,512.5 |
| 4S-SS-GF.80 |  | MEP coordination upto Flight 1 | 1d | 2027-02-26 | 2027-02-27 | 4S-SS-GF.70 | Physical Progress [1440 h]; TATA Projects Ltd-25 |  |
| 4S-SS-GF.100 |  | Casting of Staircase upto Flight 1 | 1d | 2027-02-27 | 2027-03-01 | 4S-SS-GF.80 | Mason; Helper; Physical Progress [1440 h]; Concrete M40 [3 m3]; TATA Projects Ltd-25 | 29,601 |
| 4S-SS-GF.110 |  | Reinforcement of wall upto Flight 2 | 2d | 2027-03-01 | 2027-03-03 | 4S-SS-GF.100 | Barbender [70 h]; Helper [40 h]; Physical Progress [2890 h]; Reinforcement Steel [1 MT1]; TATA Projects Ltd-25 | 96,512.5 |
| 4S-SS-GF.125 |  | Shuttering of wall upto Flight 2 | 2d | 2027-03-03 | 2027-03-05 | 4S-SS-GF.110 | Carpenter [20 h]; Helper [10 h]; Physical Progress [2890 h]; Formwork [10 Sq m]; TATA Projects Ltd-25 | 11,651.6 |
| 4S-SS-GF.140 |  | Casting of wall upto Flight 2 | 1d | 2027-03-05 | 2027-03-06 | 4S-SS-GF.125 | Mason; Helper; Physical Progress [1440 h]; Concrete M40 [3 m3]; TATA Projects Ltd-25 | 29,601 |
| 4S-SS-GF.150 |  | Shuttering of Staircase upto Flight 2 | 1d | 2027-03-06 | 2027-03-08 | 4S-SS-GF.140 | Carpenter [20 h]; Helper [10 h]; Physical Progress [1440 h]; Formwork [10 Sq m]; TATA Projects Ltd-25 | 11,651.6 |
| 4S-SS-GF.165 |  | Reinforcement of Staircase upto Flight 2 | 1d | 2027-03-08 | 2027-03-09 | 4S-SS-GF.150 | Barbender [70 h]; Helper [40 h]; Physical Progress [1440 h]; Reinforcement Steel [1 MT1]; TATA Projects Ltd-25 | 96,512.5 |
| 4S-SS-GF.180 |  | MEP coordination upto Flight 2 | 1d | 2027-03-09 | 2027-03-11 | 4S-SS-GF.165 | Physical Progress [1440 h]; TATA Projects Ltd-25 |  |
| 4S-SS-GF.190 |  | Casting of Staircase upto Flight 2 | 1d | 2027-03-11 | 2027-03-12 | 4S-SS-GF.180 | Mason; Helper; Physical Progress [1440 h]; Concrete M40 [3 m3]; TATA Projects Ltd-25 | 29,601 |
| 4S-SS-GF.200 |  | Reinforcement of wall upto Flight 3 | 2d | 2027-03-12 | 2027-03-15 | 4S-SS-GF.190 | Barbender [70 h]; Helper [40 h]; Physical Progress [2890 h]; Reinforcement Steel [1 MT1]; TATA Projects Ltd-25 | 96,512.5 |
| 4S-SS-GF.215 |  | Shuttering of wall upto Flight 3 | 2d | 2027-03-15 | 2027-03-17 | 4S-SS-GF.200 | Carpenter [20 h]; Helper [10 h]; Physical Progress [2890 h]; Formwork [10 Sq m]; TATA Projects Ltd-25 | 11,651.6 |
| 4S-SS-GF.240 |  | Casting of wall upto Flight 3 | 1d | 2027-03-17 | 2027-03-18 | 4S-SS-GF.215 | Mason; Helper; Physical Progress [1440 h]; Concrete M40 [3 m3]; TATA Projects Ltd-25 | 29,601 |
| 4S-SS-GF.250 |  | Shuttering of Staircase upto Flight 3 | 1d | 2027-03-18 | 2027-03-19 | 4S-SS-GF.240 | Carpenter [20 h]; Helper [10 h]; Physical Progress [1440 h]; Formwork [10 Sq m]; TATA Projects Ltd-25 | 11,651.6 |
| 4S-SS-GF.275 |  | Reinforcement of Staircase upto Flight 3 | 1d | 2027-03-19 | 2027-03-20 | 4S-SS-GF.250 | Barbender [70 h]; Helper [40 h]; Physical Progress [1440 h]; Reinforcement Steel [1 MT1]; TATA Projects Ltd-25 | 96,512.5 |
|  | 2 | **Slab** |  | 2027-03-09 | 2027-04-08 |  |  |  |
| 4S-SS-GF.170 |  | Shuttering | 5d | 2027-03-09 | 2027-03-16 | 4S-SS-GF.155 | Carpenter [1520 h]; Helper [760 h]; Physical Progress [7230 h]; Formwork [908 Sq m]; TATA Projects Ltd-25 | 1,057,965.28 |
| 4S-SS-GF.225 |  | Reinforcement Bottom Net with chairs | 2d | 2027-03-16 | 2027-03-18 | 4S-SS-GF.170 | Barbender [540 h]; Helper [270 h]; Physical Progress [4340 h]; Reinforcement Steel [8 MT1]; TATA Projects Ltd-25 | 772,100 |
| 4S-SS-GF.260 |  | Laying of PT Tendon | 2d | 2027-03-18 | 2027-03-20 | E-ShopD-Civil-PT-CB-35, 4S-SS-GF.225 | Physical Progress [5780 h]; TATA Projects Ltd-25 |  |
| 4S-SS-GF.305 |  | Reinforcement Top Net | 2d | 2027-03-20 | 2027-03-24 | 4S-SS-GF.260 | Barbender [540 h]; Helper [270 h]; Physical Progress [2890 h]; Reinforcement Steel [8 MT1]; TATA Projects Ltd-25 | 772,100 |
| 4S-SS-GF.325 |  | MEP Coordination | 1d | 2027-03-24 | 2027-03-25 | 4S-SS-GF.275, 4S-SS-GF.270, 4S-SS-GF.225, 4S-SS-GF.305 | Physical Progress [1440 h]; TATA Projects Ltd-25 |  |
| 4S-SS-GF.330 |  | Concrete of Slab | 1d | 2027-03-25 | 2027-03-27 | 4S-SS-GF.325 | Mason [50 h]; Helper [50 h]; Physical Progress [1440 h]; Concrete M40 [227 m3]; TATA Projects Ltd-25 | 2,239,809 |
| 4S-SS-GF.345 |  | Wait for Strength Gain | 6d | 2027-03-27 | 2027-04-03 | 4S-SS-GF.330 | Physical Progress [8680 h]; TATA Projects Ltd-25 |  |
| 4S-SS-GF.390 |  | PT Work | 4d | 2027-04-03 | 2027-04-08 | 4S-SS-B-01.355, 4S-SS-GF.345 | PT [2 MT1]; Helper [100 h]; PT Fitter [100 h]; Physical Progress [11570 h]; TATA Projects Ltd-25 | 380,000 |

| ID | WBS | Activity | Duration | Start | Finish | Predecessors | Resources | Cost |
| --- | --- | --- | --- | --- | --- | --- | --- | --- |
|  | 2 | **Pour 2** |  | 2027-02-10 | 2027-03-31 |  |  |  |
|  | 4 | **Column, Core Wall, Shear Wall - First Lift** |  | 2027-02-10 | 2027-02-19 |  |  |  |
| 4S-SS-GF.220 |  | Reinforcement | 3d | 2027-02-10 | 2027-02-13 | 4S-SS-B-01.535 | Barbender [540 h]; Helper [270 h]; Physical Progress [4340 h]; Reinforcement Steel [8 MT1]; TATA Projects Ltd-25 | 772,100 |
| 4S-SS-GF.255 |  | LPS | 1d | 2027-02-13 | 2027-02-15 | 4S-SS-GF.220 | LPS [41809 INR]; Physical Progress [1440 h]; TATA Projects Ltd-25 | 41,809 |
| 4S-SS-GF.280 |  | Shuttering | 3d | 2027-02-15 | 2027-02-18 | 4S-SS-GF.220, 4S-SS-GF.255 | Carpenter [330 h]; Helper [170 h]; Physical Progress [4340 h]; Formwork [195 Sq m]; TATA Projects Ltd-25 | 227,206.2 |
| 4S-SS-GF.300 |  | Concrete | 1d | 2027-02-18 | 2027-02-19 | 4S-SS-GF.280 | Mason [50 h]; Helper [50 h]; Physical Progress [1440 h]; Concrete M40 [49 m3]; TATA Projects Ltd-25 | 483,483 |
|  | 1 | **Column, Core Wall, Shear Wall - Second Lift** |  | 2027-02-19 | 2027-03-01 |  |  |  |
| 4S-SS-GF.310 |  | Reinforcement | 3d | 2027-02-19 | 2027-02-23 | 4S-SS-GF.300 | Barbender [540 h]; Helper [270 h]; Physical Progress [4340 h]; Reinforcement Steel [8 MT1]; TATA Projects Ltd-25 | 772,100 |
| 4S-SS-GF.335 |  | LPS | 1d | 2027-02-23 | 2027-02-24 | 4S-SS-GF.310 | LPS [41809 INR]; Physical Progress [1440 h]; TATA Projects Ltd-25 | 41,809 |
| 4S-SS-GF.350 |  | Shuttering | 3d | 2027-02-24 | 2027-02-27 | 4S-SS-GF.310, 4S-SS-GF.335 | Carpenter [330 h]; Helper [170 h]; Physical Progress [4340 h]; Formwork [195 Sq m]; TATA Projects Ltd-25 | 227,206.2 |
| 4S-SS-GF.365 |  | Concrete | 1d | 2027-02-27 | 2027-03-01 | 4S-SS-GF.350 | Mason [50 h]; Helper [50 h]; Physical Progress [1440 h]; Concrete M40 [49 m3]; TATA Projects Ltd-25 | 483,483 |
|  | 3 | **Staircase** |  | 2027-02-10 | 2027-03-12 |  |  |  |
| 4S-SS-GF.205 |  | Reinforcement of wall upto Flight 1 | 2d | 2027-02-10 | 2027-02-12 | 4S-SS-B-01.535 | Barbender [70 h]; Helper [40 h]; Physical Progress [2890 h]; Reinforcement Steel [1 MT1]; TATA Projects Ltd-25 | 96,512.5 |
| 4S-SS-GF.230 |  | Shuttering of wall upto Flight 1 | 2d | 2027-02-12 | 2027-02-15 | 4S-SS-GF.205 | Carpenter [20 h]; Helper [10 h]; Physical Progress [2890 h]; Formwork [10 Sq m]; TATA Projects Ltd-25 | 11,651.6 |
| 4S-SS-GF.265 |  | Casting of wall upto Flight 1 | 1d | 2027-02-15 | 2027-02-16 | 4S-SS-GF.230 | Mason; Helper; Physical Progress [1440 h]; Concrete M40 [3 m3]; TATA Projects Ltd-25 | 29,601 |
| 4S-SS-GF.285 |  | Shuttering of Staircase upto Flight 1 | 1d | 2027-02-16 | 2027-02-17 | 4S-SS-GF.265 | Carpenter [20 h]; Helper [10 h]; Physical Progress [1440 h]; Formwork [10 Sq m]; TATA Projects Ltd-25 | 11,651.6 |
| 4S-SS-GF.290 |  | Reinforcement of Staircase upto Flight 1 | 1d | 2027-02-17 | 2027-02-18 | 4S-SS-GF.285 | Barbender [70 h]; Helper [40 h]; Physical Progress [1440 h]; Reinforcement Steel [1 MT1]; TATA Projects Ltd-25 | 96,512.5 |
| 4S-SS-GF.295 |  | MEP coordination upto Flight 1 | 1d | 2027-02-18 | 2027-02-19 | 4S-SS-GF.290 | Physical Progress [1440 h]; TATA Projects Ltd-25 |  |
| 4S-SS-GF.315 |  | Casting of Staircase upto Flight 1 | 1d | 2027-02-19 | 2027-02-20 | 4S-SS-GF.295 | Mason; Helper; Physical Progress [1440 h]; Concrete M40 [3 m3]; TATA Projects Ltd-25 | 29,601 |
| 4S-SS-GF.320 |  | Reinforcement of wall upto Flight 2 | 2d | 2027-02-20 | 2027-02-23 | 4S-SS-GF.315 | Barbender [70 h]; Helper [40 h]; Physical Progress [2890 h]; Reinforcement Steel [1 MT1]; TATA Projects Ltd-25 | 96,512.5 |
| 4S-SS-GF.340 |  | Shuttering of wall upto Flight 2 | 2d | 2027-02-23 | 2027-02-25 | 4S-SS-GF.320 | Carpenter [20 h]; Helper [10 h]; Physical Progress [2890 h]; Formwork [10 Sq m]; TATA Projects Ltd-25 | 11,651.6 |
| 4S-SS-GF.355 |  | Casting of wall upto Flight 2 | 1d | 2027-02-25 | 2027-02-26 | 4S-SS-GF.340 | Mason; Helper; Physical Progress [1440 h]; Concrete M40 [3 m3]; TATA Projects Ltd-25 | 29,601 |
| 4S-SS-GF.360 |  | Shuttering of Staircase upto Flight 2 | 1d | 2027-02-26 | 2027-02-27 | 4S-SS-GF.355 | Carpenter [20 h]; Helper [10 h]; Physical Progress [1440 h]; Formwork [10 Sq m]; TATA Projects Ltd-25 | 11,651.6 |
| 4S-SS-GF.370 |  | Reinforcement of Staircase upto Flight 2 | 1d | 2027-02-27 | 2027-03-01 | 4S-SS-GF.360 | Barbender [70 h]; Helper [40 h]; Physical Progress [1440 h]; Reinforcement Steel [1 MT1]; TATA Projects Ltd-25 | 96,512.5 |
| 4S-SS-GF.380 |  | MEP coordination upto Flight 2 | 1d | 2027-03-01 | 2027-03-02 | 4S-SS-GF.370 | Physical Progress [1440 h]; TATA Projects Ltd-25 |  |
| 4S-SS-GF.385 |  | Casting of Staircase upto Flight 2 | 1d | 2027-03-02 | 2027-03-03 | 4S-SS-GF.380 | Mason; Helper; Physical Progress [1440 h]; Concrete M40 [3 m3]; TATA Projects Ltd-25 | 29,601 |
| 4S-SS-GF.395 |  | Reinforcement of wall upto Flight 3 | 2d | 2027-03-03 | 2027-03-05 | 4S-SS-GF.385 | Barbender [70 h]; Helper [40 h]; Physical Progress [2890 h]; Reinforcement Steel [1 MT1]; TATA Projects Ltd-25 | 96,512.5 |
| 4S-SS-GF.400 |  | Shuttering of wall upto Flight 3 | 2d | 2027-03-05 | 2027-03-08 | 4S-SS-GF.395 | Carpenter [20 h]; Helper [10 h]; Physical Progress [2890 h]; Formwork [10 Sq m]; TATA Projects Ltd-25 | 11,651.6 |
| 4S-SS-GF.420 |  | Casting of wall upto Flight 3 | 1d | 2027-03-08 | 2027-03-09 | 4S-SS-GF.400 | Mason; Helper; Physical Progress [1440 h]; Concrete M40 [3 m3]; TATA Projects Ltd-25 | 29,601 |
| 4S-SS-GF.430 |  | Shuttering of Staircase upto Flight 3 | 1d | 2027-03-09 | 2027-03-11 | 4S-SS-GF.420 | Carpenter [20 h]; Helper [10 h]; Physical Progress [1440 h]; Formwork [10 Sq m]; TATA Projects Ltd-25 | 11,651.6 |
| 4S-SS-GF.440 |  | Reinforcement of Staircase upto Flight 3 | 1d | 2027-03-11 | 2027-03-12 | 4S-SS-GF.430 | Barbender [70 h]; Helper [40 h]; Physical Progress [1440 h]; Reinforcement Steel [1 MT1]; TATA Projects Ltd-25 | 96,512.5 |

| ID | WBS | Activity | Duration | Start | Finish | Predecessors | Resources | Cost |
| --- | --- | --- | --- | --- | --- | --- | --- | --- |
|  | 2 | **Slab** |  | 2027-03-01 | 2027-03-31 |  |  |  |
| 4S-SS-GF.375 |  | Shuttering | 5d | 2027-03-01 | 2027-03-06 | 4S-SS-GF.365 | Carpenter [1150 h]; Helper [580 h]; Physical Progress [7230 h]; Formwork [689 Sq m]; TATA Projects Ltd-25 | 802,795.24 |
| 4S-SS-GF.405 |  | Reinforcement Bottom Net with chairs | 2d | 2027-03-06 | 2027-03-09 | 4S-SS-GF.375 | Barbender [400 h]; Helper [200 h]; Physical Progress [4340 h]; Reinforcement Steel [6 MT1]; TATA Projects Ltd-25 | 579,075 |
| 4S-SS-GF.435 |  | Laying of PT Tendon | 2d | 2027-03-09 | 2027-03-12 | 4S-SS-GF.405 | Physical Progress [5780 h]; TATA Projects Ltd-25 |  |
| 4S-SS-GF.475 |  | Reinforcement Top Net | 2d | 2027-03-12 | 2027-03-15 | 4S-SS-GF.435 | Barbender [400 h]; Helper [200 h]; Physical Progress [2890 h]; Reinforcement Steel [6 MT1]; TATA Projects Ltd-25 | 579,075 |
| 4S-SS-GF.495 |  | MEP Coordination | 1d | 2027-03-15 | 2027-03-16 | 4S-SS-GF.440, 4S-SS-GF.405, 4S-SS-GF.475 | Physical Progress [1440 h]; TATA Projects Ltd-25 |  |
| 4S-SS-GF.505 |  | Concrete of Slab | 1d | 2027-03-16 | 2027-03-17 | 4S-SS-GF.495 | Mason [50 h]; Helper [50 h]; Physical Progress [1440 h]; Concrete M40 [172 m3]; TATA Projects Ltd-25 | 1,697,124 |
| 4S-SS-GF.510 |  | Wait for Strength Gain | 6d | 2027-03-17 | 2027-03-25 | 4S-SS-GF.505 | Physical Progress [8680 h]; TATA Projects Ltd-25 |  |
| 4S-SS-GF.585 |  | PT Work | 4d | 2027-03-25 | 2027-03-31 | 4S-SS-B-01.595, 4S-SS-GF.510 | PT [2 MT1]; Helper [100 h]; PT Fitter [100 h]; Physical Progress [11570 h]; TATA Projects Ltd-25 | 380,000 |
|  | 3 | **Pour 3** |  | 2027-02-02 | 2027-03-19 |  |  |  |
|  | 4 | **Column, Core Wall, Shear Wall - First Lift** |  | 2027-02-02 | 2027-02-11 |  |  |  |
| 4S-SS-GF.415 |  | Reinforcement | 3d | 2027-02-02 | 2027-02-05 | 4S-SS-B-01.700 | Barbender [270 h]; Helper [140 h]; Physical Progress [4340 h]; Reinforcement Steel [4 MT1]; TATA Projects Ltd-25 | 386,050 |
| 4S-SS-GF.445 |  | LPS | 1d | 2027-02-05 | 2027-02-06 | 4S-SS-GF.415 | LPS [41809 INR]; Physical Progress [1440 h]; TATA Projects Ltd-25 | 41,809 |
| 4S-SS-GF.455 |  | Shuttering | 3d | 2027-02-06 | 2027-02-10 | 4S-SS-GF.415, 4S-SS-GF.445 | Carpenter [140 h]; Helper [70 h]; Physical Progress [4340 h]; Formwork [82 Sq m]; TATA Projects Ltd-25 | 95,543.12 |
| 4S-SS-GF.480 |  | Concrete | 1d | 2027-02-10 | 2027-02-11 | 4S-SS-GF.455 | Mason [50 h]; Helper [50 h]; Physical Progress [1440 h]; Concrete M40 [20 m3]; TATA Projects Ltd-25 | 197,340 |
|  | 1 | **Column, Core Wall, Shear Wall - Second Lift** |  | 2027-02-11 | 2027-02-20 |  |  |  |
| 4S-SS-GF.485 |  | Reinforcement | 3d | 2027-02-11 | 2027-02-15 | 4S-SS-GF.480 | Barbender [270 h]; Helper [140 h]; Physical Progress [4340 h]; Reinforcement Steel [4 MT1]; TATA Projects Ltd-25 | 386,050 |
| 4S-SS-GF.515 |  | LPS | 1d | 2027-02-15 | 2027-02-16 | 4S-SS-GF.485 | LPS [41809 INR]; Physical Progress [1440 h]; TATA Projects Ltd-25 | 41,809 |
| 4S-SS-GF.530 |  | Shuttering | 3d | 2027-02-16 | 2027-02-19 | 4S-SS-GF.485, 4S-SS-GF.515 | Carpenter [140 h]; Helper [70 h]; Physical Progress [4340 h]; Formwork [82 Sq m]; TATA Projects Ltd-25 | 95,543.12 |
| 4S-SS-GF.555 |  | Concrete | 1d | 2027-02-19 | 2027-02-20 | 4S-SS-GF.530 | Mason [50 h]; Helper [50 h]; Physical Progress [1440 h]; Concrete M40 [20 m3]; TATA Projects Ltd-25 | 197,340 |
|  | 3 | **Staircase** |  | 2027-02-02 | 2027-03-03 |  |  |  |
| 4S-SS-GF.410 |  | Reinforcement of wall upto Flight 1 | 2d | 2027-02-02 | 2027-02-04 | 4S-SS-B-01.700 | Barbender [70 h]; Helper [40 h]; Physical Progress [2890 h]; Reinforcement Steel [1 MT1]; TATA Projects Ltd-25 | 96,512.5 |
| 4S-SS-GF.425 |  | Shuttering of wall upto Flight 1 | 2d | 2027-02-04 | 2027-02-06 | 4S-SS-GF.410 | Carpenter [20 h]; Helper [10 h]; Physical Progress [2890 h]; Formwork [10 Sq m]; TATA Projects Ltd-25 | 11,651.6 |
| 4S-SS-GF.450 |  | Casting of wall upto Flight 1 | 1d | 2027-02-06 | 2027-02-08 | 4S-SS-GF.425 | Mason; Helper; Physical Progress [1440 h]; Concrete M40 [3 m3]; TATA Projects Ltd-25 | 29,601 |
| 4S-SS-GF.460 |  | Shuttering of Staircase upto Flight 1 | 1d | 2027-02-08 | 2027-02-09 | 4S-SS-GF.450 | Carpenter [20 h]; Helper [10 h]; Physical Progress [1440 h]; Formwork [10 Sq m]; TATA Projects Ltd-25 | 11,651.6 |
| 4S-SS-GF.465 |  | Reinforcement of Staircase upto Flight 1 | 1d | 2027-02-09 | 2027-02-10 | 4S-SS-GF.460 | Barbender [70 h]; Helper [40 h]; Physical Progress [1440 h]; Reinforcement Steel [1 MT1]; TATA Projects Ltd-25 | 96,512.5 |
| 4S-SS-GF.470 |  | MEP coordination upto Flight 1 | 1d | 2027-02-10 | 2027-02-11 | 4S-SS-GF.465 | Physical Progress [1440 h]; TATA Projects Ltd-25 |  |
| 4S-SS-GF.490 |  | Casting of Staircase upto Flight 1 | 1d | 2027-02-11 | 2027-02-12 | 4S-SS-GF.470 | Mason; Helper; Physical Progress [1440 h]; Concrete M40 [3 m3]; TATA Projects Ltd-25 | 29,601 |
| 4S-SS-GF.500 |  | Reinforcement of wall upto Flight 2 | 2d | 2027-02-12 | 2027-02-15 | 4S-SS-GF.490 | Barbender [70 h]; Helper [40 h]; Physical Progress [2890 h]; Reinforcement Steel [1 MT1]; TATA Projects Ltd-25 | 96,512.5 |
| 4S-SS-GF.520 |  | Shuttering of wall upto Flight 2 | 2d | 2027-02-15 | 2027-02-17 | 4S-SS-GF.500 | Carpenter [20 h]; Helper [10 h]; Physical Progress [2890 h]; Formwork [10 Sq m]; TATA Projects Ltd-25 | 11,651.6 |
| 4S-SS-GF.535 |  | Casting of wall upto Flight 2 | 1d | 2027-02-17 | 2027-02-18 | 4S-SS-GF.520 | Mason; Helper; Physical Progress [1440 h]; Concrete M40 [3 m3]; TATA Projects Ltd-25 | 29,601 |
| 4S-SS-GF.545 |  | Shuttering of Staircase upto Flight 2 | 1d | 2027-02-18 | 2027-02-19 | 4S-SS-GF.535 | Carpenter [20 h]; Helper [10 h]; Physical Progress [1440 h]; Formwork [10 Sq m]; TATA Projects Ltd-25 | 11,651.6 |
| 4S-SS-GF.560 |  | Reinforcement of Staircase upto Flight 2 | 1d | 2027-02-19 | 2027-02-20 | 4S-SS-GF.545 | Barbender [70 h]; Helper [40 h]; Physical Progress [1440 h]; Reinforcement Steel [1 MT1]; TATA Projects Ltd-25 | 96,512.5 |
| 4S-SS-GF.580 |  | MEP coordination upto Flight 2 | 1d | 2027-02-20 | 2027-02-22 | 4S-SS-GF.560 | Physical Progress [1440 h]; TATA Projects Ltd-25 |  |
| 4S-SS-GF.590 |  | Casting of Staircase upto Flight 2 | 1d | 2027-02-22 | 2027-02-23 | 4S-SS-GF.580 | Mason; Helper; Physical Progress [1440 h]; Concrete M40 [3 m3]; TATA Projects Ltd-25 | 29,601 |
| 4S-SS-GF.600 |  | Reinforcement of wall upto Flight 3 | 2d | 2027-02-23 | 2027-02-25 | 4S-SS-GF.590 | Barbender [70 h]; Helper [40 h]; Physical Progress [2890 h]; Reinforcement Steel [1 MT1]; TATA Projects Ltd-25 | 96,512.5 |
| 4S-SS-GF.620 |  | Shuttering of wall upto Flight 3 | 2d | 2027-02-25 | 2027-02-27 | 4S-SS-GF.600 | Carpenter [20 h]; Helper [10 h]; Physical Progress [2890 h]; Formwork [10 Sq m]; TATA Projects Ltd-25 | 11,651.6 |
| 4S-SS-GF.645 |  | Casting of wall upto Flight 3 | 1d | 2027-02-27 | 2027-03-01 | 4S-SS-GF.620 | Mason; Helper; Physical Progress [1440 h]; Concrete M40 [3 m3]; TATA Projects Ltd-25 | 29,601 |
| 4S-SS-GF.655 |  | Shuttering of Staircase upto Flight 3 | 1d | 2027-03-01 | 2027-03-02 | 4S-SS-GF.645 | Carpenter [20 h]; Helper [10 h]; Physical Progress [1440 h]; Formwork [10 Sq m]; TATA Projects Ltd-25 | 11,651.6 |
| 4S-SS-GF.670 |  | Reinforcement of Staircase upto Flight 3 | 1d | 2027-03-02 | 2027-03-03 | 4S-SS-GF.655 | Barbender [70 h]; Helper [40 h]; Physical Progress [1440 h]; Reinforcement Steel [1 MT1]; TATA Projects Ltd-25 | 96,512.5 |

| ID | WBS | Activity | Duration | Start | Finish | Predecessors | Resources | Cost |
| --- | --- | --- | --- | --- | --- | --- | --- | --- |
|  | 2 | **Slab** |  | 2027-02-20 | 2027-03-19 |  |  |  |
| 4S-SS-GF.570 |  | Shuttering | 4d | 2027-02-20 | 2027-02-25 | 4S-SS-GF.555 | Carpenter [490 h]; Helper [250 h]; Physical Progress [5780 h]; Formwork [289 Sq m]; TATA Projects Ltd-25 | 336,731.24 |
| 4S-SS-GF.615 |  | Reinforcement Bottom Net with chairs | 2d | 2027-02-25 | 2027-02-27 | 4S-SS-GF.570 | Barbender [200 h]; Helper [100 h]; Physical Progress [4340 h]; Reinforcement Steel [3 MT1]; TATA Projects Ltd-25 | 289,537.5 |
| 4S-SS-GF.650 |  | Laying of PT Tendon | 2d | 2027-02-27 | 2027-03-02 | 4S-SS-GF.615 | Physical Progress [5780 h]; TATA Projects Ltd-25 |  |
| 4S-SS-GF.685 |  | Reinforcement Top Net | 2d | 2027-03-02 | 2027-03-04 | 4S-SS-GF.650 | Barbender [200 h]; Helper [100 h]; Physical Progress [2890 h]; Reinforcement Steel [3 MT1]; TATA Projects Ltd-25 | 289,537.5 |
| 4S-SS-GF.695 |  | MEP Coordination | 1d | 2027-03-04 | 2027-03-05 | 4S-SS-GF.670, 4S-SS-GF.615, 4S-SS-GF.560, 4S-SS-GF.685 | Physical Progress [1440 h]; TATA Projects Ltd-25 |  |
| 4S-SS-GF.710 |  | Concrete of Slab | 1d | 2027-03-05 | 2027-03-06 | 4S-SS-GF.695 | Mason [50 h]; Helper [50 h]; Physical Progress [1440 h]; Concrete M40 [72 m3]; TATA Projects Ltd-25 | 710,424 |
| 4S-SS-GF.720 |  | Wait for Strength Gain | 6d | 2027-03-06 | 2027-03-15 | 4S-SS-GF.710 | Physical Progress [8680 h]; TATA Projects Ltd-25 |  |
| 4S-SS-GF.745 |  | PT Work | 4d | 2027-03-15 | 2027-03-19 | 4S-SS-B-01.715, 4S-SS-GF.720 | PT [1 MT1]; Helper [100 h]; PT Fitter [100 h]; Physical Progress [7230 h]; TATA Projects Ltd-25 | 190,000 |
|  | 4 | **Pour 4** |  | 2027-02-02 | 2027-03-13 |  |  |  |
|  | 3 | **Column - First Lift** |  | 2027-02-02 | 2027-02-08 |  |  |  |
| 4S-SS-GF.525 |  | Reinforcement | 2d | 2027-02-02 | 2027-02-04 | 4S-SS-B-01.700 | Barbender [540 h]; Helper [270 h]; Physical Progress [2890 h]; Reinforcement Steel [8 MT1]; TATA Projects Ltd-25 | 772,100 |
| 4S-SS-GF.540 |  | LPS | 1d | 2027-02-04 | 2027-02-05 | 4S-SS-GF.525 | LPS [41809 INR]; Physical Progress [1440 h]; TATA Projects Ltd-25 | 41,809 |
| 4S-SS-GF.550 |  | Shuttering | 1d | 2027-02-05 | 2027-02-06 | 4S-SS-GF.525, 4S-SS-GF.540 | Carpenter [300 h]; Helper [150 h]; Physical Progress [1440 h]; Formwork [176 Sq m]; TATA Projects Ltd-25 | 205,068.16 |
| 4S-SS-GF.565 |  | Concrete | 1d | 2027-02-06 | 2027-02-08 | 4S-SS-GF.550 | Mason [50 h]; Helper [50 h]; Physical Progress [1440 h]; Concrete M40 [44 m3]; TATA Projects Ltd-25 | 434,148 |
|  | 1 | **Column - Second Lift** |  | 2027-02-08 | 2027-02-15 |  |  |  |
| 4S-SS-GF.575 |  | Reinforcement | 2d | 2027-02-08 | 2027-02-10 | 4S-SS-GF.565 | Barbender [540 h]; Helper [270 h]; Physical Progress [2890 h]; Reinforcement Steel [8 MT1]; TATA Projects Ltd-25 | 772,100 |
| 4S-SS-GF.595 |  | LPS | 1d | 2027-02-10 | 2027-02-11 | 4S-SS-GF.575 | LPS [41809 INR]; Physical Progress [1440 h]; TATA Projects Ltd-25 | 41,809 |
| 4S-SS-GF.610 |  | Shuttering | 2d | 2027-02-11 | 2027-02-13 | 4S-SS-GF.575, 4S-SS-GF.595 | Carpenter [300 h]; Helper [150 h]; Physical Progress [2890 h]; Formwork [176 Sq m]; TATA Projects Ltd-25 | 205,068.16 |
| 4S-SS-GF.630 |  | Concrete | 1d | 2027-02-13 | 2027-02-15 | 4S-SS-GF.610 | Mason [50 h]; Helper [50 h]; Physical Progress [1440 h]; Concrete M40 [44 m3]; TATA Projects Ltd-25 | 434,148 |
|  | 2 | **Slab** |  | 2027-02-15 | 2027-03-13 |  |  |  |
| 4S-SS-GF.640 |  | Shuttering | 4d | 2027-02-15 | 2027-02-19 | E-GFC-ST-4S-95, 4S-SS-GF.630 | Carpenter [1040 h]; Helper [520 h]; Physical Progress [5780 h]; Formwork [623 Sq m]; TATA Projects Ltd-25 | 725,894.68 |
| 4S-SS-GF.675 |  | Reinforcement Bottom Net with chairs | 2d | 2027-02-19 | 2027-02-22 | 4S-SS-GF.640 | Barbender [340 h]; Helper [170 h]; Physical Progress [4340 h]; Reinforcement Steel [5 MT1]; TATA Projects Ltd-25 | 482,562.5 |
| 4S-SS-GF.700 |  | Laying of PT Tendon | 2d | 2027-02-22 | 2027-02-24 | 4S-SS-GF.675 | Physical Progress [5780 h]; TATA Projects Ltd-25 |  |
| 4S-SS-GF.725 |  | Reinforcement Top Net | 2d | 2027-02-24 | 2027-02-26 | 4S-SS-GF.700 | Barbender [340 h]; Helper [170 h]; Physical Progress [2890 h]; Reinforcement Steel [5 MT1]; TATA Projects Ltd-25 | 482,562.5 |
| 4S-SS-GF.735 |  | MEP Coordination | 1d | 2027-02-26 | 2027-02-27 | 4S-SS-GF.675, 4S-SS-GF.725 | Physical Progress [1440 h]; TATA Projects Ltd-25 |  |
| 4S-SS-GF.740 |  | Concrete of Slab | 1d | 2027-02-27 | 2027-03-01 | 4S-SS-GF.735 | Mason [50 h]; Helper [50 h]; Physical Progress [1440 h]; Concrete M40 [156 m3]; TATA Projects Ltd-25 | 1,539,252 |
| 4S-SS-GF.750 |  | Wait for Strength Gain | 6d | 2027-03-01 | 2027-03-08 | 4S-SS-GF.740 | Physical Progress [8680 h]; TATA Projects Ltd-25 |  |
| 4S-SS-GF.765 |  | PT Work | 4d | 2027-03-08 | 2027-03-13 | 4S-SS-GF.750 | PT [2 MT1]; Helper [100 h]; PT Fitter [100 h]; Physical Progress [11570 h]; TATA Projects Ltd-25 | 380,000 |

| ID | WBS | Activity | Duration | Start | Finish | Predecessors | Resources | Cost |
| --- | --- | --- | --- | --- | --- | --- | --- | --- |
|  | 5 | **Pour 5** |  | 2027-02-02 | 2027-03-12 |  |  |  |
|  | 3 | **Column - First Lift** |  | 2027-02-02 | 2027-02-09 |  |  |  |
| 4S-SS-GF.605 |  | Reinforcement | 2d | 2027-02-02 | 2027-02-04 | 4S-SS-B-01.700 | Barbender [870 h]; Helper [440 h]; Physical Progress [2890 h]; Reinforcement Steel [13 MT1]; TATA Projects Ltd-25 | 1,254,662.5 |
| 4S-SS-GF.625 |  | LPS | 1d | 2027-02-04 | 2027-02-05 | 4S-SS-GF.605 | LPS [41809 INR]; Physical Progress [1440 h]; TATA Projects Ltd-25 | 41,809 |
| 4S-SS-GF.635 |  | Shuttering | 2d | 2027-02-05 | 2027-02-08 | 4S-SS-GF.605, 4S-SS-GF.625 | Carpenter [520 h]; Helper [260 h]; Physical Progress [2890 h]; Formwork [312 Sq m]; TATA Projects Ltd-25 | 363,529.92 |
| 4S-SS-GF.660 |  | Concrete | 1d | 2027-02-08 | 2027-02-09 | 4S-SS-GF.635 | Mason [50 h]; Helper [50 h]; Physical Progress [1440 h]; Concrete M40 [78 m3]; TATA Projects Ltd-25 | 769,626 |
|  | 1 | **Column - Second Lift** |  | 2027-02-09 | 2027-02-16 |  |  |  |
| 4S-SS-GF.665 |  | Reinforcement | 2d | 2027-02-09 | 2027-02-11 | 4S-SS-GF.660 | Barbender [870 h]; Helper [440 h]; Physical Progress [2890 h]; Reinforcement Steel [13 MT1]; TATA Projects Ltd-25 | 1,254,662.5 |
| 4S-SS-GF.680 |  | LPS | 1d | 2027-02-11 | 2027-02-12 | 4S-SS-GF.665 | LPS [41809 INR]; Physical Progress [1440 h]; TATA Projects Ltd-25 | 41,809 |
| 4S-SS-GF.690 |  | Shuttering | 2d | 2027-02-12 | 2027-02-15 | 4S-SS-GF.665, 4S-SS-GF.680 | Carpenter [520 h]; Helper [260 h]; Physical Progress [2890 h]; Formwork [312 Sq m]; TATA Projects Ltd-25 | 363,529.92 |
| 4S-SS-GF.705 |  | Concrete | 1d | 2027-02-15 | 2027-02-16 | 4S-SS-GF.690 | Mason [50 h]; Helper [50 h]; Physical Progress [1440 h]; Concrete M40 [78 m3]; TATA Projects Ltd-25 | 769,626 |
|  | 2 | **Slab** |  | 2027-02-16 | 2027-03-12 |  |  |  |
| 4S-SS-GF.715 |  | Shuttering | 4d | 2027-02-16 | 2027-02-20 | 4S-SS-GF.705 | Carpenter [1850 h]; Helper [930 h]; Physical Progress [5780 h]; Formwork [1105 Sq m]; TATA Projects Ltd-25 | 1,287,501.8 |
| 4S-SS-GF.730 |  | Reinforcement Bottom Net with chairs | 2d | 2027-02-20 | 2027-02-23 | 4S-SS-GF.715 | Barbender [670 h]; Helper [340 h]; Physical Progress [4340 h]; Reinforcement Steel [10 MT1]; TATA Projects Ltd-25 | 965,125 |
| 4S-SS-GF.755 |  | Laying of PT Tendon | 2d | 2027-02-23 | 2027-02-25 | 4S-SS-GF.730 | Physical Progress [5780 h]; TATA Projects Ltd-25 |  |
| 4S-SS-GF.760 |  | Reinforcement Top Net | 2d | 2027-02-25 | 2027-02-27 | 4S-SS-GF.755 | Barbender [670 h]; Helper [340 h]; Physical Progress [2890 h]; Reinforcement Steel [10 MT1]; TATA Projects Ltd-25 | 965,125 |
| 4S-SS-GF.770 |  | MEP Coordination | 1d | 2027-02-25 | 2027-02-26 | 4S-SS-GF.730, 4S-SS-GF.760 SS | Physical Progress [1440 h]; TATA Projects Ltd-25 |  |
| 4S-SS-GF.775 |  | Concrete of Slab | 1d | 2027-02-26 | 2027-02-27 | 4S-SS-GF.770 | Mason [50 h]; Helper [50 h]; Physical Progress [1440 h]; Concrete M40 [276 m3]; TATA Projects Ltd-25 | 2,723,292 |
| 4S-SS-GF.780 |  | Wait for Strength Gain | 6d | 2027-02-27 | 2027-03-06 | 4S-SS-GF.775 | Physical Progress [8680 h]; TATA Projects Ltd-25 |  |
| 4S-SS-GF.785 |  | PT Work | 4d | 2027-03-06 | 2027-03-12 | 4S-SS-GF.780 | PT [3 MT1]; Helper [100 h]; PT Fitter [100 h]; Physical Progress [11570 h]; TATA Projects Ltd-25 | 570,000 |
|  | 7 | **First Floor** |  | 2027-03-01 | 2027-05-13 |  |  |  |
|  | 1 | **Pour 1** |  | 2027-03-27 | 2027-05-13 |  |  |  |
|  | 5 | **Column, Core Wall, Shear Wall - First Lift** |  | 2027-03-27 | 2027-04-06 |  |  |  |
| 4S-SS-1st.F.20 |  | Reinforcement | 3d | 2027-03-27 | 2027-03-31 | 4S-SS-GF.330 | Barbender [800 h]; Helper [400 h]; Physical Progress [4340 h]; Reinforcement Steel [12 MT1]; TATA Projects Ltd-25 | 1,158,150 |
| 4S-SS-1st.F.35 |  | LPS | 1d | 2027-03-31 | 2027-04-01 | 4S-SS-1st.F.20 | LPS [41809 INR]; Physical Progress [1440 h]; TATA Projects Ltd-25 | 41,809 |
| 4S-SS-1st.F.50 |  | Shuttering | 3d | 2027-04-01 | 2027-04-05 | 4S-SS-1st.F.20, 4S-SS-1st.F.35 | Carpenter [450 h]; Helper [230 h]; Physical Progress [4340 h]; Formwork [269 Sq m]; TATA Projects Ltd-25 | 313,428.04 |
| 4S-SS-1st.F.85 |  | Concrete | 1d | 2027-04-05 | 2027-04-06 | 4S-SS-1st.F.50 | Mason [50 h]; Helper [50 h]; Physical Progress [1440 h]; Concrete M40 [67 m3]; TATA Projects Ltd-25 | 661,089 |

| ID | WBS | Activity | Duration | Start | Finish | Predecessors | Resources | Cost |
| --- | --- | --- | --- | --- | --- | --- | --- | --- |
|  | 1 | **Column, Core Wall, Shear Wall - Second Lift** |  | 2027-04-06 | 2027-04-15 |  |  |  |
| 4S-SS-1st.F.90 |  | Reinforcement | 3d | 2027-04-06 | 2027-04-09 | 4S-SS-1st.F.85 | Barbender [800 h]; Helper [400 h]; Physical Progress [4340 h]; Reinforcement Steel [12 MT1]; TATA Projects Ltd-25 | 1,158,150 |
| 4S-SS-1st.F.115 |  | LPS | 1d | 2027-04-09 | 2027-04-10 | 4S-SS-1st.F.90 | LPS [41809 INR]; Physical Progress [1440 h]; TATA Projects Ltd-25 | 41,809 |
| 4S-SS-1st.F.130 |  | Shuttering | 3d | 2027-04-10 | 2027-04-14 | 4S-SS-1st.F.90, 4S-SS-1st.F.115 | Carpenter [450 h]; Helper [230 h]; Physical Progress [4340 h]; Formwork [269 Sq m]; TATA Projects Ltd-25 | 313,428.04 |
| 4S-SS-1st.F.155 |  | Concrete | 1d | 2027-04-14 | 2027-04-15 | 4S-SS-1st.F.130 | Mason [50 h]; Helper [50 h]; Physical Progress [1440 h]; Concrete M40 [67 m3]; TATA Projects Ltd-25 | 661,089 |
|  | 3 | **Staircase - 1** |  | 2027-03-27 | 2027-04-26 |  |  |  |
| 4S-SS-1st.F.10 |  | Reinforcement of wall upto Flight 1 | 2d | 2027-03-27 | 2027-03-30 | 4S-SS-GF.330 | Barbender [70 h]; Helper [40 h]; Physical Progress [2890 h]; Reinforcement Steel [1 MT1]; TATA Projects Ltd-25 | 96,512.5 |
| 4S-SS-1st.F.25 |  | Shuttering of wall upto Flight 1 | 2d | 2027-03-30 | 2027-04-01 | 4S-SS-1st.F.10 | Carpenter [20 h]; Helper [10 h]; Physical Progress [2890 h]; Formwork [10 Sq m]; TATA Projects Ltd-25 | 11,651.6 |
| 4S-SS-1st.F.40 |  | Casting of wall upto Flight 1 | 1d | 2027-04-01 | 2027-04-02 | 4S-SS-1st.F.25 | Mason; Helper; Physical Progress [1440 h]; Concrete M40 [3 m3]; TATA Projects Ltd-25 | 29,601 |
| 4S-SS-1st.F.55 |  | Shuttering of Staircase upto Flight 1 | 1d | 2027-04-02 | 2027-04-03 | 4S-SS-1st.F.40 | Carpenter [20 h]; Helper [10 h]; Physical Progress [1440 h]; Formwork [10 Sq m]; TATA Projects Ltd-25 | 11,651.6 |
| 4S-SS-1st.F.65 |  | Reinforcement of Staircase upto Flight 1 | 1d | 2027-04-03 | 2027-04-05 | 4S-SS-1st.F.55 | Barbender [70 h]; Helper [40 h]; Physical Progress [1440 h]; Reinforcement Steel [1 MT1]; TATA Projects Ltd-25 | 96,512.5 |
| 4S-SS-1st.F.75 |  | MEP coordination upto Flight 1 | 1d | 2027-04-05 | 2027-04-06 | 4S-SS-1st.F.65 | Physical Progress [1440 h]; TATA Projects Ltd-25 |  |
| 4S-SS-1st.F.95 |  | Casting of Staircase upto Flight 1 | 1d | 2027-04-06 | 2027-04-07 | 4S-SS-1st.F.75 | Mason; Helper; Physical Progress [1440 h]; Concrete M40 [3 m3]; TATA Projects Ltd-25 | 29,601 |
| 4S-SS-1st.F.105 |  | Reinforcement of wall upto Flight 2 | 2d | 2027-04-07 | 2027-04-09 | 4S-SS-1st.F.95 | Barbender [70 h]; Helper [40 h]; Physical Progress [2890 h]; Reinforcement Steel [1 MT1]; TATA Projects Ltd-25 | 96,512.5 |
| 4S-SS-1st.F.120 |  | Shuttering of wall upto Flight 2 | 2d | 2027-04-09 | 2027-04-12 | 4S-SS-1st.F.105 | Carpenter [20 h]; Helper [10 h]; Physical Progress [2890 h]; Formwork [10 Sq m]; TATA Projects Ltd-25 | 11,651.6 |
| 4S-SS-1st.F.135 |  | Casting of wall upto Flight 2 | 1d | 2027-04-12 | 2027-04-13 | 4S-SS-1st.F.120 | Mason; Helper; Physical Progress [1440 h]; Concrete M40 [3 m3]; TATA Projects Ltd-25 | 29,601 |
| 4S-SS-1st.F.145 |  | Shuttering of Staircase upto Flight 2 | 1d | 2027-04-13 | 2027-04-14 | 4S-SS-1st.F.135 | Carpenter [20 h]; Helper [10 h]; Physical Progress [1440 h]; Formwork [10 Sq m]; TATA Projects Ltd-25 | 11,651.6 |
| 4S-SS-1st.F.160 |  | Reinforcement of Staircase upto Flight 2 | 1d | 2027-04-14 | 2027-04-15 | 4S-SS-1st.F.145 | Barbender [70 h]; Helper [40 h]; Physical Progress [1440 h]; Reinforcement Steel [1 MT1]; TATA Projects Ltd-25 | 96,512.5 |
| 4S-SS-1st.F.175 |  | MEP coordination upto Flight 2 | 1d | 2027-04-15 | 2027-04-16 | 4S-SS-1st.F.160 | Physical Progress [1440 h]; TATA Projects Ltd-25 |  |
| 4S-SS-1st.F.185 |  | Casting of Staircase upto Flight 2 | 1d | 2027-04-16 | 2027-04-17 | 4S-SS-1st.F.175 | Mason; Helper; Physical Progress [1440 h]; Concrete M40 [3 m3]; TATA Projects Ltd-25 | 29,601 |
| 4S-SS-1st.F.195 |  | Reinforcement of wall upto Flight 3 | 2d | 2027-04-17 | 2027-04-20 | 4S-SS-1st.F.185 | Barbender [70 h]; Helper [40 h]; Physical Progress [2890 h]; Reinforcement Steel [1 MT1]; TATA Projects Ltd-25 | 96,512.5 |
| 4S-SS-1st.F.210 |  | Shuttering of wall upto Flight 3 | 2d | 2027-04-20 | 2027-04-22 | 4S-SS-1st.F.195 | Carpenter [20 h]; Helper [10 h]; Physical Progress [2890 h]; Formwork [10 Sq m]; TATA Projects Ltd-25 | 11,651.6 |
| 4S-SS-1st.F.235 |  | Casting of wall upto Flight 3 | 1d | 2027-04-22 | 2027-04-23 | 4S-SS-1st.F.210 | Mason; Helper; Physical Progress [1440 h]; Concrete M40 [3 m3]; TATA Projects Ltd-25 | 29,601 |
| 4S-SS-1st.F.245 |  | Shuttering of Staircase upto Flight 3 | 1d | 2027-04-23 | 2027-04-24 | 4S-SS-1st.F.235 | Carpenter [20 h]; Helper [10 h]; Physical Progress [1440 h]; Formwork [10 Sq m]; TATA Projects Ltd-25 | 11,651.6 |
| 4S-SS-1st.F.270 |  | Reinforcement of Staircase upto Flight 3 | 1d | 2027-04-24 | 2027-04-26 | 4S-SS-1st.F.245 | Barbender [70 h]; Helper [40 h]; Physical Progress [1440 h]; Reinforcement Steel [1 MT1]; TATA Projects Ltd-25 | 96,512.5 |

| ID | WBS | Activity | Duration | Start | Finish | Predecessors | Resources | Cost |
| --- | --- | --- | --- | --- | --- | --- | --- | --- |
|  | 4 | **Staircase - 2** |  | 2027-03-27 | 2027-04-26 |  |  |  |
| 4S-SS-1st.F.15 |  | Reinforcement of wall upto Flight 1 | 2d | 2027-03-27 | 2027-03-30 | 4S-SS-GF.330 | Barbender [70 h]; Helper [40 h]; Physical Progress [2890 h]; Reinforcement Steel [1 MT1]; TATA Projects Ltd-25 | 96,512.5 |
| 4S-SS-1st.F.30 |  | Shuttering of wall upto Flight 1 | 2d | 2027-03-30 | 2027-04-01 | 4S-SS-1st.F.15 | Carpenter [20 h]; Helper [10 h]; Physical Progress [2890 h]; Formwork [10 Sq m]; TATA Projects Ltd-25 | 11,651.6 |
| 4S-SS-1st.F.45 |  | Casting of wall upto Flight 1 | 1d | 2027-04-01 | 2027-04-02 | 4S-SS-1st.F.30 | Mason; Helper; Physical Progress [1440 h]; Concrete M40 [3 m3]; TATA Projects Ltd-25 | 29,601 |
| 4S-SS-1st.F.60 |  | Shuttering of Staircase upto Flight 1 | 1d | 2027-04-02 | 2027-04-03 | 4S-SS-1st.F.45 | Carpenter [20 h]; Helper [10 h]; Physical Progress [1440 h]; Formwork [10 Sq m]; TATA Projects Ltd-25 | 11,651.6 |
| 4S-SS-1st.F.70 |  | Reinforcement of Staircase upto Flight 1 | 1d | 2027-04-03 | 2027-04-05 | 4S-SS-1st.F.60 | Barbender [70 h]; Helper [40 h]; Physical Progress [1440 h]; Reinforcement Steel [1 MT1]; TATA Projects Ltd-25 | 96,512.5 |
| 4S-SS-1st.F.80 |  | MEP coordination upto Flight 1 | 1d | 2027-04-05 | 2027-04-06 | 4S-SS-1st.F.70 | Physical Progress [1440 h]; TATA Projects Ltd-25 |  |
| 4S-SS-1st.F.100 |  | Casting of Staircase upto Flight 1 | 1d | 2027-04-06 | 2027-04-07 | 4S-SS-1st.F.80 | Mason; Helper; Physical Progress [1440 h]; Concrete M40 [3 m3]; TATA Projects Ltd-25 | 29,601 |
| 4S-SS-1st.F.110 |  | Reinforcement of wall upto Flight 2 | 2d | 2027-04-07 | 2027-04-09 | 4S-SS-1st.F.100 | Barbender [70 h]; Helper [40 h]; Physical Progress [2890 h]; Reinforcement Steel [1 MT1]; TATA Projects Ltd-25 | 96,512.5 |
| 4S-SS-1st.F.125 |  | Shuttering of wall upto Flight 2 | 2d | 2027-04-09 | 2027-04-12 | 4S-SS-1st.F.110 | Carpenter [20 h]; Helper [10 h]; Physical Progress [2890 h]; Formwork [10 Sq m]; TATA Projects Ltd-25 | 11,651.6 |
| 4S-SS-1st.F.140 |  | Casting of wall upto Flight 2 | 1d | 2027-04-12 | 2027-04-13 | 4S-SS-1st.F.125 | Mason; Helper; Physical Progress [1440 h]; Concrete M40 [3 m3]; TATA Projects Ltd-25 | 29,601 |
| 4S-SS-1st.F.150 |  | Shuttering of Staircase upto Flight 2 | 1d | 2027-04-13 | 2027-04-14 | 4S-SS-1st.F.140 | Carpenter [20 h]; Helper [10 h]; Physical Progress [1440 h]; Formwork [10 Sq m]; TATA Projects Ltd-25 | 11,651.6 |
| 4S-SS-1st.F.165 |  | Reinforcement of Staircase upto Flight 2 | 1d | 2027-04-14 | 2027-04-15 | 4S-SS-1st.F.150 | Barbender [70 h]; Helper [40 h]; Physical Progress [1440 h]; Reinforcement Steel [1 MT1]; TATA Projects Ltd-25 | 96,512.5 |
| 4S-SS-1st.F.180 |  | MEP coordination upto Flight 2 | 1d | 2027-04-15 | 2027-04-16 | 4S-SS-1st.F.165 | Physical Progress [1440 h]; TATA Projects Ltd-25 |  |
| 4S-SS-1st.F.190 |  | Casting of Staircase upto Flight 2 | 1d | 2027-04-16 | 2027-04-17 | 4S-SS-1st.F.180 | Mason; Helper; Physical Progress [1440 h]; Concrete M40 [3 m3]; TATA Projects Ltd-25 | 29,601 |
| 4S-SS-1st.F.200 |  | Reinforcement of wall upto Flight 3 | 2d | 2027-04-17 | 2027-04-20 | 4S-SS-1st.F.190 | Barbender [70 h]; Helper [40 h]; Physical Progress [2890 h]; Reinforcement Steel [1 MT1]; TATA Projects Ltd-25 | 96,512.5 |
| 4S-SS-1st.F.215 |  | Shuttering of wall upto Flight 3 | 2d | 2027-04-20 | 2027-04-22 | 4S-SS-1st.F.200 | Carpenter [20 h]; Helper [10 h]; Physical Progress [2890 h]; Formwork [10 Sq m]; TATA Projects Ltd-25 | 11,651.6 |
| 4S-SS-1st.F.240 |  | Casting of wall upto Flight 3 | 1d | 2027-04-22 | 2027-04-23 | 4S-SS-1st.F.215 | Mason; Helper; Physical Progress [1440 h]; Concrete M40 [3 m3]; TATA Projects Ltd-25 | 29,601 |
| 4S-SS-1st.F.250 |  | Shuttering of Staircase upto Flight 3 | 1d | 2027-04-23 | 2027-04-24 | 4S-SS-1st.F.240 | Carpenter [20 h]; Helper [10 h]; Physical Progress [1440 h]; Formwork [10 Sq m]; TATA Projects Ltd-25 | 11,651.6 |
| 4S-SS-1st.F.275 |  | Reinforcement of Staircase upto Flight 3 | 1d | 2027-04-24 | 2027-04-26 | 4S-SS-1st.F.250 | Barbender [70 h]; Helper [40 h]; Physical Progress [1440 h]; Reinforcement Steel [1 MT1]; TATA Projects Ltd-25 | 96,512.5 |
|  | 2 | **Slab** |  | 2027-04-15 | 2027-05-13 |  |  |  |
| 4S-SS-1st.F.170 |  | Shuttering | 5d | 2027-04-15 | 2027-04-21 | 4S-SS-1st.F.155 | Carpenter [1880 h]; Helper [940 h]; Physical Progress [7230 h]; Formwork [1123 Sq m]; TATA Projects Ltd-25 | 1,308,474.68 |
| 4S-SS-1st.F.225 |  | Reinforcement Bottom Net with chairs | 2d | 2027-04-21 | 2027-04-23 | 4S-SS-1st.F.170 | Barbender [740 h]; Helper [370 h]; Physical Progress [4340 h]; Reinforcement Steel [11 MT1]; TATA Projects Ltd-25 | 1,061,637.5 |
| 4S-SS-1st.F.260 |  | Laying of PT Tendon | 2d | 2027-04-23 | 2027-04-26 | 4S-SS-1st.F.225 | Physical Progress [5780 h]; TATA Projects Ltd-25 |  |
| 4S-SS-1st.F.305 |  | Reinforcement Top Net | 2d | 2027-04-26 | 2027-04-28 | 4S-SS-1st.F.260 | Barbender [740 h]; Helper [370 h]; Physical Progress [2890 h]; Reinforcement Steel [11 MT1]; TATA Projects Ltd-25 | 1,061,637.5 |
| 4S-SS-1st.F.325 |  | MEP Coordination | 1d | 2027-04-28 | 2027-04-29 | 4S-SS-1st.F.60, 4S-SS-1st.F.275, 4S-SS-1st.F.270, 4S-SS-1st.F.225, 4S-SS-1st.F.305 | Physical Progress [1440 h]; TATA Projects Ltd-25 |  |
| 4S-SS-1st.F.330 |  | Concrete of Slab | 1d | 2027-04-29 | 2027-04-30 | 4S-SS-1st.F.325 | Mason [50 h]; Helper [50 h]; Physical Progress [1440 h]; Concrete M40 [281 m3]; TATA Projects Ltd-25 | 2,772,627 |
| 4S-SS-1st.F.345 |  | Wait for Strength Gain | 6d | 2027-04-30 | 2027-05-08 | 4S-SS-1st.F.330 | Physical Progress [8680 h]; TATA Projects Ltd-25 |  |
| 4S-SS-1st.F.390 |  | PT Work | 4d | 2027-05-08 | 2027-05-13 | 4S-SS-GF.390, 4S-SS-1st.F.345 | PT [10 MT1]; Helper [100 h]; PT Fitter [100 h]; Physical Progress [11570 h]; TATA Projects Ltd-25 | 1,900,000 |

| ID | WBS | Activity | Duration | Start | Finish | Predecessors | Resources | Cost |
| --- | --- | --- | --- | --- | --- | --- | --- | --- |
|  | 2 | **Pour 2** |  | 2027-03-17 | 2027-05-05 |  |  |  |
|  | 5 | **Column, Core Wall, Shear Wall - First Lift** |  | 2027-03-17 | 2027-03-29 |  |  |  |
| 4S-SS-1st.F.220 |  | Reinforcement | 3d | 2027-03-17 | 2027-03-20 | 4S-SS-GF.505 | Barbender [740 h]; Helper [370 h]; Physical Progress [4340 h]; Reinforcement Steel [11 MT1]; TATA Projects Ltd-25 | 1,061,637.5 |
| 4S-SS-1st.F.255 |  | LPS | 1d | 2027-03-20 | 2027-03-23 | 4S-SS-1st.F.220 | LPS [41809 INR]; Physical Progress [1440 h]; TATA Projects Ltd-25 | 41,809 |
| 4S-SS-1st.F.280 |  | Shuttering | 3d | 2027-03-23 | 2027-03-27 | 4S-SS-1st.F.220, 4S-SS-1st.F.255 | Carpenter [420 h]; Helper [210 h]; Physical Progress [4340 h]; Formwork [251 Sq m]; TATA Projects Ltd-25 | 292,455.16 |
| 4S-SS-1st.F.300 |  | Concrete | 1d | 2027-03-27 | 2027-03-29 | 4S-SS-1st.F.280 | Mason [50 h]; Helper [50 h]; Physical Progress [1440 h]; Concrete M40 [63 m3]; TATA Projects Ltd-25 | 621,621 |
|  | 1 | **Column, Core Wall, Shear Wall - Second Lift** |  | 2027-03-29 | 2027-04-07 |  |  |  |
| 4S-SS-1st.F.310 |  | Reinforcement | 3d | 2027-03-29 | 2027-04-01 | 4S-SS-1st.F.300 | Barbender [740 h]; Helper [370 h]; Physical Progress [4340 h]; Reinforcement Steel [11 MT1]; TATA Projects Ltd-25 | 1,061,637.5 |
| 4S-SS-1st.F.335 |  | LPS | 1d | 2027-04-01 | 2027-04-02 | 4S-SS-1st.F.310 | LPS [41809 INR]; Physical Progress [1440 h]; TATA Projects Ltd-25 | 41,809 |
| 4S-SS-1st.F.350 |  | Shuttering | 3d | 2027-04-02 | 2027-04-06 | 4S-SS-1st.F.310, 4S-SS-1st.F.335 | Carpenter [420 h]; Helper [210 h]; Physical Progress [4340 h]; Formwork [251 Sq m]; TATA Projects Ltd-25 | 292,455.16 |
| 4S-SS-1st.F.365 |  | Concrete | 1d | 2027-04-06 | 2027-04-07 | 4S-SS-1st.F.350 | Mason [50 h]; Helper [50 h]; Physical Progress [1440 h]; Concrete M40 [63 m3]; TATA Projects Ltd-25 | 621,621 |
|  | 3 | **Staircase** |  | 2027-03-17 | 2027-04-17 |  |  |  |
| 4S-SS-1st.F.205 |  | Reinforcement of wall upto Flight 1 | 2d | 2027-03-17 | 2027-03-19 | 4S-SS-GF.505 | Barbender [70 h]; Helper [40 h]; Physical Progress [2890 h]; Reinforcement Steel [1 MT1]; TATA Projects Ltd-25 | 96,512.5 |
| 4S-SS-1st.F.230 |  | Shuttering of wall upto Flight 1 | 2d | 2027-03-19 | 2027-03-23 | 4S-SS-1st.F.205 | Carpenter [20 h]; Helper [10 h]; Physical Progress [2890 h]; Formwork [10 Sq m]; TATA Projects Ltd-25 | 11,651.6 |
| 4S-SS-1st.F.265 |  | Casting of wall upto Flight 1 | 1d | 2027-03-23 | 2027-03-24 | 4S-SS-1st.F.230 | Mason; Helper; Physical Progress [1440 h]; Concrete M40 [3 m3]; TATA Projects Ltd-25 | 29,601 |
| 4S-SS-1st.F.285 |  | Shuttering of Staircase upto Flight 1 | 1d | 2027-03-24 | 2027-03-25 | 4S-SS-1st.F.265 | Carpenter [20 h]; Helper [10 h]; Physical Progress [1440 h]; Formwork [10 Sq m]; TATA Projects Ltd-25 | 11,651.6 |
| 4S-SS-1st.F.290 |  | Reinforcement of Staircase upto Flight 1 | 1d | 2027-03-25 | 2027-03-27 | 4S-SS-1st.F.285 | Barbender [70 h]; Helper [40 h]; Physical Progress [1440 h]; Reinforcement Steel [1 MT1]; TATA Projects Ltd-25 | 96,512.5 |
| 4S-SS-1st.F.295 |  | MEP coordination upto Flight 1 | 1d | 2027-03-27 | 2027-03-29 | 4S-SS-1st.F.290 | Physical Progress [1440 h]; TATA Projects Ltd-25 |  |
| 4S-SS-1st.F.315 |  | Casting of Staircase upto Flight 1 | 1d | 2027-03-29 | 2027-03-30 | 4S-SS-1st.F.295 | Mason; Helper; Physical Progress [1440 h]; Concrete M40 [3 m3]; TATA Projects Ltd-25 | 29,601 |
| 4S-SS-1st.F.320 |  | Reinforcement of wall upto Flight 2 | 2d | 2027-03-30 | 2027-04-01 | 4S-SS-1st.F.315 | Barbender [70 h]; Helper [40 h]; Physical Progress [2890 h]; Reinforcement Steel [1 MT1]; TATA Projects Ltd-25 | 96,512.5 |
| 4S-SS-1st.F.340 |  | Shuttering of wall upto Flight 2 | 2d | 2027-04-01 | 2027-04-03 | 4S-SS-1st.F.320 | Carpenter [20 h]; Helper [10 h]; Physical Progress [2890 h]; Formwork [10 Sq m]; TATA Projects Ltd-25 | 11,651.6 |
| 4S-SS-1st.F.355 |  | Casting of wall upto Flight 2 | 1d | 2027-04-03 | 2027-04-05 | 4S-SS-1st.F.340 | Mason; Helper; Physical Progress [1440 h]; Concrete M40 [3 m3]; TATA Projects Ltd-25 | 29,601 |
| 4S-SS-1st.F.360 |  | Shuttering of Staircase upto Flight 2 | 1d | 2027-04-05 | 2027-04-06 | 4S-SS-1st.F.355 | Carpenter [20 h]; Helper [10 h]; Physical Progress [1440 h]; Formwork [10 Sq m]; TATA Projects Ltd-25 | 11,651.6 |
| 4S-SS-1st.F.370 |  | Reinforcement of Staircase upto Flight 2 | 1d | 2027-04-06 | 2027-04-07 | 4S-SS-1st.F.360 | Barbender [70 h]; Helper [40 h]; Physical Progress [1440 h]; Reinforcement Steel [1 MT1]; TATA Projects Ltd-25 | 96,512.5 |
| 4S-SS-1st.F.380 |  | MEP coordination upto Flight 2 | 1d | 2027-04-07 | 2027-04-08 | 4S-SS-1st.F.370 | Physical Progress [1440 h]; TATA Projects Ltd-25 |  |
| 4S-SS-1st.F.385 |  | Casting of Staircase upto Flight 2 | 1d | 2027-04-08 | 2027-04-09 | 4S-SS-1st.F.380 | Mason; Helper; Physical Progress [1440 h]; Concrete M40 [3 m3]; TATA Projects Ltd-25 | 29,601 |
| 4S-SS-1st.F.395 |  | Reinforcement of wall upto Flight 3 | 2d | 2027-04-09 | 2027-04-12 | 4S-SS-1st.F.385 | Barbender [70 h]; Helper [40 h]; Physical Progress [2890 h]; Reinforcement Steel [1 MT1]; TATA Projects Ltd-25 | 96,512.5 |
| 4S-SS-1st.F.405 |  | Shuttering of wall upto Flight 3 | 2d | 2027-04-12 | 2027-04-14 | 4S-SS-1st.F.395 | Carpenter [20 h]; Helper [10 h]; Physical Progress [2890 h]; Formwork [10 Sq m]; TATA Projects Ltd-25 | 11,651.6 |
| 4S-SS-1st.F.425 |  | Casting of wall upto Flight 3 | 1d | 2027-04-14 | 2027-04-15 | 4S-SS-1st.F.405 | Mason; Helper; Physical Progress [1440 h]; Concrete M40 [3 m3]; TATA Projects Ltd-25 | 29,601 |
| 4S-SS-1st.F.430 |  | Shuttering of Staircase upto Flight 3 | 1d | 2027-04-15 | 2027-04-16 | 4S-SS-1st.F.425 | Carpenter [20 h]; Helper [10 h]; Physical Progress [1440 h]; Formwork [10 Sq m]; TATA Projects Ltd-25 | 11,651.6 |
| 4S-SS-1st.F.450 |  | Reinforcement of Staircase upto Flight 3 | 1d | 2027-04-16 | 2027-04-17 | 4S-SS-1st.F.430 | Barbender [70 h]; Helper [40 h]; Physical Progress [1440 h]; Reinforcement Steel [1 MT1]; TATA Projects Ltd-25 | 96,512.5 |

| ID | WBS | Activity | Duration | Start | Finish | Predecessors | Resources | Cost |
| --- | --- | --- | --- | --- | --- | --- | --- | --- |
|  | 2 | **Slab** |  | 2027-04-07 | 2027-05-05 |  |  |  |
| 4S-SS-1st.F.375 |  | Shuttering | 5d | 2027-04-07 | 2027-04-13 | 4S-SS-1st.F.365 | Carpenter [1750 h]; Helper [880 h]; Physical Progress [7230 h]; Formwork [1047 Sq m]; TATA Projects Ltd-25 | 1,219,922.52 |
| 4S-SS-1st.F.415 |  | Reinforcement Bottom Net with chairs | 2d | 2027-04-13 | 2027-04-15 | 4S-SS-1st.F.375 | Barbender [670 h]; Helper [340 h]; Physical Progress [4340 h]; Reinforcement Steel [10 MT1]; TATA Projects Ltd-25 | 965,125 |
| 4S-SS-1st.F.445 |  | Laying of PT Tendon | 2d | 2027-04-15 | 2027-04-17 | 4S-SS-1st.F.415 | Physical Progress [5780 h]; TATA Projects Ltd-25 |  |
| 4S-SS-1st.F.495 |  | Reinforcement Top Net | 2d | 2027-04-17 | 2027-04-20 | 4S-SS-1st.F.445 | Barbender [670 h]; Helper [340 h]; Physical Progress [2890 h]; Reinforcement Steel [10 MT1]; TATA Projects Ltd-25 | 965,125 |
| 4S-SS-1st.F.515 |  | MEP Coordination | 1d | 2027-04-20 | 2027-04-21 | 4S-SS-1st.F.450, 4S-SS-1st.F.415, 4S-SS-1st.F.495 | Physical Progress [1440 h]; TATA Projects Ltd-25 |  |
| 4S-SS-1st.F.520 |  | Concrete of Slab | 1d | 2027-04-21 | 2027-04-22 | 4S-SS-1st.F.515 | Mason [50 h]; Helper [50 h]; Physical Progress [1440 h]; Concrete M40 [262 m3]; TATA Projects Ltd-25 | 2,585,154 |
| 4S-SS-1st.F.540 |  | Wait for Strength Gain | 6d | 2027-04-22 | 2027-04-29 | 4S-SS-1st.F.520 | Physical Progress [8680 h]; TATA Projects Ltd-25 |  |
| 4S-SS-1st.F.605 |  | PT Work | 4d | 2027-04-29 | 2027-05-05 | 4S-SS-GF.585, 4S-SS-1st.F.540 | PT [10 MT1]; Helper [100 h]; PT Fitter [100 h]; Physical Progress [11570 h]; TATA Projects Ltd-25 | 1,900,000 |
|  | 3 | **Pour 3** |  | 2027-03-06 | 2027-04-23 |  |  |  |
|  | 5 | **Column, Core Wall, Shear Wall - First Lift** |  | 2027-03-06 | 2027-03-17 |  |  |  |
| 4S-SS-1st.F.410 |  | Reinforcement | 3d | 2027-03-06 | 2027-03-11 | 4S-SS-GF.710 | Barbender [670 h]; Helper [340 h]; Physical Progress [4340 h]; Reinforcement Steel [10 MT1]; TATA Projects Ltd-25 | 965,125 |
| 4S-SS-1st.F.435 |  | LPS | 1d | 2027-03-11 | 2027-03-12 | 4S-SS-1st.F.410 | LPS [41809 INR]; Physical Progress [1440 h]; TATA Projects Ltd-25 | 41,809 |
| 4S-SS-1st.F.455 |  | Shuttering | 3d | 2027-03-12 | 2027-03-16 | 4S-SS-1st.F.410, 4S-SS-1st.F.435 | Carpenter [370 h]; Helper [190 h]; Physical Progress [4340 h]; Formwork [221 Sq m]; TATA Projects Ltd-25 | 257,500.36 |
| 4S-SS-1st.F.480 |  | Concrete | 1d | 2027-03-16 | 2027-03-17 | 4S-SS-1st.F.455 | Mason [50 h]; Helper [50 h]; Physical Progress [1440 h]; Concrete M40 [55 m3]; TATA Projects Ltd-25 | 542,685 |
|  | 1 | **Column, Core Wall, Shear Wall - Second Lift** |  | 2027-03-17 | 2027-03-29 |  |  |  |
| 4S-SS-1st.F.485 |  | Reinforcement | 3d | 2027-03-17 | 2027-03-20 | 4S-SS-1st.F.480 | Barbender [670 h]; Helper [340 h]; Physical Progress [4340 h]; Reinforcement Steel [10 MT1]; TATA Projects Ltd-25 | 965,125 |
| 4S-SS-1st.F.525 |  | LPS | 1d | 2027-03-20 | 2027-03-23 | 4S-SS-1st.F.485 | LPS [41809 INR]; Physical Progress [1440 h]; TATA Projects Ltd-25 | 41,809 |
| 4S-SS-1st.F.545 |  | Shuttering | 3d | 2027-03-23 | 2027-03-27 | 4S-SS-1st.F.485, 4S-SS-1st.F.525 | Carpenter [370 h]; Helper [190 h]; Physical Progress [4340 h]; Formwork [221 Sq m]; TATA Projects Ltd-25 | 257,500.36 |
| 4S-SS-1st.F.570 |  | Concrete | 1d | 2027-03-27 | 2027-03-29 | 4S-SS-1st.F.545 | Mason [50 h]; Helper [50 h]; Physical Progress [1440 h]; Concrete M40 [55 m3]; TATA Projects Ltd-25 | 542,685 |
|  | 3 | **Staircase** |  | 2027-03-06 | 2027-04-08 |  |  |  |
| 4S-SS-1st.F.400 |  | Reinforcement of wall upto Flight 1 | 2d | 2027-03-06 | 2027-03-09 | 4S-SS-GF.710 | Barbender [70 h]; Helper [40 h]; Physical Progress [2890 h]; Reinforcement Steel [1 MT1]; TATA Projects Ltd-25 | 96,512.5 |
| 4S-SS-1st.F.420 |  | Shuttering of wall upto Flight 1 | 2d | 2027-03-09 | 2027-03-12 | 4S-SS-1st.F.400 | Carpenter [20 h]; Helper [10 h]; Physical Progress [2890 h]; Formwork [10 Sq m]; TATA Projects Ltd-25 | 11,651.6 |
| 4S-SS-1st.F.440 |  | Casting of wall upto Flight 1 | 1d | 2027-03-12 | 2027-03-13 | 4S-SS-1st.F.420 | Mason; Helper; Physical Progress [1440 h]; Concrete M40 [3 m3]; TATA Projects Ltd-25 | 29,601 |
| 4S-SS-1st.F.460 |  | Shuttering of Staircase upto Flight 1 | 1d | 2027-03-13 | 2027-03-15 | 4S-SS-1st.F.440 | Carpenter [20 h]; Helper [10 h]; Physical Progress [1440 h]; Formwork [10 Sq m]; TATA Projects Ltd-25 | 11,651.6 |
| 4S-SS-1st.F.465 |  | Reinforcement of Staircase upto Flight 1 | 1d | 2027-03-15 | 2027-03-16 | 4S-SS-1st.F.460 | Barbender [70 h]; Helper [40 h]; Physical Progress [1440 h]; Reinforcement Steel [1 MT1]; TATA Projects Ltd-25 | 96,512.5 |
| 4S-SS-1st.F.475 |  | MEP coordination upto Flight 1 | 1d | 2027-03-16 | 2027-03-17 | 4S-SS-1st.F.465 | Physical Progress [1440 h]; TATA Projects Ltd-25 |  |
| 4S-SS-1st.F.490 |  | Casting of Staircase upto Flight 1 | 1d | 2027-03-17 | 2027-03-18 | 4S-SS-1st.F.475 | Mason; Helper; Physical Progress [1440 h]; Concrete M40 [3 m3]; TATA Projects Ltd-25 | 29,601 |
| 4S-SS-1st.F.505 |  | Reinforcement of wall upto Flight 2 | 2d | 2027-03-18 | 2027-03-20 | 4S-SS-1st.F.490 | Barbender [70 h]; Helper [40 h]; Physical Progress [2890 h]; Reinforcement Steel [1 MT1]; TATA Projects Ltd-25 | 96,512.5 |
| 4S-SS-1st.F.530 |  | Shuttering of wall upto Flight 2 | 2d | 2027-03-20 | 2027-03-24 | 4S-SS-1st.F.505 | Carpenter [20 h]; Helper [10 h]; Physical Progress [2890 h]; Formwork [10 Sq m]; TATA Projects Ltd-25 | 11,651.6 |
| 4S-SS-1st.F.555 |  | Casting of wall upto Flight 2 | 1d | 2027-03-24 | 2027-03-25 | 4S-SS-1st.F.530 | Mason; Helper; Physical Progress [1440 h]; Concrete M40 [3 m3]; TATA Projects Ltd-25 | 29,601 |
| 4S-SS-1st.F.560 |  | Shuttering of Staircase upto Flight 2 | 1d | 2027-03-25 | 2027-03-27 | 4S-SS-1st.F.555 | Carpenter [20 h]; Helper [10 h]; Physical Progress [1440 h]; Formwork [10 Sq m]; TATA Projects Ltd-25 | 11,651.6 |
| 4S-SS-1st.F.575 |  | Reinforcement of Staircase upto Flight 2 | 1d | 2027-03-27 | 2027-03-29 | 4S-SS-1st.F.560 | Barbender [70 h]; Helper [40 h]; Physical Progress [1440 h]; Reinforcement Steel [1 MT1]; TATA Projects Ltd-25 | 96,512.5 |
| 4S-SS-1st.F.590 |  | MEP coordination upto Flight 2 | 1d | 2027-03-29 | 2027-03-30 | 4S-SS-1st.F.575 | Physical Progress [1440 h]; TATA Projects Ltd-25 |  |
| 4S-SS-1st.F.600 |  | Casting of Staircase upto Flight 2 | 1d | 2027-03-30 | 2027-03-31 | 4S-SS-1st.F.590 | Mason; Helper; Physical Progress [1440 h]; Concrete M40 [3 m3]; TATA Projects Ltd-25 | 29,601 |
| 4S-SS-1st.F.615 |  | Reinforcement of wall upto Flight 3 | 2d | 2027-03-31 | 2027-04-02 | 4S-SS-1st.F.600 | Barbender [70 h]; Helper [40 h]; Physical Progress [2890 h]; Reinforcement Steel [1 MT1]; TATA Projects Ltd-25 | 96,512.5 |
| 4S-SS-1st.F.625 |  | Shuttering of wall upto Flight 3 | 2d | 2027-04-02 | 2027-04-05 | 4S-SS-1st.F.615 | Carpenter [20 h]; Helper [10 h]; Physical Progress [2890 h]; Formwork [10 Sq m]; TATA Projects Ltd-25 | 11,651.6 |
| 4S-SS-1st.F.630 |  | Casting of wall upto Flight 3 | 1d | 2027-04-05 | 2027-04-06 | 4S-SS-1st.F.625 | Mason; Helper; Physical Progress [1440 h]; Concrete M40 [3 m3]; TATA Projects Ltd-25 | 29,601 |
| 4S-SS-1st.F.645 |  | Shuttering of Staircase upto Flight 3 | 1d | 2027-04-06 | 2027-04-07 | 4S-SS-1st.F.630 | Carpenter [20 h]; Helper [10 h]; Physical Progress [1440 h]; Formwork [10 Sq m]; TATA Projects Ltd-25 | 11,651.6 |
| 4S-SS-1st.F.650 |  | Reinforcement of Staircase upto Flight 3 | 1d | 2027-04-07 | 2027-04-08 | 4S-SS-1st.F.645 | Barbender [70 h]; Helper [40 h]; Physical Progress [1440 h]; Reinforcement Steel [1 MT1]; TATA Projects Ltd-25 | 96,512.5 |

| ID | WBS | Activity | Duration | Start | Finish | Predecessors | Resources | Cost |
| --- | --- | --- | --- | --- | --- | --- | --- | --- |
|  | 2 | **Slab** |  | 2027-03-29 | 2027-04-23 |  |  |  |
| 4S-SS-1st.F.585 |  | Shuttering | 4d | 2027-03-29 | 2027-04-02 | 4S-SS-1st.F.570 | Carpenter [1540 h]; Helper [770 h]; Physical Progress [5780 h]; Formwork [923 Sq m]; TATA Projects Ltd-25 | 1,075,442.68 |
| 4S-SS-1st.F.620 |  | Reinforcement Bottom Net with chairs | 2d | 2027-04-02 | 2027-04-05 | 4S-SS-1st.F.585 | Barbender [600 h]; Helper [300 h]; Physical Progress [4340 h]; Reinforcement Steel [9 MT1]; TATA Projects Ltd-25 | 868,612.5 |
| 4S-SS-1st.F.635 |  | Laying of PT Tendon | 2d | 2027-04-05 | 2027-04-07 | 4S-SS-1st.F.620 | Physical Progress [5780 h]; TATA Projects Ltd-25 |  |
| 4S-SS-1st.F.660 |  | Reinforcement Top Net | 2d | 2027-04-07 | 2027-04-09 | 4S-SS-1st.F.635 | Barbender [600 h]; Helper [300 h]; Physical Progress [2890 h]; Reinforcement Steel [9 MT1]; TATA Projects Ltd-25 | 868,612.5 |
| 4S-SS-1st.F.665 |  | MEP Coordination | 1d | 2027-04-09 | 2027-04-10 | 4S-SS-1st.F.650, 4S-SS-1st.F.620, 4S-SS-1st.F.660 | Physical Progress [1440 h]; TATA Projects Ltd-25 |  |
| 4S-SS-1st.F.670 |  | Concrete of Slab | 1d | 2027-04-10 | 2027-04-12 | 4S-SS-1st.F.665 | Physical Progress [1440 h]; Concrete M40 [231 m3]; Additional for scaff above 4.5m Height [10 LP]; TATA Projects Ltd-25 | 4,087,277 |
| 4S-SS-1st.F.680 |  | Wait for Strength Gain | 6d | 2027-04-12 | 2027-04-19 | 4S-SS-1st.F.670 | Physical Progress [8680 h]; TATA Projects Ltd-25 |  |
| 4S-SS-1st.F.700 |  | PT Work | 4d | 2027-04-19 | 2027-04-23 | 4S-SS-GF.765, 4S-SS-1st.F.680 | PT [9 MT1]; Helper [100 h]; PT Fitter [100 h]; Physical Progress [7230 h]; TATA Projects Ltd-25 | 1,710,000 |
|  | 4 | **Pour 4** |  | 2027-03-01 | 2027-04-14 |  |  |  |
|  | 3 | **Column - First Lift** |  | 2027-03-01 | 2027-03-08 |  |  |  |
| 4S-SS-1st.F.470 |  | Reinforcement | 2d | 2027-03-01 | 2027-03-03 | 4S-SS-GF.740 | Barbender [740 h]; Helper [370 h]; Physical Progress [2890 h]; Reinforcement Steel [11 MT1]; TATA Projects Ltd-25 | 1,061,637.5 |
| 4S-SS-1st.F.500 |  | LPS | 1d | 2027-03-03 | 2027-03-04 | 4S-SS-1st.F.470 | LPS [41809 INR]; Physical Progress [1440 h]; TATA Projects Ltd-25 | 41,809 |
| 4S-SS-1st.F.510 |  | Shuttering | 2d | 2027-03-04 | 2027-03-06 | 4S-SS-1st.F.470, 4S-SS-1st.F.500 | Carpenter [430 h]; Helper [220 h]; Physical Progress [2890 h]; Formwork [253 Sq m]; TATA Projects Ltd-25 | 294,785.48 |
| 4S-SS-1st.F.535 |  | Concrete | 1d | 2027-03-06 | 2027-03-08 | 4S-SS-1st.F.510 | Mason [50 h]; Helper [50 h]; Physical Progress [1440 h]; Concrete M40 [63 m3]; TATA Projects Ltd-25 | 621,621 |
|  | 1 | **Column - Second Lift** |  | 2027-03-08 | 2027-03-16 |  |  |  |
| 4S-SS-1st.F.550 |  | Reinforcement | 2d | 2027-03-08 | 2027-03-11 | 4S-SS-1st.F.535 | Barbender [740 h]; Helper [370 h]; Physical Progress [2890 h]; Reinforcement Steel [11 MT1]; TATA Projects Ltd-25 | 1,061,637.5 |
| 4S-SS-1st.F.565 |  | LPS | 1d | 2027-03-11 | 2027-03-12 | 4S-SS-1st.F.550 | LPS [41809 INR]; Physical Progress [1440 h]; TATA Projects Ltd-25 | 41,809 |
| 4S-SS-1st.F.580 |  | Shuttering | 2d | 2027-03-12 | 2027-03-15 | 4S-SS-1st.F.550, 4S-SS-1st.F.565 | Carpenter [430 h]; Helper [220 h]; Physical Progress [2890 h]; Formwork [253 Sq m]; TATA Projects Ltd-25 | 294,785.48 |
| 4S-SS-1st.F.595 |  | Concrete | 1d | 2027-03-15 | 2027-03-16 | 4S-SS-1st.F.580 | Mason [50 h]; Helper [50 h]; Physical Progress [1440 h]; Concrete M40 [63 m3]; TATA Projects Ltd-25 | 621,621 |
|  | 2 | **Slab** |  | 2027-03-16 | 2027-04-14 |  |  |  |
| 4S-SS-1st.F.610 |  | Shuttering | 5d | 2027-03-16 | 2027-03-23 | E-GFC-ST-4S-100, 4S-SS-1st.F.595 | Carpenter [1760 h]; Helper [880 h]; Physical Progress [7230 h]; Formwork [1054 Sq m]; TATA Projects Ltd-25 | 1,228,078.64 |
| 4S-SS-1st.F.640 |  | Reinforcement Bottom Net with chairs | 2d | 2027-03-23 | 2027-03-25 | 4S-SS-1st.F.610 | Barbender [740 h]; Helper [370 h]; Physical Progress [4340 h]; Reinforcement Steel [11 MT1]; TATA Projects Ltd-25 | 1,061,637.5 |
| 4S-SS-1st.F.655 |  | Laying of PT Tendon | 2d | 2027-03-25 | 2027-03-29 | E-ShopD-Civil-PT-4S-15, 4S-SS-1st.F.640 | Physical Progress [5780 h]; TATA Projects Ltd-25 |  |
| 4S-SS-1st.F.675 |  | Reinforcement Top Net | 2d | 2027-03-29 | 2027-03-31 | 4S-SS-1st.F.655 | Barbender [740 h]; Helper [370 h]; Physical Progress [2890 h]; Reinforcement Steel [11 MT1]; TATA Projects Ltd-25 | 1,061,637.5 |
| 4S-SS-1st.F.685 |  | MEP Coordination | 1d | 2027-03-31 | 2027-04-01 | 4S-SS-1st.F.640, 4S-SS-1st.F.675 | Physical Progress [1440 h]; TATA Projects Ltd-25 |  |
| 4S-SS-1st.F.690 |  | Concrete of Slab | 1d | 2027-04-01 | 2027-04-02 | 4S-SS-1st.F.685 | Mason [50 h]; Helper [50 h]; Physical Progress [1440 h]; Concrete M40 [264 m3]; TATA Projects Ltd-25 | 2,604,888 |
| 4S-SS-1st.F.695 |  | Wait for Strength Gain | 6d | 2027-04-02 | 2027-04-09 | 4S-SS-1st.F.690 | Physical Progress [8680 h]; TATA Projects Ltd-25 |  |
| 4S-SS-1st.F.705 |  | PT Work | 4d | 2027-04-09 | 2027-04-14 | 4S-SS-GF.785, 4S-SS-1st.F.695 | PT [10 MT1]; Helper [100 h]; PT Fitter [100 h]; Physical Progress [11570 h]; TATA Projects Ltd-25 | 1,900,000 |

| ID | WBS | Activity | Duration | Start | Finish | Predecessors | Resources | Cost |
| --- | --- | --- | --- | --- | --- | --- | --- | --- |
|  | 8 | **Service Floor** |  | 2027-04-12 | 2027-06-08 |  |  |  |
|  | 1 | **Pour 1** |  | 2027-04-30 | 2027-06-08 |  |  |  |
|  | 1 | **Column, Core Wall, Shear Wall** |  | 2027-04-30 | 2027-05-13 |  |  |  |
| 4S-SS-Serv.F.10 |  | Reinforcement | 4d | 2027-04-30 | 2027-05-06 | 4S-SS-1st.F.330 | Barbender [2000 h]; Helper [1000 h]; Physical Progress [5780 h]; Reinforcement Steel [30 MT1]; TATA Projects Ltd-25 | 2,895,375 |
| 4S-SS-Serv.F.35 |  | LPS | 1d | 2027-05-06 | 2027-05-07 | 4S-SS-Serv.F.10 | LPS [41809 INR]; Physical Progress [1440 h]; TATA Projects Ltd-25 | 41,809 |
| 4S-SS-Serv.F.50 |  | Shuttering | 4d | 2027-05-07 | 2027-05-12 | 4S-SS-Serv.F.10, 4S-SS-Serv.F.35 | Carpenter [1080 h]; Helper [540 h]; Physical Progress [5780 h]; Formwork [645 Sq m]; TATA Projects Ltd-25 | 751,528.2 |
| 4S-SS-Serv.F.95 |  | Concrete | 1d | 2027-05-12 | 2027-05-13 | 4S-SS-Serv.F.50 | Mason [50 h]; Helper [50 h]; Physical Progress [1440 h]; Concrete M40 [161 m3]; TATA Projects Ltd-25 | 1,588,587 |
|  | 3 | **Staircase - 1** |  | 2027-04-30 | 2027-05-20 |  |  |  |
| 4S-SS-Serv.F.15 |  | Reinforcement of wall upto Flight 1 | 2d | 2027-04-30 | 2027-05-04 | 4S-SS-1st.F.330 | Barbender [70 h]; Helper [40 h]; Physical Progress [2890 h]; Reinforcement Steel [1 MT1]; TATA Projects Ltd-25 | 96,512.5 |
| 4S-SS-Serv.F.25 |  | Shuttering of wall upto Flight 1 | 2d | 2027-05-04 | 2027-05-06 | 4S-SS-Serv.F.15 | Carpenter [20 h]; Helper [10 h]; Physical Progress [2890 h]; Formwork [10 Sq m]; TATA Projects Ltd-25 | 11,651.6 |
| 4S-SS-Serv.F.40 |  | Casting of wall upto Flight 1 | 1d | 2027-05-06 | 2027-05-07 | 4S-SS-Serv.F.25 | Mason; Helper; Physical Progress [1440 h]; Concrete M40 [3 m3]; TATA Projects Ltd-25 | 29,601 |
| 4S-SS-Serv.F.55 |  | Shuttering of Staircase upto Flight 1 | 1d | 2027-05-07 | 2027-05-08 | 4S-SS-Serv.F.40 | Carpenter [20 h]; Helper [10 h]; Physical Progress [1440 h]; Formwork [10 Sq m]; TATA Projects Ltd-25 | 11,651.6 |
| 4S-SS-Serv.F.65 |  | Reinforcement of Staircase upto Flight 1 | 1d | 2027-05-08 | 2027-05-10 | 4S-SS-Serv.F.55 | Barbender [70 h]; Helper [40 h]; Physical Progress [1440 h]; Reinforcement Steel [1 MT1]; TATA Projects Ltd-25 | 96,512.5 |
| 4S-SS-Serv.F.75 |  | MEP coordination upto Flight 1 | 1d | 2027-05-10 | 2027-05-11 | 4S-SS-Serv.F.65 | Physical Progress [1440 h]; TATA Projects Ltd-25 |  |
| 4S-SS-Serv.F.85 |  | Casting of Staircase upto Flight 1 | 1d | 2027-05-11 | 2027-05-12 | 4S-SS-Serv.F.75 | Mason; Helper; Physical Progress [1440 h]; Concrete M40 [3 m3]; TATA Projects Ltd-25 | 29,601 |
| 4S-SS-Serv.F.100 |  | Reinforcement of wall upto Flight 2 | 2d | 2027-05-12 | 2027-05-14 | 4S-SS-Serv.F.85 | Barbender [70 h]; Helper [40 h]; Physical Progress [2890 h]; Reinforcement Steel [1 MT1]; TATA Projects Ltd-25 | 96,512.5 |
| 4S-SS-Serv.F.115 |  | Shuttering of wall upto Flight 2 | 2d | 2027-05-14 | 2027-05-17 | 4S-SS-Serv.F.100 | Carpenter [20 h]; Helper [10 h]; Physical Progress [2890 h]; Formwork [10 Sq m]; TATA Projects Ltd-25 | 11,651.6 |
| 4S-SS-Serv.F.125 |  | Casting of wall upto Flight 2 | 1d | 2027-05-17 | 2027-05-18 | 4S-SS-Serv.F.115 | Mason; Helper; Physical Progress [1440 h]; Concrete M40 [3 m3]; TATA Projects Ltd-25 | 29,601 |
| 4S-SS-Serv.F.140 |  | Shuttering of Staircase upto Flight 2 | 1d | 2027-05-18 | 2027-05-19 | 4S-SS-Serv.F.125 | Carpenter [20 h]; Helper [10 h]; Physical Progress [1440 h]; Formwork [10 Sq m]; TATA Projects Ltd-25 | 11,651.6 |
| 4S-SS-Serv.F.150 |  | Reinforcement of Staircase upto Flight 2 | 1d | 2027-05-19 | 2027-05-20 | 4S-SS-Serv.F.140 | Barbender [70 h]; Helper [40 h]; Physical Progress [1440 h]; Reinforcement Steel [1 MT1]; TATA Projects Ltd-25 | 96,512.5 |
|  | 4 | **Staircase - 2** |  | 2027-04-30 | 2027-05-20 |  |  |  |
| 4S-SS-Serv.F.20 |  | Reinforcement of wall upto Flight 1 | 2d | 2027-04-30 | 2027-05-04 | 4S-SS-1st.F.330 | Barbender [70 h]; Helper [40 h]; Physical Progress [2890 h]; Reinforcement Steel [1 MT1]; TATA Projects Ltd-25 | 96,512.5 |
| 4S-SS-Serv.F.30 |  | Shuttering of wall upto Flight 1 | 2d | 2027-05-04 | 2027-05-06 | 4S-SS-Serv.F.20 | Carpenter [20 h]; Helper [10 h]; Physical Progress [2890 h]; Formwork [10 Sq m]; TATA Projects Ltd-25 | 11,651.6 |
| 4S-SS-Serv.F.45 |  | Casting of wall upto Flight 1 | 1d | 2027-05-06 | 2027-05-07 | 4S-SS-Serv.F.30 | Mason; Helper; Physical Progress [1440 h]; Concrete M40 [3 m3]; TATA Projects Ltd-25 | 29,601 |
| 4S-SS-Serv.F.60 |  | Shuttering of Staircase upto Flight 1 | 1d | 2027-05-07 | 2027-05-08 | 4S-SS-Serv.F.45 | Carpenter [20 h]; Helper [10 h]; Physical Progress [1440 h]; Formwork [10 Sq m]; TATA Projects Ltd-25 | 11,651.6 |
| 4S-SS-Serv.F.70 |  | Reinforcement of Staircase upto Flight 1 | 1d | 2027-05-08 | 2027-05-10 | 4S-SS-Serv.F.60 | Barbender [70 h]; Helper [40 h]; Physical Progress [1440 h]; Reinforcement Steel [1 MT1]; TATA Projects Ltd-25 | 96,512.5 |
| 4S-SS-Serv.F.80 |  | MEP coordination upto Flight 1 | 1d | 2027-05-10 | 2027-05-11 | 4S-SS-Serv.F.70 | Physical Progress [1440 h]; TATA Projects Ltd-25 |  |
| 4S-SS-Serv.F.90 |  | Casting of Staircase upto Flight 1 | 1d | 2027-05-11 | 2027-05-12 | 4S-SS-Serv.F.80 | Mason; Helper; Physical Progress [1440 h]; Concrete M40 [3 m3]; TATA Projects Ltd-25 | 29,601 |
| 4S-SS-Serv.F.105 |  | Reinforcement of wall upto Flight 2 | 2d | 2027-05-12 | 2027-05-14 | 4S-SS-Serv.F.90 | Barbender [70 h]; Helper [40 h]; Physical Progress [2890 h]; Reinforcement Steel [1 MT1]; TATA Projects Ltd-25 | 96,512.5 |
| 4S-SS-Serv.F.120 |  | Shuttering of wall upto Flight 2 | 2d | 2027-05-14 | 2027-05-17 | 4S-SS-Serv.F.105 | Carpenter [20 h]; Helper [10 h]; Physical Progress [2890 h]; Formwork [10 Sq m]; TATA Projects Ltd-25 | 11,651.6 |
| 4S-SS-Serv.F.130 |  | Casting of wall upto Flight 2 | 1d | 2027-05-17 | 2027-05-18 | 4S-SS-Serv.F.120 | Mason; Helper; Physical Progress [1440 h]; Concrete M40 [3 m3]; TATA Projects Ltd-25 | 29,601 |
| 4S-SS-Serv.F.145 |  | Shuttering of Staircase upto Flight 2 | 1d | 2027-05-18 | 2027-05-19 | 4S-SS-Serv.F.130 | Carpenter [20 h]; Helper [10 h]; Physical Progress [1440 h]; Formwork [10 Sq m]; TATA Projects Ltd-25 | 11,651.6 |
| 4S-SS-Serv.F.155 |  | Reinforcement of Staircase upto Flight 2 | 1d | 2027-05-19 | 2027-05-20 | 4S-SS-Serv.F.145 | Barbender [70 h]; Helper [40 h]; Physical Progress [1440 h]; Reinforcement Steel [1 MT1]; TATA Projects Ltd-25 | 96,512.5 |

| ID | WBS | Activity | Duration | Start | Finish | Predecessors | Resources | Cost |
| --- | --- | --- | --- | --- | --- | --- | --- | --- |
|  | 2 | **Slab** |  | 2027-05-13 | 2027-06-08 |  |  |  |
| 4S-SS-Serv.F.110 |  | Shuttering | 4d | 2027-05-13 | 2027-05-18 | 4S-SS-Serv.F.95 | Carpenter [1050 h]; Helper [530 h]; Physical Progress [5780 h]; Formwork [627 Sq m]; TATA Projects Ltd-25 | 730,555.32 |
| 4S-SS-Serv.F.135 |  | Reinforcement Bottom Net with chairs | 2d | 2027-05-18 | 2027-05-20 | 4S-SS-Serv.F.110 | Barbender [340 h]; Helper [170 h]; Physical Progress [4340 h]; Reinforcement Steel [5 MT1]; TATA Projects Ltd-25 | 482,562.5 |
| 4S-SS-Serv.F.160 |  | Laying of PT Tendon | 2d | 2027-05-20 | 2027-05-22 | 4S-SS-Serv.F.135 | Physical Progress [5780 h]; TATA Projects Ltd-25 |  |
| 4S-SS-Serv.F.175 |  | Reinforcement Top Net | 2d | 2027-05-22 | 2027-05-25 | 4S-SS-Serv.F.160 | Barbender [340 h]; Helper [170 h]; Physical Progress [2890 h]; Reinforcement Steel [5 MT1]; TATA Projects Ltd-25 | 482,562.5 |
| 4S-SS-Serv.F.185 |  | MEP Coordination | 1d | 2027-05-25 | 2027-05-26 | 4S-SS-Serv.F.155, 4S-SS-Serv.F.135, 4S-SS-Serv.F.150, 4S-SS-Serv.F.175 | Physical Progress [1440 h]; TATA Projects Ltd-25 |  |
| 4S-SS-Serv.F.190 |  | Concrete of Slab | 1d | 2027-05-26 | 2027-05-27 | 4S-SS-Serv.F.185 | Mason [50 h]; Helper [50 h]; Physical Progress [1440 h]; Concrete M40 [157 m3]; TATA Projects Ltd-25 | 1,549,119 |
| 4S-SS-Serv.F.205 |  | Wait for Strength Gain | 6d | 2027-05-27 | 2027-06-03 | 4S-SS-Serv.F.190 | Physical Progress [8680 h]; TATA Projects Ltd-25 |  |
| 4S-SS-Serv.F.250 |  | PT Work | 4d | 2027-06-03 | 2027-06-08 | 4S-SS-1st.F.390, 4S-SS-Serv.F.205 | PT [2 MT1]; Helper [100 h]; PT Fitter [100 h]; Physical Progress [7230 h]; TATA Projects Ltd-25 | 380,000 |
|  | 2 | **Pour 2** |  | 2027-04-22 | 2027-05-31 |  |  |  |
|  | 1 | **Column, Core Wall, Shear Wall** |  | 2027-04-22 | 2027-05-05 |  |  |  |
| 4S-SS-Serv.F.165 |  | Reinforcement | 4d | 2027-04-22 | 2027-04-27 | 4S-SS-1st.F.520 | Barbender [1870 h]; Helper [940 h]; Physical Progress [5780 h]; Reinforcement Steel [28 MT1]; TATA Projects Ltd-25 | 2,702,350 |
| 4S-SS-Serv.F.195 |  | LPS | 1d | 2027-04-27 | 2027-04-28 | 4S-SS-Serv.F.165 | LPS [41809 INR]; Physical Progress [1440 h]; TATA Projects Ltd-25 | 41,809 |
| 4S-SS-Serv.F.210 |  | Shuttering | 4d | 2027-04-28 | 2027-05-04 | 4S-SS-Serv.F.165, 4S-SS-Serv.F.195 | Carpenter [1010 h]; Helper [510 h]; Physical Progress [5780 h]; Formwork [601 Sq m]; TATA Projects Ltd-25 | 700,261.16 |
| 4S-SS-Serv.F.235 |  | Concrete | 1d | 2027-05-04 | 2027-05-05 | 4S-SS-Serv.F.210 | Mason [50 h]; Helper [50 h]; Physical Progress [1440 h]; Concrete M40 [150 m3]; TATA Projects Ltd-25 | 1,480,050 |
|  | 3 | **Staircase** |  | 2027-04-22 | 2027-05-12 |  |  |  |
| 4S-SS-Serv.F.170 |  | Reinforcement of wall upto Flight 1 | 2d | 2027-04-22 | 2027-04-24 | 4S-SS-1st.F.520 | Barbender [70 h]; Helper [40 h]; Physical Progress [2890 h]; Reinforcement Steel [1 MT1]; TATA Projects Ltd-25 | 96,512.5 |
| 4S-SS-Serv.F.180 |  | Shuttering of wall upto Flight 1 | 2d | 2027-04-24 | 2027-04-27 | 4S-SS-Serv.F.170 | Carpenter [20 h]; Helper [10 h]; Physical Progress [2890 h]; Formwork [10 Sq m]; TATA Projects Ltd-25 | 11,651.6 |
| 4S-SS-Serv.F.200 |  | Casting of wall upto Flight 1 | 1d | 2027-04-27 | 2027-04-28 | 4S-SS-Serv.F.180 | Mason; Helper; Physical Progress [1440 h]; Concrete M40 [3 m3]; TATA Projects Ltd-25 | 29,601 |
| 4S-SS-Serv.F.215 |  | Shuttering of Staircase upto Flight 1 | 1d | 2027-04-28 | 2027-04-29 | 4S-SS-Serv.F.200 | Carpenter [20 h]; Helper [10 h]; Physical Progress [1440 h]; Formwork [10 Sq m]; TATA Projects Ltd-25 | 11,651.6 |
| 4S-SS-Serv.F.220 |  | Reinforcement of Staircase upto Flight 1 | 1d | 2027-04-29 | 2027-04-30 | 4S-SS-Serv.F.215 | Barbender [70 h]; Helper [40 h]; Physical Progress [1440 h]; Reinforcement Steel [1 MT1]; TATA Projects Ltd-25 | 96,512.5 |
| 4S-SS-Serv.F.225 |  | MEP coordination upto Flight 1 | 1d | 2027-04-30 | 2027-05-03 | 4S-SS-Serv.F.220 | Physical Progress [1440 h]; TATA Projects Ltd-25 |  |
| 4S-SS-Serv.F.230 |  | Casting of Staircase upto Flight 1 | 1d | 2027-05-03 | 2027-05-04 | 4S-SS-Serv.F.225 | Mason; Helper; Physical Progress [1440 h]; Concrete M40 [3 m3]; TATA Projects Ltd-25 | 29,601 |
| 4S-SS-Serv.F.240 |  | Reinforcement of wall upto Flight 2 | 2d | 2027-05-04 | 2027-05-06 | 4S-SS-Serv.F.230 | Barbender [70 h]; Helper [40 h]; Physical Progress [2890 h]; Reinforcement Steel [1 MT1]; TATA Projects Ltd-25 | 96,512.5 |
| 4S-SS-Serv.F.255 |  | Shuttering of wall upto Flight 2 | 2d | 2027-05-06 | 2027-05-08 | 4S-SS-Serv.F.240 | Carpenter [20 h]; Helper [10 h]; Physical Progress [2890 h]; Formwork [10 Sq m]; TATA Projects Ltd-25 | 11,651.6 |
| 4S-SS-Serv.F.260 |  | Casting of wall upto Flight 2 | 1d | 2027-05-08 | 2027-05-10 | 4S-SS-Serv.F.255 | Mason; Helper; Physical Progress [1440 h]; Concrete M40 [3 m3]; TATA Projects Ltd-25 | 29,601 |
| 4S-SS-Serv.F.270 |  | Shuttering of Staircase upto Flight 2 | 1d | 2027-05-10 | 2027-05-11 | 4S-SS-Serv.F.260 | Carpenter [20 h]; Helper [10 h]; Physical Progress [1440 h]; Formwork [10 Sq m]; TATA Projects Ltd-25 | 11,651.6 |
| 4S-SS-Serv.F.275 |  | Reinforcement of Staircase upto Flight 2 | 1d | 2027-05-11 | 2027-05-12 | 4S-SS-Serv.F.270 | Barbender [70 h]; Helper [40 h]; Physical Progress [1440 h]; Reinforcement Steel [1 MT1]; TATA Projects Ltd-25 | 96,512.5 |

| ID | WBS | Activity | Duration | Start | Finish | Predecessors | Resources | Cost |
| --- | --- | --- | --- | --- | --- | --- | --- | --- |
|  | 2 | **Slab** |  | 2027-05-05 | 2027-05-31 |  |  |  |
| 4S-SS-Serv.F.245 |  | Shuttering | 4d | 2027-05-05 | 2027-05-10 | 4S-SS-Serv.F.235 | Carpenter [980 h]; Helper [490 h]; Physical Progress [5780 h]; Formwork [584 Sq m]; TATA Projects Ltd-25 | 680,453.44 |
| 4S-SS-Serv.F.265 |  | Reinforcement Bottom Net with chairs | 2d | 2027-05-10 | 2027-05-12 | 4S-SS-Serv.F.245 | Barbender [340 h]; Helper [170 h]; Physical Progress [4340 h]; Reinforcement Steel [5 MT1]; TATA Projects Ltd-25 | 482,562.5 |
| 4S-SS-Serv.F.280 |  | Laying of PT Tendon | 2d | 2027-05-12 | 2027-05-14 | 4S-SS-Serv.F.265 | Physical Progress [5780 h]; TATA Projects Ltd-25 |  |
| 4S-SS-Serv.F.300 |  | Reinforcement Top Net | 2d | 2027-05-14 | 2027-05-17 | 4S-SS-Serv.F.280 | Barbender [340 h]; Helper [170 h]; Physical Progress [2890 h]; Reinforcement Steel [5 MT1]; TATA Projects Ltd-25 | 482,562.5 |
| 4S-SS-Serv.F.305 |  | MEP Coordination | 1d | 2027-05-17 | 2027-05-18 | 4S-SS-Serv.F.265, 4S-SS-Serv.F.275, 4S-SS-Serv.F.300 | Physical Progress [1440 h]; TATA Projects Ltd-25 |  |
| 4S-SS-Serv.F.320 |  | Concrete of Slab | 1d | 2027-05-18 | 2027-05-19 | 4S-SS-Serv.F.305 | Mason [50 h]; Helper [50 h]; Physical Progress [1440 h]; Concrete M40 [146 m3]; TATA Projects Ltd-25 | 1,440,582 |
| 4S-SS-Serv.F.335 |  | Wait for Strength Gain | 6d | 2027-05-19 | 2027-05-26 | 4S-SS-Serv.F.320 | Physical Progress [8680 h]; TATA Projects Ltd-25 |  |
| 4S-SS-Serv.F.375 |  | PT Work | 4d | 2027-05-26 | 2027-05-31 | 4S-SS-1st.F.605, 4S-SS-Serv.F.335 | PT [2 MT1]; Helper [100 h]; PT Fitter [100 h]; Physical Progress [7230 h]; TATA Projects Ltd-25 | 380,000 |
|  | 3 | **Pour 3** |  | 2027-04-12 | 2027-05-20 |  |  |  |
|  | 1 | **Column, Core Wall, Shear Wall** |  | 2027-04-12 | 2027-04-23 |  |  |  |
| 4S-SS-Serv.F.285 |  | Reinforcement | 4d | 2027-04-12 | 2027-04-16 | 4S-SS-1st.F.670 | Barbender [1670 h]; Helper [840 h]; Physical Progress [5780 h]; Reinforcement Steel [25 MT1]; TATA Projects Ltd-25 | 2,412,812.5 |
| 4S-SS-Serv.F.310 |  | LPS | 1d | 2027-04-16 | 2027-04-17 | 4S-SS-Serv.F.285 | LPS [41809 INR]; Physical Progress [1440 h]; TATA Projects Ltd-25 | 41,809 |
| 4S-SS-Serv.F.325 |  | Shuttering | 4d | 2027-04-17 | 2027-04-22 | 4S-SS-Serv.F.285, 4S-SS-Serv.F.310 | Carpenter [890 h]; Helper [450 h]; Physical Progress [5780 h]; Formwork [530 Sq m]; TATA Projects Ltd-25 | 617,534.8 |
| 4S-SS-Serv.F.355 |  | Concrete | 1d | 2027-04-22 | 2027-04-23 | 4S-SS-Serv.F.325 | Mason [50 h]; Helper [50 h]; Physical Progress [1440 h]; Concrete M40 [133 m3]; TATA Projects Ltd-25 | 1,312,311 |
|  | 3 | **Staircase** |  | 2027-04-12 | 2027-04-30 |  |  |  |
| 4S-SS-Serv.F.290 |  | Reinforcement of wall upto Flight 1 | 2d | 2027-04-12 | 2027-04-14 | 4S-SS-1st.F.670 | Barbender [70 h]; Helper [40 h]; Physical Progress [2890 h]; Reinforcement Steel [1 MT1]; TATA Projects Ltd-25 | 96,512.5 |
| 4S-SS-Serv.F.295 |  | Shuttering of wall upto Flight 1 | 2d | 2027-04-14 | 2027-04-16 | 4S-SS-Serv.F.290 | Carpenter [20 h]; Helper [10 h]; Physical Progress [2890 h]; Formwork [10 Sq m]; TATA Projects Ltd-25 | 11,651.6 |
| 4S-SS-Serv.F.315 |  | Casting of wall upto Flight 1 | 1d | 2027-04-16 | 2027-04-17 | 4S-SS-Serv.F.295 | Mason; Helper; Physical Progress [1440 h]; Concrete M40 [3 m3]; TATA Projects Ltd-25 | 29,601 |
| 4S-SS-Serv.F.330 |  | Shuttering of Staircase upto Flight 1 | 1d | 2027-04-17 | 2027-04-19 | 4S-SS-Serv.F.315 | Carpenter [20 h]; Helper [10 h]; Physical Progress [1440 h]; Formwork [10 Sq m]; TATA Projects Ltd-25 | 11,651.6 |
| 4S-SS-Serv.F.340 |  | Reinforcement of Staircase upto Flight 1 | 1d | 2027-04-19 | 2027-04-20 | 4S-SS-Serv.F.330 | Barbender [70 h]; Helper [40 h]; Physical Progress [1440 h]; Reinforcement Steel [1 MT1]; TATA Projects Ltd-25 | 96,512.5 |
| 4S-SS-Serv.F.345 |  | MEP coordination upto Flight 1 | 1d | 2027-04-20 | 2027-04-21 | 4S-SS-Serv.F.340 | Physical Progress [1440 h]; TATA Projects Ltd-25 |  |
| 4S-SS-Serv.F.350 |  | Casting of Staircase upto Flight 1 | 1d | 2027-04-21 | 2027-04-22 | 4S-SS-Serv.F.345 | Mason; Helper; Physical Progress [1440 h]; Concrete M40 [3 m3]; TATA Projects Ltd-25 | 29,601 |
| 4S-SS-Serv.F.360 |  | Reinforcement of wall upto Flight 2 | 2d | 2027-04-22 | 2027-04-24 | 4S-SS-Serv.F.350 | Barbender [70 h]; Helper [40 h]; Physical Progress [2890 h]; Reinforcement Steel [1 MT1]; TATA Projects Ltd-25 | 96,512.5 |
| 4S-SS-Serv.F.370 |  | Shuttering of wall upto Flight 2 | 2d | 2027-04-24 | 2027-04-27 | 4S-SS-Serv.F.360 | Carpenter [20 h]; Helper [10 h]; Physical Progress [2890 h]; Formwork [10 Sq m]; TATA Projects Ltd-25 | 11,651.6 |
| 4S-SS-Serv.F.380 |  | Casting of wall upto Flight 2 | 1d | 2027-04-27 | 2027-04-28 | 4S-SS-Serv.F.370 | Mason; Helper; Physical Progress [1440 h]; Concrete M40 [3 m3]; TATA Projects Ltd-25 | 29,601 |
| 4S-SS-Serv.F.390 |  | Shuttering of Staircase upto Flight 2 | 1d | 2027-04-28 | 2027-04-29 | 4S-SS-Serv.F.380 | Carpenter [20 h]; Helper [10 h]; Physical Progress [1440 h]; Formwork [10 Sq m]; TATA Projects Ltd-25 | 11,651.6 |
| 4S-SS-Serv.F.395 |  | Reinforcement of Staircase upto Flight 2 | 1d | 2027-04-29 | 2027-04-30 | 4S-SS-Serv.F.390 | Barbender [70 h]; Helper [40 h]; Physical Progress [1440 h]; Reinforcement Steel [1 MT1]; TATA Projects Ltd-25 | 96,512.5 |

| ID | WBS | Activity | Duration | Start | Finish | Predecessors | Resources | Cost |
| --- | --- | --- | --- | --- | --- | --- | --- | --- |
|  | 2 | **Slab** |  | 2027-04-23 | 2027-05-20 |  |  |  |
| 4S-SS-Serv.F.365 |  | Shuttering | 4d | 2027-04-23 | 2027-04-28 | E-GFC-ST-4S-250, 4S-SS-Serv.F.355 | Carpenter [860 h]; Helper [430 h]; Physical Progress [5780 h]; Formwork [515 Sq m]; TATA Projects Ltd-25 | 600,057.4 |
| 4S-SS-Serv.F.385 |  | Reinforcement Bottom Net with chairs | 2d | 2027-04-28 | 2027-04-30 | 4S-SS-Serv.F.365 | Barbender [270 h]; Helper [140 h]; Physical Progress [4340 h]; Reinforcement Steel [4 MT1]; TATA Projects Ltd-25 | 386,050 |
| 4S-SS-Serv.F.400 |  | Laying of PT Tendon | 2d | 2027-04-30 | 2027-05-04 | 4S-SS-Serv.F.385 | Physical Progress [5780 h]; TATA Projects Ltd-25 |  |
| 4S-SS-Serv.F.405 |  | Reinforcement Top Net | 2d | 2027-05-04 | 2027-05-06 | 4S-SS-Serv.F.400 | Barbender [270 h]; Helper [140 h]; Physical Progress [2890 h]; Reinforcement Steel [4 MT1]; TATA Projects Ltd-25 | 386,050 |
| 4S-SS-Serv.F.410 |  | MEP Coordination | 1d | 2027-05-06 | 2027-05-07 | 4S-SS-Serv.F.385, 4S-SS-Serv.F.395, 4S-SS-Serv.F.405 | Physical Progress [1440 h]; TATA Projects Ltd-25 |  |
| 4S-SS-Serv.F.415 |  | Concrete of Slab | 1d | 2027-05-07 | 2027-05-08 | 4S-SS-Serv.F.410 | Mason [50 h]; Helper [50 h]; Physical Progress [1440 h]; Concrete M40 [129 m3]; TATA Projects Ltd-25 | 1,272,843 |
| 4S-SS-Serv.F.420 |  | Wait for Strength Gain | 6d | 2027-05-08 | 2027-05-15 | 4S-SS-Serv.F.415 | Physical Progress [8680 h]; TATA Projects Ltd-25 |  |
| 4S-SS-Serv.F.425 |  | PT Work | 4d | 2027-05-15 | 2027-05-20 | 4S-SS-1st.F.705, 4S-SS-1st.F.700, 4S-SS-Serv.F.420 | PT [2 MT1]; Helper [100 h]; PT Fitter [100 h]; Physical Progress [7230 h]; TATA Projects Ltd-25 | 380,000 |
|  | 9 | **Second Floor** |  | 2027-05-08 | 2027-07-03 |  |  |  |
|  | 1 | **Pour 1** |  | 2027-05-27 | 2027-07-03 |  |  |  |
|  | 1 | **Column, Core Wall, Shear Wall** |  | 2027-05-27 | 2027-06-08 |  |  |  |
| 4S-SS-2nd.F.10 |  | Reinforcement | 4d | 2027-05-27 | 2027-06-01 | 4S-SS-Serv.F.190 | Barbender [2000 h]; Helper [1000 h]; Physical Progress [5780 h]; Reinforcement Steel [30 MT1]; TATA Projects Ltd-25 | 2,895,375 |
| 4S-SS-2nd.F.35 |  | LPS | 1d | 2027-06-01 | 2027-06-02 | 4S-SS-2nd.F.10 | LPS [41809 INR]; Physical Progress [1440 h]; TATA Projects Ltd-25 | 41,809 |
| 4S-SS-2nd.F.50 |  | Shuttering | 4d | 2027-06-02 | 2027-06-07 | 4S-SS-2nd.F.10, 4S-SS-2nd.F.35 | Carpenter [1080 h]; Helper [540 h]; Physical Progress [5780 h]; Formwork [645 Sq m]; TATA Projects Ltd-25 | 751,528.2 |
| 4S-SS-2nd.F.95 |  | Concrete | 1d | 2027-06-07 | 2027-06-08 | 4S-SS-2nd.F.50 | Mason [50 h]; Helper [50 h]; Physical Progress [1440 h]; Concrete M40 [161 m3]; TATA Projects Ltd-25 | 1,588,587 |
|  | 3 | **Staircase - 1** |  | 2027-05-27 | 2027-06-15 |  |  |  |
| 4S-SS-2nd.F.15 |  | Reinforcement of wall upto Flight 1 | 2d | 2027-05-27 | 2027-05-29 | 4S-SS-Serv.F.190 | Barbender [70 h]; Helper [40 h]; Physical Progress [2890 h]; Reinforcement Steel [1 MT1]; TATA Projects Ltd-25 | 96,512.5 |
| 4S-SS-2nd.F.25 |  | Shuttering of wall upto Flight 1 | 2d | 2027-05-29 | 2027-06-01 | 4S-SS-2nd.F.15 | Carpenter [20 h]; Helper [10 h]; Physical Progress [2890 h]; Formwork [10 Sq m]; TATA Projects Ltd-25 | 11,651.6 |
| 4S-SS-2nd.F.40 |  | Casting of wall upto Flight 1 | 1d | 2027-06-01 | 2027-06-02 | 4S-SS-2nd.F.25 | Mason; Helper; Physical Progress [1440 h]; Concrete M40 [3 m3]; TATA Projects Ltd-25 | 29,601 |
| 4S-SS-2nd.F.55 |  | Shuttering of Staircase upto Flight 1 | 1d | 2027-06-02 | 2027-06-03 | 4S-SS-2nd.F.40 | Carpenter [20 h]; Helper [10 h]; Physical Progress [1440 h]; Formwork [10 Sq m]; TATA Projects Ltd-25 | 11,651.6 |
| 4S-SS-2nd.F.65 |  | Reinforcement of Staircase upto Flight 1 | 1d | 2027-06-03 | 2027-06-04 | 4S-SS-2nd.F.55 | Barbender [70 h]; Helper [40 h]; Physical Progress [1440 h]; Reinforcement Steel [1 MT1]; TATA Projects Ltd-25 | 96,512.5 |
| 4S-SS-2nd.F.75 |  | MEP coordination upto Flight 1 | 1d | 2027-06-04 | 2027-06-05 | 4S-SS-2nd.F.65 | Physical Progress [1440 h]; TATA Projects Ltd-25 |  |
| 4S-SS-2nd.F.85 |  | Casting of Staircase upto Flight 1 | 1d | 2027-06-05 | 2027-06-07 | 4S-SS-2nd.F.75 | Mason; Helper; Physical Progress [1440 h]; Concrete M40 [3 m3]; TATA Projects Ltd-25 | 29,601 |
| 4S-SS-2nd.F.100 |  | Reinforcement of wall upto Flight 2 | 2d | 2027-06-07 | 2027-06-09 | 4S-SS-2nd.F.85 | Barbender [70 h]; Helper [40 h]; Physical Progress [2890 h]; Reinforcement Steel [1 MT1]; TATA Projects Ltd-25 | 96,512.5 |
| 4S-SS-2nd.F.115 |  | Shuttering of wall upto Flight 2 | 2d | 2027-06-09 | 2027-06-11 | 4S-SS-2nd.F.100 | Carpenter [20 h]; Helper [10 h]; Physical Progress [2890 h]; Formwork [10 Sq m]; TATA Projects Ltd-25 | 11,651.6 |
| 4S-SS-2nd.F.125 |  | Casting of wall upto Flight 2 | 1d | 2027-06-11 | 2027-06-12 | 4S-SS-2nd.F.115 | Mason; Helper; Physical Progress [1440 h]; Concrete M40 [3 m3]; TATA Projects Ltd-25 | 29,601 |
| 4S-SS-2nd.F.140 |  | Shuttering of Staircase upto Flight 2 | 1d | 2027-06-12 | 2027-06-14 | 4S-SS-2nd.F.125 | Carpenter [20 h]; Helper [10 h]; Physical Progress [1440 h]; Formwork [10 Sq m]; TATA Projects Ltd-25 | 11,651.6 |
| 4S-SS-2nd.F.150 |  | Reinforcement of Staircase upto Flight 2 | 1d | 2027-06-14 | 2027-06-15 | 4S-SS-2nd.F.140 | Barbender [70 h]; Helper [40 h]; Physical Progress [1440 h]; Reinforcement Steel [1 MT1]; TATA Projects Ltd-25 | 96,512.5 |

| ID | WBS | Activity | Duration | Start | Finish | Predecessors | Resources | Cost |
| --- | --- | --- | --- | --- | --- | --- | --- | --- |
|  | 4 | **Staircase - 2** |  | 2027-05-27 | 2027-06-15 |  |  |  |
| 4S-SS-2nd.F.20 |  | Reinforcement of wall upto Flight 1 | 2d | 2027-05-27 | 2027-05-29 | 4S-SS-Serv.F.190 | Barbender [70 h]; Helper [40 h]; Physical Progress [2890 h]; Reinforcement Steel [1 MT1]; TATA Projects Ltd-25 | 96,512.5 |
| 4S-SS-2nd.F.30 |  | Shuttering of wall upto Flight 1 | 2d | 2027-05-29 | 2027-06-01 | 4S-SS-2nd.F.20 | Carpenter [20 h]; Helper [10 h]; Physical Progress [2890 h]; Formwork [10 Sq m]; TATA Projects Ltd-25 | 11,651.6 |
| 4S-SS-2nd.F.45 |  | Casting of wall upto Flight 1 | 1d | 2027-06-01 | 2027-06-02 | 4S-SS-2nd.F.30 | Mason; Helper; Physical Progress [1440 h]; Concrete M40 [3 m3]; TATA Projects Ltd-25 | 29,601 |
| 4S-SS-2nd.F.60 |  | Shuttering of Staircase upto Flight 1 | 1d | 2027-06-02 | 2027-06-03 | 4S-SS-2nd.F.45 | Carpenter [20 h]; Helper [10 h]; Physical Progress [1440 h]; Formwork [10 Sq m]; TATA Projects Ltd-25 | 11,651.6 |
| 4S-SS-2nd.F.70 |  | Reinforcement of Staircase upto Flight 1 | 1d | 2027-06-03 | 2027-06-04 | 4S-SS-2nd.F.60 | Barbender [70 h]; Helper [40 h]; Physical Progress [1440 h]; Reinforcement Steel [1 MT1]; TATA Projects Ltd-25 | 96,512.5 |
| 4S-SS-2nd.F.80 |  | MEP coordination upto Flight 1 | 1d | 2027-06-04 | 2027-06-05 | 4S-SS-2nd.F.70 | Physical Progress [1440 h]; TATA Projects Ltd-25 |  |
| 4S-SS-2nd.F.90 |  | Casting of Staircase upto Flight 1 | 1d | 2027-06-05 | 2027-06-07 | 4S-SS-2nd.F.80 | Mason; Helper; Physical Progress [1440 h]; Concrete M40 [3 m3]; TATA Projects Ltd-25 | 29,601 |
| 4S-SS-2nd.F.105 |  | Reinforcement of wall upto Flight 2 | 2d | 2027-06-07 | 2027-06-09 | 4S-SS-2nd.F.90 | Barbender [70 h]; Helper [40 h]; Physical Progress [2890 h]; Reinforcement Steel [1 MT1]; TATA Projects Ltd-25 | 96,512.5 |
| 4S-SS-2nd.F.120 |  | Shuttering of wall upto Flight 2 | 2d | 2027-06-09 | 2027-06-11 | 4S-SS-2nd.F.105 | Carpenter [20 h]; Helper [10 h]; Physical Progress [2890 h]; Formwork [10 Sq m]; TATA Projects Ltd-25 | 11,651.6 |
| 4S-SS-2nd.F.130 |  | Casting of wall upto Flight 2 | 1d | 2027-06-11 | 2027-06-12 | 4S-SS-2nd.F.120 | Mason; Helper; Physical Progress [1440 h]; Concrete M40 [3 m3]; TATA Projects Ltd-25 | 29,601 |
| 4S-SS-2nd.F.145 |  | Shuttering of Staircase upto Flight 2 | 1d | 2027-06-12 | 2027-06-14 | 4S-SS-2nd.F.130 | Carpenter [20 h]; Helper [10 h]; Physical Progress [1440 h]; Formwork [10 Sq m]; TATA Projects Ltd-25 | 11,651.6 |
| 4S-SS-2nd.F.155 |  | Reinforcement of Staircase upto Flight 2 | 1d | 2027-06-14 | 2027-06-15 | 4S-SS-2nd.F.145 | Barbender [70 h]; Helper [40 h]; Physical Progress [1440 h]; Reinforcement Steel [1 MT1]; TATA Projects Ltd-25 | 96,512.5 |
|  | 2 | **Slab** |  | 2027-06-08 | 2027-07-03 |  |  |  |
| 4S-SS-2nd.F.110 |  | Shuttering | 4d | 2027-06-08 | 2027-06-12 | 4S-SS-2nd.F.95 | Carpenter [1050 h]; Helper [530 h]; Physical Progress [5780 h]; Formwork [629 Sq m]; TATA Projects Ltd-25 | 732,885.64 |
| 4S-SS-2nd.F.135 |  | Reinforcement Bottom Net with chairs | 2d | 2027-06-12 | 2027-06-15 | 4S-SS-2nd.F.110 | Barbender [340 h]; Helper [170 h]; Physical Progress [4340 h]; Reinforcement Steel [5 MT1]; TATA Projects Ltd-25 | 482,562.5 |
| 4S-SS-2nd.F.160 |  | Laying of PT Tendon | 2d | 2027-06-15 | 2027-06-17 | E-ShopD-Civil-PT-4S-25, 4S-SS-2nd.F.135 | Physical Progress [5780 h]; TATA Projects Ltd-25 |  |
| 4S-SS-2nd.F.175 |  | Reinforcement Top Net | 2d | 2027-06-17 | 2027-06-19 | 4S-SS-2nd.F.160 | Barbender [340 h]; Helper [170 h]; Physical Progress [2890 h]; Reinforcement Steel [5 MT1]; TATA Projects Ltd-25 | 482,562.5 |
| 4S-SS-2nd.F.185 |  | MEP Coordination | 1d | 2027-06-19 | 2027-06-21 | 4S-SS-2nd.F.155, 4S-SS-2nd.F.135, 4S-SS-2nd.F.150, 4S-SS-2nd.F.175 | Physical Progress [1440 h]; TATA Projects Ltd-25 |  |
| 4S-SS-2nd.F.190 |  | Concrete of Slab | 1d | 2027-06-21 | 2027-06-22 | 4S-SS-2nd.F.185 | Mason [50 h]; Helper [50 h]; Physical Progress [1440 h]; Concrete M40 [157 m3]; TATA Projects Ltd-25 | 1,549,119 |
| 4S-SS-2nd.F.205 |  | Wait for Strength Gain | 6d | 2027-06-22 | 2027-06-29 | 4S-SS-2nd.F.190 | Physical Progress [8680 h]; TATA Projects Ltd-25 |  |
| 4S-SS-2nd.F.250 |  | PT Work | 4d | 2027-06-29 | 2027-07-03 | 4S-SS-Serv.F.250, 4S-SS-2nd.F.205 | PT [2 MT1]; Helper [100 h]; PT Fitter [100 h]; Physical Progress [7230 h]; TATA Projects Ltd-25 | 380,000 |
|  | 2 | **Pour 2** |  | 2027-05-19 | 2027-06-25 |  |  |  |
|  | 1 | **Column, Core Wall, Shear Wall** |  | 2027-05-19 | 2027-05-31 |  |  |  |
| 4S-SS-2nd.F.165 |  | Reinforcement | 4d | 2027-05-19 | 2027-05-24 | 4S-SS-Serv.F.320 | Barbender [1870 h]; Helper [940 h]; Physical Progress [5780 h]; Reinforcement Steel [28 MT1]; TATA Projects Ltd-25 | 2,702,350 |
| 4S-SS-2nd.F.195 |  | LPS | 1d | 2027-05-24 | 2027-05-25 | 4S-SS-2nd.F.165 | LPS [41809 INR]; Physical Progress [1440 h]; TATA Projects Ltd-25 | 41,809 |
| 4S-SS-2nd.F.210 |  | Shuttering | 4d | 2027-05-25 | 2027-05-29 | 4S-SS-2nd.F.165, 4S-SS-2nd.F.195 | Carpenter [1010 h]; Helper [510 h]; Physical Progress [5780 h]; Formwork [601 Sq m]; TATA Projects Ltd-25 | 700,261.16 |
| 4S-SS-2nd.F.235 |  | Concrete | 1d | 2027-05-29 | 2027-05-31 | 4S-SS-2nd.F.210 | Mason [50 h]; Helper [50 h]; Physical Progress [1440 h]; Concrete M40 [150 m3]; TATA Projects Ltd-25 | 1,480,050 |

| ID | WBS | Activity | Duration | Start | Finish | Predecessors | Resources | Cost |
| --- | --- | --- | --- | --- | --- | --- | --- | --- |
|  | 3 | **Staircase** |  | 2027-05-19 | 2027-06-07 |  |  |  |
| 4S-SS-2nd.F.170 |  | Reinforcement of wall upto Flight 1 | 2d | 2027-05-19 | 2027-05-21 | 4S-SS-Serv.F.320 | Barbender [70 h]; Helper [40 h]; Physical Progress [2890 h]; Reinforcement Steel [1 MT1]; TATA Projects Ltd-25 | 96,512.5 |
| 4S-SS-2nd.F.180 |  | Shuttering of wall upto Flight 1 | 2d | 2027-05-21 | 2027-05-24 | 4S-SS-2nd.F.170 | Carpenter [20 h]; Helper [10 h]; Physical Progress [2890 h]; Formwork [10 Sq m]; TATA Projects Ltd-25 | 11,651.6 |
| 4S-SS-2nd.F.200 |  | Casting of wall upto Flight 1 | 1d | 2027-05-24 | 2027-05-25 | 4S-SS-2nd.F.180 | Mason; Helper; Physical Progress [1440 h]; Concrete M40 [3 m3]; TATA Projects Ltd-25 | 29,601 |
| 4S-SS-2nd.F.215 |  | Shuttering of Staircase upto Flight 1 | 1d | 2027-05-25 | 2027-05-26 | 4S-SS-2nd.F.200 | Carpenter [20 h]; Helper [10 h]; Physical Progress [1440 h]; Formwork [10 Sq m]; TATA Projects Ltd-25 | 11,651.6 |
| 4S-SS-2nd.F.220 |  | Reinforcement of Staircase upto Flight 1 | 1d | 2027-05-26 | 2027-05-27 | 4S-SS-2nd.F.215 | Barbender [70 h]; Helper [40 h]; Physical Progress [1440 h]; Reinforcement Steel [1 MT1]; TATA Projects Ltd-25 | 96,512.5 |
| 4S-SS-2nd.F.225 |  | MEP coordination upto Flight 1 | 1d | 2027-05-27 | 2027-05-28 | 4S-SS-2nd.F.220 | Physical Progress [1440 h]; TATA Projects Ltd-25 |  |
| 4S-SS-2nd.F.230 |  | Casting of Staircase upto Flight 1 | 1d | 2027-05-28 | 2027-05-29 | 4S-SS-2nd.F.225 | Mason; Helper; Physical Progress [1440 h]; Concrete M40 [3 m3]; TATA Projects Ltd-25 | 29,601 |
| 4S-SS-2nd.F.240 |  | Reinforcement of wall upto Flight 2 | 2d | 2027-05-29 | 2027-06-01 | 4S-SS-2nd.F.230 | Barbender [70 h]; Helper [40 h]; Physical Progress [2890 h]; Reinforcement Steel [1 MT1]; TATA Projects Ltd-25 | 96,512.5 |
| 4S-SS-2nd.F.255 |  | Shuttering of wall upto Flight 2 | 2d | 2027-06-01 | 2027-06-03 | 4S-SS-2nd.F.240 | Carpenter [20 h]; Helper [10 h]; Physical Progress [2890 h]; Formwork [10 Sq m]; TATA Projects Ltd-25 | 11,651.6 |
| 4S-SS-2nd.F.260 |  | Casting of wall upto Flight 2 | 1d | 2027-06-03 | 2027-06-04 | 4S-SS-2nd.F.255 | Mason; Helper; Physical Progress [1440 h]; Concrete M40 [3 m3]; TATA Projects Ltd-25 | 29,601 |
| 4S-SS-2nd.F.270 |  | Shuttering of Staircase upto Flight 2 | 1d | 2027-06-04 | 2027-06-05 | 4S-SS-2nd.F.260 | Carpenter [20 h]; Helper [10 h]; Physical Progress [1440 h]; Formwork [10 Sq m]; TATA Projects Ltd-25 | 11,651.6 |
| 4S-SS-2nd.F.275 |  | Reinforcement of Staircase upto Flight 2 | 1d | 2027-06-05 | 2027-06-07 | 4S-SS-2nd.F.270 | Barbender [70 h]; Helper [40 h]; Physical Progress [1440 h]; Reinforcement Steel [1 MT1]; TATA Projects Ltd-25 | 96,512.5 |
|  | 2 | **Slab** |  | 2027-05-31 | 2027-06-25 |  |  |  |
| 4S-SS-2nd.F.245 |  | Shuttering | 4d | 2027-05-31 | 2027-06-04 | 4S-SS-2nd.F.235 | Carpenter [980 h]; Helper [490 h]; Physical Progress [5780 h]; Formwork [586 Sq m]; TATA Projects Ltd-25 | 682,783.76 |
| 4S-SS-2nd.F.265 |  | Reinforcement Bottom Net with chairs | 2d | 2027-06-04 | 2027-06-07 | 4S-SS-2nd.F.245 | Barbender [340 h]; Helper [170 h]; Physical Progress [4340 h]; Reinforcement Steel [5 MT1]; TATA Projects Ltd-25 | 482,562.5 |
| 4S-SS-2nd.F.280 |  | Laying of PT Tendon | 2d | 2027-06-07 | 2027-06-09 | 4S-SS-2nd.F.265 | Physical Progress [5780 h]; TATA Projects Ltd-25 |  |
| 4S-SS-2nd.F.300 |  | Reinforcement Top Net | 2d | 2027-06-09 | 2027-06-11 | 4S-SS-2nd.F.280 | Barbender [340 h]; Helper [170 h]; Physical Progress [2890 h]; Reinforcement Steel [5 MT1]; TATA Projects Ltd-25 | 482,562.5 |
| 4S-SS-2nd.F.305 |  | MEP Coordination | 1d | 2027-06-11 | 2027-06-12 | 4S-SS-2nd.F.265, 4S-SS-2nd.F.275, 4S-SS-2nd.F.300 | Physical Progress [1440 h]; TATA Projects Ltd-25 |  |
| 4S-SS-2nd.F.320 |  | Concrete of Slab | 1d | 2027-06-12 | 2027-06-14 | 4S-SS-2nd.F.305 | Mason [50 h]; Helper [50 h]; Physical Progress [1440 h]; Concrete M40 [147 m3]; TATA Projects Ltd-25 | 1,450,449 |
| 4S-SS-2nd.F.335 |  | Wait for Strength Gain | 6d | 2027-06-14 | 2027-06-21 | 4S-SS-2nd.F.320 | Physical Progress [8680 h]; TATA Projects Ltd-25 |  |
| 4S-SS-2nd.F.375 |  | PT Work | 4d | 2027-06-21 | 2027-06-25 | 4S-SS-Serv.F.375, 4S-SS-2nd.F.335 | PT [2 MT1]; Helper [100 h]; PT Fitter [100 h]; Physical Progress [7230 h]; TATA Projects Ltd-25 | 380,000 |
|  | 3 | **Pour 3** |  | 2027-05-08 | 2027-06-15 |  |  |  |
|  | 1 | **Column, Core Wall, Shear Wall** |  | 2027-05-08 | 2027-05-20 |  |  |  |
| 4S-SS-2nd.F.285 |  | Reinforcement | 4d | 2027-05-08 | 2027-05-13 | 4S-SS-Serv.F.415 | Barbender [1670 h]; Helper [840 h]; Physical Progress [5780 h]; Reinforcement Steel [25 MT1]; TATA Projects Ltd-25 | 2,412,812.5 |
| 4S-SS-2nd.F.310 |  | LPS | 1d | 2027-05-13 | 2027-05-14 | 4S-SS-2nd.F.285 | LPS [41809 INR]; Physical Progress [1440 h]; TATA Projects Ltd-25 | 41,809 |
| 4S-SS-2nd.F.325 |  | Shuttering | 4d | 2027-05-14 | 2027-05-19 | 4S-SS-2nd.F.285, 4S-SS-2nd.F.310 | Carpenter [890 h]; Helper [450 h]; Physical Progress [5780 h]; Formwork [530 Sq m]; TATA Projects Ltd-25 | 617,534.8 |
| 4S-SS-2nd.F.355 |  | Concrete | 1d | 2027-05-19 | 2027-05-20 | 4S-SS-2nd.F.325 | Mason [50 h]; Helper [50 h]; Physical Progress [1440 h]; Concrete M40 [133 m3]; TATA Projects Ltd-25 | 1,312,311 |

| ID | WBS | Activity | Duration | Start | Finish | Predecessors | Resources | Cost |
| --- | --- | --- | --- | --- | --- | --- | --- | --- |
|  | 3 | **Staircase** |  | 2027-05-08 | 2027-05-27 |  |  |  |
| 4S-SS-2nd.F.290 |  | Reinforcement of wall upto Flight 1 | 2d | 2027-05-08 | 2027-05-11 | 4S-SS-Serv.F.415 | Barbender [70 h]; Helper [40 h]; Physical Progress [2890 h]; Reinforcement Steel [1 MT1]; TATA Projects Ltd-25 | 96,512.5 |
| 4S-SS-2nd.F.295 |  | Shuttering of wall upto Flight 1 | 2d | 2027-05-11 | 2027-05-13 | 4S-SS-2nd.F.290 | Carpenter [20 h]; Helper [10 h]; Physical Progress [2890 h]; Formwork [10 Sq m]; TATA Projects Ltd-25 | 11,651.6 |
| 4S-SS-2nd.F.315 |  | Casting of wall upto Flight 1 | 1d | 2027-05-13 | 2027-05-14 | 4S-SS-2nd.F.295 | Mason; Helper; Physical Progress [1440 h]; Concrete M40 [3 m3]; TATA Projects Ltd-25 | 29,601 |
| 4S-SS-2nd.F.330 |  | Shuttering of Staircase upto Flight 1 | 1d | 2027-05-14 | 2027-05-15 | 4S-SS-2nd.F.315 | Carpenter [20 h]; Helper [10 h]; Physical Progress [1440 h]; Formwork [10 Sq m]; TATA Projects Ltd-25 | 11,651.6 |
| 4S-SS-2nd.F.340 |  | Reinforcement of Staircase upto Flight 1 | 1d | 2027-05-15 | 2027-05-17 | 4S-SS-2nd.F.330 | Barbender [70 h]; Helper [40 h]; Physical Progress [1440 h]; Reinforcement Steel [1 MT1]; TATA Projects Ltd-25 | 96,512.5 |
| 4S-SS-2nd.F.345 |  | MEP coordination upto Flight 1 | 1d | 2027-05-17 | 2027-05-18 | 4S-SS-2nd.F.340 | Physical Progress [1440 h]; TATA Projects Ltd-25 |  |
| 4S-SS-2nd.F.350 |  | Casting of Staircase upto Flight 1 | 1d | 2027-05-18 | 2027-05-19 | 4S-SS-2nd.F.345 | Mason; Helper; Physical Progress [1440 h]; Concrete M40 [3 m3]; TATA Projects Ltd-25 | 29,601 |
| 4S-SS-2nd.F.360 |  | Reinforcement of wall upto Flight 2 | 2d | 2027-05-19 | 2027-05-21 | 4S-SS-2nd.F.350 | Barbender [70 h]; Helper [40 h]; Physical Progress [2890 h]; Reinforcement Steel [1 MT1]; TATA Projects Ltd-25 | 96,512.5 |
| 4S-SS-2nd.F.370 |  | Shuttering of wall upto Flight 2 | 2d | 2027-05-21 | 2027-05-24 | 4S-SS-2nd.F.360 | Carpenter [20 h]; Helper [10 h]; Physical Progress [2890 h]; Formwork [10 Sq m]; TATA Projects Ltd-25 | 11,651.6 |
| 4S-SS-2nd.F.380 |  | Casting of wall upto Flight 2 | 1d | 2027-05-24 | 2027-05-25 | 4S-SS-2nd.F.370 | Mason; Helper; Physical Progress [1440 h]; Concrete M40 [3 m3]; TATA Projects Ltd-25 | 29,601 |
| 4S-SS-2nd.F.390 |  | Shuttering of Staircase upto Flight 2 | 1d | 2027-05-25 | 2027-05-26 | 4S-SS-2nd.F.380 | Carpenter [20 h]; Helper [10 h]; Physical Progress [1440 h]; Formwork [10 Sq m]; TATA Projects Ltd-25 | 11,651.6 |
| 4S-SS-2nd.F.395 |  | Reinforcement of Staircase upto Flight 2 | 1d | 2027-05-26 | 2027-05-27 | 4S-SS-2nd.F.390 | Barbender [70 h]; Helper [40 h]; Physical Progress [1440 h]; Reinforcement Steel [1 MT1]; TATA Projects Ltd-25 | 96,512.5 |
|  | 2 | **Slab** |  | 2027-05-20 | 2027-06-15 |  |  |  |
| 4S-SS-2nd.F.365 |  | Shuttering | 4d | 2027-05-20 | 2027-05-25 | E-GFC-ST-4S-255, 4S-SS-2nd.F.355 | Carpenter [870 h]; Helper [440 h]; Physical Progress [5780 h]; Formwork [517 Sq m]; TATA Projects Ltd-25 | 602,387.72 |
| 4S-SS-2nd.F.385 |  | Reinforcement Bottom Net with chairs | 2d | 2027-05-25 | 2027-05-27 | 4S-SS-2nd.F.365 | Barbender [270 h]; Helper [140 h]; Physical Progress [4340 h]; Reinforcement Steel [4 MT1]; TATA Projects Ltd-25 | 386,050 |
| 4S-SS-2nd.F.400 |  | Laying of PT Tendon | 2d | 2027-05-27 | 2027-05-29 | 4S-SS-2nd.F.385 | Physical Progress [5780 h]; TATA Projects Ltd-25 |  |
| 4S-SS-2nd.F.405 |  | Reinforcement Top Net | 2d | 2027-05-29 | 2027-06-01 | 4S-SS-2nd.F.400 | Barbender [270 h]; Helper [140 h]; Physical Progress [2890 h]; Reinforcement Steel [4 MT1]; TATA Projects Ltd-25 | 386,050 |
| 4S-SS-2nd.F.410 |  | MEP Coordination | 1d | 2027-06-01 | 2027-06-02 | 4S-SS-2nd.F.385, 4S-SS-2nd.F.395, 4S-SS-2nd.F.405 | Physical Progress [1440 h]; TATA Projects Ltd-25 |  |
| 4S-SS-2nd.F.415 |  | Concrete of Slab | 1d | 2027-06-02 | 2027-06-03 | 4S-SS-2nd.F.410 | Mason [50 h]; Helper [50 h]; Physical Progress [1440 h]; Concrete M40 [129 m3]; TATA Projects Ltd-25 | 1,272,843 |
| 4S-SS-2nd.F.420 |  | Wait for Strength Gain | 6d | 2027-06-03 | 2027-06-10 | 4S-SS-2nd.F.415 | Physical Progress [8680 h]; TATA Projects Ltd-25 |  |
| 4S-SS-2nd.F.425 |  | PT Work | 4d | 2027-06-10 | 2027-06-15 | 4S-SS-Serv.F.425, 4S-SS-2nd.F.420 | PT [2 MT1]; Helper [100 h]; PT Fitter [100 h]; Physical Progress [7230 h]; TATA Projects Ltd-25 | 380,000 |
|  | 10 | **Third Floor** |  | 2027-06-03 | 2027-08-11 |  |  |  |
|  | 1 | **Pour 1** |  | 2027-06-22 | 2027-08-11 |  |  |  |
|  | 1 | **Column, Core Wall, Shear Wall** |  | 2027-06-22 | 2027-07-03 |  |  |  |
| 4S-SS-3rd.F.10 |  | Reinforcement | 4d | 2027-06-22 | 2027-06-26 | 4S-SS-2nd.F.190 | Barbender [2000 h]; Helper [1000 h]; Physical Progress [5780 h]; Reinforcement Steel [30 MT1]; TATA Projects Ltd-25 | 2,895,375 |
| 4S-SS-3rd.F.35 |  | LPS | 1d | 2027-06-26 | 2027-06-28 | 4S-SS-3rd.F.10 | LPS [41809 INR]; Physical Progress [1440 h]; TATA Projects Ltd-25 | 41,809 |
| 4S-SS-3rd.F.50 |  | Shuttering | 4d | 2027-06-28 | 2027-07-02 | 4S-SS-3rd.F.10, 4S-SS-3rd.F.35 | Carpenter [1080 h]; Helper [540 h]; Physical Progress [5780 h]; Formwork [645 Sq m]; TATA Projects Ltd-25 | 751,528.2 |
| 4S-SS-3rd.F.95 |  | Concrete | 1d | 2027-07-02 | 2027-07-03 | 4S-SS-3rd.F.50 | Mason [50 h]; Helper [50 h]; Physical Progress [1440 h]; Concrete M40 [161 m3]; TATA Projects Ltd-25 | 1,588,587 |

| ID | WBS | Activity | Duration | Start | Finish | Predecessors | Resources | Cost |
| --- | --- | --- | --- | --- | --- | --- | --- | --- |
|  | 3 | **Staircase - 1** |  | 2027-06-22 | 2027-07-14 |  |  |  |
| 4S-SS-3rd.F.15 |  | Reinforcement of wall upto Flight 1 | 2d | 2027-06-22 | 2027-06-24 | 4S-SS-2nd.F.190 | Barbender [70 h]; Helper [40 h]; Physical Progress [2890 h]; Reinforcement Steel [1 MT1]; TATA Projects Ltd-25 | 96,512.5 |
| 4S-SS-3rd.F.25 |  | Shuttering of wall upto Flight 1 | 2d | 2027-06-24 | 2027-06-26 | 4S-SS-3rd.F.15 | Carpenter [20 h]; Helper [10 h]; Physical Progress [2890 h]; Formwork [10 Sq m]; TATA Projects Ltd-25 | 11,651.6 |
| 4S-SS-3rd.F.40 |  | Casting of wall upto Flight 1 | 1d | 2027-06-26 | 2027-06-28 | 4S-SS-3rd.F.25 | Mason; Helper; Physical Progress [1440 h]; Concrete M40 [3 m3]; TATA Projects Ltd-25 | 29,601 |
| 4S-SS-3rd.F.55 |  | Shuttering of Staircase upto Flight 1 | 1d | 2027-06-28 | 2027-06-29 | 4S-SS-3rd.F.40 | Carpenter [20 h]; Helper [10 h]; Physical Progress [1440 h]; Formwork [10 Sq m]; TATA Projects Ltd-25 | 11,651.6 |
| 4S-SS-3rd.F.65 |  | Reinforcement of Staircase upto Flight 1 | 1d | 2027-06-29 | 2027-06-30 | 4S-SS-3rd.F.55 | Barbender [70 h]; Helper [40 h]; Physical Progress [1440 h]; Reinforcement Steel [1 MT1]; TATA Projects Ltd-25 | 96,512.5 |
| 4S-SS-3rd.F.75 |  | MEP coordination upto Flight 1 | 1d | 2027-06-30 | 2027-07-01 | 4S-SS-3rd.F.65 | Physical Progress [1440 h]; TATA Projects Ltd-25 |  |
| 4S-SS-3rd.F.85 |  | Casting of Staircase upto Flight 1 | 1d | 2027-07-01 | 2027-07-02 | 4S-SS-3rd.F.75 | Mason; Helper; Physical Progress [1440 h]; Concrete M40 [3 m3]; TATA Projects Ltd-25 | 29,601 |
| 4S-SS-3rd.F.100 |  | Reinforcement of wall upto Flight 2 | 2d | 2027-07-02 | 2027-07-05 | 4S-SS-3rd.F.85 | Barbender [70 h]; Helper [40 h]; Physical Progress [2890 h]; Reinforcement Steel [1 MT1]; TATA Projects Ltd-25 | 96,512.5 |
| 4S-SS-3rd.F.115 |  | Shuttering of wall upto Flight 2 | 2d | 2027-07-05 | 2027-07-09 | 4S-SS-3rd.F.100 | Carpenter [20 h]; Helper [10 h]; Physical Progress [2890 h]; Formwork [10 Sq m]; TATA Projects Ltd-25 | 11,651.6 |
| 4S-SS-3rd.F.125 |  | Casting of wall upto Flight 2 | 1d | 2027-07-09 | 2027-07-10 | 4S-SS-3rd.F.115 | Mason; Helper; Physical Progress [1440 h]; Concrete M40 [3 m3]; TATA Projects Ltd-25 | 29,601 |
| 4S-SS-3rd.F.140 |  | Shuttering of Staircase upto Flight 2 | 1d | 2027-07-10 | 2027-07-12 | 4S-SS-3rd.F.125 | Carpenter [20 h]; Helper [10 h]; Physical Progress [1440 h]; Formwork [10 Sq m]; TATA Projects Ltd-25 | 11,651.6 |
| 4S-SS-3rd.F.150 |  | Reinforcement of Staircase upto Flight 2 | 1d | 2027-07-12 | 2027-07-14 | 4S-SS-3rd.F.140 | Barbender [70 h]; Helper [40 h]; Physical Progress [1440 h]; Reinforcement Steel [1 MT1]; TATA Projects Ltd-25 | 96,512.5 |
|  | 4 | **Staircase - 2** |  | 2027-06-22 | 2027-07-14 |  |  |  |
| 4S-SS-3rd.F.20 |  | Reinforcement of wall upto Flight 1 | 2d | 2027-06-22 | 2027-06-24 | 4S-SS-2nd.F.190 | Barbender [70 h]; Helper [40 h]; Physical Progress [2890 h]; Reinforcement Steel [1 MT1]; TATA Projects Ltd-25 | 96,512.5 |
| 4S-SS-3rd.F.30 |  | Shuttering of wall upto Flight 1 | 2d | 2027-06-24 | 2027-06-26 | 4S-SS-3rd.F.20 | Carpenter [20 h]; Helper [10 h]; Physical Progress [2890 h]; Formwork [10 Sq m]; TATA Projects Ltd-25 | 11,651.6 |
| 4S-SS-3rd.F.45 |  | Casting of wall upto Flight 1 | 1d | 2027-06-26 | 2027-06-28 | 4S-SS-3rd.F.30 | Mason; Helper; Physical Progress [1440 h]; Concrete M40 [3 m3]; TATA Projects Ltd-25 | 29,601 |
| 4S-SS-3rd.F.60 |  | Shuttering of Staircase upto Flight 1 | 1d | 2027-06-28 | 2027-06-29 | 4S-SS-3rd.F.45 | Carpenter [20 h]; Helper [10 h]; Physical Progress [1440 h]; Formwork [10 Sq m]; TATA Projects Ltd-25 | 11,651.6 |
| 4S-SS-3rd.F.70 |  | Reinforcement of Staircase upto Flight 1 | 1d | 2027-06-29 | 2027-06-30 | 4S-SS-3rd.F.60 | Barbender [70 h]; Helper [40 h]; Physical Progress [1440 h]; Reinforcement Steel [1 MT1]; TATA Projects Ltd-25 | 96,512.5 |
| 4S-SS-3rd.F.80 |  | MEP coordination upto Flight 1 | 1d | 2027-06-30 | 2027-07-01 | 4S-SS-3rd.F.70 | Physical Progress [1440 h]; TATA Projects Ltd-25 |  |
| 4S-SS-3rd.F.90 |  | Casting of Staircase upto Flight 1 | 1d | 2027-07-01 | 2027-07-02 | 4S-SS-3rd.F.80 | Mason; Helper; Physical Progress [1440 h]; Concrete M40 [3 m3]; TATA Projects Ltd-25 | 29,601 |
| 4S-SS-3rd.F.105 |  | Reinforcement of wall upto Flight 2 | 2d | 2027-07-02 | 2027-07-05 | 4S-SS-3rd.F.90 | Barbender [70 h]; Helper [40 h]; Physical Progress [2890 h]; Reinforcement Steel [1 MT1]; TATA Projects Ltd-25 | 96,512.5 |
| 4S-SS-3rd.F.120 |  | Shuttering of wall upto Flight 2 | 2d | 2027-07-05 | 2027-07-09 | 4S-SS-3rd.F.105 | Carpenter [20 h]; Helper [10 h]; Physical Progress [2890 h]; Formwork [10 Sq m]; TATA Projects Ltd-25 | 11,651.6 |
| 4S-SS-3rd.F.130 |  | Casting of wall upto Flight 2 | 1d | 2027-07-09 | 2027-07-10 | 4S-SS-3rd.F.120 | Mason; Helper; Physical Progress [1440 h]; Concrete M40 [3 m3]; TATA Projects Ltd-25 | 29,601 |
| 4S-SS-3rd.F.145 |  | Shuttering of Staircase upto Flight 2 | 1d | 2027-07-10 | 2027-07-12 | 4S-SS-3rd.F.130 | Carpenter [20 h]; Helper [10 h]; Physical Progress [1440 h]; Formwork [10 Sq m]; TATA Projects Ltd-25 | 11,651.6 |
| 4S-SS-3rd.F.155 |  | Reinforcement of Staircase upto Flight 2 | 1d | 2027-07-12 | 2027-07-14 | 4S-SS-3rd.F.145 | Barbender [70 h]; Helper [40 h]; Physical Progress [1440 h]; Reinforcement Steel [1 MT1]; TATA Projects Ltd-25 | 96,512.5 |

| ID | WBS | Activity | Duration | Start | Finish | Predecessors | Resources | Cost |
| --- | --- | --- | --- | --- | --- | --- | --- | --- |
|  | 2 | **Slab** |  | 2027-07-03 | 2027-08-11 |  |  |  |
| 4S-SS-3rd.F.110 |  | Shuttering | 4d | 2027-07-03 | 2027-07-10 | 4S-SS-3rd.F.95 | Carpenter [1050 h]; Helper [530 h]; Physical Progress [5780 h]; Formwork [630 Sq m]; TATA Projects Ltd-25 | 734,050.8 |
| 4S-SS-3rd.F.135 |  | Reinforcement Bottom Net with chairs | 2d | 2027-07-10 | 2027-07-14 | 4S-SS-3rd.F.110 | Barbender [340 h]; Helper [170 h]; Physical Progress [4340 h]; Reinforcement Steel [5 MT1]; TATA Projects Ltd-25 | 482,562.5 |
| 4S-SS-3rd.F.160 |  | Laying of PT Tendon | 2d | 2027-07-14 | 2027-07-17 | 4S-SS-3rd.F.135 | Physical Progress [5780 h]; TATA Projects Ltd-25 |  |
| 4S-SS-3rd.F.175 |  | Reinforcement Top Net | 2d | 2027-07-17 | 2027-07-21 | 4S-SS-3rd.F.160 | Barbender [340 h]; Helper [170 h]; Physical Progress [2890 h]; Reinforcement Steel [5 MT1]; TATA Projects Ltd-25 | 482,562.5 |
| 4S-SS-3rd.F.185 |  | MEP Coordination | 1d | 2027-07-21 | 2027-07-23 | 4S-SS-3rd.F.155, 4S-SS-3rd.F.135, 4S-SS-3rd.F.150, 4S-SS-3rd.F.175 | Physical Progress [1440 h]; TATA Projects Ltd-25 |  |
| 4S-SS-3rd.F.190 |  | Concrete of Slab | 1d | 2027-07-23 | 2027-07-24 | 4S-SS-3rd.F.185 | Mason [50 h]; Helper [50 h]; Physical Progress [1440 h]; Concrete M40 [158 m3]; TATA Projects Ltd-25 | 1,558,986 |
| 4S-SS-3rd.F.205 |  | Wait for Strength Gain | 6d | 2027-07-24 | 2027-08-04 | 4S-SS-3rd.F.190 | Physical Progress [8680 h]; TATA Projects Ltd-25 |  |
| 4S-SS-3rd.F.250 |  | PT Work | 4d | 2027-08-04 | 2027-08-11 | 4S-SS-2nd.F.250, 4S-SS-3rd.F.205 | PT [2 MT1]; Helper [100 h]; PT Fitter [100 h]; Physical Progress [7230 h]; TATA Projects Ltd-25 | 380,000 |
|  | 2 | **Pour 2** |  | 2027-06-14 | 2027-07-30 |  |  |  |
|  | 1 | **Column, Core Wall, Shear Wall** |  | 2027-06-14 | 2027-06-25 |  |  |  |
| 4S-SS-3rd.F.165 |  | Reinforcement | 4d | 2027-06-14 | 2027-06-18 | 4S-SS-2nd.F.320 | Barbender [1870 h]; Helper [940 h]; Physical Progress [5780 h]; Reinforcement Steel [28 MT1]; TATA Projects Ltd-25 | 2,702,350 |
| 4S-SS-3rd.F.195 |  | LPS | 1d | 2027-06-18 | 2027-06-19 | 4S-SS-3rd.F.165 | LPS [41809 INR]; Physical Progress [1440 h]; TATA Projects Ltd-25 | 41,809 |
| 4S-SS-3rd.F.210 |  | Shuttering | 4d | 2027-06-19 | 2027-06-24 | 4S-SS-3rd.F.165, 4S-SS-3rd.F.195 | Carpenter [1010 h]; Helper [510 h]; Physical Progress [5780 h]; Formwork [601 Sq m]; TATA Projects Ltd-25 | 700,261.16 |
| 4S-SS-3rd.F.235 |  | Concrete | 1d | 2027-06-24 | 2027-06-25 | 4S-SS-3rd.F.210 | Mason [50 h]; Helper [50 h]; Physical Progress [1440 h]; Concrete M40 [150 m3]; TATA Projects Ltd-25 | 1,480,050 |
|  | 3 | **Staircase** |  | 2027-06-14 | 2027-07-02 |  |  |  |
| 4S-SS-3rd.F.170 |  | Reinforcement of wall upto Flight 1 | 2d | 2027-06-14 | 2027-06-16 | 4S-SS-2nd.F.320 | Barbender [70 h]; Helper [40 h]; Physical Progress [2890 h]; Reinforcement Steel [1 MT1]; TATA Projects Ltd-25 | 96,512.5 |
| 4S-SS-3rd.F.180 |  | Shuttering of wall upto Flight 1 | 2d | 2027-06-16 | 2027-06-18 | 4S-SS-3rd.F.170 | Carpenter [20 h]; Helper [10 h]; Physical Progress [2890 h]; Formwork [10 Sq m]; TATA Projects Ltd-25 | 11,651.6 |
| 4S-SS-3rd.F.200 |  | Casting of wall upto Flight 1 | 1d | 2027-06-18 | 2027-06-19 | 4S-SS-3rd.F.180 | Mason; Helper; Physical Progress [1440 h]; Concrete M40 [3 m3]; TATA Projects Ltd-25 | 29,601 |
| 4S-SS-3rd.F.215 |  | Shuttering of Staircase upto Flight 1 | 1d | 2027-06-19 | 2027-06-21 | 4S-SS-3rd.F.200 | Carpenter [20 h]; Helper [10 h]; Physical Progress [1440 h]; Formwork [10 Sq m]; TATA Projects Ltd-25 | 11,651.6 |
| 4S-SS-3rd.F.220 |  | Reinforcement of Staircase upto Flight 1 | 1d | 2027-06-21 | 2027-06-22 | 4S-SS-3rd.F.215 | Barbender [70 h]; Helper [40 h]; Physical Progress [1440 h]; Reinforcement Steel [1 MT1]; TATA Projects Ltd-25 | 96,512.5 |
| 4S-SS-3rd.F.225 |  | MEP coordination upto Flight 1 | 1d | 2027-06-22 | 2027-06-23 | 4S-SS-3rd.F.220 | Physical Progress [1440 h]; TATA Projects Ltd-25 |  |
| 4S-SS-3rd.F.230 |  | Casting of Staircase upto Flight 1 | 1d | 2027-06-23 | 2027-06-24 | 4S-SS-3rd.F.225 | Mason; Helper; Physical Progress [1440 h]; Concrete M40 [3 m3]; TATA Projects Ltd-25 | 29,601 |
| 4S-SS-3rd.F.240 |  | Reinforcement of wall upto Flight 2 | 2d | 2027-06-24 | 2027-06-26 | 4S-SS-3rd.F.230 | Barbender [70 h]; Helper [40 h]; Physical Progress [2890 h]; Reinforcement Steel [1 MT1]; TATA Projects Ltd-25 | 96,512.5 |
| 4S-SS-3rd.F.255 |  | Shuttering of wall upto Flight 2 | 2d | 2027-06-26 | 2027-06-29 | 4S-SS-3rd.F.240 | Carpenter [20 h]; Helper [10 h]; Physical Progress [2890 h]; Formwork [10 Sq m]; TATA Projects Ltd-25 | 11,651.6 |
| 4S-SS-3rd.F.260 |  | Casting of wall upto Flight 2 | 1d | 2027-06-29 | 2027-06-30 | 4S-SS-3rd.F.255 | Mason; Helper; Physical Progress [1440 h]; Concrete M40 [3 m3]; TATA Projects Ltd-25 | 29,601 |
| 4S-SS-3rd.F.270 |  | Shuttering of Staircase upto Flight 2 | 1d | 2027-06-30 | 2027-07-01 | 4S-SS-3rd.F.260 | Carpenter [20 h]; Helper [10 h]; Physical Progress [1440 h]; Formwork [10 Sq m]; TATA Projects Ltd-25 | 11,651.6 |
| 4S-SS-3rd.F.275 |  | Reinforcement of Staircase upto Flight 2 | 1d | 2027-07-01 | 2027-07-02 | 4S-SS-3rd.F.270 | Barbender [70 h]; Helper [40 h]; Physical Progress [1440 h]; Reinforcement Steel [1 MT1]; TATA Projects Ltd-25 | 96,512.5 |

| ID | WBS | Activity | Duration | Start | Finish | Predecessors | Resources | Cost |
| --- | --- | --- | --- | --- | --- | --- | --- | --- |
|  | 2 | **Slab** |  | 2027-06-25 | 2027-07-30 |  |  |  |
| 4S-SS-3rd.F.245 |  | Shuttering | 4d | 2027-06-25 | 2027-06-30 | 4S-SS-3rd.F.235 | Carpenter [980 h]; Helper [490 h]; Physical Progress [5780 h]; Formwork [588 Sq m]; TATA Projects Ltd-25 | 685,114.08 |
| 4S-SS-3rd.F.265 |  | Reinforcement Bottom Net with chairs | 2d | 2027-06-30 | 2027-07-02 | 4S-SS-3rd.F.245 | Barbender [340 h]; Helper [170 h]; Physical Progress [4340 h]; Reinforcement Steel [5 MT1]; TATA Projects Ltd-25 | 482,562.5 |
| 4S-SS-3rd.F.280 |  | Laying of PT Tendon | 2d | 2027-07-02 | 2027-07-05 | 4S-SS-3rd.F.265 | Physical Progress [5780 h]; TATA Projects Ltd-25 |  |
| 4S-SS-3rd.F.300 |  | Reinforcement Top Net | 2d | 2027-07-05 | 2027-07-09 | 4S-SS-3rd.F.280 | Barbender [340 h]; Helper [170 h]; Physical Progress [2890 h]; Reinforcement Steel [5 MT1]; TATA Projects Ltd-25 | 482,562.5 |
| 4S-SS-3rd.F.305 |  | MEP Coordination | 1d | 2027-07-09 | 2027-07-10 | 4S-SS-3rd.F.265, 4S-SS-3rd.F.275, 4S-SS-3rd.F.300 | Physical Progress [1440 h]; TATA Projects Ltd-25 |  |
| 4S-SS-3rd.F.320 |  | Concrete of Slab | 1d | 2027-07-10 | 2027-07-12 | 4S-SS-3rd.F.305 | Mason [50 h]; Helper [50 h]; Physical Progress [1440 h]; Concrete M40 [147 m3]; TATA Projects Ltd-25 | 1,450,449 |
| 4S-SS-3rd.F.335 |  | Wait for Strength Gain | 6d | 2027-07-12 | 2027-07-23 | 4S-SS-3rd.F.320 | Physical Progress [8680 h]; TATA Projects Ltd-25 |  |
| 4S-SS-3rd.F.375 |  | PT Work | 4d | 2027-07-23 | 2027-07-30 | 4S-SS-2nd.F.375, 4S-SS-3rd.F.335 | PT [2 MT1]; Helper [100 h]; PT Fitter [100 h]; Physical Progress [7230 h]; TATA Projects Ltd-25 | 380,000 |
|  | 3 | **Pour 3** |  | 2027-06-03 | 2027-07-14 |  |  |  |
|  | 1 | **Column, Core Wall, Shear Wall** |  | 2027-06-03 | 2027-06-15 |  |  |  |
| 4S-SS-3rd.F.285 |  | Reinforcement | 4d | 2027-06-03 | 2027-06-08 | 4S-SS-2nd.F.415 | Barbender [1670 h]; Helper [840 h]; Physical Progress [5780 h]; Reinforcement Steel [25 MT1]; TATA Projects Ltd-25 | 2,412,812.5 |
| 4S-SS-3rd.F.310 |  | LPS | 1d | 2027-06-08 | 2027-06-09 | 4S-SS-3rd.F.285 | LPS [41809 INR]; Physical Progress [1440 h]; TATA Projects Ltd-25 | 41,809 |
| 4S-SS-3rd.F.325 |  | Shuttering | 4d | 2027-06-09 | 2027-06-14 | 4S-SS-3rd.F.285, 4S-SS-3rd.F.310 | Carpenter [890 h]; Helper [450 h]; Physical Progress [5780 h]; Formwork [530 Sq m]; TATA Projects Ltd-25 | 617,534.8 |
| 4S-SS-3rd.F.355 |  | Concrete | 1d | 2027-06-14 | 2027-06-15 | 4S-SS-3rd.F.325 | Mason [50 h]; Helper [50 h]; Physical Progress [1440 h]; Concrete M40 [133 m3]; TATA Projects Ltd-25 | 1,312,311 |
|  | 3 | **Staircase** |  | 2027-06-03 | 2027-06-22 |  |  |  |
| 4S-SS-3rd.F.290 |  | Reinforcement of wall upto Flight 1 | 2d | 2027-06-03 | 2027-06-05 | 4S-SS-2nd.F.415 | Barbender [70 h]; Helper [40 h]; Physical Progress [2890 h]; Reinforcement Steel [1 MT1]; TATA Projects Ltd-25 | 96,512.5 |
| 4S-SS-3rd.F.295 |  | Shuttering of wall upto Flight 1 | 2d | 2027-06-05 | 2027-06-08 | 4S-SS-3rd.F.290 | Carpenter [20 h]; Helper [10 h]; Physical Progress [2890 h]; Formwork [10 Sq m]; TATA Projects Ltd-25 | 11,651.6 |
| 4S-SS-3rd.F.315 |  | Casting of wall upto Flight 1 | 1d | 2027-06-08 | 2027-06-09 | 4S-SS-3rd.F.295 | Mason; Helper; Physical Progress [1440 h]; Concrete M40 [3 m3]; TATA Projects Ltd-25 | 29,601 |
| 4S-SS-3rd.F.330 |  | Shuttering of Staircase upto Flight 1 | 1d | 2027-06-09 | 2027-06-10 | 4S-SS-3rd.F.315 | Carpenter [20 h]; Helper [10 h]; Physical Progress [1440 h]; Formwork [10 Sq m]; TATA Projects Ltd-25 | 11,651.6 |
| 4S-SS-3rd.F.340 |  | Reinforcement of Staircase upto Flight 1 | 1d | 2027-06-10 | 2027-06-11 | 4S-SS-3rd.F.330 | Barbender [70 h]; Helper [40 h]; Physical Progress [1440 h]; Reinforcement Steel [1 MT1]; TATA Projects Ltd-25 | 96,512.5 |
| 4S-SS-3rd.F.345 |  | MEP coordination upto Flight 1 | 1d | 2027-06-11 | 2027-06-12 | 4S-SS-3rd.F.340 | Physical Progress [1440 h]; TATA Projects Ltd-25 |  |
| 4S-SS-3rd.F.350 |  | Casting of Staircase upto Flight 1 | 1d | 2027-06-12 | 2027-06-14 | 4S-SS-3rd.F.345 | Mason; Helper; Physical Progress [1440 h]; Concrete M40 [3 m3]; TATA Projects Ltd-25 | 29,601 |
| 4S-SS-3rd.F.360 |  | Reinforcement of wall upto Flight 2 | 2d | 2027-06-14 | 2027-06-16 | 4S-SS-3rd.F.350 | Barbender [70 h]; Helper [40 h]; Physical Progress [2890 h]; Reinforcement Steel [1 MT1]; TATA Projects Ltd-25 | 96,512.5 |
| 4S-SS-3rd.F.370 |  | Shuttering of wall upto Flight 2 | 2d | 2027-06-16 | 2027-06-18 | 4S-SS-3rd.F.360 | Carpenter [20 h]; Helper [10 h]; Physical Progress [2890 h]; Formwork [10 Sq m]; TATA Projects Ltd-25 | 11,651.6 |
| 4S-SS-3rd.F.380 |  | Casting of wall upto Flight 2 | 1d | 2027-06-18 | 2027-06-19 | 4S-SS-3rd.F.370 | Mason; Helper; Physical Progress [1440 h]; Concrete M40 [3 m3]; TATA Projects Ltd-25 | 29,601 |
| 4S-SS-3rd.F.390 |  | Shuttering of Staircase upto Flight 2 | 1d | 2027-06-19 | 2027-06-21 | 4S-SS-3rd.F.380 | Carpenter [20 h]; Helper [10 h]; Physical Progress [1440 h]; Formwork [10 Sq m]; TATA Projects Ltd-25 | 11,651.6 |
| 4S-SS-3rd.F.395 |  | Reinforcement of Staircase upto Flight 2 | 1d | 2027-06-21 | 2027-06-22 | 4S-SS-3rd.F.390 | Barbender [70 h]; Helper [40 h]; Physical Progress [1440 h]; Reinforcement Steel [1 MT1]; TATA Projects Ltd-25 | 96,512.5 |

| ID | WBS | Activity | Duration | Start | Finish | Predecessors | Resources | Cost |
| --- | --- | --- | --- | --- | --- | --- | --- | --- |
|  | 2 | **Slab** |  | 2027-06-15 | 2027-07-14 |  |  |  |
| 4S-SS-3rd.F.365 |  | Shuttering | 4d | 2027-06-15 | 2027-06-19 | E-GFC-ST-4S-260, 4S-SS-3rd.F.355 | Carpenter [870 h]; Helper [440 h]; Physical Progress [5780 h]; Formwork [518 Sq m]; TATA Projects Ltd-25 | 603,552.88 |
| 4S-SS-3rd.F.385 |  | Reinforcement Bottom Net with chairs | 2d | 2027-06-19 | 2027-06-22 | 4S-SS-3rd.F.365 | Barbender [270 h]; Helper [140 h]; Physical Progress [4340 h]; Reinforcement Steel [4 MT1]; TATA Projects Ltd-25 | 386,050 |
| 4S-SS-3rd.F.400 |  | Laying of PT Tendon | 2d | 2027-06-22 | 2027-06-24 | 4S-SS-3rd.F.385 | Physical Progress [5780 h]; TATA Projects Ltd-25 |  |
| 4S-SS-3rd.F.405 |  | Reinforcement Top Net | 2d | 2027-06-24 | 2027-06-26 | 4S-SS-3rd.F.400 | Barbender [270 h]; Helper [140 h]; Physical Progress [2890 h]; Reinforcement Steel [4 MT1]; TATA Projects Ltd-25 | 386,050 |
| 4S-SS-3rd.F.410 |  | MEP Coordination | 1d | 2027-06-26 | 2027-06-28 | 4S-SS-3rd.F.385, 4S-SS-3rd.F.395, 4S-SS-3rd.F.405 | Physical Progress [1440 h]; TATA Projects Ltd-25 |  |
| 4S-SS-3rd.F.415 |  | Concrete of Slab | 1d | 2027-06-28 | 2027-06-29 | 4S-SS-3rd.F.410 | Mason [50 h]; Helper [50 h]; Physical Progress [1440 h]; Concrete M40 [130 m3]; TATA Projects Ltd-25 | 1,282,710 |
| 4S-SS-3rd.F.420 |  | Wait for Strength Gain | 6d | 2027-06-29 | 2027-07-07 | 4S-SS-3rd.F.415 | Physical Progress [8680 h]; TATA Projects Ltd-25 |  |
| 4S-SS-3rd.F.425 |  | PT Work | 4d | 2027-07-07 | 2027-07-14 | 4S-SS-2nd.F.425, 4S-SS-3rd.F.420 | PT [2 MT1]; Helper [100 h]; PT Fitter [100 h]; Physical Progress [7230 h]; TATA Projects Ltd-25 | 380,000 |
|  | 11 | **Fourth Floor** |  | 2027-06-29 | 2027-09-16 |  |  |  |
|  | 1 | **Pour 1** |  | 2027-07-24 | 2027-09-16 |  |  |  |
|  | 1 | **Column, Core Wall, Shear Wall** |  | 2027-07-24 | 2027-08-11 |  |  |  |
| 4S-SS-4th.F.10 |  | Reinforcement | 4d | 2027-07-24 | 2027-07-31 | 4S-SS-3rd.F.190 | Barbender [2000 h]; Helper [1000 h]; Physical Progress [5780 h]; Reinforcement Steel [30 MT1]; TATA Projects Ltd-25 | 2,895,375 |
| 4S-SS-4th.F.35 |  | LPS | 1d | 2027-07-31 | 2027-08-02 | 4S-SS-4th.F.10 | LPS [41809 INR]; Physical Progress [1440 h]; TATA Projects Ltd-25 | 41,809 |
| 4S-SS-4th.F.50 |  | Shuttering | 4d | 2027-08-02 | 2027-08-09 | 4S-SS-4th.F.10, 4S-SS-4th.F.35 | Carpenter [1080 h]; Helper [540 h]; Physical Progress [5780 h]; Formwork [645 Sq m]; TATA Projects Ltd-25 | 751,528.2 |
| 4S-SS-4th.F.95 |  | Concrete | 1d | 2027-08-09 | 2027-08-11 | 4S-SS-4th.F.50 | Mason [50 h]; Helper [50 h]; Physical Progress [1440 h]; Concrete M40 [161 m3]; TATA Projects Ltd-25 | 1,588,587 |
|  | 3 | **Staircase - 1** |  | 2027-07-24 | 2027-08-21 |  |  |  |
| 4S-SS-4th.F.15 |  | Reinforcement of wall upto Flight 1 | 2d | 2027-07-24 | 2027-07-28 | 4S-SS-3rd.F.190 | Barbender [70 h]; Helper [40 h]; Physical Progress [2890 h]; Reinforcement Steel [1 MT1]; TATA Projects Ltd-25 | 96,512.5 |
| 4S-SS-4th.F.25 |  | Shuttering of wall upto Flight 1 | 2d | 2027-07-28 | 2027-07-31 | 4S-SS-4th.F.15 | Carpenter [20 h]; Helper [10 h]; Physical Progress [2890 h]; Formwork [10 Sq m]; TATA Projects Ltd-25 | 11,651.6 |
| 4S-SS-4th.F.40 |  | Casting of wall upto Flight 1 | 1d | 2027-07-31 | 2027-08-02 | 4S-SS-4th.F.25 | Mason; Helper; Physical Progress [1440 h]; Concrete M40 [3 m3]; TATA Projects Ltd-25 | 29,601 |
| 4S-SS-4th.F.55 |  | Shuttering of Staircase upto Flight 1 | 1d | 2027-08-02 | 2027-08-04 | 4S-SS-4th.F.40 | Carpenter [20 h]; Helper [10 h]; Physical Progress [1440 h]; Formwork [10 Sq m]; TATA Projects Ltd-25 | 11,651.6 |
| 4S-SS-4th.F.65 |  | Reinforcement of Staircase upto Flight 1 | 1d | 2027-08-04 | 2027-08-06 | 4S-SS-4th.F.55 | Barbender [70 h]; Helper [40 h]; Physical Progress [1440 h]; Reinforcement Steel [1 MT1]; TATA Projects Ltd-25 | 96,512.5 |
| 4S-SS-4th.F.75 |  | MEP coordination upto Flight 1 | 1d | 2027-08-06 | 2027-08-07 | 4S-SS-4th.F.65 | Physical Progress [1440 h]; TATA Projects Ltd-25 |  |
| 4S-SS-4th.F.85 |  | Casting of Staircase upto Flight 1 | 1d | 2027-08-07 | 2027-08-09 | 4S-SS-4th.F.75 | Mason; Helper; Physical Progress [1440 h]; Concrete M40 [3 m3]; TATA Projects Ltd-25 | 29,601 |
| 4S-SS-4th.F.100 |  | Reinforcement of wall upto Flight 2 | 2d | 2027-08-09 | 2027-08-13 | 4S-SS-4th.F.85 | Barbender [70 h]; Helper [40 h]; Physical Progress [2890 h]; Reinforcement Steel [1 MT1]; TATA Projects Ltd-25 | 96,512.5 |
| 4S-SS-4th.F.115 |  | Shuttering of wall upto Flight 2 | 2d | 2027-08-13 | 2027-08-16 | 4S-SS-4th.F.100 | Carpenter [20 h]; Helper [10 h]; Physical Progress [2890 h]; Formwork [10 Sq m]; TATA Projects Ltd-25 | 11,651.6 |
| 4S-SS-4th.F.125 |  | Casting of wall upto Flight 2 | 1d | 2027-08-16 | 2027-08-18 | 4S-SS-4th.F.115 | Mason; Helper; Physical Progress [1440 h]; Concrete M40 [3 m3]; TATA Projects Ltd-25 | 29,601 |
| 4S-SS-4th.F.140 |  | Shuttering of Staircase upto Flight 2 | 1d | 2027-08-18 | 2027-08-20 | 4S-SS-4th.F.125 | Carpenter [20 h]; Helper [10 h]; Physical Progress [1440 h]; Formwork [10 Sq m]; TATA Projects Ltd-25 | 11,651.6 |
| 4S-SS-4th.F.150 |  | Reinforcement of Staircase upto Flight 2 | 1d | 2027-08-20 | 2027-08-21 | 4S-SS-4th.F.140 | Barbender [70 h]; Helper [40 h]; Physical Progress [1440 h]; Reinforcement Steel [1 MT1]; TATA Projects Ltd-25 | 96,512.5 |

| ID | WBS | Activity | Duration | Start | Finish | Predecessors | Resources | Cost |
| --- | --- | --- | --- | --- | --- | --- | --- | --- |
|  | 4 | **Staircase - 2** |  | 2027-07-24 | 2027-08-21 |  |  |  |
| 4S-SS-4th.F.20 |  | Reinforcement of wall upto Flight 1 | 2d | 2027-07-24 | 2027-07-28 | 4S-SS-3rd.F.190 | Barbender [70 h]; Helper [40 h]; Physical Progress [2890 h]; Reinforcement Steel [1 MT1]; TATA Projects Ltd-25 | 96,512.5 |
| 4S-SS-4th.F.30 |  | Shuttering of wall upto Flight 1 | 2d | 2027-07-28 | 2027-07-31 | 4S-SS-4th.F.20 | Carpenter [20 h]; Helper [10 h]; Physical Progress [2890 h]; Formwork [10 Sq m]; TATA Projects Ltd-25 | 11,651.6 |
| 4S-SS-4th.F.45 |  | Casting of wall upto Flight 1 | 1d | 2027-07-31 | 2027-08-02 | 4S-SS-4th.F.30 | Mason; Helper; Physical Progress [1440 h]; Concrete M40 [3 m3]; TATA Projects Ltd-25 | 29,601 |
| 4S-SS-4th.F.60 |  | Shuttering of Staircase upto Flight 1 | 1d | 2027-08-02 | 2027-08-04 | 4S-SS-4th.F.45 | Carpenter [20 h]; Helper [10 h]; Physical Progress [1440 h]; Formwork [10 Sq m]; TATA Projects Ltd-25 | 11,651.6 |
| 4S-SS-4th.F.70 |  | Reinforcement of Staircase upto Flight 1 | 1d | 2027-08-04 | 2027-08-06 | 4S-SS-4th.F.60 | Barbender [70 h]; Helper [40 h]; Physical Progress [1440 h]; Reinforcement Steel [1 MT1]; TATA Projects Ltd-25 | 96,512.5 |
| 4S-SS-4th.F.80 |  | MEP coordination upto Flight 1 | 1d | 2027-08-06 | 2027-08-07 | 4S-SS-4th.F.70 | Physical Progress [1440 h]; TATA Projects Ltd-25 |  |
| 4S-SS-4th.F.90 |  | Casting of Staircase upto Flight 1 | 1d | 2027-08-07 | 2027-08-09 | 4S-SS-4th.F.80 | Mason; Helper; Physical Progress [1440 h]; Concrete M40 [3 m3]; TATA Projects Ltd-25 | 29,601 |
| 4S-SS-4th.F.105 |  | Reinforcement of wall upto Flight 2 | 2d | 2027-08-09 | 2027-08-13 | 4S-SS-4th.F.90 | Barbender [70 h]; Helper [40 h]; Physical Progress [2890 h]; Reinforcement Steel [1 MT1]; TATA Projects Ltd-25 | 96,512.5 |
| 4S-SS-4th.F.120 |  | Shuttering of wall upto Flight 2 | 2d | 2027-08-13 | 2027-08-16 | 4S-SS-4th.F.105 | Carpenter [20 h]; Helper [10 h]; Physical Progress [2890 h]; Formwork [10 Sq m]; TATA Projects Ltd-25 | 11,651.6 |
| 4S-SS-4th.F.130 |  | Casting of wall upto Flight 2 | 1d | 2027-08-16 | 2027-08-18 | 4S-SS-4th.F.120 | Mason; Helper; Physical Progress [1440 h]; Concrete M40 [3 m3]; TATA Projects Ltd-25 | 29,601 |
| 4S-SS-4th.F.145 |  | Shuttering of Staircase upto Flight 2 | 1d | 2027-08-18 | 2027-08-20 | 4S-SS-4th.F.130 | Carpenter [20 h]; Helper [10 h]; Physical Progress [1440 h]; Formwork [10 Sq m]; TATA Projects Ltd-25 | 11,651.6 |
| 4S-SS-4th.F.155 |  | Reinforcement of Staircase upto Flight 2 | 1d | 2027-08-20 | 2027-08-21 | 4S-SS-4th.F.145 | Barbender [70 h]; Helper [40 h]; Physical Progress [1440 h]; Reinforcement Steel [1 MT1]; TATA Projects Ltd-25 | 96,512.5 |
|  | 2 | **Slab** |  | 2027-08-11 | 2027-09-16 |  |  |  |
| 4S-SS-4th.F.110 |  | Shuttering | 4d | 2027-08-11 | 2027-08-18 | 4S-SS-4th.F.95 | Carpenter [1050 h]; Helper [530 h]; Physical Progress [5780 h]; Formwork [630 Sq m]; TATA Projects Ltd-25 | 734,050.8 |
| 4S-SS-4th.F.135 |  | Reinforcement Bottom Net with chairs | 2d | 2027-08-18 | 2027-08-21 | 4S-SS-4th.F.110 | Barbender [340 h]; Helper [170 h]; Physical Progress [4340 h]; Reinforcement Steel [5 MT1]; TATA Projects Ltd-25 | 482,562.5 |
| 4S-SS-4th.F.160 |  | Laying of PT Tendon | 2d | 2027-08-21 | 2027-08-25 | 4S-SS-4th.F.135 | Physical Progress [5780 h]; TATA Projects Ltd-25 |  |
| 4S-SS-4th.F.175 |  | Reinforcement Top Net | 2d | 2027-08-25 | 2027-08-28 | 4S-SS-4th.F.160 | Barbender [340 h]; Helper [170 h]; Physical Progress [2890 h]; Reinforcement Steel [5 MT1]; TATA Projects Ltd-25 | 482,562.5 |
| 4S-SS-4th.F.185 |  | MEP Coordination | 1d | 2027-08-28 | 2027-08-30 | 4S-SS-4th.F.155, 4S-SS-4th.F.135, 4S-SS-4th.F.150, 4S-SS-4th.F.175 | Physical Progress [1440 h]; TATA Projects Ltd-25 |  |
| 4S-SS-4th.F.190 |  | Concrete of Slab | 1d | 2027-08-30 | 2027-09-02 | 4S-SS-4th.F.185 | Mason [50 h]; Helper [50 h]; Physical Progress [1440 h]; Concrete M40 [158 m3]; TATA Projects Ltd-25 | 1,558,986 |
| 4S-SS-4th.F.205 |  | Wait for Strength Gain | 6d | 2027-09-02 | 2027-09-10 | 4S-SS-4th.F.190 | Physical Progress [8680 h]; TATA Projects Ltd-25 |  |
| 4S-SS-4th.F.250 |  | PT Work | 4d | 2027-09-10 | 2027-09-16 | 4S-SS-3rd.F.250, 4S-SS-4th.F.205 | PT [2 MT1]; Helper [100 h]; PT Fitter [100 h]; Physical Progress [7230 h]; TATA Projects Ltd-25 | 380,000 |
|  | 2 | **Pour 2** |  | 2027-07-12 | 2027-09-06 |  |  |  |
|  | 1 | **Column, Core Wall, Shear Wall** |  | 2027-07-12 | 2027-07-30 |  |  |  |
| 4S-SS-4th.F.165 |  | Reinforcement | 4d | 2027-07-12 | 2027-07-19 | 4S-SS-3rd.F.320 | Barbender [1870 h]; Helper [940 h]; Physical Progress [5780 h]; Reinforcement Steel [28 MT1]; TATA Projects Ltd-25 | 2,702,350 |
| 4S-SS-4th.F.195 |  | LPS | 1d | 2027-07-19 | 2027-07-21 | 4S-SS-4th.F.165 | LPS [41809 INR]; Physical Progress [1440 h]; TATA Projects Ltd-25 | 41,809 |
| 4S-SS-4th.F.210 |  | Shuttering | 4d | 2027-07-21 | 2027-07-28 | 4S-SS-4th.F.165, 4S-SS-4th.F.195 | Carpenter [1010 h]; Helper [510 h]; Physical Progress [5780 h]; Formwork [601 Sq m]; TATA Projects Ltd-25 | 700,261.16 |
| 4S-SS-4th.F.235 |  | Concrete | 1d | 2027-07-28 | 2027-07-30 | 4S-SS-4th.F.210 | Mason [50 h]; Helper [50 h]; Physical Progress [1440 h]; Concrete M40 [150 m3]; TATA Projects Ltd-25 | 1,480,050 |

| ID | WBS | Activity | Duration | Start | Finish | Predecessors | Resources | Cost |
| --- | --- | --- | --- | --- | --- | --- | --- | --- |
|  | 3 | **Staircase** |  | 2027-07-12 | 2027-08-09 |  |  |  |
| 4S-SS-4th.F.170 |  | Reinforcement of wall upto Flight 1 | 2d | 2027-07-12 | 2027-07-16 | 4S-SS-3rd.F.320 | Barbender [70 h]; Helper [40 h]; Physical Progress [2890 h]; Reinforcement Steel [1 MT1]; TATA Projects Ltd-25 | 96,512.5 |
| 4S-SS-4th.F.180 |  | Shuttering of wall upto Flight 1 | 2d | 2027-07-16 | 2027-07-19 | 4S-SS-4th.F.170 | Carpenter [20 h]; Helper [10 h]; Physical Progress [2890 h]; Formwork [10 Sq m]; TATA Projects Ltd-25 | 11,651.6 |
| 4S-SS-4th.F.200 |  | Casting of wall upto Flight 1 | 1d | 2027-07-19 | 2027-07-21 | 4S-SS-4th.F.180 | Mason; Helper; Physical Progress [1440 h]; Concrete M40 [3 m3]; TATA Projects Ltd-25 | 29,601 |
| 4S-SS-4th.F.215 |  | Shuttering of Staircase upto Flight 1 | 1d | 2027-07-21 | 2027-07-23 | 4S-SS-4th.F.200 | Carpenter [20 h]; Helper [10 h]; Physical Progress [1440 h]; Formwork [10 Sq m]; TATA Projects Ltd-25 | 11,651.6 |
| 4S-SS-4th.F.220 |  | Reinforcement of Staircase upto Flight 1 | 1d | 2027-07-23 | 2027-07-24 | 4S-SS-4th.F.215 | Barbender [70 h]; Helper [40 h]; Physical Progress [1440 h]; Reinforcement Steel [1 MT1]; TATA Projects Ltd-25 | 96,512.5 |
| 4S-SS-4th.F.225 |  | MEP coordination upto Flight 1 | 1d | 2027-07-24 | 2027-07-26 | 4S-SS-4th.F.220 | Physical Progress [1440 h]; TATA Projects Ltd-25 |  |
| 4S-SS-4th.F.230 |  | Casting of Staircase upto Flight 1 | 1d | 2027-07-26 | 2027-07-28 | 4S-SS-4th.F.225 | Mason; Helper; Physical Progress [1440 h]; Concrete M40 [3 m3]; TATA Projects Ltd-25 | 29,601 |
| 4S-SS-4th.F.240 |  | Reinforcement of wall upto Flight 2 | 2d | 2027-07-28 | 2027-07-31 | 4S-SS-4th.F.230 | Barbender [70 h]; Helper [40 h]; Physical Progress [2890 h]; Reinforcement Steel [1 MT1]; TATA Projects Ltd-25 | 96,512.5 |
| 4S-SS-4th.F.255 |  | Shuttering of wall upto Flight 2 | 2d | 2027-07-31 | 2027-08-04 | 4S-SS-4th.F.240 | Carpenter [20 h]; Helper [10 h]; Physical Progress [2890 h]; Formwork [10 Sq m]; TATA Projects Ltd-25 | 11,651.6 |
| 4S-SS-4th.F.260 |  | Casting of wall upto Flight 2 | 1d | 2027-08-04 | 2027-08-06 | 4S-SS-4th.F.255 | Mason; Helper; Physical Progress [1440 h]; Concrete M40 [3 m3]; TATA Projects Ltd-25 | 29,601 |
| 4S-SS-4th.F.270 |  | Shuttering of Staircase upto Flight 2 | 1d | 2027-08-06 | 2027-08-07 | 4S-SS-4th.F.260 | Carpenter [20 h]; Helper [10 h]; Physical Progress [1440 h]; Formwork [10 Sq m]; TATA Projects Ltd-25 | 11,651.6 |
| 4S-SS-4th.F.275 |  | Reinforcement of Staircase upto Flight 2 | 1d | 2027-08-07 | 2027-08-09 | 4S-SS-4th.F.270 | Barbender [70 h]; Helper [40 h]; Physical Progress [1440 h]; Reinforcement Steel [1 MT1]; TATA Projects Ltd-25 | 96,512.5 |
|  | 2 | **Slab** |  | 2027-07-30 | 2027-09-06 |  |  |  |
| 4S-SS-4th.F.245 |  | Shuttering | 4d | 2027-07-30 | 2027-08-06 | 4S-SS-4th.F.235 | Carpenter [980 h]; Helper [490 h]; Physical Progress [5780 h]; Formwork [588 Sq m]; TATA Projects Ltd-25 | 685,114.08 |
| 4S-SS-4th.F.265 |  | Reinforcement Bottom Net with chairs | 2d | 2027-08-06 | 2027-08-09 | 4S-SS-4th.F.245 | Barbender [340 h]; Helper [170 h]; Physical Progress [4340 h]; Reinforcement Steel [5 MT1]; TATA Projects Ltd-25 | 482,562.5 |
| 4S-SS-4th.F.280 |  | Laying of PT Tendon | 2d | 2027-08-09 | 2027-08-13 | 4S-SS-4th.F.265 | Physical Progress [5780 h]; TATA Projects Ltd-25 |  |
| 4S-SS-4th.F.300 |  | Reinforcement Top Net | 2d | 2027-08-13 | 2027-08-16 | 4S-SS-4th.F.280 | Barbender [340 h]; Helper [170 h]; Physical Progress [2890 h]; Reinforcement Steel [5 MT1]; TATA Projects Ltd-25 | 482,562.5 |
| 4S-SS-4th.F.305 |  | MEP Coordination | 1d | 2027-08-16 | 2027-08-18 | 4S-SS-4th.F.265, 4S-SS-4th.F.275, 4S-SS-4th.F.300 | Physical Progress [1440 h]; TATA Projects Ltd-25 |  |
| 4S-SS-4th.F.320 |  | Concrete of Slab | 1d | 2027-08-18 | 2027-08-20 | 4S-SS-4th.F.305 | Mason [50 h]; Helper [50 h]; Physical Progress [1440 h]; Concrete M40 [147 m3]; TATA Projects Ltd-25 | 1,450,449 |
| 4S-SS-4th.F.335 |  | Wait for Strength Gain | 6d | 2027-08-20 | 2027-08-30 | 4S-SS-4th.F.320 | Physical Progress [8680 h]; TATA Projects Ltd-25 |  |
| 4S-SS-4th.F.375 |  | PT Work | 4d | 2027-08-30 | 2027-09-06 | 4S-SS-3rd.F.375, 4S-SS-4th.F.335 | PT [2 MT1]; Helper [100 h]; PT Fitter [100 h]; Physical Progress [7230 h]; TATA Projects Ltd-25 | 380,000 |
|  | 3 | **Pour 3** |  | 2027-06-29 | 2027-08-21 |  |  |  |
|  | 1 | **Column, Core Wall, Shear Wall** |  | 2027-06-29 | 2027-07-14 |  |  |  |
| 4S-SS-4th.F.285 |  | Reinforcement | 4d | 2027-06-29 | 2027-07-03 | 4S-SS-3rd.F.415 | Barbender [1670 h]; Helper [840 h]; Physical Progress [5780 h]; Reinforcement Steel [25 MT1]; TATA Projects Ltd-25 | 2,412,812.5 |
| 4S-SS-4th.F.310 |  | LPS | 1d | 2027-07-03 | 2027-07-05 | 4S-SS-4th.F.285 | LPS [41809 INR]; Physical Progress [1440 h]; TATA Projects Ltd-25 | 41,809 |
| 4S-SS-4th.F.325 |  | Shuttering | 4d | 2027-07-05 | 2027-07-12 | 4S-SS-4th.F.285, 4S-SS-4th.F.310 | Carpenter [890 h]; Helper [450 h]; Physical Progress [5780 h]; Formwork [530 Sq m]; TATA Projects Ltd-25 | 617,534.8 |
| 4S-SS-4th.F.355 |  | Concrete | 1d | 2027-07-12 | 2027-07-14 | 4S-SS-4th.F.325 | Mason [50 h]; Helper [50 h]; Physical Progress [1440 h]; Concrete M40 [133 m3]; TATA Projects Ltd-25 | 1,312,311 |

| ID | WBS | Activity | Duration | Start | Finish | Predecessors | Resources | Cost |
| --- | --- | --- | --- | --- | --- | --- | --- | --- |
|  | 3 | **Staircase** |  | 2027-06-29 | 2027-07-24 |  |  |  |
| 4S-SS-4th.F.290 |  | Reinforcement of wall upto Flight 1 | 2d | 2027-06-29 | 2027-07-01 | 4S-SS-3rd.F.415 | Barbender [70 h]; Helper [40 h]; Physical Progress [2890 h]; Reinforcement Steel [1 MT1]; TATA Projects Ltd-25 | 96,512.5 |
| 4S-SS-4th.F.295 |  | Shuttering of wall upto Flight 1 | 2d | 2027-07-01 | 2027-07-03 | 4S-SS-4th.F.290 | Carpenter [20 h]; Helper [10 h]; Physical Progress [2890 h]; Formwork [10 Sq m]; TATA Projects Ltd-25 | 11,651.6 |
| 4S-SS-4th.F.315 |  | Casting of wall upto Flight 1 | 1d | 2027-07-03 | 2027-07-05 | 4S-SS-4th.F.295 | Mason; Helper; Physical Progress [1440 h]; Concrete M40 [3 m3]; TATA Projects Ltd-25 | 29,601 |
| 4S-SS-4th.F.330 |  | Shuttering of Staircase upto Flight 1 | 1d | 2027-07-05 | 2027-07-07 | 4S-SS-4th.F.315 | Carpenter [20 h]; Helper [10 h]; Physical Progress [1440 h]; Formwork [10 Sq m]; TATA Projects Ltd-25 | 11,651.6 |
| 4S-SS-4th.F.340 |  | Reinforcement of Staircase upto Flight 1 | 1d | 2027-07-07 | 2027-07-09 | 4S-SS-4th.F.330 | Barbender [70 h]; Helper [40 h]; Physical Progress [1440 h]; Reinforcement Steel [1 MT1]; TATA Projects Ltd-25 | 96,512.5 |
| 4S-SS-4th.F.345 |  | MEP coordination upto Flight 1 | 1d | 2027-07-09 | 2027-07-10 | 4S-SS-4th.F.340 | Physical Progress [1440 h]; TATA Projects Ltd-25 |  |
| 4S-SS-4th.F.350 |  | Casting of Staircase upto Flight 1 | 1d | 2027-07-10 | 2027-07-12 | 4S-SS-4th.F.345 | Mason; Helper; Physical Progress [1440 h]; Concrete M40 [3 m3]; TATA Projects Ltd-25 | 29,601 |
| 4S-SS-4th.F.360 |  | Reinforcement of wall upto Flight 2 | 2d | 2027-07-12 | 2027-07-16 | 4S-SS-4th.F.350 | Barbender [70 h]; Helper [40 h]; Physical Progress [2890 h]; Reinforcement Steel [1 MT1]; TATA Projects Ltd-25 | 96,512.5 |
| 4S-SS-4th.F.370 |  | Shuttering of wall upto Flight 2 | 2d | 2027-07-16 | 2027-07-19 | 4S-SS-4th.F.360 | Carpenter [20 h]; Helper [10 h]; Physical Progress [2890 h]; Formwork [10 Sq m]; TATA Projects Ltd-25 | 11,651.6 |
| 4S-SS-4th.F.380 |  | Casting of wall upto Flight 2 | 1d | 2027-07-19 | 2027-07-21 | 4S-SS-4th.F.370 | Mason; Helper; Physical Progress [1440 h]; Concrete M40 [3 m3]; TATA Projects Ltd-25 | 29,601 |
| 4S-SS-4th.F.390 |  | Shuttering of Staircase upto Flight 2 | 1d | 2027-07-21 | 2027-07-23 | 4S-SS-4th.F.380 | Carpenter [20 h]; Helper [10 h]; Physical Progress [1440 h]; Formwork [10 Sq m]; TATA Projects Ltd-25 | 11,651.6 |
| 4S-SS-4th.F.395 |  | Reinforcement of Staircase upto Flight 2 | 1d | 2027-07-23 | 2027-07-24 | 4S-SS-4th.F.390 | Barbender [70 h]; Helper [40 h]; Physical Progress [1440 h]; Reinforcement Steel [1 MT1]; TATA Projects Ltd-25 | 96,512.5 |
|  | 2 | **Slab** |  | 2027-07-14 | 2027-08-21 |  |  |  |
| 4S-SS-4th.F.365 |  | Shuttering | 4d | 2027-07-14 | 2027-07-21 | E-GFC-ST-4S-265, 4S-SS-4th.F.355 | Carpenter [870 h]; Helper [440 h]; Physical Progress [5780 h]; Formwork [518 Sq m]; TATA Projects Ltd-25 | 603,552.88 |
| 4S-SS-4th.F.385 |  | Reinforcement Bottom Net with chairs | 2d | 2027-07-21 | 2027-07-24 | 4S-SS-4th.F.365 | Barbender [270 h]; Helper [140 h]; Physical Progress [4340 h]; Reinforcement Steel [4 MT1]; TATA Projects Ltd-25 | 386,050 |
| 4S-SS-4th.F.400 |  | Laying of PT Tendon | 2d | 2027-07-24 | 2027-07-28 | 4S-SS-4th.F.385 | Physical Progress [5780 h]; TATA Projects Ltd-25 |  |
| 4S-SS-4th.F.405 |  | Reinforcement Top Net | 2d | 2027-07-28 | 2027-07-31 | 4S-SS-4th.F.400 | Barbender [270 h]; Helper [140 h]; Physical Progress [2890 h]; Reinforcement Steel [4 MT1]; TATA Projects Ltd-25 | 386,050 |
| 4S-SS-4th.F.410 |  | MEP Coordination | 1d | 2027-07-31 | 2027-08-02 | 4S-SS-4th.F.385, 4S-SS-4th.F.395, 4S-SS-4th.F.405 | Physical Progress [1440 h]; TATA Projects Ltd-25 |  |
| 4S-SS-4th.F.415 |  | Concrete of Slab | 1d | 2027-08-02 | 2027-08-04 | 4S-SS-4th.F.410 | Mason [50 h]; Helper [50 h]; Physical Progress [1440 h]; Concrete M40 [130 m3]; TATA Projects Ltd-25 | 1,282,710 |
| 4S-SS-4th.F.420 |  | Wait for Strength Gain | 6d | 2027-08-04 | 2027-08-14 | 4S-SS-4th.F.415 | Physical Progress [8680 h]; TATA Projects Ltd-25 |  |
| 4S-SS-4th.F.425 |  | PT Work | 4d | 2027-08-14 | 2027-08-21 | 4S-SS-3rd.F.425, 4S-SS-4th.F.420 | PT [2 MT1]; Helper [100 h]; PT Fitter [100 h]; Physical Progress [7230 h]; TATA Projects Ltd-25 | 380,000 |
|  | 12 | **Fifth Floor** |  | 2027-08-04 | 2027-10-16 |  |  |  |
|  | 1 | **Pour 1** |  | 2027-09-02 | 2027-10-16 |  |  |  |
|  | 1 | **Column, Core Wall, Shear Wall** |  | 2027-09-02 | 2027-09-16 |  |  |  |
| 4S-SS-5th.F.10 |  | Reinforcement | 4d | 2027-09-02 | 2027-09-07 | 4S-SS-4th.F.190 | Barbender [2000 h]; Helper [1000 h]; Physical Progress [5780 h]; Reinforcement Steel [30 MT1]; TATA Projects Ltd-25 | 2,895,375 |
| 4S-SS-5th.F.35 |  | LPS | 1d | 2027-09-07 | 2027-09-09 | 4S-SS-5th.F.10 | LPS [41809 INR]; Physical Progress [1440 h]; TATA Projects Ltd-25 | 41,809 |
| 4S-SS-5th.F.50 |  | Shuttering | 4d | 2027-09-09 | 2027-09-14 | 4S-SS-5th.F.10, 4S-SS-5th.F.35 | Carpenter [1030 h]; Helper [520 h]; Physical Progress [5780 h]; Formwork [618 Sq m]; TATA Projects Ltd-25 | 720,068.88 |
| 4S-SS-5th.F.95 |  | Concrete | 1d | 2027-09-14 | 2027-09-16 | 4S-SS-5th.F.50 | Mason [50 h]; Helper [50 h]; Physical Progress [1440 h]; Concrete M40 [154 m3]; TATA Projects Ltd-25 | 1,519,518 |

| ID | WBS | Activity | Duration | Start | Finish | Predecessors | Resources | Cost |
| --- | --- | --- | --- | --- | --- | --- | --- | --- |
|  | 3 | **Staircase - 1** |  | 2027-09-02 | 2027-09-24 |  |  |  |
| 4S-SS-5th.F.15 |  | Reinforcement of wall upto Flight 1 | 2d | 2027-09-02 | 2027-09-04 | 4S-SS-4th.F.190 | Barbender [70 h]; Helper [40 h]; Physical Progress [2890 h]; Reinforcement Steel [1 MT1]; TATA Projects Ltd-25 | 96,512.5 |
| 4S-SS-5th.F.25 |  | Shuttering of wall upto Flight 1 | 2d | 2027-09-04 | 2027-09-07 | 4S-SS-5th.F.15 | Carpenter [20 h]; Helper [10 h]; Physical Progress [2890 h]; Formwork [10 Sq m]; TATA Projects Ltd-25 | 11,651.6 |
| 4S-SS-5th.F.40 |  | Casting of wall upto Flight 1 | 1d | 2027-09-07 | 2027-09-09 | 4S-SS-5th.F.25 | Mason; Helper; Physical Progress [1440 h]; Concrete M40 [3 m3]; TATA Projects Ltd-25 | 29,601 |
| 4S-SS-5th.F.55 |  | Shuttering of Staircase upto Flight 1 | 1d | 2027-09-09 | 2027-09-10 | 4S-SS-5th.F.40 | Carpenter [20 h]; Helper [10 h]; Physical Progress [1440 h]; Formwork [10 Sq m]; TATA Projects Ltd-25 | 11,651.6 |
| 4S-SS-5th.F.65 |  | Reinforcement of Staircase upto Flight 1 | 1d | 2027-09-10 | 2027-09-11 | 4S-SS-5th.F.55 | Barbender [70 h]; Helper [40 h]; Physical Progress [1440 h]; Reinforcement Steel [1 MT1]; TATA Projects Ltd-25 | 96,512.5 |
| 4S-SS-5th.F.75 |  | MEP coordination upto Flight 1 | 1d | 2027-09-11 | 2027-09-13 | 4S-SS-5th.F.65 | Physical Progress [1440 h]; TATA Projects Ltd-25 |  |
| 4S-SS-5th.F.85 |  | Casting of Staircase upto Flight 1 | 1d | 2027-09-13 | 2027-09-14 | 4S-SS-5th.F.75 | Mason; Helper; Physical Progress [1440 h]; Concrete M40 [3 m3]; TATA Projects Ltd-25 | 29,601 |
| 4S-SS-5th.F.100 |  | Reinforcement of wall upto Flight 2 | 2d | 2027-09-14 | 2027-09-17 | 4S-SS-5th.F.85 | Barbender [70 h]; Helper [40 h]; Physical Progress [2890 h]; Reinforcement Steel [1 MT1]; TATA Projects Ltd-25 | 96,512.5 |
| 4S-SS-5th.F.115 |  | Shuttering of wall upto Flight 2 | 2d | 2027-09-17 | 2027-09-20 | 4S-SS-5th.F.100 | Carpenter [20 h]; Helper [10 h]; Physical Progress [2890 h]; Formwork [10 Sq m]; TATA Projects Ltd-25 | 11,651.6 |
| 4S-SS-5th.F.125 |  | Casting of wall upto Flight 2 | 1d | 2027-09-20 | 2027-09-21 | 4S-SS-5th.F.115 | Mason; Helper; Physical Progress [1440 h]; Concrete M40 [3 m3]; TATA Projects Ltd-25 | 29,601 |
| 4S-SS-5th.F.140 |  | Shuttering of Staircase upto Flight 2 | 1d | 2027-09-21 | 2027-09-23 | 4S-SS-5th.F.125 | Carpenter [20 h]; Helper [10 h]; Physical Progress [1440 h]; Formwork [10 Sq m]; TATA Projects Ltd-25 | 11,651.6 |
| 4S-SS-5th.F.150 |  | Reinforcement of Staircase upto Flight 2 | 1d | 2027-09-23 | 2027-09-24 | 4S-SS-5th.F.140 | Barbender [70 h]; Helper [40 h]; Physical Progress [1440 h]; Reinforcement Steel [1 MT1]; TATA Projects Ltd-25 | 96,512.5 |
|  | 4 | **Staircase - 2** |  | 2027-09-02 | 2027-09-24 |  |  |  |
| 4S-SS-5th.F.20 |  | Reinforcement of wall upto Flight 1 | 2d | 2027-09-02 | 2027-09-04 | 4S-SS-4th.F.190 | Barbender [70 h]; Helper [40 h]; Physical Progress [2890 h]; Reinforcement Steel [1 MT1]; TATA Projects Ltd-25 | 96,512.5 |
| 4S-SS-5th.F.30 |  | Shuttering of wall upto Flight 1 | 2d | 2027-09-04 | 2027-09-07 | 4S-SS-5th.F.20 | Carpenter [20 h]; Helper [10 h]; Physical Progress [2890 h]; Formwork [10 Sq m]; TATA Projects Ltd-25 | 11,651.6 |
| 4S-SS-5th.F.45 |  | Casting of wall upto Flight 1 | 1d | 2027-09-07 | 2027-09-09 | 4S-SS-5th.F.30 | Mason; Helper; Physical Progress [1440 h]; Concrete M40 [3 m3]; TATA Projects Ltd-25 | 29,601 |
| 4S-SS-5th.F.60 |  | Shuttering of Staircase upto Flight 1 | 1d | 2027-09-09 | 2027-09-10 | 4S-SS-5th.F.45 | Carpenter [20 h]; Helper [10 h]; Physical Progress [1440 h]; Formwork [10 Sq m]; TATA Projects Ltd-25 | 11,651.6 |
| 4S-SS-5th.F.70 |  | Reinforcement of Staircase upto Flight 1 | 1d | 2027-09-10 | 2027-09-11 | 4S-SS-5th.F.60 | Barbender [70 h]; Helper [40 h]; Physical Progress [1440 h]; Reinforcement Steel [1 MT1]; TATA Projects Ltd-25 | 96,512.5 |
| 4S-SS-5th.F.80 |  | MEP coordination upto Flight 1 | 1d | 2027-09-11 | 2027-09-13 | 4S-SS-5th.F.70 | Physical Progress [1440 h]; TATA Projects Ltd-25 |  |
| 4S-SS-5th.F.90 |  | Casting of Staircase upto Flight 1 | 1d | 2027-09-13 | 2027-09-14 | 4S-SS-5th.F.80 | Mason; Helper; Physical Progress [1440 h]; Concrete M40 [3 m3]; TATA Projects Ltd-25 | 29,601 |
| 4S-SS-5th.F.105 |  | Reinforcement of wall upto Flight 2 | 2d | 2027-09-14 | 2027-09-17 | 4S-SS-5th.F.90 | Barbender [70 h]; Helper [40 h]; Physical Progress [2890 h]; Reinforcement Steel [1 MT1]; TATA Projects Ltd-25 | 96,512.5 |
| 4S-SS-5th.F.120 |  | Shuttering of wall upto Flight 2 | 2d | 2027-09-17 | 2027-09-20 | 4S-SS-5th.F.105 | Carpenter [20 h]; Helper [10 h]; Physical Progress [2890 h]; Formwork [10 Sq m]; TATA Projects Ltd-25 | 11,651.6 |
| 4S-SS-5th.F.130 |  | Casting of wall upto Flight 2 | 1d | 2027-09-20 | 2027-09-21 | 4S-SS-5th.F.120 | Mason; Helper; Physical Progress [1440 h]; Concrete M40 [3 m3]; TATA Projects Ltd-25 | 29,601 |
| 4S-SS-5th.F.145 |  | Shuttering of Staircase upto Flight 2 | 1d | 2027-09-21 | 2027-09-23 | 4S-SS-5th.F.130 | Carpenter [20 h]; Helper [10 h]; Physical Progress [1440 h]; Formwork [10 Sq m]; TATA Projects Ltd-25 | 11,651.6 |
| 4S-SS-5th.F.155 |  | Reinforcement of Staircase upto Flight 2 | 1d | 2027-09-23 | 2027-09-24 | 4S-SS-5th.F.145 | Barbender [70 h]; Helper [40 h]; Physical Progress [1440 h]; Reinforcement Steel [1 MT1]; TATA Projects Ltd-25 | 96,512.5 |

| ID | WBS | Activity | Duration | Start | Finish | Predecessors | Resources | Cost |
| --- | --- | --- | --- | --- | --- | --- | --- | --- |
|  | 2 | **Slab** |  | 2027-09-16 | 2027-10-16 |  |  |  |
| 4S-SS-5th.F.110 |  | Shuttering | 4d | 2027-09-16 | 2027-09-21 | 4S-SS-5th.F.95 | Carpenter [1050 h]; Helper [530 h]; Physical Progress [5780 h]; Formwork [630 Sq m]; TATA Projects Ltd-25 | 734,050.8 |
| 4S-SS-5th.F.135 |  | Reinforcement Bottom Net with chairs | 2d | 2027-09-21 | 2027-09-24 | 4S-SS-5th.F.110 | Barbender [340 h]; Helper [170 h]; Physical Progress [4340 h]; Reinforcement Steel [5 MT1]; TATA Projects Ltd-25 | 482,562.5 |
| 4S-SS-5th.F.160 |  | Laying of PT Tendon | 2d | 2027-09-24 | 2027-09-27 | 4S-SS-5th.F.135 | Physical Progress [5780 h]; TATA Projects Ltd-25 |  |
| 4S-SS-5th.F.175 |  | Reinforcement Top Net | 2d | 2027-09-27 | 2027-09-30 | 4S-SS-5th.F.160 | Barbender [340 h]; Helper [170 h]; Physical Progress [2890 h]; Reinforcement Steel [5 MT1]; TATA Projects Ltd-25 | 482,562.5 |
| 4S-SS-5th.F.185 |  | MEP Coordination | 1d | 2027-09-30 | 2027-10-01 | 4S-SS-5th.F.155, 4S-SS-5th.F.135, 4S-SS-5th.F.150, 4S-SS-5th.F.175 | Physical Progress [1440 h]; TATA Projects Ltd-25 |  |
| 4S-SS-5th.F.190 |  | Concrete of Slab | 1d | 2027-10-01 | 2027-10-04 | 4S-SS-5th.F.185 | Mason [50 h]; Helper [50 h]; Physical Progress [1440 h]; Concrete M40 [158 m3]; TATA Projects Ltd-25 | 1,558,986 |
| 4S-SS-5th.F.205 |  | Wait for Strength Gain | 6d | 2027-10-04 | 2027-10-12 | 4S-SS-5th.F.190 | Physical Progress [8680 h]; TATA Projects Ltd-25 |  |
| 4S-SS-5th.F.250 |  | PT Work | 4d | 2027-10-12 | 2027-10-16 | 4S-SS-4th.F.250, 4S-SS-5th.F.205 | PT [2 MT1]; Helper [100 h]; PT Fitter [100 h]; Physical Progress [7230 h]; TATA Projects Ltd-25 | 380,000 |
|  | 2 | **Pour 2** |  | 2027-08-20 | 2027-10-07 |  |  |  |
|  | 1 | **Column, Core Wall, Shear Wall** |  | 2027-08-20 | 2027-09-06 |  |  |  |
| 4S-SS-5th.F.165 |  | Reinforcement | 4d | 2027-08-20 | 2027-08-27 | 4S-SS-4th.F.320 | Barbender [1870 h]; Helper [940 h]; Physical Progress [5780 h]; Reinforcement Steel [28 MT1]; TATA Projects Ltd-25 | 2,702,350 |
| 4S-SS-5th.F.195 |  | LPS | 1d | 2027-08-27 | 2027-08-28 | 4S-SS-5th.F.165 | LPS [41809 INR]; Physical Progress [1440 h]; TATA Projects Ltd-25 | 41,809 |
| 4S-SS-5th.F.210 |  | Shuttering | 4d | 2027-08-28 | 2027-09-04 | 4S-SS-5th.F.165, 4S-SS-5th.F.195 | Carpenter [960 h]; Helper [480 h]; Physical Progress [5780 h]; Formwork [576 Sq m]; TATA Projects Ltd-25 | 671,132.16 |
| 4S-SS-5th.F.235 |  | Concrete | 1d | 2027-09-04 | 2027-09-06 | 4S-SS-5th.F.210 | Mason [50 h]; Helper [50 h]; Physical Progress [1440 h]; Concrete M40 [144 m3]; TATA Projects Ltd-25 | 1,420,848 |
|  | 3 | **Staircase** |  | 2027-08-20 | 2027-09-14 |  |  |  |
| 4S-SS-5th.F.170 |  | Reinforcement of wall upto Flight 1 | 2d | 2027-08-20 | 2027-08-23 | 4S-SS-4th.F.320 | Barbender [70 h]; Helper [40 h]; Physical Progress [2890 h]; Reinforcement Steel [1 MT1]; TATA Projects Ltd-25 | 96,512.5 |
| 4S-SS-5th.F.180 |  | Shuttering of wall upto Flight 1 | 2d | 2027-08-23 | 2027-08-27 | 4S-SS-5th.F.170 | Carpenter [20 h]; Helper [10 h]; Physical Progress [2890 h]; Formwork [10 Sq m]; TATA Projects Ltd-25 | 11,651.6 |
| 4S-SS-5th.F.200 |  | Casting of wall upto Flight 1 | 1d | 2027-08-27 | 2027-08-28 | 4S-SS-5th.F.180 | Mason; Helper; Physical Progress [1440 h]; Concrete M40 [3 m3]; TATA Projects Ltd-25 | 29,601 |
| 4S-SS-5th.F.215 |  | Shuttering of Staircase upto Flight 1 | 1d | 2027-08-28 | 2027-08-30 | 4S-SS-5th.F.200 | Carpenter [20 h]; Helper [10 h]; Physical Progress [1440 h]; Formwork [10 Sq m]; TATA Projects Ltd-25 | 11,651.6 |
| 4S-SS-5th.F.220 |  | Reinforcement of Staircase upto Flight 1 | 1d | 2027-08-30 | 2027-09-02 | 4S-SS-5th.F.215 | Barbender [70 h]; Helper [40 h]; Physical Progress [1440 h]; Reinforcement Steel [1 MT1]; TATA Projects Ltd-25 | 96,512.5 |
| 4S-SS-5th.F.225 |  | MEP coordination upto Flight 1 | 1d | 2027-09-02 | 2027-09-03 | 4S-SS-5th.F.220 | Physical Progress [1440 h]; TATA Projects Ltd-25 |  |
| 4S-SS-5th.F.230 |  | Casting of Staircase upto Flight 1 | 1d | 2027-09-03 | 2027-09-04 | 4S-SS-5th.F.225 | Mason; Helper; Physical Progress [1440 h]; Concrete M40 [3 m3]; TATA Projects Ltd-25 | 29,601 |
| 4S-SS-5th.F.240 |  | Reinforcement of wall upto Flight 2 | 2d | 2027-09-04 | 2027-09-07 | 4S-SS-5th.F.230 | Barbender [70 h]; Helper [40 h]; Physical Progress [2890 h]; Reinforcement Steel [1 MT1]; TATA Projects Ltd-25 | 96,512.5 |
| 4S-SS-5th.F.255 |  | Shuttering of wall upto Flight 2 | 2d | 2027-09-07 | 2027-09-10 | 4S-SS-5th.F.240 | Carpenter [20 h]; Helper [10 h]; Physical Progress [2890 h]; Formwork [10 Sq m]; TATA Projects Ltd-25 | 11,651.6 |
| 4S-SS-5th.F.260 |  | Casting of wall upto Flight 2 | 1d | 2027-09-10 | 2027-09-11 | 4S-SS-5th.F.255 | Mason; Helper; Physical Progress [1440 h]; Concrete M40 [3 m3]; TATA Projects Ltd-25 | 29,601 |
| 4S-SS-5th.F.270 |  | Shuttering of Staircase upto Flight 2 | 1d | 2027-09-11 | 2027-09-13 | 4S-SS-5th.F.260 | Carpenter [20 h]; Helper [10 h]; Physical Progress [1440 h]; Formwork [10 Sq m]; TATA Projects Ltd-25 | 11,651.6 |
| 4S-SS-5th.F.275 |  | Reinforcement of Staircase upto Flight 2 | 1d | 2027-09-13 | 2027-09-14 | 4S-SS-5th.F.270 | Barbender [70 h]; Helper [40 h]; Physical Progress [1440 h]; Reinforcement Steel [1 MT1]; TATA Projects Ltd-25 | 96,512.5 |

| ID | WBS | Activity | Duration | Start | Finish | Predecessors | Resources | Cost |
| --- | --- | --- | --- | --- | --- | --- | --- | --- |
|  | 2 | **Slab** |  | 2027-09-06 | 2027-10-07 |  |  |  |
| 4S-SS-5th.F.245 |  | Shuttering | 4d | 2027-09-06 | 2027-09-11 | 4S-SS-5th.F.235 | Carpenter [980 h]; Helper [490 h]; Physical Progress [5780 h]; Formwork [588 Sq m]; TATA Projects Ltd-25 | 685,114.08 |
| 4S-SS-5th.F.265 |  | Reinforcement Bottom Net with chairs | 2d | 2027-09-11 | 2027-09-14 | 4S-SS-5th.F.245 | Barbender [340 h]; Helper [170 h]; Physical Progress [4340 h]; Reinforcement Steel [5 MT1]; TATA Projects Ltd-25 | 482,562.5 |
| 4S-SS-5th.F.280 |  | Laying of PT Tendon | 2d | 2027-09-14 | 2027-09-17 | 4S-SS-5th.F.265 | Physical Progress [5780 h]; TATA Projects Ltd-25 |  |
| 4S-SS-5th.F.300 |  | Reinforcement Top Net | 2d | 2027-09-17 | 2027-09-20 | 4S-SS-5th.F.280 | Barbender [340 h]; Helper [170 h]; Physical Progress [2890 h]; Reinforcement Steel [5 MT1]; TATA Projects Ltd-25 | 482,562.5 |
| 4S-SS-5th.F.305 |  | MEP Coordination | 1d | 2027-09-20 | 2027-09-21 | 4S-SS-5th.F.265, 4S-SS-5th.F.275, 4S-SS-5th.F.300 | Physical Progress [1440 h]; TATA Projects Ltd-25 |  |
| 4S-SS-5th.F.320 |  | Concrete of Slab | 1d | 2027-09-21 | 2027-09-23 | 4S-SS-5th.F.305 | Mason [50 h]; Helper [50 h]; Physical Progress [1440 h]; Concrete M40 [147 m3]; TATA Projects Ltd-25 | 1,450,449 |
| 4S-SS-5th.F.335 |  | Wait for Strength Gain | 6d | 2027-09-23 | 2027-10-01 | 4S-SS-5th.F.320 | Physical Progress [8680 h]; TATA Projects Ltd-25 |  |
| 4S-SS-5th.F.375 |  | PT Work | 4d | 2027-10-01 | 2027-10-07 | 4S-SS-4th.F.375, 4S-SS-5th.F.335 | PT [2 MT1]; Helper [100 h]; PT Fitter [100 h]; Physical Progress [7230 h]; TATA Projects Ltd-25 | 380,000 |
|  | 3 | **Pour 3** |  | 2027-08-04 | 2027-09-24 |  |  |  |
|  | 1 | **Column, Core Wall, Shear Wall** |  | 2027-08-04 | 2027-08-21 |  |  |  |
| 4S-SS-5th.F.285 |  | Reinforcement | 4d | 2027-08-04 | 2027-08-11 | 4S-SS-4th.F.415 | Barbender [1670 h]; Helper [840 h]; Physical Progress [5780 h]; Reinforcement Steel [25 MT1]; TATA Projects Ltd-25 | 2,412,812.5 |
| 4S-SS-5th.F.310 |  | LPS | 1d | 2027-08-11 | 2027-08-13 | 4S-SS-5th.F.285 | LPS [41809 INR]; Physical Progress [1440 h]; TATA Projects Ltd-25 | 41,809 |
| 4S-SS-5th.F.325 |  | Shuttering | 4d | 2027-08-13 | 2027-08-20 | 4S-SS-5th.F.285, 4S-SS-5th.F.310 | Carpenter [850 h]; Helper [430 h]; Physical Progress [5780 h]; Formwork [508 Sq m]; TATA Projects Ltd-25 | 591,901.28 |
| 4S-SS-5th.F.355 |  | Concrete | 1d | 2027-08-20 | 2027-08-21 | 4S-SS-5th.F.325 | Mason [50 h]; Helper [50 h]; Physical Progress [1440 h]; Concrete M40 [127 m3]; TATA Projects Ltd-25 | 1,253,109 |
|  | 3 | **Staircase** |  | 2027-08-04 | 2027-09-02 |  |  |  |
| 4S-SS-5th.F.290 |  | Reinforcement of wall upto Flight 1 | 2d | 2027-08-04 | 2027-08-07 | 4S-SS-4th.F.415 | Barbender [70 h]; Helper [40 h]; Physical Progress [2890 h]; Reinforcement Steel [1 MT1]; TATA Projects Ltd-25 | 96,512.5 |
| 4S-SS-5th.F.295 |  | Shuttering of wall upto Flight 1 | 2d | 2027-08-07 | 2027-08-11 | 4S-SS-5th.F.290 | Carpenter [20 h]; Helper [10 h]; Physical Progress [2890 h]; Formwork [10 Sq m]; TATA Projects Ltd-25 | 11,651.6 |
| 4S-SS-5th.F.315 |  | Casting of wall upto Flight 1 | 1d | 2027-08-11 | 2027-08-13 | 4S-SS-5th.F.295 | Mason; Helper; Physical Progress [1440 h]; Concrete M40 [3 m3]; TATA Projects Ltd-25 | 29,601 |
| 4S-SS-5th.F.330 |  | Shuttering of Staircase upto Flight 1 | 1d | 2027-08-13 | 2027-08-14 | 4S-SS-5th.F.315 | Carpenter [20 h]; Helper [10 h]; Physical Progress [1440 h]; Formwork [10 Sq m]; TATA Projects Ltd-25 | 11,651.6 |
| 4S-SS-5th.F.340 |  | Reinforcement of Staircase upto Flight 1 | 1d | 2027-08-14 | 2027-08-16 | 4S-SS-5th.F.330 | Barbender [70 h]; Helper [40 h]; Physical Progress [1440 h]; Reinforcement Steel [1 MT1]; TATA Projects Ltd-25 | 96,512.5 |
| 4S-SS-5th.F.345 |  | MEP coordination upto Flight 1 | 1d | 2027-08-16 | 2027-08-18 | 4S-SS-5th.F.340 | Physical Progress [1440 h]; TATA Projects Ltd-25 |  |
| 4S-SS-5th.F.350 |  | Casting of Staircase upto Flight 1 | 1d | 2027-08-18 | 2027-08-20 | 4S-SS-5th.F.345 | Mason; Helper; Physical Progress [1440 h]; Concrete M40 [3 m3]; TATA Projects Ltd-25 | 29,601 |
| 4S-SS-5th.F.360 |  | Reinforcement of wall upto Flight 2 | 2d | 2027-08-20 | 2027-08-23 | 4S-SS-5th.F.350 | Barbender [70 h]; Helper [40 h]; Physical Progress [2890 h]; Reinforcement Steel [1 MT1]; TATA Projects Ltd-25 | 96,512.5 |
| 4S-SS-5th.F.370 |  | Shuttering of wall upto Flight 2 | 2d | 2027-08-23 | 2027-08-27 | 4S-SS-5th.F.360 | Carpenter [20 h]; Helper [10 h]; Physical Progress [2890 h]; Formwork [10 Sq m]; TATA Projects Ltd-25 | 11,651.6 |
| 4S-SS-5th.F.380 |  | Casting of wall upto Flight 2 | 1d | 2027-08-27 | 2027-08-28 | 4S-SS-5th.F.370 | Mason; Helper; Physical Progress [1440 h]; Concrete M40 [3 m3]; TATA Projects Ltd-25 | 29,601 |
| 4S-SS-5th.F.390 |  | Shuttering of Staircase upto Flight 2 | 1d | 2027-08-28 | 2027-08-30 | 4S-SS-5th.F.380 | Carpenter [20 h]; Helper [10 h]; Physical Progress [1440 h]; Formwork [10 Sq m]; TATA Projects Ltd-25 | 11,651.6 |
| 4S-SS-5th.F.395 |  | Reinforcement of Staircase upto Flight 2 | 1d | 2027-08-30 | 2027-09-02 | 4S-SS-5th.F.390 | Barbender [70 h]; Helper [40 h]; Physical Progress [1440 h]; Reinforcement Steel [1 MT1]; TATA Projects Ltd-25 | 96,512.5 |

| ID | WBS | Activity | Duration | Start | Finish | Predecessors | Resources | Cost |
| --- | --- | --- | --- | --- | --- | --- | --- | --- |
|  | 2 | **Slab** |  | 2027-08-21 | 2027-09-24 |  |  |  |
| 4S-SS-5th.F.365 |  | Shuttering | 4d | 2027-08-21 | 2027-08-28 | E-GFC-ST-4S-270, 4S-SS-5th.F.355 | Carpenter [870 h]; Helper [440 h]; Physical Progress [5780 h]; Formwork [518 Sq m]; TATA Projects Ltd-25 | 603,552.88 |
| 4S-SS-5th.F.385 |  | Reinforcement Bottom Net with chairs | 2d | 2027-08-28 | 2027-09-02 | 4S-SS-5th.F.365 | Barbender [270 h]; Helper [140 h]; Physical Progress [4340 h]; Reinforcement Steel [4 MT1]; TATA Projects Ltd-25 | 386,050 |
| 4S-SS-5th.F.400 |  | Laying of PT Tendon | 2d | 2027-09-02 | 2027-09-04 | 4S-SS-5th.F.385 | Physical Progress [5780 h]; TATA Projects Ltd-25 |  |
| 4S-SS-5th.F.405 |  | Reinforcement Top Net | 2d | 2027-09-04 | 2027-09-07 | 4S-SS-5th.F.400 | Barbender [270 h]; Helper [140 h]; Physical Progress [2890 h]; Reinforcement Steel [4 MT1]; TATA Projects Ltd-25 | 386,050 |
| 4S-SS-5th.F.410 |  | MEP Coordination | 1d | 2027-09-07 | 2027-09-09 | 4S-SS-5th.F.385, 4S-SS-5th.F.395, 4S-SS-5th.F.405 | Physical Progress [1440 h]; TATA Projects Ltd-25 |  |
| 4S-SS-5th.F.415 |  | Concrete of Slab | 1d | 2027-09-09 | 2027-09-10 | 4S-SS-5th.F.410 | Mason [50 h]; Helper [50 h]; Physical Progress [1440 h]; Concrete M40 [130 m3]; TATA Projects Ltd-25 | 1,282,710 |
| 4S-SS-5th.F.420 |  | Wait for Strength Gain | 6d | 2027-09-10 | 2027-09-18 | 4S-SS-5th.F.415 | Physical Progress [8680 h]; TATA Projects Ltd-25 |  |
| 4S-SS-5th.F.425 |  | PT Work | 4d | 2027-09-18 | 2027-09-24 | 4S-SS-4th.F.425, 4S-SS-5th.F.420 | PT [2 MT1]; Helper [100 h]; PT Fitter [100 h]; Physical Progress [7230 h]; TATA Projects Ltd-25 | 380,000 |
|  | 13 | **Sixth Floor** |  | 2027-09-10 | 2027-11-12 |  |  |  |
|  | 1 | **Pour 1** |  | 2027-10-04 | 2027-11-12 |  |  |  |
|  | 1 | **Column, Core Wall, Shear Wall** |  | 2027-10-04 | 2027-10-16 |  |  |  |
| 4S-SS-6th.F.10 |  | Reinforcement | 4d | 2027-10-04 | 2027-10-08 | 4S-SS-5th.F.190 | Barbender [2000 h]; Helper [1000 h]; Physical Progress [5780 h]; Reinforcement Steel [30 MT1]; TATA Projects Ltd-25 | 2,895,375 |
| 4S-SS-6th.F.35 |  | LPS | 1d | 2027-10-08 | 2027-10-11 | 4S-SS-6th.F.10 | LPS [41809 INR]; Physical Progress [1440 h]; TATA Projects Ltd-25 | 41,809 |
| 4S-SS-6th.F.50 |  | Shuttering | 4d | 2027-10-11 | 2027-10-15 | 4S-SS-6th.F.10, 4S-SS-6th.F.35 | Carpenter [1030 h]; Helper [520 h]; Physical Progress [5780 h]; Formwork [618 Sq m]; TATA Projects Ltd-25 | 720,068.88 |
| 4S-SS-6th.F.95 |  | Concrete | 1d | 2027-10-15 | 2027-10-16 | 4S-SS-6th.F.50 | Mason [50 h]; Helper [50 h]; Physical Progress [1440 h]; Concrete M40 [154 m3]; TATA Projects Ltd-25 | 1,519,518 |
|  | 3 | **Staircase - 1** |  | 2027-10-04 | 2027-10-23 |  |  |  |
| 4S-SS-6th.F.15 |  | Reinforcement of wall upto Flight 1 | 2d | 2027-10-04 | 2027-10-06 | 4S-SS-5th.F.190 | Barbender [70 h]; Helper [40 h]; Physical Progress [2890 h]; Reinforcement Steel [1 MT1]; TATA Projects Ltd-25 | 96,512.5 |
| 4S-SS-6th.F.25 |  | Shuttering of wall upto Flight 1 | 2d | 2027-10-06 | 2027-10-08 | 4S-SS-6th.F.15 | Carpenter [20 h]; Helper [10 h]; Physical Progress [2890 h]; Formwork [10 Sq m]; TATA Projects Ltd-25 | 11,651.6 |
| 4S-SS-6th.F.40 |  | Casting of wall upto Flight 1 | 1d | 2027-10-08 | 2027-10-11 | 4S-SS-6th.F.25 | Mason; Helper; Physical Progress [1440 h]; Concrete M40 [3 m3]; TATA Projects Ltd-25 | 29,601 |
| 4S-SS-6th.F.55 |  | Shuttering of Staircase upto Flight 1 | 1d | 2027-10-11 | 2027-10-12 | 4S-SS-6th.F.40 | Carpenter [20 h]; Helper [10 h]; Physical Progress [1440 h]; Formwork [10 Sq m]; TATA Projects Ltd-25 | 11,651.6 |
| 4S-SS-6th.F.65 |  | Reinforcement of Staircase upto Flight 1 | 1d | 2027-10-12 | 2027-10-13 | 4S-SS-6th.F.55 | Barbender [70 h]; Helper [40 h]; Physical Progress [1440 h]; Reinforcement Steel [1 MT1]; TATA Projects Ltd-25 | 96,512.5 |
| 4S-SS-6th.F.75 |  | MEP coordination upto Flight 1 | 1d | 2027-10-13 | 2027-10-14 | 4S-SS-6th.F.65 | Physical Progress [1440 h]; TATA Projects Ltd-25 |  |
| 4S-SS-6th.F.85 |  | Casting of Staircase upto Flight 1 | 1d | 2027-10-14 | 2027-10-15 | 4S-SS-6th.F.75 | Mason; Helper; Physical Progress [1440 h]; Concrete M40 [3 m3]; TATA Projects Ltd-25 | 29,601 |
| 4S-SS-6th.F.100 |  | Reinforcement of wall upto Flight 2 | 2d | 2027-10-15 | 2027-10-18 | 4S-SS-6th.F.85 | Barbender [70 h]; Helper [40 h]; Physical Progress [2890 h]; Reinforcement Steel [1 MT1]; TATA Projects Ltd-25 | 96,512.5 |
| 4S-SS-6th.F.115 |  | Shuttering of wall upto Flight 2 | 2d | 2027-10-18 | 2027-10-20 | 4S-SS-6th.F.100 | Carpenter [20 h]; Helper [10 h]; Physical Progress [2890 h]; Formwork [10 Sq m]; TATA Projects Ltd-25 | 11,651.6 |
| 4S-SS-6th.F.125 |  | Casting of wall upto Flight 2 | 1d | 2027-10-20 | 2027-10-21 | 4S-SS-6th.F.115 | Mason; Helper; Physical Progress [1440 h]; Concrete M40 [3 m3]; TATA Projects Ltd-25 | 29,601 |
| 4S-SS-6th.F.140 |  | Shuttering of Staircase upto Flight 2 | 1d | 2027-10-21 | 2027-10-22 | 4S-SS-6th.F.125 | Carpenter [20 h]; Helper [10 h]; Physical Progress [1440 h]; Formwork [10 Sq m]; TATA Projects Ltd-25 | 11,651.6 |
| 4S-SS-6th.F.150 |  | Reinforcement of Staircase upto Flight 2 | 1d | 2027-10-22 | 2027-10-23 | 4S-SS-6th.F.140 | Barbender [70 h]; Helper [40 h]; Physical Progress [1440 h]; Reinforcement Steel [1 MT1]; TATA Projects Ltd-25 | 96,512.5 |

| ID | WBS | Activity | Duration | Start | Finish | Predecessors | Resources | Cost |
| --- | --- | --- | --- | --- | --- | --- | --- | --- |
|  | 4 | **Staircase - 2** |  | 2027-10-04 | 2027-10-23 |  |  |  |
| 4S-SS-6th.F.20 |  | Reinforcement of wall upto Flight 1 | 2d | 2027-10-04 | 2027-10-06 | 4S-SS-5th.F.190 | Barbender [70 h]; Helper [40 h]; Physical Progress [2890 h]; Reinforcement Steel [1 MT1]; TATA Projects Ltd-25 | 96,512.5 |
| 4S-SS-6th.F.30 |  | Shuttering of wall upto Flight 1 | 2d | 2027-10-06 | 2027-10-08 | 4S-SS-6th.F.20 | Carpenter [20 h]; Helper [10 h]; Physical Progress [2890 h]; Formwork [10 Sq m]; TATA Projects Ltd-25 | 11,651.6 |
| 4S-SS-6th.F.45 |  | Casting of wall upto Flight 1 | 1d | 2027-10-08 | 2027-10-11 | 4S-SS-6th.F.30 | Mason; Helper; Physical Progress [1440 h]; Concrete M40 [3 m3]; TATA Projects Ltd-25 | 29,601 |
| 4S-SS-6th.F.60 |  | Shuttering of Staircase upto Flight 1 | 1d | 2027-10-11 | 2027-10-12 | 4S-SS-6th.F.45 | Carpenter [20 h]; Helper [10 h]; Physical Progress [1440 h]; Formwork [10 Sq m]; TATA Projects Ltd-25 | 11,651.6 |
| 4S-SS-6th.F.70 |  | Reinforcement of Staircase upto Flight 1 | 1d | 2027-10-12 | 2027-10-13 | 4S-SS-6th.F.60 | Barbender [70 h]; Helper [40 h]; Physical Progress [1440 h]; Reinforcement Steel [1 MT1]; TATA Projects Ltd-25 | 96,512.5 |
| 4S-SS-6th.F.80 |  | MEP coordination upto Flight 1 | 1d | 2027-10-13 | 2027-10-14 | 4S-SS-6th.F.70 | Physical Progress [1440 h]; TATA Projects Ltd-25 |  |
| 4S-SS-6th.F.90 |  | Casting of Staircase upto Flight 1 | 1d | 2027-10-14 | 2027-10-15 | 4S-SS-6th.F.80 | Mason; Helper; Physical Progress [1440 h]; Concrete M40 [3 m3]; TATA Projects Ltd-25 | 29,601 |
| 4S-SS-6th.F.105 |  | Reinforcement of wall upto Flight 2 | 2d | 2027-10-15 | 2027-10-18 | 4S-SS-6th.F.90 | Barbender [70 h]; Helper [40 h]; Physical Progress [2890 h]; Reinforcement Steel [1 MT1]; TATA Projects Ltd-25 | 96,512.5 |
| 4S-SS-6th.F.120 |  | Shuttering of wall upto Flight 2 | 2d | 2027-10-18 | 2027-10-20 | 4S-SS-6th.F.105 | Carpenter [20 h]; Helper [10 h]; Physical Progress [2890 h]; Formwork [10 Sq m]; TATA Projects Ltd-25 | 11,651.6 |
| 4S-SS-6th.F.130 |  | Casting of wall upto Flight 2 | 1d | 2027-10-20 | 2027-10-21 | 4S-SS-6th.F.120 | Mason; Helper; Physical Progress [1440 h]; Concrete M40 [3 m3]; TATA Projects Ltd-25 | 29,601 |
| 4S-SS-6th.F.145 |  | Shuttering of Staircase upto Flight 2 | 1d | 2027-10-21 | 2027-10-22 | 4S-SS-6th.F.130 | Carpenter [20 h]; Helper [10 h]; Physical Progress [1440 h]; Formwork [10 Sq m]; TATA Projects Ltd-25 | 11,651.6 |
| 4S-SS-6th.F.155 |  | Reinforcement of Staircase upto Flight 2 | 1d | 2027-10-22 | 2027-10-23 | 4S-SS-6th.F.145 | Barbender [70 h]; Helper [40 h]; Physical Progress [1440 h]; Reinforcement Steel [1 MT1]; TATA Projects Ltd-25 | 96,512.5 |
|  | 2 | **Slab** |  | 2027-10-16 | 2027-11-12 |  |  |  |
| 4S-SS-6th.F.110 |  | Shuttering | 4d | 2027-10-16 | 2027-10-21 | 4S-SS-6th.F.95 | Carpenter [1310 h]; Helper [660 h]; Physical Progress [5780 h]; Formwork [782 Sq m]; TATA Projects Ltd-25 | 911,155.12 |
| 4S-SS-6th.F.135 |  | Reinforcement Bottom Net with chairs | 2d | 2027-10-21 | 2027-10-23 | 4S-SS-6th.F.110 | Barbender [400 h]; Helper [200 h]; Physical Progress [4340 h]; Reinforcement Steel [6 MT1]; TATA Projects Ltd-25 | 579,075 |
| 4S-SS-6th.F.160 |  | Laying of PT Tendon | 2d | 2027-10-23 | 2027-10-26 | 4S-SS-6th.F.135 | Physical Progress [5780 h]; TATA Projects Ltd-25 |  |
| 4S-SS-6th.F.175 |  | Reinforcement Top Net | 2d | 2027-10-26 | 2027-10-28 | 4S-SS-6th.F.160 | Barbender [400 h]; Helper [200 h]; Physical Progress [2890 h]; Reinforcement Steel [6 MT1]; TATA Projects Ltd-25 | 579,075 |
| 4S-SS-6th.F.185 |  | MEP Coordination | 1d | 2027-10-28 | 2027-10-30 | 4S-SS-6th.F.155, 4S-SS-6th.F.135, 4S-SS-6th.F.150, 4S-SS-6th.F.175 | Physical Progress [1440 h]; TATA Projects Ltd-25 |  |
| 4S-SS-6th.F.190 |  | Concrete of Slab | 1d | 2027-10-30 | 2027-11-01 | 4S-SS-6th.F.185 | Mason [50 h]; Helper [50 h]; Physical Progress [1440 h]; Concrete M40 [196 m3]; TATA Projects Ltd-25 | 1,933,932 |
| 4S-SS-6th.F.205 |  | Wait for Strength Gain | 6d | 2027-11-01 | 2027-11-08 | 4S-SS-6th.F.190 | Physical Progress [8680 h]; TATA Projects Ltd-25 |  |
| 4S-SS-6th.F.250 |  | PT Work | 4d | 2027-11-08 | 2027-11-12 | 4S-SS-5th.F.250, 4S-SS-6th.F.205 | PT [2 MT1]; Helper [100 h]; PT Fitter [100 h]; Physical Progress [7230 h]; TATA Projects Ltd-25 | 380,000 |
|  | 2 | **Pour 2** |  | 2027-09-23 | 2027-11-04 |  |  |  |
|  | 1 | **Column, Core Wall, Shear Wall** |  | 2027-09-23 | 2027-10-07 |  |  |  |
| 4S-SS-6th.F.165 |  | Reinforcement | 4d | 2027-09-23 | 2027-09-28 | 4S-SS-5th.F.320 | Barbender [1870 h]; Helper [940 h]; Physical Progress [5780 h]; Reinforcement Steel [28 MT1]; TATA Projects Ltd-25 | 2,702,350 |
| 4S-SS-6th.F.195 |  | LPS | 1d | 2027-09-28 | 2027-09-30 | 4S-SS-6th.F.165 | LPS [41809 INR]; Physical Progress [1440 h]; TATA Projects Ltd-25 | 41,809 |
| 4S-SS-6th.F.210 |  | Shuttering | 4d | 2027-09-30 | 2027-10-06 | 4S-SS-6th.F.165, 4S-SS-6th.F.195 | Carpenter [960 h]; Helper [480 h]; Physical Progress [5780 h]; Formwork [576 Sq m]; TATA Projects Ltd-25 | 671,132.16 |
| 4S-SS-6th.F.235 |  | Concrete | 1d | 2027-10-06 | 2027-10-07 | 4S-SS-6th.F.210 | Mason [50 h]; Helper [50 h]; Physical Progress [1440 h]; Concrete M40 [144 m3]; TATA Projects Ltd-25 | 1,420,848 |

| ID | WBS | Activity | Duration | Start | Finish | Predecessors | Resources | Cost |
| --- | --- | --- | --- | --- | --- | --- | --- | --- |
|  | 3 | **Staircase** |  | 2027-09-23 | 2027-10-15 |  |  |  |
| 4S-SS-6th.F.170 |  | Reinforcement of wall upto Flight 1 | 2d | 2027-09-23 | 2027-09-25 | 4S-SS-5th.F.320 | Barbender [70 h]; Helper [40 h]; Physical Progress [2890 h]; Reinforcement Steel [1 MT1]; TATA Projects Ltd-25 | 96,512.5 |
| 4S-SS-6th.F.180 |  | Shuttering of wall upto Flight 1 | 2d | 2027-09-25 | 2027-09-28 | 4S-SS-6th.F.170 | Carpenter [20 h]; Helper [10 h]; Physical Progress [2890 h]; Formwork [10 Sq m]; TATA Projects Ltd-25 | 11,651.6 |
| 4S-SS-6th.F.200 |  | Casting of wall upto Flight 1 | 1d | 2027-09-28 | 2027-09-30 | 4S-SS-6th.F.180 | Mason; Helper; Physical Progress [1440 h]; Concrete M40 [3 m3]; TATA Projects Ltd-25 | 29,601 |
| 4S-SS-6th.F.215 |  | Shuttering of Staircase upto Flight 1 | 1d | 2027-09-30 | 2027-10-01 | 4S-SS-6th.F.200 | Carpenter [20 h]; Helper [10 h]; Physical Progress [1440 h]; Formwork [10 Sq m]; TATA Projects Ltd-25 | 11,651.6 |
| 4S-SS-6th.F.220 |  | Reinforcement of Staircase upto Flight 1 | 1d | 2027-10-01 | 2027-10-04 | 4S-SS-6th.F.215 | Barbender [70 h]; Helper [40 h]; Physical Progress [1440 h]; Reinforcement Steel [1 MT1]; TATA Projects Ltd-25 | 96,512.5 |
| 4S-SS-6th.F.225 |  | MEP coordination upto Flight 1 | 1d | 2027-10-04 | 2027-10-05 | 4S-SS-6th.F.220 | Physical Progress [1440 h]; TATA Projects Ltd-25 |  |
| 4S-SS-6th.F.230 |  | Casting of Staircase upto Flight 1 | 1d | 2027-10-05 | 2027-10-06 | 4S-SS-6th.F.225 | Mason; Helper; Physical Progress [1440 h]; Concrete M40 [3 m3]; TATA Projects Ltd-25 | 29,601 |
| 4S-SS-6th.F.240 |  | Reinforcement of wall upto Flight 2 | 2d | 2027-10-06 | 2027-10-08 | 4S-SS-6th.F.230 | Barbender [70 h]; Helper [40 h]; Physical Progress [2890 h]; Reinforcement Steel [1 MT1]; TATA Projects Ltd-25 | 96,512.5 |
| 4S-SS-6th.F.255 |  | Shuttering of wall upto Flight 2 | 2d | 2027-10-08 | 2027-10-12 | 4S-SS-6th.F.240 | Carpenter [20 h]; Helper [10 h]; Physical Progress [2890 h]; Formwork [10 Sq m]; TATA Projects Ltd-25 | 11,651.6 |
| 4S-SS-6th.F.260 |  | Casting of wall upto Flight 2 | 1d | 2027-10-12 | 2027-10-13 | 4S-SS-6th.F.255 | Mason; Helper; Physical Progress [1440 h]; Concrete M40 [3 m3]; TATA Projects Ltd-25 | 29,601 |
| 4S-SS-6th.F.270 |  | Shuttering of Staircase upto Flight 2 | 1d | 2027-10-13 | 2027-10-14 | 4S-SS-6th.F.260 | Carpenter [20 h]; Helper [10 h]; Physical Progress [1440 h]; Formwork [10 Sq m]; TATA Projects Ltd-25 | 11,651.6 |
| 4S-SS-6th.F.275 |  | Reinforcement of Staircase upto Flight 2 | 1d | 2027-10-14 | 2027-10-15 | 4S-SS-6th.F.270 | Barbender [70 h]; Helper [40 h]; Physical Progress [1440 h]; Reinforcement Steel [1 MT1]; TATA Projects Ltd-25 | 96,512.5 |
|  | 2 | **Slab** |  | 2027-10-07 | 2027-11-04 |  |  |  |
| 4S-SS-6th.F.245 |  | Shuttering | 4d | 2027-10-07 | 2027-10-13 | 4S-SS-6th.F.235 | Carpenter [1220 h]; Helper [610 h]; Physical Progress [5780 h]; Formwork [729 Sq m]; TATA Projects Ltd-25 | 849,401.64 |
| 4S-SS-6th.F.265 |  | Reinforcement Bottom Net with chairs | 2d | 2027-10-13 | 2027-10-15 | 4S-SS-6th.F.245 | Barbender [400 h]; Helper [200 h]; Physical Progress [4340 h]; Reinforcement Steel [6 MT1]; TATA Projects Ltd-25 | 579,075 |
| 4S-SS-6th.F.280 |  | Laying of PT Tendon | 2d | 2027-10-15 | 2027-10-18 | 4S-SS-6th.F.265 | Physical Progress [5780 h]; TATA Projects Ltd-25 |  |
| 4S-SS-6th.F.300 |  | Reinforcement Top Net | 2d | 2027-10-18 | 2027-10-20 | 4S-SS-6th.F.280 | Barbender [400 h]; Helper [200 h]; Physical Progress [2890 h]; Reinforcement Steel [6 MT1]; TATA Projects Ltd-25 | 579,075 |
| 4S-SS-6th.F.305 |  | MEP Coordination | 1d | 2027-10-20 | 2027-10-21 | 4S-SS-6th.F.265, 4S-SS-6th.F.275, 4S-SS-6th.F.300 | Physical Progress [1440 h]; TATA Projects Ltd-25 |  |
| 4S-SS-6th.F.320 |  | Concrete of Slab | 1d | 2027-10-21 | 2027-10-22 | 4S-SS-6th.F.305 | Mason [50 h]; Helper [50 h]; Physical Progress [1440 h]; Concrete M40 [182 m3]; TATA Projects Ltd-25 | 1,795,794 |
| 4S-SS-6th.F.335 |  | Wait for Strength Gain | 6d | 2027-10-22 | 2027-10-30 | 4S-SS-6th.F.320 | Physical Progress [8680 h]; TATA Projects Ltd-25 |  |
| 4S-SS-6th.F.375 |  | PT Work | 4d | 2027-10-30 | 2027-11-04 | 4S-SS-5th.F.375, 4S-SS-6th.F.335 | PT [2 MT1]; Helper [100 h]; PT Fitter [100 h]; Physical Progress [7230 h]; TATA Projects Ltd-25 | 380,000 |
|  | 3 | **Pour 3** |  | 2027-09-10 | 2027-10-23 |  |  |  |
|  | 1 | **Column, Core Wall, Shear Wall** |  | 2027-09-10 | 2027-09-24 |  |  |  |
| 4S-SS-6th.F.285 |  | Reinforcement | 4d | 2027-09-10 | 2027-09-16 | 4S-SS-5th.F.415 | Barbender [1670 h]; Helper [840 h]; Physical Progress [5780 h]; Reinforcement Steel [25 MT1]; TATA Projects Ltd-25 | 2,412,812.5 |
| 4S-SS-6th.F.310 |  | LPS | 1d | 2027-09-16 | 2027-09-17 | 4S-SS-6th.F.285 | LPS [41809 INR]; Physical Progress [1440 h]; TATA Projects Ltd-25 | 41,809 |
| 4S-SS-6th.F.325 |  | Shuttering | 4d | 2027-09-17 | 2027-09-23 | 4S-SS-6th.F.285, 4S-SS-6th.F.310 | Carpenter [850 h]; Helper [430 h]; Physical Progress [5780 h]; Formwork [508 Sq m]; TATA Projects Ltd-25 | 591,901.28 |
| 4S-SS-6th.F.355 |  | Concrete | 1d | 2027-09-23 | 2027-09-24 | 4S-SS-6th.F.325 | Mason [50 h]; Helper [50 h]; Physical Progress [1440 h]; Concrete M40 [127 m3]; TATA Projects Ltd-25 | 1,253,109 |

| ID | WBS | Activity | Duration | Start | Finish | Predecessors | Resources | Cost |
| --- | --- | --- | --- | --- | --- | --- | --- | --- |
|  | 3 | **Staircase** |  | 2027-09-10 | 2027-10-04 |  |  |  |
| 4S-SS-6th.F.290 |  | Reinforcement of wall upto Flight 1 | 2d | 2027-09-10 | 2027-09-13 | 4S-SS-5th.F.415 | Barbender [70 h]; Helper [40 h]; Physical Progress [2890 h]; Reinforcement Steel [1 MT1]; TATA Projects Ltd-25 | 96,512.5 |
| 4S-SS-6th.F.295 |  | Shuttering of wall upto Flight 1 | 2d | 2027-09-13 | 2027-09-16 | 4S-SS-6th.F.290 | Carpenter [20 h]; Helper [10 h]; Physical Progress [2890 h]; Formwork [10 Sq m]; TATA Projects Ltd-25 | 11,651.6 |
| 4S-SS-6th.F.315 |  | Casting of wall upto Flight 1 | 1d | 2027-09-16 | 2027-09-17 | 4S-SS-6th.F.295 | Mason; Helper; Physical Progress [1440 h]; Concrete M40 [3 m3]; TATA Projects Ltd-25 | 29,601 |
| 4S-SS-6th.F.330 |  | Shuttering of Staircase upto Flight 1 | 1d | 2027-09-17 | 2027-09-18 | 4S-SS-6th.F.315 | Carpenter [20 h]; Helper [10 h]; Physical Progress [1440 h]; Formwork [10 Sq m]; TATA Projects Ltd-25 | 11,651.6 |
| 4S-SS-6th.F.340 |  | Reinforcement of Staircase upto Flight 1 | 1d | 2027-09-18 | 2027-09-20 | 4S-SS-6th.F.330 | Barbender [70 h]; Helper [40 h]; Physical Progress [1440 h]; Reinforcement Steel [1 MT1]; TATA Projects Ltd-25 | 96,512.5 |
| 4S-SS-6th.F.345 |  | MEP coordination upto Flight 1 | 1d | 2027-09-20 | 2027-09-21 | 4S-SS-6th.F.340 | Physical Progress [1440 h]; TATA Projects Ltd-25 |  |
| 4S-SS-6th.F.350 |  | Casting of Staircase upto Flight 1 | 1d | 2027-09-21 | 2027-09-23 | 4S-SS-6th.F.345 | Mason; Helper; Physical Progress [1440 h]; Concrete M40 [3 m3]; TATA Projects Ltd-25 | 29,601 |
| 4S-SS-6th.F.360 |  | Reinforcement of wall upto Flight 2 | 2d | 2027-09-23 | 2027-09-25 | 4S-SS-6th.F.350 | Barbender [70 h]; Helper [40 h]; Physical Progress [2890 h]; Reinforcement Steel [1 MT1]; TATA Projects Ltd-25 | 96,512.5 |
| 4S-SS-6th.F.370 |  | Shuttering of wall upto Flight 2 | 2d | 2027-09-25 | 2027-09-28 | 4S-SS-6th.F.360 | Carpenter [20 h]; Helper [10 h]; Physical Progress [2890 h]; Formwork [10 Sq m]; TATA Projects Ltd-25 | 11,651.6 |
| 4S-SS-6th.F.380 |  | Casting of wall upto Flight 2 | 1d | 2027-09-28 | 2027-09-30 | 4S-SS-6th.F.370 | Mason; Helper; Physical Progress [1440 h]; Concrete M40 [3 m3]; TATA Projects Ltd-25 | 29,601 |
| 4S-SS-6th.F.390 |  | Shuttering of Staircase upto Flight 2 | 1d | 2027-09-30 | 2027-10-01 | 4S-SS-6th.F.380 | Carpenter [20 h]; Helper [10 h]; Physical Progress [1440 h]; Formwork [10 Sq m]; TATA Projects Ltd-25 | 11,651.6 |
| 4S-SS-6th.F.395 |  | Reinforcement of Staircase upto Flight 2 | 1d | 2027-10-01 | 2027-10-04 | 4S-SS-6th.F.390 | Barbender [70 h]; Helper [40 h]; Physical Progress [1440 h]; Reinforcement Steel [1 MT1]; TATA Projects Ltd-25 | 96,512.5 |
|  | 2 | **Slab** |  | 2027-09-24 | 2027-10-23 |  |  |  |
| 4S-SS-6th.F.365 |  | Shuttering | 4d | 2027-09-24 | 2027-09-30 | E-GFC-ST-4S-275, 4S-SS-6th.F.355 | Carpenter [1080 h]; Helper [540 h]; Physical Progress [5780 h]; Formwork [643 Sq m]; TATA Projects Ltd-25 | 749,197.88 |
| 4S-SS-6th.F.385 |  | Reinforcement Bottom Net with chairs | 2d | 2027-09-30 | 2027-10-04 | 4S-SS-6th.F.365 | Barbender [340 h]; Helper [170 h]; Physical Progress [4340 h]; Reinforcement Steel [5 MT1]; TATA Projects Ltd-25 | 482,562.5 |
| 4S-SS-6th.F.400 |  | Laying of PT Tendon | 2d | 2027-10-04 | 2027-10-06 | 4S-SS-6th.F.385 | Physical Progress [5780 h]; TATA Projects Ltd-25 |  |
| 4S-SS-6th.F.405 |  | Reinforcement Top Net | 2d | 2027-10-06 | 2027-10-08 | 4S-SS-6th.F.400 | Barbender [340 h]; Helper [170 h]; Physical Progress [2890 h]; Reinforcement Steel [5 MT1]; TATA Projects Ltd-25 | 482,562.5 |
| 4S-SS-6th.F.410 |  | MEP Coordination | 1d | 2027-10-08 | 2027-10-11 | 4S-SS-6th.F.385, 4S-SS-6th.F.395, 4S-SS-6th.F.405 | Physical Progress [1440 h]; TATA Projects Ltd-25 |  |
| 4S-SS-6th.F.415 |  | Concrete of Slab | 1d | 2027-10-11 | 2027-10-12 | 4S-SS-6th.F.410 | Mason [50 h]; Helper [50 h]; Physical Progress [1440 h]; Concrete M40 [161 m3]; TATA Projects Ltd-25 | 1,588,587 |
| 4S-SS-6th.F.420 |  | Wait for Strength Gain | 6d | 2027-10-12 | 2027-10-19 | 4S-SS-6th.F.415 | Physical Progress [8680 h]; TATA Projects Ltd-25 |  |
| 4S-SS-6th.F.425 |  | PT Work | 4d | 2027-10-19 | 2027-10-23 | 4S-SS-5th.F.425, 4S-SS-6th.F.420 | PT [2 MT1]; Helper [100 h]; PT Fitter [100 h]; Physical Progress [7230 h]; TATA Projects Ltd-25 | 380,000 |
|  | 14 | **Roof Top** |  | 2027-10-12 | 2027-11-13 |  |  |  |
|  | 1 | **Column, Shear Wall** |  | 2027-10-12 | 2027-10-22 |  |  |  |
| 4S-SS-Roof10 |  | Reinforcement | 4d | 2027-10-12 | 2027-10-16 | E-GFC-ST-4S-245, 4S-SS-6th.F.415 | Barbender [140 h]; Helper [70 h]; Physical Progress [10120 h]; Reinforcement Steel [2 MT1]; TATA Projects Ltd-25 | 193,025 |
| 4S-SS-Roof15 |  | Shuttering | 4d | 2027-10-16 | 2027-10-21 | 4S-SS-Roof10 | Carpenter [30 h]; Helper [20 h]; Physical Progress [10120 h]; Formwork [15 Sq m]; TATA Projects Ltd-25 | 17,477.4 |
| 4S-SS-Roof20 |  | Concrete | 1d | 2027-10-21 | 2027-10-22 | 4S-SS-Roof15 | Mason [50 h]; Helper [50 h]; Physical Progress [1440 h]; Concrete M40 [20 m3]; TATA Projects Ltd-25 | 197,340 |

| ID | WBS | Activity | Duration | Start | Finish | Predecessors | Calendar | Resources | Cost |
| --- | --- | --- | --- | --- | --- | --- | --- | --- | --- |
|  | 2 | **Slab** |  | 2027-10-22 | 2027-11-13 |  |  |  |  |
| 4S-SS-Roof25 |  | Shuttering | 5d | 2027-10-22 | 2027-10-28 | E-GFC-ST-4S-20, 4S-SS-Roof20 |  | Carpenter [10 h]; Helper [10 h]; Physical Progress [14460 h]; Formwork [5 Sq m]; TATA Projects Ltd-25 | 5,825.8 |
| 4S-SS-Roof30 |  | Reinforcement | 5d | 2027-10-28 | 2027-11-04 | 4S-SS-Roof25 |  | Barbender [340 h]; Helper [170 h]; Physical Progress [14460 h]; Reinforcement Steel [5 MT1]; TATA Projects Ltd-25 | 482,562.5 |
| 4S-SS-Roof35 |  | MEP Coordination | 1d | 2027-11-04 | 2027-11-05 | 4S-SS-Roof30 |  | Physical Progress [1440 h]; TATA Projects Ltd-25 |  |
| 4S-SS-Roof40 |  | Concrete of Slab | 1d | 2027-11-12 | 2027-11-13 | 4S-SS-6th.F.250, 4S-SS-6th.F.375, 4S-SS-Roof35 |  | Mason [50 h]; Helper [50 h]; Physical Progress [1440 h]; Concrete M40 [10 m3]; TATA Projects Ltd-25 | 98,670 |
|  | 6 | **Wet finishes, MEP, ID** |  | 2027-04-12 | 2029-04-20 |  |  |  |  |
|  | 1 | **Ground Floor** |  | 2027-04-12 | 2029-04-17 |  |  |  |  |
|  | 1 | **Wet Finishes** |  | 2027-04-12 | 2028-01-11 |  |  |  |  |
| 4S-WMI-GF10 |  | Deshuttering | 2d | 2027-04-12 | 2027-04-14 | 4S-SS-1st.F.690, 4S-SS-1st.F.670 | CSD-LKO Calender (6 day + Holiday)-25 | Physical Progress [1160 h]; TATA Projects Ltd-25 |  |
| 4S-WMI-GF15 |  | Brickwork/Blockwork | 35d | 2027-04-14 | 2027-05-26 | E-GFC-AR-4S-45, 4S-WMI-GF10 | CSD-LKO Calender (6 day + Holiday)-25 | Masonry [546 CuM]; Mason [3640 h]; Helper [1820 h]; Physical Progress [8630 h]; TATA Projects Ltd-25 | 5,206,306.56 |
| 4S-WMI-GF55 |  | Waterproofing of Toilets, Balcony & Kitchen | 35d | 2027-05-26 | 2027-07-06 | 4S-WMI-GF15 | CSD-LKO Calender (6 day + Holiday)-25 | Waterproofing [8564838 INR]; Waterprrofing Mason [8160 h]; Helper [4080 h]; Physical Progress [4320 h]; TATA Projects Ltd-25 | 8,564,838 |
| 4S-WMI-GF95 |  | Plaster | 35d | 2027-11-30 | 2028-01-11 | 4S-WMI-GF55, 4S-WMI-GF30, 4S-WMI-GF75, 4S-WMI-GF80 | CSD-LKO Calender (6 day + Holiday)-25 | Plaster [8485 Sqr Mtr]; Mason [5660 h]; Helper [2830 h]; Physical Progress [4320 h]; TATA Projects Ltd-25 | 4,699,926.35 |
|  | 5 | **MEP** |  | 2027-05-26 | 2029-04-17 |  |  |  |  |
|  | 2 | **HVAC** |  | 2027-10-13 | 2029-01-20 |  |  |  |  |
|  | 1 | **1st Fix** |  | 2027-10-13 | 2028-02-04 |  |  |  |  |
| 4S-WMI-GF50 |  | Duct Support Fabrication | 35d | 2027-10-13 | 2027-11-23 | P-MEP-HVAC-20, E-GFC-MEP-4S-235, 4S-WMI-GF15 | CSD-LKO Calender (6 day + Holiday)-25 | Physical Progress [4320 h]; HVAC [214949 INR]; TATA Projects Ltd-25 | 214,949 |
| 4S-WMI-GF100 |  | Installing duct hangers and supports | 30d | 2027-11-24 | 2027-12-29 | E-GFC-MEP-4S-235, 4S-WMI-GF50 | CSD-LKO Calender (6 day + Holiday)-25 | Physical Progress [2880 h]; HVAC [429898 INR]; TATA Projects Ltd-25 | 429,898 |
| 4S-WMI-GF115 |  | Laying concealed/exposed refrigerant piping | 30d | 2027-12-30 | 2028-02-04 | E-GFC-MEP-4S-235, 4S-WMI-GF100 | CSD-LKO Calender (6 day + Holiday)-25 | Physical Progress [4320 h]; HVAC [107474 INR]; TATA Projects Ltd-25 | 107,474 |
| 4S-WMI-GF120 |  | Laying concealed/exposed drain piping | 30d | 2027-12-30 | 2028-02-04 | E-GFC-MEP-4S-235, 4S-WMI-GF100 | CSD-LKO Calender (6 day + Holiday)-25 | Physical Progress [2880 h]; HVAC [644847 INR]; TATA Projects Ltd-25 | 644,847 |
|  | 2 | **2nd Fix** |  | 2027-12-30 | 2028-06-05 |  |  |  |  |
| 4S-WMI-GF125 |  | Duct installation | 20d | 2027-12-30 | 2028-01-22 | 4S-WMI-GF100 | CSD-LKO Calender (6 day + Holiday)-25 | Physical Progress [4320 h]; HVAC [1612117 INR]; TATA Projects Ltd-25 | 1,612,117 |
| 4S-WMI-GF155 |  | Insulation of ducts (thermal/acoustic) | 10d | 2028-01-24 | 2028-02-04 | 4S-WMI-GF125 | CSD-LKO Calender (6 day + Holiday)-25 | Physical Progress [1730 h]; HVAC [967270 INR]; TATA Projects Ltd-25 | 967,270 |
| 4S-WMI-GF185 |  | Installation of chilled water piping / VRF piping | 20d | 2028-02-05 | 2028-02-28 | 4S-WMI-GF115, 4S-WMI-GF120, 4S-WMI-GF155 | CSD-LKO Calender (6 day + Holiday)-25 | Physical Progress [1730 h]; HVAC [2149489 INR]; TATA Projects Ltd-25 | 2,149,489 |
| 4S-WMI-GF210 |  | Installation of indoor units including AHU, FCU | 60d | 2028-02-29 | 2028-05-12 | 4S-WMI-GF185, 4S-WMI-GF115, 4S-WMI-GF120 | CSD-LKO Calender (6 day + Holiday)-25 | Physical Progress [12950 h]; HVAC [1934540 INR]; TATA Projects Ltd-25 | 1,934,540 |
| 4S-WMI-GF235 |  | Connecting refrigerant and drain piping to indoor units | 20d | 2028-05-13 | 2028-06-05 | 4S-WMI-GF210 | CSD-LKO Calender (6 day + Holiday)-25 | Physical Progress [1730 h]; HVAC [537372 INR]; TATA Projects Ltd-25 | 537,372 |

| ID | WBS | Activity | Duration | Start | Finish | Predecessors | Calendar | Resources | Cost |
| --- | --- | --- | --- | --- | --- | --- | --- | --- | --- |
|  | 3 | **Final Fix** |  | 2028-11-10 | 2029-01-20 |  |  |  |  |
| 4S-WMI-GF260 |  | Installing grills, diffusers, dampers | 30d | 2028-11-10 | 2028-12-14 | 4S-WMI-GF255 | CSD-LKO Calender (6 day + Holiday)-25 | Physical Progress [1730 h]; HVAC [1074745 INR]; TATA Projects Ltd-25 | 1,074,745 |
| 4S-WMI-GF285 |  | Installation of thermostats and control panels | 30d | 2028-12-15 | 2029-01-20 | 4S-WMI-GF235, 4S-WMI-GF260, 4S-WMI-GF275 | CSD-LKO Calender (6 day + Holiday)-25 | Physical Progress [1730 h]; HVAC [537372 INR]; TATA Projects Ltd-25 | 537,372 |
|  | 1 | **Electrical** |  | 2027-05-26 | 2029-02-27 |  |  |  |  |
|  | 1 | **1st Fix** |  | 2027-05-26 | 2027-11-29 |  |  |  |  |
| 4S-WMI-GF30 |  | Wall Conduiting | 30d | 2027-05-26 | 2027-06-30 | E-GFC-MEP-4S-235, 4S-WMI-GF15 | CSD-LKO Calender (6 day + Holiday)-25 | Physical Progress [2880 h]; Electrical [601542 INR]; TATA Projects Ltd-25 | 601,542 |
| 4S-WMI-GF20 |  | Slab Conduiting | 35d | 2027-10-13 | 2027-11-23 | 4S-WMI-GF10, P-MEP-Elec-20, E-GFC-MEP-4S-235 | CSD-LKO Calender (6 day + Holiday)-25 | Physical Progress [7190 h]; Electrical [1203084 INR]; TATA Projects Ltd-25 | 1,203,084 |
| 4S-WMI-GF75 |  | Installing back boxes for switches, sockets | 5d | 2027-11-24 | 2027-11-29 | 4S-WMI-GF20, E-GFC-MEP-4S-235, 4S-WMI-GF30 | CSD-LKO Calender (6 day + Holiday)-25 | Physical Progress [1440 h]; Electrical [360925 INR]; TATA Projects Ltd-25 | 360,925 |
|  | 2 | **2nd Fix** |  | 2028-01-12 | 2028-07-21 |  |  |  |  |
| 4S-WMI-GF135 |  | Cable tray laying | 25d | 2028-01-12 | 2028-02-10 | 4S-WMI-GF95 | CSD-LKO Calender (6 day + Holiday)-25 | Physical Progress [7190 h]; Electrical [481234 INR]; TATA Projects Ltd-25 | 481,234 |
| 4S-WMI-GF170 |  | Cabling & Wire Pulling | 60d | 2028-02-11 | 2028-04-22 | 4S-WMI-GF135 | CSD-LKO Calender (6 day + Holiday)-25 | Physical Progress [12950 h]; Electrical [2406168 INR]; TATA Projects Ltd-25 | 2,406,168 |
| 4S-WMI-GF205 |  | DB fixing and connecting | 35d | 2028-04-24 | 2028-06-05 | 4S-WMI-GF170 | CSD-LKO Calender (6 day + Holiday)-25 | Physical Progress [4320 h]; Electrical [360925 INR]; TATA Projects Ltd-25 | 360,925 |
| 4S-WMI-GF215 |  | Floor Rising Main Installation | 20d | 2028-04-24 | 2028-05-18 | 4S-WMI-GF170 | CSD-LKO Calender (6 day + Holiday)-25 | Physical Progress [1440 h]; Electrical [1684318 INR]; TATA Projects Ltd-25 | 1,684,318 |
| 4S-WMI-GF225 |  | Floor/Distribution Panel Installation | 20d | 2028-06-06 | 2028-06-28 | 4S-WMI-GF205 | CSD-LKO Calender (6 day + Holiday)-25 | Physical Progress [1440 h]; Electrical [962467 INR]; TATA Projects Ltd-25 | 962,467 |
| 4S-WMI-GF240 |  | Equipment Earthing | 20d | 2028-06-29 | 2028-07-21 | 4S-WMI-GF215, 4S-WMI-GF225 | CSD-LKO Calender (6 day + Holiday)-25 | Physical Progress [2880 h]; Electrical [360925 INR]; TATA Projects Ltd-25 | 360,925 |
|  | 3 | **Final Fix** |  | 2028-12-15 | 2029-02-27 |  |  |  |  |
| 4S-WMI-GF280 |  | Switches & Socket | 30d | 2028-12-15 | 2029-01-20 | 4S-WMI-GF275 | CSD-LKO Calender (6 day + Holiday)-25 | Physical Progress [5750 h]; Electrical [1203084 INR]; TATA Projects Ltd-25 | 1,203,084 |
| 4S-WMI-GF335 |  | Light Fixtures | 30d | 2029-01-22 | 2029-02-27 | 4S-WMI-GF240, 4S-WMI-GF280 | CSD-LKO Calender (6 day + Holiday)-25 | Physical Progress [4320 h]; Electrical [1804626 INR]; TATA Projects Ltd-25 | 1,804,626 |
|  | 3 | **Plumbing** |  | 2027-10-13 | 2029-02-08 |  |  |  |  |
|  | 1 | **1st Fix** |  | 2027-10-13 | 2028-03-17 |  |  |  |  |
| 4S-WMI-GF35 |  | Fixing pipe supports and clamps | 35d | 2027-10-13 | 2027-11-23 | P-MEP-Plumb-20, E-GFC-MEP-4S-235, 4S-WMI-GF15 | CSD-LKO Calender (6 day + Holiday)-25 | Physical Progress [2880 h]; Plumbing [386697 INR]; TATA Projects Ltd-25 | 386,697 |
| 4S-WMI-GF60 |  | Laying water supply pipes (hot & cold) | 35d | 2027-11-24 | 2028-01-05 | E-GFC-MEP-4S-235, 4S-WMI-GF35 | CSD-LKO Calender (6 day + Holiday)-25 | Physical Progress [4320 h]; Plumbing [773394 INR]; TATA Projects Ltd-25 | 773,394 |
| 4S-WMI-GF65 |  | Laying drainage pipes (soil, waste, vent) | 35d | 2027-11-24 | 2028-01-05 | E-GFC-MEP-4S-235, 4S-WMI-GF35 | CSD-LKO Calender (6 day + Holiday)-25 | Physical Progress [4320 h]; Plumbing [773394 INR]; TATA Projects Ltd-25 | 773,394 |
| 4S-WMI-GF70 |  | Installation of plumbing fixture base supports (WC frames, sink brackets) | 30d | 2028-01-06 | 2028-02-10 | E-GFC-MEP-4S-235, 4S-WMI-GF65 | CSD-LKO Calender (6 day + Holiday)-25 | Physical Progress [1730 h]; Plumbing [386697 INR]; TATA Projects Ltd-25 | 386,697 |
| 4S-WMI-GF85 |  | Pressure testing of water supply lines | 25d | 2028-02-11 | 2028-03-10 | E-GFC-MEP-4S-235, 4S-WMI-GF60, 4S-WMI-GF65, 4S-WMI-GF70 | CSD-LKO Calender (6 day + Holiday)-25 | Physical Progress [2010 h]; Plumbing [77339 INR]; TATA Projects Ltd-25 | 77,339 |
| 4S-WMI-GF90 |  | Installation of concealed parts of toilet fixtures | 30d | 2028-02-11 | 2028-03-17 | 4S-WMI-GF70, E-GFC-MEP-4S-235 | CSD-LKO Calender (6 day + Holiday)-25 | Physical Progress [2880 h]; Plumbing [386697 INR]; TATA Projects Ltd-25 | 386,697 |

| ID | WBS | Activity | Duration | Start | Finish | Predecessors | Calendar | Resources | Cost |
| --- | --- | --- | --- | --- | --- | --- | --- | --- | --- |
|  | 2 | **2nd FIx** |  | 2028-03-13 | 2028-06-05 |  |  |  |  |
| 4S-WMI-GF110 |  | Insulation of hot water pipes (if applicable) | 30d | 2028-03-13 | 2028-04-17 | 4S-WMI-GF85 | CSD-LKO Calender (6 day + Holiday)-25 | Physical Progress [1730 h]; Plumbing [386697 INR]; TATA Projects Ltd-25 | 386,697 |
| 4S-WMI-GF140 |  | Installation of vertical risers and main distribution lines | 35d | 2028-03-18 | 2028-04-28 | 4S-WMI-GF90, 4S-WMI-GF95, 4S-WMI-GF85 | CSD-LKO Calender (6 day + Holiday)-25 | Physical Progress [5750 h]; Plumbing [773394 INR]; TATA Projects Ltd-25 | 773,394 |
| 4S-WMI-GF130 |  | Testing drainage lines for leakage/blockage | 30d | 2028-04-18 | 2028-05-24 | 4S-WMI-GF70, 4S-WMI-GF110 | CSD-LKO Calender (6 day + Holiday)-25 | Physical Progress [1730 h]; Plumbing [77339 INR]; TATA Projects Ltd-25 | 77,339 |
| 4S-WMI-GF175 |  | Fixing floor traps and gully traps | 30d | 2028-04-29 | 2028-06-05 | 4S-WMI-GF140 | CSD-LKO Calender (6 day + Holiday)-25 | Physical Progress [1730 h]; Plumbing [232018 INR]; TATA Projects Ltd-25 | 232,018 |
|  | 3 | **Final FIx** |  | 2028-12-15 | 2029-02-08 |  |  |  |  |
| 4S-WMI-GF290 |  | Installation of sanitary fixtures (WC, washbasins, urinals, sinks) | 10d | 2028-12-15 | 2028-12-27 | 4S-WMI-GF130, 4S-WMI-GF175, 4S-WMI-GF275 | CSD-LKO Calender (6 day + Holiday)-25 | Physical Progress [2880 h]; Plumbing [1546788 INR]; TATA Projects Ltd-25 | 1,546,788 |
| 4S-WMI-GF320 |  | Installation of CP fittings (taps, mixers, showers, health faucets) | 10d | 2028-12-28 | 2029-01-09 | 4S-WMI-GF290, 4S-WMI-GF275 | CSD-LKO Calender (6 day + Holiday)-25 | Physical Progress [2880 h]; Plumbing [773394 INR]; TATA Projects Ltd-25 | 773,394 |
| 4S-WMI-GF325 |  | Connection of appliances | 25d | 2029-01-10 | 2029-02-08 | 4S-WMI-GF320 | CSD-LKO Calender (6 day + Holiday)-25 | Physical Progress [2010 h]; Plumbing [386697 INR]; TATA Projects Ltd-25 | 386,697 |
|  | 4 | **Firefighting** |  | 2027-10-13 | 2029-03-06 |  |  |  |  |
|  | 1 | **1st Fix** |  | 2027-10-13 | 2028-02-10 |  |  |  |  |
| 4S-WMI-GF40 |  | Fixing pipe supports and hangers | 35d | 2027-10-13 | 2027-11-23 | P-MEP-FF-20, E-GFC-MEP-4S-235, 4S-WMI-GF15 | CSD-LKO Calender (6 day + Holiday)-25 | Physical Progress [2880 h]; Firefighting [281762 INR]; TATA Projects Ltd-25 | 281,762 |
| 4S-WMI-GF105 |  | Laying branch piping | 35d | 2027-11-24 | 2028-01-05 | E-GFC-MEP-4S-235, 4S-WMI-GF40 | CSD-LKO Calender (6 day + Holiday)-25 | Physical Progress [4320 h]; Firefighting [603775 INR]; TATA Projects Ltd-25 | 603,775 |
| 4S-WMI-GF145 |  | Hydrostatic pressure testing of piping | 30d | 2028-01-06 | 2028-02-10 | E-GFC-MEP-4S-235, 4S-WMI-GF105 | CSD-LKO Calender (6 day + Holiday)-25 | Physical Progress [1730 h]; Firefighting [80503 INR]; TATA Projects Ltd-25 | 80,503 |
|  | 2 | **2nd Fix** |  | 2028-02-11 | 2028-05-06 |  |  |  |  |
| 4S-WMI-GF160 |  | Installation of vertical risers and distribution piping in shafts | 35d | 2028-02-11 | 2028-03-23 | 4S-WMI-GF95, 4S-WMI-GF145 | CSD-LKO Calender (6 day + Holiday)-25 | Physical Progress [7190 h]; Firefighting [805034 INR]; TATA Projects Ltd-25 | 805,034 |
| 4S-WMI-GF165 |  | Painting/insulation of exposed fire pipes | 30d | 2028-02-11 | 2028-03-17 | 4S-WMI-GF145 | CSD-LKO Calender (6 day + Holiday)-25 | Physical Progress [2880 h]; Firefighting [40252 INR]; TATA Projects Ltd-25 | 40,252 |
| 4S-WMI-GF190 |  | Testing risers and branch lines for leakage | 30d | 2028-03-18 | 2028-04-22 | 4S-WMI-GF165 | CSD-LKO Calender (6 day + Holiday)-25 | Physical Progress [1730 h]; Firefighting [80503 INR]; TATA Projects Ltd-25 | 80,503 |
| 4S-WMI-GF195 |  | Installation of sprinkler branch lines in ceilings | 35d | 2028-03-24 | 2028-05-06 | 4S-WMI-GF160 | CSD-LKO Calender (6 day + Holiday)-25 | Physical Progress [7190 h]; Firefighting [603775 INR]; TATA Projects Ltd-25 | 603,775 |
|  | 3 | **Final FIx** |  | 2028-12-15 | 2029-03-06 |  |  |  |  |
| 4S-WMI-GF295 |  | Installation of hydrant accessories (valves, hose reels, cabinets) | 25d | 2028-12-15 | 2029-01-15 | 4S-WMI-GF275 | CSD-LKO Calender (6 day + Holiday)-25 | Physical Progress [2880 h]; Firefighting [402517 INR]; TATA Projects Ltd-25 | 402,517 |
| 4S-WMI-GF300 |  | Installation of portable fire extinguishers | 30d | 2028-12-15 | 2029-01-20 | 4S-WMI-GF275 | CSD-LKO Calender (6 day + Holiday)-25 | Physical Progress [1730 h]; Firefighting [40252 INR]; TATA Projects Ltd-25 | 40,252 |
| 4S-WMI-GF340 |  | Installation of sprinkler heads, nozzles, and final alignment | 35d | 2029-01-22 | 2029-03-06 | 4S-WMI-GF195, 4S-WMI-GF275, 4S-WMI-GF305 | CSD-LKO Calender (6 day + Holiday)-25 | Physical Progress [12950 h]; Firefighting [603775 INR]; TATA Projects Ltd-25 | 603,775 |
| 4S-WMI-GF345 |  | Integration with fire alarm system | 20d | 2029-01-22 | 2029-02-15 | 4S-WMI-GF300 | CSD-LKO Calender (6 day + Holiday)-25 | Physical Progress [5750 h]; Firefighting [201258 INR]; TATA Projects Ltd-25 | 201,258 |

| ID | WBS | Activity | Duration | Start | Finish | Predecessors | Calendar | Resources | Cost |
| --- | --- | --- | --- | --- | --- | --- | --- | --- | --- |
|  | 5 | **ELV** |  | 2027-05-26 | 2029-03-12 |  |  |  |  |
|  | 1 | **1st Fix** |  | 2027-05-26 | 2027-11-29 |  |  |  |  |
| 4S-WMI-GF45 |  | Wall Conduiting | 30d | 2027-05-26 | 2027-06-30 | E-GFC-MEP-4S-235, 4S-WMI-GF15 | CSD-LKO Calender (6 day + Holiday)-25 | Physical Progress [2880 h]; ELV [96904 INR]; TATA Projects Ltd-25 | 96,904 |
| 4S-WMI-GF25 |  | Slab Conduiting | 35d | 2027-10-13 | 2027-11-23 | 4S-WMI-GF10, P-MEP-ELV-20, E-GFC-MEP-4S-235 | CSD-LKO Calender (6 day + Holiday)-25 | Physical Progress [7190 h]; ELV [226108 INR]; TATA Projects Ltd-25 | 226,108 |
| 4S-WMI-GF80 |  | Installing back boxes for switches, sockets | 5d | 2027-11-24 | 2027-11-29 | 4S-WMI-GF25, E-GFC-MEP-4S-235, 4S-WMI-GF45 | CSD-LKO Calender (6 day + Holiday)-25 | Physical Progress [1440 h]; ELV [161506 INR]; TATA Projects Ltd-25 | 161,506 |
|  | 2 | **2nd Fix** |  | 2028-01-12 | 2028-08-02 |  |  |  |  |
| 4S-WMI-GF150 |  | Cable tray installation | 35d | 2028-01-12 | 2028-02-22 | 4S-WMI-GF95 | CSD-LKO Calender (6 day + Holiday)-25 | Physical Progress [7190 h]; ELV [161506 INR]; TATA Projects Ltd-25 | 161,506 |
| 4S-WMI-GF180 |  | Cabeling of ELV cable - IT/Fire Alarm/Public Address | 45d | 2028-02-23 | 2028-04-17 | 4S-WMI-GF150 | CSD-LKO Calender (6 day + Holiday)-25 | Physical Progress [12950 h]; ELV [387614 INR]; TATA Projects Ltd-25 | 387,614 |
| 4S-WMI-GF200 |  | ELV Rack Installation | 30d | 2028-04-18 | 2028-05-24 | 4S-WMI-GF180 | CSD-LKO Calender (6 day + Holiday)-25 | Physical Progress [2880 h]; ELV [161506 INR]; TATA Projects Ltd-25 | 161,506 |
| 4S-WMI-GF220 |  | Termination of cables at junction boxes, patch panels, and control panels | 35d | 2028-05-25 | 2028-07-04 | 4S-WMI-GF200 | CSD-LKO Calender (6 day + Holiday)-25 | Physical Progress [8630 h]; ELV [161506 INR]; TATA Projects Ltd-25 | 161,506 |
| 4S-WMI-GF230 |  | Fixing devices like CCTV camera bases, card reader bases, smoke detector bases, PA Bases, Wifi Bases | 25d | 2028-07-05 | 2028-08-02 | 4S-WMI-GF220 | CSD-LKO Calender (6 day + Holiday)-25 | Physical Progress [1150 h]; ELV [323012 INR]; TATA Projects Ltd-25 | 323,012 |
|  | 3 | **Final Fix** |  | 2029-01-22 | 2029-03-12 |  |  |  |  |
| 4S-WMI-GF350 |  | Installation of data and Voice Faceplate | 25d | 2029-01-22 | 2029-02-21 | 4S-WMI-GF230, 4S-WMI-GF275, 4S-WMI-GF305 | CSD-LKO Calender (6 day + Holiday)-25 | Physical Progress [4320 h]; ELV [161506 INR]; TATA Projects Ltd-25 | 161,506 |
| 4S-WMI-GF355 |  | Installation of Camera & Wifi | 30d | 2029-01-22 | 2029-02-27 | 4S-WMI-GF275, 4S-WMI-GF305 | CSD-LKO Calender (6 day + Holiday)-25 | Physical Progress [4320 h]; ELV [161506 INR]; TATA Projects Ltd-25 | 161,506 |
| 4S-WMI-GF360 |  | Installation of fire alarm devices + Public Address | 15d | 2029-01-22 | 2029-02-08 | 4S-WMI-GF275, 4S-WMI-GF305 | CSD-LKO Calender (6 day + Holiday)-25 | Physical Progress [4320 h]; ELV [193807 INR]; TATA Projects Ltd-25 | 193,807 |
| 4S-WMI-GF380 |  | Installation of Active System | 15d | 2029-02-09 | 2029-02-27 | 4S-WMI-GF360 | CSD-LKO Calender (6 day + Holiday)-25 | Physical Progress [4320 h]; ELV [323012 INR]; TATA Projects Ltd-25 | 323,012 |
| 4S-WMI-GF385 |  | Fire Panel Intallation & Integration | 25d | 2029-02-09 | 2029-03-12 | 4S-WMI-GF360 | CSD-LKO Calender (6 day + Holiday)-25 | Physical Progress [7190 h]; ELV [161506 INR]; TATA Projects Ltd-25 | 161,506 |
| 4S-WMI-GF390 |  | Installation & Integration of Audio Visual System | 25d | 2029-02-09 | 2029-03-12 | 4S-WMI-GF360 | CSD-LKO Calender (6 day + Holiday)-25 | Physical Progress [7190 h]; ELV [161506 INR]; TATA Projects Ltd-25 | 161,506 |
| 4S-WMI-GF395 |  | Installation & Integration of Access Control | 25d | 2029-02-09 | 2029-03-12 | 4S-WMI-GF360 | CSD-LKO Calender (6 day + Holiday)-25 | Physical Progress [7190 h]; ELV [161506 INR]; TATA Projects Ltd-25 | 161,506 |
| 4S-WMI-GF400 |  | Integration of Active components | 10d | 2029-02-28 | 2029-03-12 | 4S-WMI-GF380 | CSD-LKO Calender (6 day + Holiday)-25 | Physical Progress [4320 h]; ELV [64602 INR]; TATA Projects Ltd-25 | 64,602 |
|  | 6 | **Kitchen** |  | 2028-12-15 | 2029-04-17 |  |  |  |  |
| 4S-WMI-GF315 |  | Counters & Cabinet | 20d | 2028-12-15 | 2029-01-09 | E-GFC-Misc-Kitchen-35, 4S-WMI-GF275 | CSD-LKO Calender (6 day + Holiday)-25 | Physical Progress [5750 h]; Kitchen [1657850 INR]; TATA Projects Ltd-25 | 1,657,850 |
| 4S-WMI-GF330 |  | MEP Services including LNG, Chimney, Exhaust | 20d | 2029-01-10 | 2029-02-02 | 4S-WMI-GF315 | CSD-LKO Calender (6 day + Holiday)-25 | Physical Progress [5750 h]; Kitchen [2486774 INR]; TATA Projects Ltd-25 | 2,486,774 |
| 4S-WMI-GF375 |  | Installation of Kitchen Equipments | 20d | 2029-02-03 | 2029-02-27 | 4S-WMI-GF330, P-MEP-KE-25 | CSD-LKO Calender (6 day + Holiday)-25 | Physical Progress [5750 h]; Kitchen [11604947 INR]; TATA Projects Ltd-25 | 11,604,947 |
| 4S-WMI-GF405 |  | Testing & Commissioning of Kitchen | 40d | 2029-02-28 | 2029-04-17 | 4S-WMI-GF375 | CSD-LKO Calender (6 day + Holiday)-25 | Physical Progress [11510 h]; Kitchen [828925 INR]; TATA Projects Ltd-25 | 828,925 |

| ID | WBS | Activity | Duration | Start | Finish | Predecessors | Calendar | Resources | Cost |
| --- | --- | --- | --- | --- | --- | --- | --- | --- | --- |
|  | 2 | **Dry Finishes/ID Works** |  | 2028-06-06 | 2029-04-17 |  |  |  |  |
| 4S-WMI-GF245 |  | Running of Wild Air | 1d | 2028-06-06 | 2028-06-06 | 4S-WMI-GF125, 4S-WMI-GF155, 4S-WMI-GF185, 4S-WMI-GF210, 4S-WMI-GF235, 4S-F-GF40 | CSD-LKO Calender (6 day + Holiday)-25 | Physical Progress [290 h]; TATA Projects Ltd-25 |  |
| 4S-WMI-GF250 |  | Wall finish ID Works | 35d | 2028-08-03 | 2028-09-14 | P-H&CC_ID-Fur-20, P-H&CC_ID-Wall-20, P-H&CC_ID-Floor-20, P-H&CC_ID-SF-20, P-H&CC_ID-FC-20, P-H&CC_ID-Doors-20, 4S-WMI-GF125, 4S-WMI-GF155, 4S-WMI-GF185, 4S-WMI-GF210, 4S-WMI-GF235, 4S-WMI-GF245 FF, 4S-WMI-GF135, 4S-WMI-GF170, 4S-WMI-GF205, 4S-WMI-GF215, 4S-WMI-GF225, 4S-WMI-GF240, 4S-WMI-GF110, 4S-WMI-GF130, 4S-WMI-GF140, 4S-WMI-GF175, 4S-WMI-GF165, 4S-WMI-GF190, 4S-WMI-GF160, 4S-WMI-GF195, 4S-WMI-GF150, 4S-WMI-GF180, 4S-WMI-GF200, 4S-WMI-GF220, 4S-WMI-GF230, 4S-WMI-GF245 | CSD-LKO Calender (6 day + Holiday)-25 | ID Work [8535857 INR]; Physical Progress [8630 h]; TATA Projects Ltd-25 | 8,535,857 |
| 4S-WMI-GF255 |  | False Ceiling Installation | 45d | 2028-09-15 | 2028-11-09 | 4S-WMI-GF250 | CSD-LKO Calender (6 day + Holiday)-25 | ID Work [10243028 INR]; Physical Progress [12950 h]; TATA Projects Ltd-25 | 10,243,028 |
| 4S-WMI-GF265 |  | Flooring of toilets/kitchen/Balcony | 15d | 2028-11-10 | 2028-11-27 | 4S-WMI-GF55, 4S-WMI-GF255 | CSD-LKO Calender (6 day + Holiday)-25 | ID Work [6828686 INR]; Physical Progress [4320 h]; TATA Projects Ltd-25 | 6,828,686 |
| 4S-WMI-GF270 |  | Doors & Windows/Fire Doors/Shaft Doors | 35d | 2028-11-28 | 2029-01-09 | P-Misc-FD-20, 4S-WMI-GF250, 4S-WMI-GF265 | CSD-LKO Calender (6 day + Holiday)-25 | ID Work [8535857 INR]; Physical Progress [4320 h]; TATA Projects Ltd-25 | 8,535,857 |
| 4S-WMI-GF275 |  | Putty & First Coat of Paint | 15d | 2028-11-28 | 2028-12-14 | 4S-WMI-GF250, 4S-WMI-GF265 | CSD-LKO Calender (6 day + Holiday)-25 | Painting [2608 Sq m]; Painter [2610 h]; Helper [2610 h]; Physical Progress [4320 h]; TATA Projects Ltd-25 | 596,240.96 |
| 4S-WMI-GF305 |  | Wooden Flooring/Flooring | 30d | 2028-12-15 | 2029-01-20 | P-Civil-Flooring-15, 4S-WMI-GF275 | CSD-LKO Calender (6 day + Holiday)-25 | ID Work [8535857 INR]; Physical Progress [8630 h]; TATA Projects Ltd-25 | 8,535,857 |
| 4S-WMI-GF310 |  | Railing for staircase | 35d | 2028-12-15 | 2029-01-27 | 4S-WMI-GF250, 4S-WMI-GF275 | CSD-LKO Calender (6 day + Holiday)-25 | ID Work [2560757 INR]; Physical Progress [4320 h]; TATA Projects Ltd-25 | 2,560,757 |
| 4S-WMI-GF365 |  | Fixed Furniture | 10d | 2029-01-22 | 2029-02-02 | 4S-WMI-GF305 | CSD-LKO Calender (6 day + Holiday)-25 | ID Work [7682271 INR]; Physical Progress [2880 h]; TATA Projects Ltd-25 | 7,682,271 |
| 4S-WMI-GF370 |  | False ceiling final finishes | 15d | 2029-01-22 | 2029-02-08 | 4S-WMI-GF285 | CSD-LKO Calender (6 day + Holiday)-25 | ID Work [2560757 INR]; Physical Progress [4320 h]; TATA Projects Ltd-25 | 2,560,757 |
| 4S-WMI-GF410 |  | Final coat of paint | 15d | 2029-03-13 | 2029-03-29 | 4S-WMI-GF335, 4S-WMI-GF325, 4S-WMI-GF345, 4S-WMI-GF340, 4S-WMI-GF400, 4S-WMI-GF395, 4S-WMI-GF390, 4S-WMI-GF385, 4S-WMI-GF355, 4S-WMI-GF350, 4S-WMI-GF295, 4S-WMI-GF270, 4S-WMI-GF370, 4S-WMI-GF310, 4S-WMI-GF365 | CSD-LKO Calender (6 day + Holiday)-25 | Painting [2608 Sq m]; Painter [2610 h]; Helper [2610 h]; Physical Progress [4320 h]; TATA Projects Ltd-25 | 596,240.96 |
| 4S-WMI-GF415 |  | Soft Furnishing & Signage | 15d | 2029-03-31 | 2029-04-17 | P-Misc-Signage-20, 4S-WMI-GF410 | CSD-LKO Calender (6 day + Holiday)-25 | ID Work [12803786 INR]; Physical Progress [1440 h]; TATA Projects Ltd-25 | 12,803,786 |
| 4S-WMI-GF420 |  | Loose Furniture | 15d | 2029-03-31 | 2029-04-17 | 4S-WMI-GF410 | CSD-LKO Calender (6 day + Holiday)-25 | ID Work [17071714 INR]; Physical Progress [1440 h]; TATA Projects Ltd-25 | 17,071,714 |
|  | 2 | **First Floor** |  | 2027-05-08 | 2028-12-28 |  |  |  |  |
|  | 1 | **Wet Finishes** |  | 2027-05-08 | 2027-09-08 |  |  |  |  |
| 4S-WMI-1st10 |  | Deshuttering | 4d | 2027-05-08 | 2027-05-13 | 4S-SS-Serv.F.415 | CSD-LKO Calender (6 day + Holiday)-25 | Physical Progress [1160 h]; TATA Projects Ltd-25 |  |
| 4S-WMI-1st15 |  | Brickwork/Blockwork | 30d | 2027-05-13 | 2027-06-17 | 4S-WMI-1st10, E-GFC-AR-4S-120 | CSD-LKO Calender (6 day + Holiday)-25 | Masonry [546 CuM]; Mason [3640 h]; Helper [1820 h]; Physical Progress [8630 h]; TATA Projects Ltd-25 | 5,206,306.56 |
| 4S-WMI-1st55 |  | Waterproofing of Toilets, Balcony & Kitchen | 35d | 2027-06-17 | 2027-07-28 | 4S-WMI-1st15 | CSD-LKO Calender (6 day + Holiday)-25 | Waterproofing [8564838 INR]; Waterprrofing Mason [8160 h]; Helper [4080 h]; Physical Progress [4320 h]; TATA Projects Ltd-25 | 8,564,838 |
| 4S-WMI-1st95 |  | Plaster | 35d | 2027-07-28 | 2027-09-08 | 4S-WMI-1st30, 4S-WMI-1st75, 4S-WMI-1st80, 4S-WMI-1st55 | CSD-LKO Calender (6 day + Holiday)-25 | Plaster [8485 Sqr Mtr]; Mason [5660 h]; Helper [2830 h]; Physical Progress [4320 h]; TATA Projects Ltd-25 | 4,699,926.35 |
|  | 5 | **MEP** |  | 2027-05-13 | 2028-11-22 |  |  |  |  |
|  | 2 | **HVAC** |  | 2027-06-17 | 2028-09-28 |  |  |  |  |
|  | 1 | **1st Fix** |  | 2027-06-17 | 2027-10-08 |  |  |  |  |
| 4S-WMI-1st50 |  | Duct Support Fabrication | 35d | 2027-06-17 | 2027-07-28 | 4S-WMI-1st15, E-GFC-MEP-4S-240 | CSD-LKO Calender (6 day + Holiday)-25 | Physical Progress [4320 h]; HVAC [214949 INR]; TATA Projects Ltd-25 | 214,949 |
| 4S-WMI-1st100 |  | Installing duct hangers and supports | 30d | 2027-07-28 | 2027-09-01 | 4S-WMI-1st50, E-GFC-MEP-4S-240 | CSD-LKO Calender (6 day + Holiday)-25 | Physical Progress [2880 h]; HVAC [429898 INR]; TATA Projects Ltd-25 | 429,898 |
| 4S-WMI-1st130 |  | Laying concealed/exposed refrigerant piping | 30d | 2027-09-01 | 2027-10-08 | 4S-WMI-1st100, E-GFC-MEP-4S-240 | CSD-LKO Calender (6 day + Holiday)-25 | Physical Progress [4320 h]; HVAC [107474 INR]; TATA Projects Ltd-25 | 107,474 |
| 4S-WMI-1st135 |  | Laying concealed/exposed drain piping | 30d | 2027-09-01 | 2027-10-08 | 4S-WMI-1st100, E-GFC-MEP-4S-240 | CSD-LKO Calender (6 day + Holiday)-25 | Physical Progress [2880 h]; HVAC [644847 INR]; TATA Projects Ltd-25 | 644,847 |

| ID | WBS | Activity | Duration | Start | Finish | Predecessors | Calendar | Resources | Cost |
| --- | --- | --- | --- | --- | --- | --- | --- | --- | --- |
|  | 2 | **2nd Fix** |  | 2027-09-01 | 2028-02-08 |  |  |  |  |
| 4S-WMI-1st140 |  | Duct installation | 20d | 2027-09-01 | 2027-09-25 | 4S-WMI-1st100 | CSD-LKO Calender (6 day + Holiday)-25 | Physical Progress [4320 h]; HVAC [1612117 INR]; TATA Projects Ltd-25 | 1,612,117 |
| 4S-WMI-1st170 |  | Insulation of ducts (thermal/acoustic) | 10d | 2027-09-25 | 2027-10-08 | 4S-WMI-1st140 | CSD-LKO Calender (6 day + Holiday)-25 | Physical Progress [1730 h]; HVAC [967270 INR]; TATA Projects Ltd-25 | 967,270 |
| 4S-WMI-1st185 |  | Installation of chilled water piping / VRF piping | 20d | 2027-10-08 | 2027-11-03 | 4S-WMI-1st170, 4S-WMI-1st130, 4S-WMI-1st135 | CSD-LKO Calender (6 day + Holiday)-25 | Physical Progress [1730 h]; HVAC [2149489 INR]; TATA Projects Ltd-25 | 2,149,489 |
| 4S-WMI-1st220 |  | Installation of indoor units including AHU, FCU | 60d | 2027-11-03 | 2028-01-14 | 4S-WMI-1st185, 4S-WMI-1st130, 4S-WMI-1st135 | CSD-LKO Calender (6 day + Holiday)-25 | Physical Progress [12950 h]; HVAC [1934540 INR]; TATA Projects Ltd-25 | 1,934,540 |
| 4S-WMI-1st240 |  | Connecting refrigerant and drain piping to indoor units | 20d | 2028-01-14 | 2028-02-08 | 4S-WMI-1st220 | CSD-LKO Calender (6 day + Holiday)-25 | Physical Progress [1730 h]; HVAC [537372 INR]; TATA Projects Ltd-25 | 537,372 |
|  | 3 | **Final Fix** |  | 2028-07-17 | 2028-09-28 |  |  |  |  |
| 4S-WMI-1st260 |  | Installing grills, diffusers, dampers | 30d | 2028-07-17 | 2028-08-22 | 4S-WMI-1st255 | CSD-LKO Calender (6 day + Holiday)-25 | Physical Progress [1730 h]; HVAC [1074745 INR]; TATA Projects Ltd-25 | 1,074,745 |
| 4S-WMI-1st285 |  | Installation of thermostats and control panels | 30d | 2028-08-22 | 2028-09-28 | 4S-WMI-1st260, 4S-WMI-1st275, 4S-WMI-1st240 | CSD-LKO Calender (6 day + Holiday)-25 | Physical Progress [1730 h]; HVAC [537372 INR]; TATA Projects Ltd-25 | 537,372 |
|  | 1 | **Electrical** |  | 2027-05-13 | 2028-11-04 |  |  |  |  |
|  | 1 | **1st Fix** |  | 2027-05-13 | 2027-07-28 |  |  |  |  |
| 4S-WMI-1st20 |  | Slab Conduiting | 35d | 2027-05-13 | 2027-06-23 | 4S-WMI-1st10, E-GFC-MEP-4S-240 | CSD-LKO Calender (6 day + Holiday)-25 | Physical Progress [7190 h]; Electrical [1203084 INR]; TATA Projects Ltd-25 | 1,203,084 |
| 4S-WMI-1st30 |  | Wall Conduiting | 30d | 2027-06-17 | 2027-07-22 | 4S-WMI-1st15, E-GFC-MEP-4S-240 | CSD-LKO Calender (6 day + Holiday)-25 | Physical Progress [2880 h]; Electrical [601542 INR]; TATA Projects Ltd-25 | 601,542 |
| 4S-WMI-1st75 |  | Installing back boxes for switches, sockets | 5d | 2027-07-22 | 2027-07-28 | 4S-WMI-1st30, 4S-WMI-1st20, E-GFC-MEP-4S-240 | CSD-LKO Calender (6 day + Holiday)-25 | Physical Progress [1440 h]; Electrical [360925 INR]; TATA Projects Ltd-25 | 360,925 |
|  | 2 | **2nd Fix** |  | 2027-09-08 | 2028-03-21 |  |  |  |  |
| 4S-WMI-1st115 |  | Cable tray laying | 25d | 2027-09-08 | 2027-10-08 | 4S-WMI-1st95 | CSD-LKO Calender (6 day + Holiday)-25 | Physical Progress [7190 h]; Electrical [481234 INR]; TATA Projects Ltd-25 | 481,234 |
| 4S-WMI-1st155 |  | Cabling & Wire Pulling | 60d | 2027-10-08 | 2027-12-20 | 4S-WMI-1st115 | CSD-LKO Calender (6 day + Holiday)-25 | Physical Progress [12950 h]; Electrical [2406168 INR]; TATA Projects Ltd-25 | 2,406,168 |
| 4S-WMI-1st205 |  | DB fixing and connecting | 35d | 2027-12-20 | 2028-02-02 | 4S-WMI-1st155 | CSD-LKO Calender (6 day + Holiday)-25 | Physical Progress [4320 h]; Electrical [360925 INR]; TATA Projects Ltd-25 | 360,925 |
| 4S-WMI-1st210 |  | Floor Rising Main Installation | 20d | 2027-12-20 | 2028-01-14 | 4S-WMI-1st155 | CSD-LKO Calender (6 day + Holiday)-25 | Physical Progress [1440 h]; Electrical [1684318 INR]; TATA Projects Ltd-25 | 1,684,318 |
| 4S-WMI-1st225 |  | Floor/Distribution Panel Installation | 20d | 2028-02-02 | 2028-02-25 | 4S-WMI-1st205 | CSD-LKO Calender (6 day + Holiday)-25 | Physical Progress [1440 h]; Electrical [962467 INR]; TATA Projects Ltd-25 | 962,467 |
| 4S-WMI-1st235 |  | Equipment Earthing | 20d | 2028-02-25 | 2028-03-21 | 4S-WMI-1st225, 4S-WMI-1st210 | CSD-LKO Calender (6 day + Holiday)-25 | Physical Progress [2880 h]; Electrical [360925 INR]; TATA Projects Ltd-25 | 360,925 |
|  | 3 | **Final Fix** |  | 2028-08-22 | 2028-11-04 |  |  |  |  |
| 4S-WMI-1st280 |  | Switches & Socket | 30d | 2028-08-22 | 2028-09-28 | 4S-WMI-1st275 | CSD-LKO Calender (6 day + Holiday)-25 | Physical Progress [5750 h]; Electrical [1203084 INR]; TATA Projects Ltd-25 | 1,203,084 |
| 4S-WMI-1st325 |  | Light Fixtures | 30d | 2028-09-28 | 2028-11-04 | 4S-WMI-1st280, 4S-WMI-1st235 | CSD-LKO Calender (6 day + Holiday)-25 | Physical Progress [4320 h]; Electrical [1804626 INR]; TATA Projects Ltd-25 | 1,804,626 |

| ID | WBS | Activity | Duration | Start | Finish | Predecessors | Calendar | Resources | Cost |
| --- | --- | --- | --- | --- | --- | --- | --- | --- | --- |
|  | 3 | **Plumbing** |  | 2027-06-17 | 2028-10-18 |  |  |  |  |
|  | 1 | **1st Fix** |  | 2027-06-17 | 2027-11-20 |  |  |  |  |
| 4S-WMI-1st35 |  | Fixing pipe supports and clamps | 35d | 2027-06-17 | 2027-07-28 | 4S-WMI-1st15, E-GFC-MEP-4S-240 | CSD-LKO Calender (6 day + Holiday)-25 | Physical Progress [2880 h]; Plumbing [386697 INR]; TATA Projects Ltd-25 | 386,697 |
| 4S-WMI-1st60 |  | Laying water supply pipes (hot & cold) | 35d | 2027-07-28 | 2027-09-08 | 4S-WMI-1st35, E-GFC-MEP-4S-240 | CSD-LKO Calender (6 day + Holiday)-25 | Physical Progress [4320 h]; Plumbing [773394 INR]; TATA Projects Ltd-25 | 773,394 |
| 4S-WMI-1st65 |  | Laying drainage pipes (soil, waste, vent) | 35d | 2027-07-28 | 2027-09-08 | 4S-WMI-1st35, E-GFC-MEP-4S-240 | CSD-LKO Calender (6 day + Holiday)-25 | Physical Progress [4320 h]; Plumbing [773394 INR]; TATA Projects Ltd-25 | 773,394 |
| 4S-WMI-1st70 |  | Installation of plumbing fixture base supports (WC frames, sink brackets) | 30d | 2027-09-08 | 2027-10-15 | 4S-WMI-1st65, E-GFC-MEP-4S-240 | CSD-LKO Calender (6 day + Holiday)-25 | Physical Progress [1730 h]; Plumbing [386697 INR]; TATA Projects Ltd-25 | 386,697 |
| 4S-WMI-1st85 |  | Pressure testing of water supply lines | 25d | 2027-10-15 | 2027-11-15 | 4S-WMI-1st60, 4S-WMI-1st65, 4S-WMI-1st70, E-GFC-MEP-4S-240 | CSD-LKO Calender (6 day + Holiday)-25 | Physical Progress [2010 h]; Plumbing [77339 INR]; TATA Projects Ltd-25 | 77,339 |
| 4S-WMI-1st90 |  | Installation of concealed parts of toilet fixtures | 30d | 2027-10-15 | 2027-11-20 | 4S-WMI-1st70, E-GFC-MEP-4S-240 | CSD-LKO Calender (6 day + Holiday)-25 | Physical Progress [2880 h]; Plumbing [386697 INR]; TATA Projects Ltd-25 | 386,697 |
|  | 2 | **2nd FIx** |  | 2027-11-15 | 2028-02-08 |  |  |  |  |
| 4S-WMI-1st110 |  | Insulation of hot water pipes (if applicable) | 30d | 2027-11-15 | 2027-12-20 | 4S-WMI-1st85 | CSD-LKO Calender (6 day + Holiday)-25 | Physical Progress [1730 h]; Plumbing [386697 INR]; TATA Projects Ltd-25 | 386,697 |
| 4S-WMI-1st120 |  | Installation of vertical risers and main distribution lines | 35d | 2027-11-20 | 2028-01-03 | 4S-WMI-1st95, 4S-WMI-1st85, 4S-WMI-1st90 | CSD-LKO Calender (6 day + Holiday)-25 | Physical Progress [5750 h]; Plumbing [773394 INR]; TATA Projects Ltd-25 | 773,394 |
| 4S-WMI-1st145 |  | Testing drainage lines for leakage/blockage | 30d | 2027-12-20 | 2028-01-27 | 4S-WMI-1st70, 4S-WMI-1st110 | CSD-LKO Calender (6 day + Holiday)-25 | Physical Progress [1730 h]; Plumbing [77339 INR]; TATA Projects Ltd-25 | 77,339 |
| 4S-WMI-1st160 |  | Fixing floor traps and gully traps | 30d | 2028-01-03 | 2028-02-08 | 4S-WMI-1st120 | CSD-LKO Calender (6 day + Holiday)-25 | Physical Progress [1730 h]; Plumbing [232018 INR]; TATA Projects Ltd-25 | 232,018 |
|  | 3 | **Final FIx** |  | 2028-08-22 | 2028-10-18 |  |  |  |  |
| 4S-WMI-1st290 |  | Installation of sanitary fixtures (WC, washbasins, urinals, sinks) | 10d | 2028-08-22 | 2028-09-04 | 4S-WMI-1st275, 4S-WMI-1st145, 4S-WMI-1st160 | CSD-LKO Calender (6 day + Holiday)-25 | Physical Progress [2880 h]; Plumbing [1546788 INR]; TATA Projects Ltd-25 | 1,546,788 |
| 4S-WMI-1st315 |  | Installation of CP fittings (taps, mixers, showers, health faucets) | 10d | 2028-09-04 | 2028-09-15 | 4S-WMI-1st290, 4S-WMI-1st275 | CSD-LKO Calender (6 day + Holiday)-25 | Physical Progress [2880 h]; Plumbing [773394 INR]; TATA Projects Ltd-25 | 773,394 |
| 4S-WMI-1st320 |  | Connection of appliances | 25d | 2028-09-15 | 2028-10-18 | 4S-WMI-1st315 | CSD-LKO Calender (6 day + Holiday)-25 | Physical Progress [2010 h]; Plumbing [386697 INR]; TATA Projects Ltd-25 | 386,697 |
|  | 4 | **Firefighting** |  | 2027-06-17 | 2028-11-10 |  |  |  |  |
|  | 1 | **1st Fix** |  | 2027-06-17 | 2027-10-15 |  |  |  |  |
| 4S-WMI-1st40 |  | Fixing pipe supports and hangers | 35d | 2027-06-17 | 2027-07-28 | 4S-WMI-1st15, E-GFC-MEP-4S-240 | CSD-LKO Calender (6 day + Holiday)-25 | Physical Progress [2880 h]; Firefighting [281762 INR]; TATA Projects Ltd-25 | 281,762 |
| 4S-WMI-1st105 |  | Laying branch piping | 35d | 2027-07-28 | 2027-09-08 | 4S-WMI-1st40, E-GFC-MEP-4S-240 | CSD-LKO Calender (6 day + Holiday)-25 | Physical Progress [4320 h]; Firefighting [603775 INR]; TATA Projects Ltd-25 | 603,775 |
| 4S-WMI-1st150 |  | Hydrostatic pressure testing of piping | 30d | 2027-09-08 | 2027-10-15 | 4S-WMI-1st105, E-GFC-MEP-4S-240 | CSD-LKO Calender (6 day + Holiday)-25 | Physical Progress [1730 h]; Firefighting [80503 INR]; TATA Projects Ltd-25 | 80,503 |
|  | 2 | **2nd Fix** |  | 2027-10-15 | 2028-01-08 |  |  |  |  |
| 4S-WMI-1st175 |  | Installation of vertical risers and distribution piping in shafts | 35d | 2027-10-15 | 2027-11-26 | 4S-WMI-1st95, 4S-WMI-1st150 | CSD-LKO Calender (6 day + Holiday)-25 | Physical Progress [7190 h]; Firefighting [805034 INR]; TATA Projects Ltd-25 | 805,034 |
| 4S-WMI-1st180 |  | Painting/insulation of exposed fire pipes | 30d | 2027-10-15 | 2027-11-20 | 4S-WMI-1st150 | CSD-LKO Calender (6 day + Holiday)-25 | Physical Progress [2880 h]; Firefighting [40252 INR]; TATA Projects Ltd-25 | 40,252 |
| 4S-WMI-1st190 |  | Testing risers and branch lines for leakage | 30d | 2027-11-20 | 2027-12-27 | 4S-WMI-1st180 | CSD-LKO Calender (6 day + Holiday)-25 | Physical Progress [1730 h]; Firefighting [80503 INR]; TATA Projects Ltd-25 | 80,503 |
| 4S-WMI-1st200 |  | Installation of sprinkler branch lines in ceilings | 35d | 2027-11-26 | 2028-01-08 | 4S-WMI-1st175 | CSD-LKO Calender (6 day + Holiday)-25 | Physical Progress [7190 h]; Firefighting [603775 INR]; TATA Projects Ltd-25 | 603,775 |

| ID | WBS | Activity | Duration | Start | Finish | Predecessors | Calendar | Resources | Cost |
| --- | --- | --- | --- | --- | --- | --- | --- | --- | --- |
|  | 3 | **Final FIx** |  | 2028-08-22 | 2028-11-10 |  |  |  |  |
| 4S-WMI-1st295 |  | Installation of hydrant accessories (valves, hose reels, cabinets) | 25d | 2028-08-22 | 2028-09-21 | 4S-WMI-1st275 | CSD-LKO Calender (6 day + Holiday)-25 | Physical Progress [2880 h]; Firefighting [402517 INR]; TATA Projects Ltd-25 | 402,517 |
| 4S-WMI-1st300 |  | Installation of portable fire extinguishers | 30d | 2028-08-22 | 2028-09-28 | 4S-WMI-1st275 | CSD-LKO Calender (6 day + Holiday)-25 | Physical Progress [1730 h]; Firefighting [40252 INR]; TATA Projects Ltd-25 | 40,252 |
| 4S-WMI-1st330 |  | Installation of sprinkler heads, nozzles, and final alignment | 35d | 2028-09-28 | 2028-11-10 | 4S-WMI-1st275, 4S-WMI-1st305, 4S-WMI-1st200 | CSD-LKO Calender (6 day + Holiday)-25 | Physical Progress [12950 h]; Firefighting [603775 INR]; TATA Projects Ltd-25 | 603,775 |
| 4S-WMI-1st360 |  | Integration with fire alarm system | 20d | 2028-09-28 | 2028-10-24 | 4S-WMI-1st300, 4S-WMI-1st295 | CSD-LKO Calender (6 day + Holiday)-25 | Physical Progress [5750 h]; Firefighting [201258 INR]; TATA Projects Ltd-25 | 201,258 |
|  | 5 | **ELV** |  | 2027-05-13 | 2028-11-22 |  |  |  |  |
|  | 1 | **1st Fix** |  | 2027-05-13 | 2027-07-28 |  |  |  |  |
| 4S-WMI-1st25 |  | Slab Conduiting | 35d | 2027-05-13 | 2027-06-23 | 4S-WMI-1st10, E-GFC-MEP-4S-240 | CSD-LKO Calender (6 day + Holiday)-25 | Physical Progress [7190 h]; ELV [226108 INR]; TATA Projects Ltd-25 | 226,108 |
| 4S-WMI-1st45 |  | Wall Conduiting | 30d | 2027-06-17 | 2027-07-22 | 4S-WMI-1st15, E-GFC-MEP-4S-240 | CSD-LKO Calender (6 day + Holiday)-25 | Physical Progress [2880 h]; ELV [96904 INR]; TATA Projects Ltd-25 | 96,904 |
| 4S-WMI-1st80 |  | Installing back boxes for switches, sockets | 5d | 2027-07-22 | 2027-07-28 | 4S-WMI-1st45, 4S-WMI-1st25, E-GFC-MEP-4S-240 | CSD-LKO Calender (6 day + Holiday)-25 | Physical Progress [1440 h]; ELV [161506 INR]; TATA Projects Ltd-25 | 161,506 |
|  | 2 | **2nd Fix** |  | 2027-09-08 | 2028-04-01 |  |  |  |  |
| 4S-WMI-1st125 |  | Cable tray installation | 35d | 2027-09-08 | 2027-10-21 | 4S-WMI-1st95 | CSD-LKO Calender (6 day + Holiday)-25 | Physical Progress [7190 h]; ELV [161506 INR]; TATA Projects Ltd-25 | 161,506 |
| 4S-WMI-1st165 |  | Cabeling of ELV cable - IT/Fire Alarm/Public Address | 45d | 2027-10-21 | 2027-12-14 | 4S-WMI-1st125 | CSD-LKO Calender (6 day + Holiday)-25 | Physical Progress [12950 h]; ELV [387614 INR]; TATA Projects Ltd-25 | 387,614 |
| 4S-WMI-1st195 |  | ELV Rack Installation | 30d | 2027-12-14 | 2028-01-20 | 4S-WMI-1st165 | CSD-LKO Calender (6 day + Holiday)-25 | Physical Progress [2880 h]; ELV [161506 INR]; TATA Projects Ltd-25 | 161,506 |
| 4S-WMI-1st215 |  | Termination of cables at junction boxes, patch panels, and control panels | 35d | 2028-01-20 | 2028-03-02 | 4S-WMI-1st195 | CSD-LKO Calender (6 day + Holiday)-25 | Physical Progress [8630 h]; ELV [161506 INR]; TATA Projects Ltd-25 | 161,506 |
| 4S-WMI-1st230 |  | Fixing devices like CCTV camera bases, card reader bases, smoke detector bases, PA Bases, Wifi Bases | 25d | 2028-03-02 | 2028-04-01 | 4S-WMI-1st215 | CSD-LKO Calender (6 day + Holiday)-25 | Physical Progress [1150 h]; ELV [323012 INR]; TATA Projects Ltd-25 | 323,012 |
|  | 3 | **FInal Fix** |  | 2028-09-28 | 2028-11-22 |  |  |  |  |
| 4S-WMI-1st335 |  | Installation of data and Voice Faceplate | 25d | 2028-09-28 | 2028-10-30 | 4S-WMI-1st275, 4S-WMI-1st305, 4S-WMI-1st230 | CSD-LKO Calender (6 day + Holiday)-25 | Physical Progress [4320 h]; ELV [161506 INR]; TATA Projects Ltd-25 | 161,506 |
| 4S-WMI-1st340 |  | Installation of Camera & Wifi | 30d | 2028-09-28 | 2028-11-04 | 4S-WMI-1st275, 4S-WMI-1st305 | CSD-LKO Calender (6 day + Holiday)-25 | Physical Progress [4320 h]; ELV [161506 INR]; TATA Projects Ltd-25 | 161,506 |
| 4S-WMI-1st345 |  | Installation of fire alarm devices + Public Address | 15d | 2028-09-28 | 2028-10-18 | 4S-WMI-1st275, 4S-WMI-1st305 | CSD-LKO Calender (6 day + Holiday)-25 | Physical Progress [4320 h]; ELV [193807 INR]; TATA Projects Ltd-25 | 193,807 |
| 4S-WMI-1st365 |  | Installation of Active System | 15d | 2028-10-18 | 2028-11-04 | 4S-WMI-1st345 | CSD-LKO Calender (6 day + Holiday)-25 | Physical Progress [4320 h]; ELV [323012 INR]; TATA Projects Ltd-25 | 323,012 |
| 4S-WMI-1st370 |  | Fire Panel Intallation & Integration | 25d | 2028-10-18 | 2028-11-16 | 4S-WMI-1st345 | CSD-LKO Calender (6 day + Holiday)-25 | Physical Progress [7190 h]; ELV [161506 INR]; TATA Projects Ltd-25 | 161,506 |
| 4S-WMI-1st375 |  | Installation & Integration of Audio Visual System | 25d | 2028-10-18 | 2028-11-16 | 4S-WMI-1st345 | CSD-LKO Calender (6 day + Holiday)-25 | Physical Progress [7190 h]; ELV [161506 INR]; TATA Projects Ltd-25 | 161,506 |
| 4S-WMI-1st380 |  | Installation & Integration of Access Control | 25d | 2028-10-18 | 2028-11-16 | 4S-WMI-1st345 | CSD-LKO Calender (6 day + Holiday)-25 | Physical Progress [7190 h]; ELV [161506 INR]; TATA Projects Ltd-25 | 161,506 |
| 4S-WMI-1st385 |  | Integration of Active components | 15d | 2028-11-04 | 2028-11-22 | 4S-WMI-1st365 | CSD-LKO Calender (6 day + Holiday)-25 | Physical Progress [4320 h]; ELV [64602 INR]; TATA Projects Ltd-25 | 64,602 |

| ID | WBS | Activity | Duration | Start | Finish | Predecessors | Calendar | Resources | Cost |
| --- | --- | --- | --- | --- | --- | --- | --- | --- | --- |
|  | 2 | **Dry Finishes/ID Works** |  | 2028-04-10 | 2028-12-28 |  |  |  |  |
| 4S-WMI-1st245 |  | Running of Wild Air | 1d | 2028-04-10 | 2028-04-11 | 4S-F-GF40, 4S-WMI-1st140, 4S-WMI-1st170, 4S-WMI-1st185, 4S-WMI-1st220, 4S-WMI-1st240 | CSD-LKO Calender (6 day + Holiday)-25 | Physical Progress [290 h]; TATA Projects Ltd-25 |  |
| 4S-WMI-1st250 |  | Wall finish ID Works | 35d | 2028-04-11 | 2028-05-25 | 4S-WMI-1st245, 4S-WMI-1st140, 4S-WMI-1st170, 4S-WMI-1st185, 4S-WMI-1st220, 4S-WMI-1st240, 4S-WMI-1st245 FF, 4S-WMI-1st115, 4S-WMI-1st155, 4S-WMI-1st205, 4S-WMI-1st210, 4S-WMI-1st225, 4S-WMI-1st235, 4S-WMI-1st110, 4S-WMI-1st120, 4S-WMI-1st145, 4S-WMI-1st160, 4S-WMI-1st175, 4S-WMI-1st180, 4S-WMI-1st190, 4S-WMI-1st200, 4S-WMI-1st125, 4S-WMI-1st165, 4S-WMI-1st195, 4S-WMI-1st215, 4S-WMI-1st230 | CSD-LKO Calender (6 day + Holiday)-25 | ID Work [8535857 INR]; Physical Progress [8630 h]; TATA Projects Ltd-25 | 8,535,857 |
| 4S-WMI-1st255 |  | False Ceiling Installation | 45d | 2028-05-25 | 2028-07-17 | 4S-WMI-1st250 | CSD-LKO Calender (6 day + Holiday)-25 | ID Work [10243028 INR]; Physical Progress [12950 h]; TATA Projects Ltd-25 | 10,243,028 |
| 4S-WMI-1st265 |  | Flooring of toilets/kitchen/Balcony | 15d | 2028-07-17 | 2028-08-03 | 4S-WMI-1st55, 4S-WMI-1st255 | CSD-LKO Calender (6 day + Holiday)-25 | ID Work [6828686 INR]; Physical Progress [4320 h]; TATA Projects Ltd-25 | 6,828,686 |
| 4S-WMI-1st270 |  | Doors & Windows/Fire Doors/Shaft Doors | 35d | 2028-08-03 | 2028-09-15 | 4S-WMI-1st250, 4S-WMI-1st265 | CSD-LKO Calender (6 day + Holiday)-25 | ID Work [8535857 INR]; Physical Progress [4320 h]; TATA Projects Ltd-25 | 8,535,857 |
| 4S-WMI-1st275 |  | Putty & First Coat of Paint | 15d | 2028-08-03 | 2028-08-22 | 4S-WMI-1st250, 4S-WMI-1st265 | CSD-LKO Calender (6 day + Holiday)-25 | Painting [2608 Sq m]; Painter [2610 h]; Helper [2610 h]; Physical Progress [4320 h]; TATA Projects Ltd-25 | 596,240.96 |
| 4S-WMI-1st305 |  | Wooden Flooring/Flooring | 30d | 2028-08-22 | 2028-09-28 | 4S-WMI-1st275 | CSD-LKO Calender (6 day + Holiday)-25 | ID Work [8535857 INR]; Physical Progress [8630 h]; TATA Projects Ltd-25 | 8,535,857 |
| 4S-WMI-1st310 |  | Railing for staircase | 35d | 2028-08-22 | 2028-10-05 | 4S-WMI-1st250, 4S-WMI-1st275 | CSD-LKO Calender (6 day + Holiday)-25 | ID Work [2560757 INR]; Physical Progress [4320 h]; TATA Projects Ltd-25 | 2,560,757 |
| 4S-WMI-1st350 |  | Fixed Furniture | 10d | 2028-09-28 | 2028-10-11 | 4S-WMI-1st305 | CSD-LKO Calender (6 day + Holiday)-25 | ID Work [7682271 INR]; Physical Progress [2880 h]; TATA Projects Ltd-25 | 7,682,271 |
| 4S-WMI-1st355 |  | False ceiling final finishes | 15d | 2028-09-28 | 2028-10-18 | 4S-WMI-1st285 | CSD-LKO Calender (6 day + Holiday)-25 | ID Work [2560757 INR]; Physical Progress [4320 h]; TATA Projects Ltd-25 | 2,560,757 |
| 4S-WMI-1st390 |  | Final coat of paint | 15d | 2028-11-22 | 2028-12-09 | 4S-WMI-1st355, 4S-WMI-1st310, 4S-WMI-1st350, 4S-WMI-1st325, 4S-WMI-1st320, 4S-WMI-1st360, 4S-WMI-1st330, 4S-WMI-1st385, 4S-WMI-1st380, 4S-WMI-1st375, 4S-WMI-1st370, 4S-WMI-1st340, 4S-WMI-1st335, 4S-WMI-1st270 | CSD-LKO Calender (6 day + Holiday)-25 | Painting [2608 Sq m]; Painter [2610 h]; Helper [2610 h]; Physical Progress [4320 h]; TATA Projects Ltd-25 | 596,240.96 |
| 4S-WMI-1st395 |  | Soft Furnishing & Signage | 15d | 2028-12-09 | 2028-12-28 | 4S-WMI-1st390 | CSD-LKO Calender (6 day + Holiday)-25 | ID Work [12803786 INR]; Physical Progress [1440 h]; TATA Projects Ltd-25 | 12,803,786 |
| 4S-WMI-1st400 |  | Loose Furniture | 15d | 2028-12-09 | 2028-12-28 | 4S-WMI-1st390 | CSD-LKO Calender (6 day + Holiday)-25 | ID Work [17071714 INR]; Physical Progress [1440 h]; TATA Projects Ltd-25 | 17,071,714 |
|  | 8 | **Service Floor** |  | 2027-06-03 | 2028-12-20 |  |  |  |  |
|  | 1 | **Wet Finishes** |  | 2027-06-03 | 2027-10-05 |  |  |  |  |
| 4S-WMI-Serv.F10 |  | Deshuttering | 4d | 2027-06-03 | 2027-06-08 | 4S-SS-2nd.F.415 | CSD-LKO Calender (6 day + Holiday)-25 | Physical Progress [1160 h]; TATA Projects Ltd-25 |  |
| 4S-WMI-Serv.F15 |  | Brickwork/Blockwork | 30d | 2027-06-08 | 2027-07-13 | E-GFC-AR-4S-125, 4S-WMI-Serv.F10 | CSD-LKO Calender (6 day + Holiday)-25 | Masonry [546 CuM]; Mason [3640 h]; Helper [1820 h]; Physical Progress [8630 h]; TATA Projects Ltd-25 | 5,206,306.56 |
| 4S-WMI-Serv.F55 |  | Waterproofing of Toilets, Balcony & Kitchen | 35d | 2027-07-13 | 2027-08-23 | 4S-WMI-Serv.F15 | CSD-LKO Calender (6 day + Holiday)-25 | Waterproofing [8564838 INR]; Waterprrofing Mason [8160 h]; Helper [4080 h]; Physical Progress [4320 h]; TATA Projects Ltd-25 | 8,564,838 |
| 4S-WMI-Serv.F95 |  | Plaster | 35d | 2027-08-23 | 2027-10-05 | 4S-WMI-Serv.F80, 4S-WMI-Serv.F55, 4S-WMI-Serv.F30, 4S-WMI-Serv.F75 | CSD-LKO Calender (6 day + Holiday)-25 | Plaster [8485 Sqr Mtr]; Mason [5660 h]; Helper [2830 h]; Physical Progress [4320 h]; TATA Projects Ltd-25 | 4,699,926.35 |
|  | 5 | **MEP** |  | 2027-06-08 | 2028-10-16 |  |  |  |  |
|  | 2 | **HVAC** |  | 2027-07-13 | 2028-10-16 |  |  |  |  |
|  | 1 | **1st Fix** |  | 2027-07-13 | 2027-11-05 |  |  |  |  |
| 4S-WMI-Serv.F50 |  | Duct Support Fabrication | 35d | 2027-07-13 | 2027-08-23 | 4S-WMI-Serv.F15, E-GFC-MEP-4S-245 | CSD-LKO Calender (6 day + Holiday)-25 | Physical Progress [4320 h]; HVAC [214949 INR]; TATA Projects Ltd-25 | 214,949 |
| 4S-WMI-Serv.F100 |  | Installing duct hangers and supports | 30d | 2027-08-23 | 2027-09-28 | 4S-WMI-Serv.F50, E-GFC-MEP-4S-245 | CSD-LKO Calender (6 day + Holiday)-25 | Physical Progress [2880 h]; HVAC [429898 INR]; TATA Projects Ltd-25 | 429,898 |
| 4S-WMI-Serv.F130 |  | Laying concealed/exposed refrigerant piping | 30d | 2027-09-28 | 2027-11-05 | E-GFC-MEP-4S-245, 4S-WMI-Serv.F100 | CSD-LKO Calender (6 day + Holiday)-25 | Physical Progress [4320 h]; HVAC [107474 INR]; TATA Projects Ltd-25 | 107,474 |
| 4S-WMI-Serv.F135 |  | Laying concealed/exposed drain piping | 30d | 2027-09-28 | 2027-11-05 | E-GFC-MEP-4S-245, 4S-WMI-Serv.F100 | CSD-LKO Calender (6 day + Holiday)-25 | Physical Progress [2880 h]; HVAC [644847 INR]; TATA Projects Ltd-25 | 644,847 |

| ID | WBS | Activity | Duration | Start | Finish | Predecessors | Calendar | Resources | Cost |
| --- | --- | --- | --- | --- | --- | --- | --- | --- | --- |
|  | 2 | **2nd Fix** |  | 2027-09-28 | 2028-03-04 |  |  |  |  |
| 4S-WMI-Serv.F140 |  | Duct installation | 20d | 2027-09-28 | 2027-10-23 | 4S-WMI-Serv.F100 | CSD-LKO Calender (6 day + Holiday)-25 | Physical Progress [4320 h]; HVAC [1612117 INR]; TATA Projects Ltd-25 | 1,612,117 |
| 4S-WMI-Serv.F170 |  | Insulation of ducts (thermal/acoustic) | 10d | 2027-10-23 | 2027-11-05 | 4S-WMI-Serv.F140 | CSD-LKO Calender (6 day + Holiday)-25 | Physical Progress [1730 h]; HVAC [967270 INR]; TATA Projects Ltd-25 | 967,270 |
| 4S-WMI-Serv.F185 |  | Installation of chilled water piping / VRF piping | 20d | 2027-11-05 | 2027-11-29 | 4S-WMI-Serv.F130, 4S-WMI-Serv.F135, 4S-WMI-Serv.F170 | CSD-LKO Calender (6 day + Holiday)-25 | Physical Progress [1730 h]; HVAC [2149489 INR]; TATA Projects Ltd-25 | 2,149,489 |
| 4S-WMI-Serv.F220 |  | Installation of indoor units including AHU, FCU | 60d | 2027-11-29 | 2028-02-10 | 4S-WMI-Serv.F185, 4S-WMI-Serv.F130, 4S-WMI-Serv.F135 | CSD-LKO Calender (6 day + Holiday)-25 | Physical Progress [12950 h]; HVAC [1934540 INR]; TATA Projects Ltd-25 | 1,934,540 |
| 4S-WMI-Serv.F240 |  | Connecting refrigerant and drain piping to indoor units | 20d | 2028-02-10 | 2028-03-04 | 4S-WMI-Serv.F220 | CSD-LKO Calender (6 day + Holiday)-25 | Physical Progress [1730 h]; HVAC [537372 INR]; TATA Projects Ltd-25 | 537,372 |
|  | 3 | **Final Fix** |  | 2028-08-02 | 2028-10-16 |  |  |  |  |
| 4S-WMI-Serv.F345 |  | Installing grills, diffusers, dampers | 30d | 2028-08-02 | 2028-09-08 | 4S-WMI-Serv.F250 | CSD-LKO Calender (6 day + Holiday)-25 | Physical Progress [1730 h]; HVAC [1074745 INR]; TATA Projects Ltd-25 | 1,074,745 |
| 4S-WMI-Serv.F365 |  | Installation of thermostats and control panels | 30d | 2028-09-08 | 2028-10-16 | 4S-WMI-Serv.F345, 4S-WMI-Serv.F260 | CSD-LKO Calender (6 day + Holiday)-25 | Physical Progress [1730 h]; HVAC [537372 INR]; TATA Projects Ltd-25 | 537,372 |
|  | 1 | **Electrical** |  | 2027-06-08 | 2028-09-08 |  |  |  |  |
|  | 1 | **1st Fix** |  | 2027-06-08 | 2027-08-23 |  |  |  |  |
| 4S-WMI-Serv.F20 |  | Slab Conduiting | 35d | 2027-06-08 | 2027-07-19 | 4S-WMI-Serv.F10, E-GFC-MEP-4S-245 | CSD-LKO Calender (6 day + Holiday)-25 | Physical Progress [7190 h]; Electrical [1203084 INR]; TATA Projects Ltd-25 | 1,203,084 |
| 4S-WMI-Serv.F30 |  | Wall Conduiting | 30d | 2027-07-13 | 2027-08-17 | E-GFC-MEP-4S-245, 4S-WMI-Serv.F15 | CSD-LKO Calender (6 day + Holiday)-25 | Physical Progress [2880 h]; Electrical [601542 INR]; TATA Projects Ltd-25 | 601,542 |
| 4S-WMI-Serv.F75 |  | Installing back boxes for switches, sockets | 5d | 2027-08-17 | 2027-08-23 | 4S-WMI-Serv.F20, E-GFC-MEP-4S-245, 4S-WMI-Serv.F30 | CSD-LKO Calender (6 day + Holiday)-25 | Physical Progress [1440 h]; Electrical [360925 INR]; TATA Projects Ltd-25 | 360,925 |
|  | 2 | **2nd Fix** |  | 2027-10-05 | 2028-04-17 |  |  |  |  |
| 4S-WMI-Serv.F115 |  | Cable tray laying | 25d | 2027-10-05 | 2027-11-05 | 4S-WMI-Serv.F95 | CSD-LKO Calender (6 day + Holiday)-25 | Physical Progress [7190 h]; Electrical [481234 INR]; TATA Projects Ltd-25 | 481,234 |
| 4S-WMI-Serv.F155 |  | Cabling & Wire Pulling | 60d | 2027-11-05 | 2028-01-17 | 4S-WMI-Serv.F115 | CSD-LKO Calender (6 day + Holiday)-25 | Physical Progress [12950 h]; Electrical [2406168 INR]; TATA Projects Ltd-25 | 2,406,168 |
| 4S-WMI-Serv.F205 |  | DB fixing and connecting | 35d | 2028-01-17 | 2028-02-28 | 4S-WMI-Serv.F155 | CSD-LKO Calender (6 day + Holiday)-25 | Physical Progress [4320 h]; Electrical [360925 INR]; TATA Projects Ltd-25 | 360,925 |
| 4S-WMI-Serv.F210 |  | Floor Rising Main Installation | 20d | 2028-01-17 | 2028-02-10 | 4S-WMI-Serv.F155 | CSD-LKO Calender (6 day + Holiday)-25 | Physical Progress [1440 h]; Electrical [1684318 INR]; TATA Projects Ltd-25 | 1,684,318 |
| 4S-WMI-Serv.F225 |  | Floor/Distribution Panel Installation | 20d | 2028-02-28 | 2028-03-23 | 4S-WMI-Serv.F205 | CSD-LKO Calender (6 day + Holiday)-25 | Physical Progress [1440 h]; Electrical [962467 INR]; TATA Projects Ltd-25 | 962,467 |
| 4S-WMI-Serv.F235 |  | Equipment Earthing | 20d | 2028-03-23 | 2028-04-17 | 4S-WMI-Serv.F225, 4S-WMI-Serv.F210 | CSD-LKO Calender (6 day + Holiday)-25 | Physical Progress [2880 h]; Electrical [360925 INR]; TATA Projects Ltd-25 | 360,925 |
|  | 3 | **Final Fix** |  | 2028-06-28 | 2028-09-08 |  |  |  |  |
| 4S-WMI-Serv.F265 |  | Switches & Socket | 30d | 2028-06-28 | 2028-08-02 | 4S-WMI-Serv.F260 | CSD-LKO Calender (6 day + Holiday)-25 | Physical Progress [5750 h]; Electrical [1203084 INR]; TATA Projects Ltd-25 | 1,203,084 |
| 4S-WMI-Serv.F340 |  | Light Fixtures | 30d | 2028-08-02 | 2028-09-08 | 4S-WMI-Serv.F265 | CSD-LKO Calender (6 day + Holiday)-25 | Physical Progress [4320 h]; Electrical [1804626 INR]; TATA Projects Ltd-25 | 1,804,626 |

| ID | WBS | Activity | Duration | Start | Finish | Predecessors | Calendar | Resources | Cost |
| --- | --- | --- | --- | --- | --- | --- | --- | --- | --- |
|  | 3 | **Plumbing** |  | 2027-07-13 | 2028-08-21 |  |  |  |  |
|  | 1 | **1st Fix** |  | 2027-07-13 | 2027-12-16 |  |  |  |  |
| 4S-WMI-Serv.F35 |  | Fixing pipe supports and clamps | 35d | 2027-07-13 | 2027-08-23 | E-GFC-MEP-4S-245, 4S-WMI-Serv.F15 | CSD-LKO Calender (6 day + Holiday)-25 | Physical Progress [2880 h]; Plumbing [386697 INR]; TATA Projects Ltd-25 | 386,697 |
| 4S-WMI-Serv.F60 |  | Laying water supply pipes (hot & cold) | 35d | 2027-08-23 | 2027-10-05 | E-GFC-MEP-4S-245, 4S-WMI-Serv.F35 | CSD-LKO Calender (6 day + Holiday)-25 | Physical Progress [4320 h]; Plumbing [773394 INR]; TATA Projects Ltd-25 | 773,394 |
| 4S-WMI-Serv.F65 |  | Laying drainage pipes (soil, waste, vent) | 35d | 2027-08-23 | 2027-10-05 | E-GFC-MEP-4S-245, 4S-WMI-Serv.F35 | CSD-LKO Calender (6 day + Holiday)-25 | Physical Progress [4320 h]; Plumbing [773394 INR]; TATA Projects Ltd-25 | 773,394 |
| 4S-WMI-Serv.F70 |  | Installation of plumbing fixture base supports (WC frames, sink brackets) | 30d | 2027-10-05 | 2027-11-11 | 4S-WMI-Serv.F65, E-GFC-MEP-4S-245 | CSD-LKO Calender (6 day + Holiday)-25 | Physical Progress [1730 h]; Plumbing [386697 INR]; TATA Projects Ltd-25 | 386,697 |
| 4S-WMI-Serv.F85 |  | Pressure testing of water supply lines | 25d | 2027-11-11 | 2027-12-10 | 4S-WMI-Serv.F60, 4S-WMI-Serv.F65, 4S-WMI-Serv.F70, E-GFC-MEP-4S-245 | CSD-LKO Calender (6 day + Holiday)-25 | Physical Progress [2010 h]; Plumbing [77339 INR]; TATA Projects Ltd-25 | 77,339 |
| 4S-WMI-Serv.F90 |  | Installation of concealed parts of toilet fixtures | 30d | 2027-11-11 | 2027-12-16 | 4S-WMI-Serv.F70, E-GFC-MEP-4S-245 | CSD-LKO Calender (6 day + Holiday)-25 | Physical Progress [2880 h]; Plumbing [386697 INR]; TATA Projects Ltd-25 | 386,697 |
|  | 2 | **2nd FIx** |  | 2027-12-10 | 2028-03-04 |  |  |  |  |
| 4S-WMI-Serv.F110 |  | Insulation of hot water pipes (if applicable) | 20d | 2027-12-10 | 2028-01-05 | 4S-WMI-Serv.F85 | CSD-LKO Calender (6 day + Holiday)-25 | Physical Progress [1730 h]; Plumbing [386697 INR]; TATA Projects Ltd-25 | 386,697 |
| 4S-WMI-Serv.F120 |  | Installation of vertical risers and main distribution lines | 35d | 2027-12-16 | 2028-01-29 | 4S-WMI-Serv.F85, 4S-WMI-Serv.F90, 4S-WMI-Serv.F95 | CSD-LKO Calender (6 day + Holiday)-25 | Physical Progress [5750 h]; Plumbing [773394 INR]; TATA Projects Ltd-25 | 773,394 |
| 4S-WMI-Serv.F145 |  | Testing drainage lines for leakage/blockage | 30d | 2028-01-05 | 2028-02-10 | 4S-WMI-Serv.F70, 4S-WMI-Serv.F110 | CSD-LKO Calender (6 day + Holiday)-25 | Physical Progress [1730 h]; Plumbing [77339 INR]; TATA Projects Ltd-25 | 77,339 |
| 4S-WMI-Serv.F160 |  | Fixing floor traps and gully traps | 30d | 2028-01-29 | 2028-03-04 | 4S-WMI-Serv.F120 | CSD-LKO Calender (6 day + Holiday)-25 | Physical Progress [1730 h]; Plumbing [232018 INR]; TATA Projects Ltd-25 | 232,018 |
|  | 3 | **Final FIx** |  | 2028-06-28 | 2028-08-21 |  |  |  |  |
| 4S-WMI-Serv.F270 |  | Installation of sanitary fixtures (WC, washbasins, urinals, sinks) | 10d | 2028-06-28 | 2028-07-10 | 4S-WMI-Serv.F260, 4S-WMI-Serv.F145 | CSD-LKO Calender (6 day + Holiday)-25 | Physical Progress [2880 h]; Plumbing [1546788 INR]; TATA Projects Ltd-25 | 1,546,788 |
| 4S-WMI-Serv.F310 |  | Installation of CP fittings (taps, mixers, showers, health faucets) | 10d | 2028-07-10 | 2028-07-21 | 4S-WMI-Serv.F260, 4S-WMI-Serv.F270 | CSD-LKO Calender (6 day + Holiday)-25 | Physical Progress [2880 h]; Plumbing [773394 INR]; TATA Projects Ltd-25 | 773,394 |
| 4S-WMI-Serv.F335 |  | Connection of appliances | 25d | 2028-07-21 | 2028-08-21 | 4S-WMI-Serv.F310 | CSD-LKO Calender (6 day + Holiday)-25 | Physical Progress [2010 h]; Plumbing [386697 INR]; TATA Projects Ltd-25 | 386,697 |
|  | 4 | **Firefighting** |  | 2027-07-13 | 2028-08-28 |  |  |  |  |
|  | 1 | **1st Fix** |  | 2027-07-13 | 2027-11-11 |  |  |  |  |
| 4S-WMI-Serv.F40 |  | Fixing pipe supports and hangers | 35d | 2027-07-13 | 2027-08-23 | E-GFC-MEP-4S-245, 4S-WMI-Serv.F15 | CSD-LKO Calender (6 day + Holiday)-25 | Physical Progress [2880 h]; Firefighting [281762 INR]; TATA Projects Ltd-25 | 281,762 |
| 4S-WMI-Serv.F105 |  | Laying branch piping | 35d | 2027-08-23 | 2027-10-05 | E-GFC-MEP-4S-245, 4S-WMI-Serv.F40 | CSD-LKO Calender (6 day + Holiday)-25 | Physical Progress [4320 h]; Firefighting [603775 INR]; TATA Projects Ltd-25 | 603,775 |
| 4S-WMI-Serv.F150 |  | Hydrostatic pressure testing of piping | 30d | 2027-10-05 | 2027-11-11 | E-GFC-MEP-4S-245, 4S-WMI-Serv.F105 | CSD-LKO Calender (6 day + Holiday)-25 | Physical Progress [1730 h]; Firefighting [80503 INR]; TATA Projects Ltd-25 | 80,503 |
|  | 2 | **2nd Fix** |  | 2027-11-11 | 2028-02-04 |  |  |  |  |
| 4S-WMI-Serv.F175 |  | Installation of vertical risers and distribution piping in shafts | 35d | 2027-11-11 | 2027-12-22 | 4S-WMI-Serv.F95, 4S-WMI-Serv.F150 | CSD-LKO Calender (6 day + Holiday)-25 | Physical Progress [7190 h]; Firefighting [805034 INR]; TATA Projects Ltd-25 | 805,034 |
| 4S-WMI-Serv.F180 |  | Painting/insulation of exposed fire pipes | 30d | 2027-11-11 | 2027-12-16 | 4S-WMI-Serv.F150 | CSD-LKO Calender (6 day + Holiday)-25 | Physical Progress [2880 h]; Firefighting [40252 INR]; TATA Projects Ltd-25 | 40,252 |
| 4S-WMI-Serv.F190 |  | Testing risers and branch lines for leakage | 30d | 2027-12-16 | 2028-01-22 | 4S-WMI-Serv.F180 | CSD-LKO Calender (6 day + Holiday)-25 | Physical Progress [1730 h]; Firefighting [80503 INR]; TATA Projects Ltd-25 | 80,503 |
| 4S-WMI-Serv.F200 |  | Installation of sprinkler branch lines in ceilings | 35d | 2027-12-22 | 2028-02-04 | 4S-WMI-Serv.F175 | CSD-LKO Calender (6 day + Holiday)-25 | Physical Progress [7190 h]; Firefighting [603775 INR]; TATA Projects Ltd-25 | 603,775 |

| ID | WBS | Activity | Duration | Start | Finish | Predecessors | Calendar | Resources | Cost |
| --- | --- | --- | --- | --- | --- | --- | --- | --- | --- |
|  | 3 | **Final FIx** |  | 2028-06-28 | 2028-08-28 |  |  |  |  |
| 4S-WMI-Serv.F275 |  | Installation of sprinkler heads, nozzles, and final alignment | 35d | 2028-06-28 | 2028-08-08 | 4S-WMI-Serv.F260, 4S-WMI-Serv.F200 | CSD-LKO Calender (6 day + Holiday)-25 | Physical Progress [12950 h]; Firefighting [603775 INR]; TATA Projects Ltd-25 | 603,775 |
| 4S-WMI-Serv.F280 |  | Installation of hydrant accessories (valves, hose reels, cabinets) | 25d | 2028-06-28 | 2028-07-27 | 4S-WMI-Serv.F260 | CSD-LKO Calender (6 day + Holiday)-25 | Physical Progress [2880 h]; Firefighting [402517 INR]; TATA Projects Ltd-25 | 402,517 |
| 4S-WMI-Serv.F285 |  | Installation of portable fire extinguishers | 30d | 2028-06-28 | 2028-08-02 | 4S-WMI-Serv.F260 | CSD-LKO Calender (6 day + Holiday)-25 | Physical Progress [1730 h]; Firefighting [40252 INR]; TATA Projects Ltd-25 | 40,252 |
| 4S-WMI-Serv.F350 |  | Integration with fire alarm system | 20d | 2028-08-02 | 2028-08-28 | 4S-WMI-Serv.F285 | CSD-LKO Calender (6 day + Holiday)-25 | Physical Progress [5750 h]; Firefighting [201258 INR]; TATA Projects Ltd-25 | 201,258 |
|  | 5 | **ELV** |  | 2027-06-08 | 2028-08-21 |  |  |  |  |
|  | 1 | **1st Fix** |  | 2027-06-08 | 2027-08-23 |  |  |  |  |
| 4S-WMI-Serv.F25 |  | Slab Conduiting | 35d | 2027-06-08 | 2027-07-19 | 4S-WMI-Serv.F10, E-GFC-MEP-4S-245 | CSD-LKO Calender (6 day + Holiday)-25 | Physical Progress [7190 h]; ELV [226108 INR]; TATA Projects Ltd-25 | 226,108 |
| 4S-WMI-Serv.F45 |  | Wall Conduiting | 30d | 2027-07-13 | 2027-08-17 | 4S-WMI-Serv.F15, E-GFC-MEP-4S-245 | CSD-LKO Calender (6 day + Holiday)-25 | Physical Progress [2880 h]; ELV [96904 INR]; TATA Projects Ltd-25 | 96,904 |
| 4S-WMI-Serv.F80 |  | Installing back boxes for switches, sockets | 5d | 2027-08-17 | 2027-08-23 | 4S-WMI-Serv.F45, 4S-WMI-Serv.F25, E-GFC-MEP-4S-245 | CSD-LKO Calender (6 day + Holiday)-25 | Physical Progress [1440 h]; ELV [161506 INR]; TATA Projects Ltd-25 | 161,506 |
|  | 2 | **2nd Fix** |  | 2027-10-05 | 2028-04-28 |  |  |  |  |
| 4S-WMI-Serv.F125 |  | Cable tray installation | 35d | 2027-10-05 | 2027-11-17 | 4S-WMI-Serv.F95 | CSD-LKO Calender (6 day + Holiday)-25 | Physical Progress [7190 h]; ELV [161506 INR]; TATA Projects Ltd-25 | 161,506 |
| 4S-WMI-Serv.F165 |  | Cabeling of ELV cable - IT/Fire Alarm/Public Address | 45d | 2027-11-17 | 2028-01-11 | 4S-WMI-Serv.F125 | CSD-LKO Calender (6 day + Holiday)-25 | Physical Progress [12950 h]; ELV [387614 INR]; TATA Projects Ltd-25 | 387,614 |
| 4S-WMI-Serv.F195 |  | ELV Rack Installation | 30d | 2028-01-11 | 2028-02-16 | 4S-WMI-Serv.F165 | CSD-LKO Calender (6 day + Holiday)-25 | Physical Progress [2880 h]; ELV [161506 INR]; TATA Projects Ltd-25 | 161,506 |
| 4S-WMI-Serv.F215 |  | Termination of cables at junction boxes, patch panels, and control panels | 35d | 2028-02-16 | 2028-03-29 | 4S-WMI-Serv.F195 | CSD-LKO Calender (6 day + Holiday)-25 | Physical Progress [8630 h]; ELV [161506 INR]; TATA Projects Ltd-25 | 161,506 |
| 4S-WMI-Serv.F230 |  | Fixing devices like CCTV camera bases, card reader bases, smoke detector bases, PA Bases, Wifi Bases | 25d | 2028-03-29 | 2028-04-28 | 4S-WMI-Serv.F215 | CSD-LKO Calender (6 day + Holiday)-25 | Physical Progress [1150 h]; ELV [323012 INR]; TATA Projects Ltd-25 | 323,012 |
|  | 3 | **Final Fix** |  | 2028-06-28 | 2028-08-21 |  |  |  |  |
| 4S-WMI-Serv.F290 |  | Installation of data and Voice Faceplate | 25d | 2028-06-28 | 2028-07-27 | 4S-WMI-Serv.F260 | CSD-LKO Calender (6 day + Holiday)-25 | Physical Progress [4320 h]; ELV [161506 INR]; TATA Projects Ltd-25 | 161,506 |
| 4S-WMI-Serv.F295 |  | Installation of Camera & Wifi | 30d | 2028-06-28 | 2028-08-02 | 4S-WMI-Serv.F260 | CSD-LKO Calender (6 day + Holiday)-25 | Physical Progress [4320 h]; ELV [161506 INR]; TATA Projects Ltd-25 | 161,506 |
| 4S-WMI-Serv.F300 |  | Installation of fire alarm devices + Public Address | 15d | 2028-06-28 | 2028-07-15 | 4S-WMI-Serv.F260 | CSD-LKO Calender (6 day + Holiday)-25 | Physical Progress [4320 h]; ELV [193807 INR]; TATA Projects Ltd-25 | 193,807 |
| 4S-WMI-Serv.F315 |  | Installation of Active System | 15d | 2028-07-15 | 2028-08-02 | 4S-WMI-Serv.F300 | CSD-LKO Calender (6 day + Holiday)-25 | Physical Progress [4320 h]; ELV [323012 INR]; TATA Projects Ltd-25 | 323,012 |
| 4S-WMI-Serv.F320 |  | Fire Panel Intallation & Integration | 25d | 2028-07-15 | 2028-08-14 | 4S-WMI-Serv.F300 | CSD-LKO Calender (6 day + Holiday)-25 | Physical Progress [7190 h]; ELV [161506 INR]; TATA Projects Ltd-25 | 161,506 |
| 4S-WMI-Serv.F325 |  | Installation & Integration of Audio Visual System | 25d | 2028-07-15 | 2028-08-14 | 4S-WMI-Serv.F300 | CSD-LKO Calender (6 day + Holiday)-25 | Physical Progress [7190 h]; ELV [161506 INR]; TATA Projects Ltd-25 | 161,506 |
| 4S-WMI-Serv.F330 |  | Installation & Integration of Access Control | 25d | 2028-07-15 | 2028-08-14 | 4S-WMI-Serv.F300 | CSD-LKO Calender (6 day + Holiday)-25 | Physical Progress [7190 h]; ELV [161506 INR]; TATA Projects Ltd-25 | 161,506 |
| 4S-WMI-Serv.F355 |  | Integration of Active components | 15d | 2028-08-02 | 2028-08-21 | 4S-WMI-Serv.F315 | CSD-LKO Calender (6 day + Holiday)-25 | Physical Progress [4320 h]; ELV [64602 INR]; TATA Projects Ltd-25 | 64,602 |

| ID | WBS | Activity | Duration | Start | Finish | Predecessors | Calendar | Resources | Cost |
| --- | --- | --- | --- | --- | --- | --- | --- | --- | --- |
|  | 2 | **Dry Finishes/ID Works** |  | 2028-04-28 | 2028-12-20 |  |  |  |  |
| 4S-WMI-Serv.F245 |  | Wall finish ID Works | 35d | 2028-04-28 | 2028-06-10 | 4S-WMI-Serv.F230, 4S-WMI-Serv.F160, 4S-WMI-Serv.F235, 4S-WMI-Serv.F240, 4S-WMI-Serv.F140, 4S-WMI-Serv.F170, 4S-WMI-Serv.F185, 4S-WMI-Serv.F220, 4S-WMI-Serv.F240 FF, 4S-WMI-Serv.F115, 4S-WMI-Serv.F155, 4S-WMI-Serv.F205, 4S-WMI-Serv.F210, 4S-WMI-Serv.F225, 4S-WMI-Serv.F235 FF, 4S-WMI-Serv.F110, 4S-WMI-Serv.F120, 4S-WMI-Serv.F145, 4S-WMI-Serv.F160 FF, 4S-WMI-Serv.F175, 4S-WMI-Serv.F180, 4S-WMI-Serv.F190, 4S-WMI-Serv.F200, 4S-WMI-Serv.F125, 4S-WMI-Serv.F165, 4S-WMI-Serv.F195, 4S-WMI-Serv.F215, 4S-WMI-Serv.F230 FF | CSD-LKO Calender (6 day + Holiday)-25 | ID Work [8535857 INR]; Physical Progress [8630 h]; TATA Projects Ltd-25 | 8,535,857 |
| 4S-WMI-Serv.F250 |  | False Ceiling Installation | 45d | 2028-06-10 | 2028-08-02 | 4S-WMI-Serv.F245 | CSD-LKO Calender (6 day + Holiday)-25 | ID Work [10243028 INR]; Physical Progress [12950 h]; TATA Projects Ltd-25 | 10,243,028 |
| 4S-WMI-Serv.F255 |  | Doors & Windows/Fire Doors/Shaft Doors | 35d | 2028-06-10 | 2028-07-21 | 4S-WMI-Serv.F245 | CSD-LKO Calender (6 day + Holiday)-25 | ID Work [8535857 INR]; Physical Progress [4320 h]; TATA Projects Ltd-25 | 8,535,857 |
| 4S-WMI-Serv.F260 |  | Putty & First Coat of Paint | 15d | 2028-06-10 | 2028-06-28 | 4S-WMI-Serv.F245 | CSD-LKO Calender (6 day + Holiday)-25 | Painting [2608 Sq m]; Painter [2610 h]; Helper [2610 h]; Physical Progress [4320 h]; TATA Projects Ltd-25 | 596,240.96 |
| 4S-WMI-Serv.F305 |  | Railing for staircase | 35d | 2028-06-28 | 2028-08-08 | 4S-WMI-Serv.F245, 4S-WMI-Serv.F260 | CSD-LKO Calender (6 day + Holiday)-25 | ID Work [2560757 INR]; Physical Progress [4320 h]; TATA Projects Ltd-25 | 2,560,757 |
| 4S-WMI-Serv.F360 |  | Flooring | 20d | 2028-08-02 | 2028-08-28 | 4S-WMI-Serv.F55, 4S-WMI-Serv.F250 | CSD-LKO Calender (6 day + Holiday)-25 | ID Work [15364543 INR]; Physical Progress [5750 h]; TATA Projects Ltd-25 | 15,364,543 |
| 4S-WMI-Serv.F370 |  | False ceiling final finishes | 15d | 2028-10-16 | 2028-11-03 | 4S-WMI-Serv.F365 | CSD-LKO Calender (6 day + Holiday)-25 | ID Work [2560757 INR]; Physical Progress [4320 h]; TATA Projects Ltd-25 | 2,560,757 |
| 4S-WMI-Serv.F375 |  | Fixed Furniture | 10d | 2028-11-03 | 2028-11-15 | 4S-WMI-Serv.F370 | CSD-LKO Calender (6 day + Holiday)-25 | ID Work [7682271 INR]; Physical Progress [2880 h]; TATA Projects Ltd-25 | 7,682,271 |
| 4S-WMI-Serv.F380 |  | Final coat of paint | 15d | 2028-11-15 | 2028-12-02 | 4S-WMI-Serv.F370, 4S-WMI-Serv.F305, 4S-WMI-Serv.F375, 4S-WMI-Serv.F340, 4S-WMI-Serv.F335, 4S-WMI-Serv.F350, 4S-WMI-Serv.F285, 4S-WMI-Serv.F355, 4S-WMI-Serv.F330, 4S-WMI-Serv.F325, 4S-WMI-Serv.F320, 4S-WMI-Serv.F295, 4S-WMI-Serv.F290, 4S-WMI-Serv.F360, 4S-WMI-Serv.F255 | CSD-LKO Calender (6 day + Holiday)-25 | Painting [2608 Sq m]; Painter [2610 h]; Helper [2610 h]; Physical Progress [4320 h]; TATA Projects Ltd-25 | 596,240.96 |
| 4S-WMI-Serv.F385 |  | Soft Furnishing & Signage | 15d | 2028-12-02 | 2028-12-20 | 4S-WMI-Serv.F380 | CSD-LKO Calender (6 day + Holiday)-25 | ID Work [12803786 INR]; Physical Progress [1440 h]; TATA Projects Ltd-25 | 12,803,786 |
| 4S-WMI-Serv.F390 |  | Loose Furniture | 15d | 2028-12-02 | 2028-12-20 | 4S-WMI-Serv.F380 | CSD-LKO Calender (6 day + Holiday)-25 | ID Work [17071714 INR]; Physical Progress [1440 h]; TATA Projects Ltd-25 | 17,071,714 |
|  | 4 | **Second Floor** |  | 2027-06-29 | 2029-02-08 |  |  |  |  |
|  | 1 | **Wet Finishes** |  | 2027-06-29 | 2027-10-12 |  |  |  |  |
| 4S-WMI-2nd10 |  | Deshuttering | 4d | 2027-06-29 | 2027-07-03 | 4S-SS-3rd.F.415 | CSD-LKO Calender (6 day + Holiday)-25 | Physical Progress [1160 h]; TATA Projects Ltd-25 |  |
| 4S-WMI-2nd15 |  | Brickwork/Blockwork | 30d | 2027-07-03 | 2027-08-07 | E-GFC-AR-4S-250, 4S-WMI-2nd10 | CSD-LKO Calender (6 day + Holiday)-25 | Masonry [546 CuM]; Mason [3640 h]; Helper [1820 h]; Physical Progress [8630 h]; TATA Projects Ltd-25 | 5,206,306.56 |
| 4S-WMI-2nd55 |  | Waterproofing of Toilets, Balcony & Kitchen | 18d | 2027-08-07 | 2027-08-28 | 4S-WMI-2nd15 | CSD-LKO Calender (6 day + Holiday)-25 | Waterproofing [8564838 INR]; Waterprrofing Mason [8160 h]; Helper [4080 h]; Physical Progress [4320 h]; TATA Projects Ltd-25 | 8,564,838 |
| 4S-WMI-2nd95 |  | Plaster | 18d | 2027-09-18 | 2027-10-12 | 4S-WMI-2nd55, 4S-WMI-2nd30, 4S-WMI-2nd75, 4S-WMI-2nd80 | CSD-LKO Calender (6 day + Holiday)-25 | Plaster [8485 Sqr Mtr]; Mason [5660 h]; Helper [2830 h]; Physical Progress [4320 h]; TATA Projects Ltd-25 | 4,699,926.35 |
|  | 5 | **MEP 1st Fix, 2nd Fix** |  | 2027-07-03 | 2028-01-11 |  |  |  |  |
|  | 2 | **HVAC** |  | 2027-08-07 | 2028-01-07 |  |  |  |  |
|  | 1 | **1st Fix** |  | 2027-08-07 | 2027-11-19 |  |  |  |  |
| 4S-WMI-2nd50 |  | Duct Support Fabrication | 35d | 2027-08-07 | 2027-09-18 | E-GFC-MEP-4S-250, 4S-WMI-2nd15 | CSD-LKO Calender (6 day + Holiday)-25 | Physical Progress [4320 h]; HVAC [214949 INR]; TATA Projects Ltd-25 | 214,949 |
| 4S-WMI-2nd100 |  | Installing duct hangers and supports | 30d | 2027-09-18 | 2027-10-26 | E-GFC-MEP-4S-250, 4S-WMI-2nd50 | CSD-LKO Calender (6 day + Holiday)-25 | Physical Progress [2880 h]; HVAC [429898 INR]; TATA Projects Ltd-25 | 429,898 |
| 4S-WMI-2nd130 |  | Laying concealed/exposed refrigerant piping | 20d | 2027-10-26 | 2027-11-19 | E-GFC-MEP-4S-250, 4S-WMI-2nd100 | CSD-LKO Calender (6 day + Holiday)-25 | Physical Progress [4320 h]; HVAC [107474 INR]; TATA Projects Ltd-25 | 107,474 |
| 4S-WMI-2nd135 |  | Laying concealed/exposed drain piping | 20d | 2027-10-26 | 2027-11-19 | E-GFC-MEP-4S-250, 4S-WMI-2nd100 | CSD-LKO Calender (6 day + Holiday)-25 | Physical Progress [2880 h]; HVAC [644847 INR]; TATA Projects Ltd-25 | 644,847 |

| ID | WBS | Activity | Duration | Start | Finish | Predecessors | Calendar | Resources | Cost |
| --- | --- | --- | --- | --- | --- | --- | --- | --- | --- |
|  | 2 | **2nd Fix** |  | 2027-10-26 | 2028-01-07 |  |  |  |  |
| 4S-WMI-2nd140 |  | Duct installation | 10d | 2027-10-26 | 2027-11-08 | 4S-WMI-2nd100 | CSD-LKO Calender (6 day + Holiday)-25 | Physical Progress [4320 h]; HVAC [1612117 INR]; TATA Projects Ltd-25 | 1,612,117 |
| 4S-WMI-2nd170 |  | Insulation of ducts (thermal/acoustic) | 10d | 2027-11-08 | 2027-11-19 | 4S-WMI-2nd140 | CSD-LKO Calender (6 day + Holiday)-25 | Physical Progress [1730 h]; HVAC [967270 INR]; TATA Projects Ltd-25 | 967,270 |
| 4S-WMI-2nd200 |  | Installation of chilled water piping / VRF piping | 10d | 2027-11-19 | 2027-12-01 | 4S-WMI-2nd130, 4S-WMI-2nd135, 4S-WMI-2nd170 | CSD-LKO Calender (6 day + Holiday)-25 | Physical Progress [1730 h]; HVAC [2149489 INR]; TATA Projects Ltd-25 | 2,149,489 |
| 4S-WMI-2nd285 |  | Installation of indoor units including AHU, FCU | 20d | 2027-12-01 | 2027-12-24 | 4S-WMI-2nd200, 4S-WMI-2nd130, 4S-WMI-2nd135 | CSD-LKO Calender (6 day + Holiday)-25 | Physical Progress [12950 h]; HVAC [1934540 INR]; TATA Projects Ltd-25 | 1,934,540 |
| 4S-WMI-2nd530 |  | Connecting refrigerant and drain piping to indoor units | 10d | 2027-12-24 | 2028-01-07 | 4S-WMI-2nd285 | CSD-LKO Calender (6 day + Holiday)-25 | Physical Progress [1730 h]; HVAC [537372 INR]; TATA Projects Ltd-25 | 537,372 |
|  | 1 | **Electrical** |  | 2027-07-03 | 2028-01-11 |  |  |  |  |
|  | 1 | **1st Fix** |  | 2027-07-03 | 2027-09-18 |  |  |  |  |
| 4S-WMI-2nd20 |  | Slab Conduiting | 35d | 2027-07-03 | 2027-08-13 | 4S-WMI-2nd10, E-GFC-MEP-4S-250 | CSD-LKO Calender (6 day + Holiday)-25 | Physical Progress [7190 h]; Electrical [1203084 INR]; TATA Projects Ltd-25 | 1,203,084 |
| 4S-WMI-2nd30 |  | Wall Conduiting | 30d | 2027-08-07 | 2027-09-13 | E-GFC-MEP-4S-250, 4S-WMI-2nd15 | CSD-LKO Calender (6 day + Holiday)-25 | Physical Progress [2880 h]; Electrical [601542 INR]; TATA Projects Ltd-25 | 601,542 |
| 4S-WMI-2nd75 |  | Installing back boxes for switches, sockets | 5d | 2027-09-13 | 2027-09-18 | 4S-WMI-2nd20, E-GFC-MEP-4S-250, 4S-WMI-2nd30 | CSD-LKO Calender (6 day + Holiday)-25 | Physical Progress [1440 h]; Electrical [360925 INR]; TATA Projects Ltd-25 | 360,925 |
|  | 2 | **2nd Fix** |  | 2027-10-12 | 2028-01-11 |  |  |  |  |
| 4S-WMI-2nd115 |  | Cable tray laying | 15d | 2027-10-12 | 2027-10-30 | 4S-WMI-2nd95 | CSD-LKO Calender (6 day + Holiday)-25 | Physical Progress [7190 h]; Electrical [481234 INR]; TATA Projects Ltd-25 | 481,234 |
| 4S-WMI-2nd155 |  | Cabling & Wire Pulling | 30d | 2027-10-30 | 2027-12-04 | 4S-WMI-2nd115 | CSD-LKO Calender (6 day + Holiday)-25 | Physical Progress [12950 h]; Electrical [2406168 INR]; TATA Projects Ltd-25 | 2,406,168 |
| 4S-WMI-2nd240 |  | DB fixing and connecting | 10d | 2027-12-04 | 2027-12-16 | 4S-WMI-2nd155 | CSD-LKO Calender (6 day + Holiday)-25 | Physical Progress [4320 h]; Electrical [360925 INR]; TATA Projects Ltd-25 | 360,925 |
| 4S-WMI-2nd245 |  | Floor Rising Main Installation | 10d | 2027-12-04 | 2027-12-16 | 4S-WMI-2nd155 | CSD-LKO Calender (6 day + Holiday)-25 | Physical Progress [1440 h]; Electrical [1684318 INR]; TATA Projects Ltd-25 | 1,684,318 |
| 4S-WMI-2nd330 |  | Floor/Distribution Panel Installation | 10d | 2027-12-16 | 2027-12-29 | 4S-WMI-2nd240 | CSD-LKO Calender (6 day + Holiday)-25 | Physical Progress [1440 h]; Electrical [962467 INR]; TATA Projects Ltd-25 | 962,467 |
| 4S-WMI-2nd480 |  | Equipment Earthing | 10d | 2027-12-29 | 2028-01-11 | 4S-WMI-2nd245, 4S-WMI-2nd330 | CSD-LKO Calender (6 day + Holiday)-25 | Physical Progress [2880 h]; Electrical [360925 INR]; TATA Projects Ltd-25 | 360,925 |
|  | 3 | **Plumbing** |  | 2027-08-07 | 2028-01-07 |  |  |  |  |
|  | 1 | **1st Fix** |  | 2027-08-07 | 2027-11-08 |  |  |  |  |
| 4S-WMI-2nd35 |  | Fixing pipe supports and clamps | 20d | 2027-08-07 | 2027-08-31 | E-GFC-MEP-4S-250, 4S-WMI-2nd15 | CSD-LKO Calender (6 day + Holiday)-25 | Physical Progress [2880 h]; Plumbing [386697 INR]; TATA Projects Ltd-25 | 386,697 |
| 4S-WMI-2nd60 |  | Laying water supply pipes (hot & cold) | 35d | 2027-08-31 | 2027-10-14 | E-GFC-MEP-4S-250, 4S-WMI-2nd35 | CSD-LKO Calender (6 day + Holiday)-25 | Physical Progress [4320 h]; Plumbing [773394 INR]; TATA Projects Ltd-25 | 773,394 |
| 4S-WMI-2nd65 |  | Laying drainage pipes (soil, waste, vent) | 25d | 2027-08-31 | 2027-09-30 | E-GFC-MEP-4S-250, 4S-WMI-2nd35 | CSD-LKO Calender (6 day + Holiday)-25 | Physical Progress [4320 h]; Plumbing [773394 INR]; TATA Projects Ltd-25 | 773,394 |
| 4S-WMI-2nd70 |  | Installation of plumbing fixture base supports (WC frames, sink brackets) | 10d | 2027-09-30 | 2027-10-14 | E-GFC-MEP-4S-250, 4S-WMI-2nd65 | CSD-LKO Calender (6 day + Holiday)-25 | Physical Progress [1730 h]; Plumbing [386697 INR]; TATA Projects Ltd-25 | 386,697 |
| 4S-WMI-2nd85 |  | Pressure testing of water supply lines | 10d | 2027-10-14 | 2027-10-26 | E-GFC-MEP-4S-250, 4S-WMI-2nd60, 4S-WMI-2nd65, 4S-WMI-2nd70 | CSD-LKO Calender (6 day + Holiday)-25 | Physical Progress [2010 h]; Plumbing [77339 INR]; TATA Projects Ltd-25 | 77,339 |
| 4S-WMI-2nd90 |  | Installation of concealed parts of toilet fixtures | 20d | 2027-10-14 | 2027-11-08 | 4S-WMI-2nd70, E-GFC-MEP-4S-250 | CSD-LKO Calender (6 day + Holiday)-25 | Physical Progress [2880 h]; Plumbing [386697 INR]; TATA Projects Ltd-25 | 386,697 |

| ID | WBS | Activity | Duration | Start | Finish | Predecessors | Calendar | Resources | Cost |
| --- | --- | --- | --- | --- | --- | --- | --- | --- | --- |
|  | 2 | **2nd FIx** |  | 2027-10-26 | 2028-01-07 |  |  |  |  |
| 4S-WMI-2nd110 |  | Insulation of hot water pipes (if applicable) | 20d | 2027-10-26 | 2027-11-19 | 4S-WMI-2nd85 | CSD-LKO Calender (6 day + Holiday)-25 | Physical Progress [1730 h]; Plumbing [386697 INR]; TATA Projects Ltd-25 | 386,697 |
| 4S-WMI-2nd120 |  | Installation of vertical risers and main distribution lines | 35d | 2027-11-08 | 2027-12-18 | 4S-WMI-2nd90, 4S-WMI-2nd95, 4S-WMI-2nd85 | CSD-LKO Calender (6 day + Holiday)-25 | Physical Progress [5750 h]; Plumbing [773394 INR]; TATA Projects Ltd-25 | 773,394 |
| 4S-WMI-2nd145 |  | Testing drainage lines for leakage/blockage | 35d | 2027-11-19 | 2027-12-31 | 4S-WMI-2nd70, 4S-WMI-2nd110 | CSD-LKO Calender (6 day + Holiday)-25 | Physical Progress [1730 h]; Plumbing [77339 INR]; TATA Projects Ltd-25 | 77,339 |
| 4S-WMI-2nd160 |  | Fixing floor traps and gully traps | 15d | 2027-12-18 | 2028-01-07 | 4S-WMI-2nd120 | CSD-LKO Calender (6 day + Holiday)-25 | Physical Progress [1730 h]; Plumbing [232018 INR]; TATA Projects Ltd-25 | 232,018 |
|  | 4 | **Firefighting** |  | 2027-08-07 | 2028-01-07 |  |  |  |  |
|  | 1 | **1st Fix** |  | 2027-08-07 | 2027-11-13 |  |  |  |  |
| 4S-WMI-2nd40 |  | Fixing pipe supports and hangers | 35d | 2027-08-07 | 2027-09-18 | E-GFC-MEP-4S-250, 4S-WMI-2nd15 | CSD-LKO Calender (6 day + Holiday)-25 | Physical Progress [2880 h]; Firefighting [281762 INR]; TATA Projects Ltd-25 | 281,762 |
| 4S-WMI-2nd105 |  | Laying branch piping | 35d | 2027-09-18 | 2027-11-02 | E-GFC-MEP-4S-250, 4S-WMI-2nd40 | CSD-LKO Calender (6 day + Holiday)-25 | Physical Progress [4320 h]; Firefighting [603775 INR]; TATA Projects Ltd-25 | 603,775 |
| 4S-WMI-2nd150 |  | Hydrostatic pressure testing of piping | 10d | 2027-11-02 | 2027-11-13 | E-GFC-MEP-4S-250, 4S-WMI-2nd105 | CSD-LKO Calender (6 day + Holiday)-25 | Physical Progress [1730 h]; Firefighting [80503 INR]; TATA Projects Ltd-25 | 80,503 |
|  | 2 | **2nd Fix** |  | 2027-11-13 | 2028-01-07 |  |  |  |  |
| 4S-WMI-2nd175 |  | Installation of vertical risers and distribution piping in shafts | 15d | 2027-11-13 | 2027-12-01 | 4S-WMI-2nd95, 4S-WMI-2nd150 | CSD-LKO Calender (6 day + Holiday)-25 | Physical Progress [7190 h]; Firefighting [805034 INR]; TATA Projects Ltd-25 | 805,034 |
| 4S-WMI-2nd180 |  | Painting/insulation of exposed fire pipes | 10d | 2027-11-13 | 2027-11-25 | 4S-WMI-2nd150 | CSD-LKO Calender (6 day + Holiday)-25 | Physical Progress [2880 h]; Firefighting [40252 INR]; TATA Projects Ltd-25 | 40,252 |
| 4S-WMI-2nd205 |  | Testing risers and branch lines for leakage | 15d | 2027-11-25 | 2027-12-13 | 4S-WMI-2nd180 | CSD-LKO Calender (6 day + Holiday)-25 | Physical Progress [1730 h]; Firefighting [80503 INR]; TATA Projects Ltd-25 | 80,503 |
| 4S-WMI-2nd230 |  | Installation of sprinkler branch lines in ceilings | 30d | 2027-12-01 | 2028-01-07 | 4S-WMI-2nd175 | CSD-LKO Calender (6 day + Holiday)-25 | Physical Progress [7190 h]; Firefighting [603775 INR]; TATA Projects Ltd-25 | 603,775 |
|  | 5 | **ELV** |  | 2027-07-03 | 2028-01-11 |  |  |  |  |
|  | 1 | **1st Fix** |  | 2027-07-03 | 2027-09-18 |  |  |  |  |
| 4S-WMI-2nd25 |  | Slab Conduiting | 35d | 2027-07-03 | 2027-08-13 | 4S-WMI-2nd10, E-GFC-MEP-4S-250 | CSD-LKO Calender (6 day + Holiday)-25 | Physical Progress [7190 h]; ELV [226108 INR]; TATA Projects Ltd-25 | 226,108 |
| 4S-WMI-2nd45 |  | Wall Conduiting | 30d | 2027-08-07 | 2027-09-13 | E-GFC-MEP-4S-250, 4S-WMI-2nd15 | CSD-LKO Calender (6 day + Holiday)-25 | Physical Progress [2880 h]; ELV [96904 INR]; TATA Projects Ltd-25 | 96,904 |
| 4S-WMI-2nd80 |  | Installing back boxes for switches, sockets | 5d | 2027-09-13 | 2027-09-18 | 4S-WMI-2nd25, E-GFC-MEP-4S-250, 4S-WMI-2nd45 | CSD-LKO Calender (6 day + Holiday)-25 | Physical Progress [1440 h]; ELV [161506 INR]; TATA Projects Ltd-25 | 161,506 |
|  | 2 | **2nd Fix** |  | 2027-10-12 | 2028-01-11 |  |  |  |  |
| 4S-WMI-2nd125 |  | Cable tray installation | 15d | 2027-10-12 | 2027-10-30 | 4S-WMI-2nd95 | CSD-LKO Calender (6 day + Holiday)-25 | Physical Progress [7190 h]; ELV [161506 INR]; TATA Projects Ltd-25 | 161,506 |
| 4S-WMI-2nd165 |  | Cabeling of ELV cable - IT/Fire Alarm/Public Address | 25d | 2027-10-30 | 2027-11-29 | 4S-WMI-2nd125 | CSD-LKO Calender (6 day + Holiday)-25 | Physical Progress [12950 h]; ELV [387614 INR]; TATA Projects Ltd-25 | 387,614 |
| 4S-WMI-2nd210 |  | ELV Rack Installation | 15d | 2027-11-29 | 2027-12-16 | 4S-WMI-2nd165 | CSD-LKO Calender (6 day + Holiday)-25 | Physical Progress [2880 h]; ELV [161506 INR]; TATA Projects Ltd-25 | 161,506 |
| 4S-WMI-2nd260 |  | Termination of cables at junction boxes, patch panels, and control panels | 10d | 2027-12-16 | 2027-12-29 | 4S-WMI-2nd210 | CSD-LKO Calender (6 day + Holiday)-25 | Physical Progress [8630 h]; ELV [161506 INR]; TATA Projects Ltd-25 | 161,506 |
| 4S-WMI-2nd415 |  | Fixing devices like CCTV camera bases, card reader bases, smoke detector bases, PA Bases, Wifi Bases | 10d | 2027-12-29 | 2028-01-11 | 4S-WMI-2nd260 | CSD-LKO Calender (6 day + Holiday)-25 | Physical Progress [1150 h]; ELV [323012 INR]; TATA Projects Ltd-25 | 323,012 |

| ID | WBS | Activity | Duration | Start | Finish | Predecessors | Calendar | Resources | Cost |
| --- | --- | --- | --- | --- | --- | --- | --- | --- | --- |
|  | 3 | **Front Face - Toward Airport** |  | 2028-02-12 | 2029-02-08 |  |  |  |  |
|  | 2 | **Dry Finishes/ID Works** |  | 2028-02-12 | 2029-02-08 |  |  |  |  |
| 4S-WMI-2nd195 |  | Running of Wild Air | 1d | 2028-02-12 | 2028-02-12 | 4S-F-2nd40, 4S-WMI-2nd140, 4S-WMI-2nd170, 4S-WMI-2nd200, 4S-WMI-2nd285, 4S-WMI-2nd530 | CSD-LKO Calender (6 day + Holiday)-25 | Physical Progress [290 h]; TATA Projects Ltd-25 |  |
| 4S-WMI-2nd570 |  | Wall finish ID Works | 35d | 2028-06-12 | 2028-07-21 | E-GFC-ID-H&CC-35, P-H&CC_ID-Fur-20, P-H&CC_ID-Wall-20, P-H&CC_ID-Floor-20, P-H&CC_ID-SF-20, P-H&CC_ID-FC-20, P-H&CC_ID-Doors-20, 4S-WMI-2nd140, 4S-WMI-2nd170, 4S-WMI-2nd200, 4S-WMI-2nd285, 4S-WMI-2nd530, 4S-WMI-2nd115, 4S-WMI-2nd155, 4S-WMI-2nd240, 4S-WMI-2nd245, 4S-WMI-2nd330, 4S-WMI-2nd480, 4S-WMI-2nd110, 4S-WMI-2nd120, 4S-WMI-2nd145, 4S-WMI-2nd160, 4S-WMI-2nd175, 4S-WMI-2nd180, 4S-WMI-2nd205, 4S-WMI-2nd230, 4S-WMI-2nd125, 4S-WMI-2nd165, 4S-WMI-2nd210, 4S-WMI-2nd260, 4S-WMI-2nd415, 4S-WMI-2nd195 | CSD-LKO Calender (6 day + Holiday)-25 | ID Work [2845286 INR]; Physical Progress [2880 h]; TATA Projects Ltd-25 | 2,845,286 |
| 4S-WMI-2nd575 |  | False Ceiling Installation | 35d | 2028-07-22 | 2028-09-02 | 4S-WMI-2nd570 | CSD-LKO Calender (6 day + Holiday)-25 | ID Work [3414343 INR]; Physical Progress [5750 h]; TATA Projects Ltd-25 | 3,414,343 |
| 4S-WMI-2nd585 |  | Flooring of toilets/kitchen/Balcony | 10d | 2028-09-04 | 2028-09-14 | 4S-WMI-2nd55, 4S-WMI-2nd575 | CSD-LKO Calender (6 day + Holiday)-25 | ID Work [2276229 INR]; Physical Progress [2880 h]; TATA Projects Ltd-25 | 2,276,229 |
| 4S-WMI-2nd595 |  | Putty & First Coat of Paint | 10d | 2028-09-15 | 2028-09-26 | 4S-WMI-2nd570, 4S-WMI-2nd585 | CSD-LKO Calender (6 day + Holiday)-25 | Painting [869 Sq m]; Painter [870 h]; Helper [870 h]; Physical Progress [2880 h]; TATA Projects Ltd-25 | 198,670.78 |
| 4S-WMI-2nd620 |  | Wooden Flooring/Flooring | 20d | 2028-09-28 | 2028-10-23 | 4S-WMI-2nd595 | CSD-LKO Calender (6 day + Holiday)-25 | ID Work [2845286 INR]; Physical Progress [5750 h]; TATA Projects Ltd-25 | 2,845,286 |
| 4S-WMI-2nd660 |  | Fixed Furniture | 40d | 2028-10-24 | 2028-12-08 | 4S-WMI-2nd620 | CSD-LKO Calender (6 day + Holiday)-25 | ID Work [2560757 INR]; Physical Progress [2300 h]; TATA Projects Ltd-25 | 2,560,757 |
| 4S-WMI-2nd695 |  | False ceiling final finishes | 10d | 2028-11-16 | 2028-11-27 | 4S-WMI-2nd625 | CSD-LKO Calender (6 day + Holiday)-25 | ID Work [853586 INR]; Physical Progress [2880 h]; TATA Projects Ltd-25 | 853,586 |
| 4S-WMI-2nd590 |  | Doors & Windows/Fire Doors/Shaft Doors | 35d | 2028-11-27 | 2029-01-09 | P-Misc-FD-20, 4S-WMI-2nd570, 4S-WMI-2nd585 | CSD-LKO Calender (6 day + Holiday)-25 | ID Work [2845286 INR]; Physical Progress [2880 h]; TATA Projects Ltd-25 | 2,845,286 |
| 4S-WMI-2nd705 |  | Final coat of paint | 10d | 2029-01-09 | 2029-01-20 | 4S-WMI-2nd665, 4S-WMI-2nd635, 4S-WMI-2nd640, 4S-WMI-2nd670, 4S-WMI-2nd700, 4S-WMI-2nd690, 4S-WMI-2nd685, 4S-WMI-2nd680, 4S-WMI-2nd650, 4S-WMI-2nd645, 4S-WMI-2nd590, 4S-WMI-2nd610, 4S-WMI-2nd310, 4S-WMI-2nd695, 4S-WMI-2nd660 | CSD-LKO Calender (6 day + Holiday)-25 | Painting [869 Sq m]; Painter [870 h]; Helper [870 h]; Physical Progress [2880 h]; TATA Projects Ltd-25 | 198,670.78 |
| 4S-WMI-2nd710 |  | Soft Furnishing & Signage | 15d | 2029-01-20 | 2029-02-08 | E-GFC-Misc-Signage-35, P-Misc-Signage-20, 4S-WMI-2nd705 | CSD-LKO Calender (6 day + Holiday)-25 | ID Work [4267929 INR]; Physical Progress [860 h]; TATA Projects Ltd-25 | 4,267,929 |
| 4S-WMI-2nd715 |  | Loose Furniture | 15d | 2029-01-20 | 2029-02-08 | 4S-WMI-2nd705 | CSD-LKO Calender (6 day + Holiday)-25 | ID Work [5690571 INR]; Physical Progress [860 h]; TATA Projects Ltd-25 | 5,690,571 |
|  | 1 | **MEP Final Fix** |  | 2028-09-04 | 2028-12-08 |  |  |  |  |
|  | 3 | **HVAC** |  | 2028-09-04 | 2028-11-15 |  |  |  |  |
| 4S-WMI-2nd580 |  | Installing grills, diffusers, dampers | 30d | 2028-09-04 | 2028-10-10 | 4S-WMI-2nd575 | CSD-LKO Calender (6 day + Holiday)-25 | Physical Progress [1730 h]; HVAC [358248 INR]; TATA Projects Ltd-25 | 358,248 |
| 4S-WMI-2nd625 |  | Installation of thermostats and control panels | 30d | 2028-10-11 | 2028-11-15 | 4S-WMI-2nd530, 4S-WMI-2nd580, 4S-WMI-2nd595 | CSD-LKO Calender (6 day + Holiday)-25 | Physical Progress [1730 h]; HVAC [179124 INR]; TATA Projects Ltd-25 | 179,124 |
|  | 1 | **Electrical** |  | 2028-09-28 | 2028-12-08 |  |  |  |  |
| 4S-WMI-2nd600 |  | Switches & Socket | 30d | 2028-09-28 | 2028-11-03 | 4S-WMI-2nd595 | CSD-LKO Calender (6 day + Holiday)-25 | Physical Progress [5750 h]; Electrical [401028 INR]; TATA Projects Ltd-25 | 401,028 |
| 4S-WMI-2nd665 |  | Light Fixtures | 30d | 2028-11-04 | 2028-12-08 | 4S-WMI-2nd480, 4S-WMI-2nd600 | CSD-LKO Calender (6 day + Holiday)-25 | Physical Progress [4320 h]; Electrical [601542 INR]; TATA Projects Ltd-25 | 601,542 |
|  | 2 | **Plumbing** |  | 2028-09-28 | 2028-11-21 |  |  |  |  |
| 4S-WMI-2nd605 |  | Installation of sanitary fixtures (WC, washbasins, urinals, sinks) | 10d | 2028-09-28 | 2028-10-10 | 4S-WMI-2nd145, 4S-WMI-2nd160, 4S-WMI-2nd595 | CSD-LKO Calender (6 day + Holiday)-25 | Physical Progress [2880 h]; Plumbing [515596 INR]; TATA Projects Ltd-25 | 515,596 |
| 4S-WMI-2nd630 |  | Installation of CP fittings (taps, mixers, showers, health faucets) | 10d | 2028-10-11 | 2028-10-23 | 4S-WMI-2nd605, 4S-WMI-2nd595 | CSD-LKO Calender (6 day + Holiday)-25 | Physical Progress [2880 h]; Plumbing [257798 INR]; TATA Projects Ltd-25 | 257,798 |
| 4S-WMI-2nd635 |  | Connection of appliances | 25d | 2028-10-24 | 2028-11-21 | 4S-WMI-2nd630 | CSD-LKO Calender (6 day + Holiday)-25 | Physical Progress [2010 h]; Plumbing [128899 INR]; TATA Projects Ltd-25 | 128,899 |

| ID | WBS | Activity | Duration | Start | Finish | Predecessors | Calendar | Resources | Cost |
| --- | --- | --- | --- | --- | --- | --- | --- | --- | --- |
|  | 4 | **Firefighting** |  | 2028-09-28 | 2028-12-02 |  |  |  |  |
| 4S-WMI-2nd610 |  | Installation of hydrant accessories (valves, hose reels, cabinets) | 25d | 2028-09-28 | 2028-10-28 | 4S-WMI-2nd595 | CSD-LKO Calender (6 day + Holiday)-25 | Physical Progress [2880 h]; Firefighting [134172 INR]; TATA Projects Ltd-25 | 134,172 |
| 4S-WMI-2nd615 |  | Installation of portable fire extinguishers | 30d | 2028-09-28 | 2028-11-03 | 4S-WMI-2nd595 | CSD-LKO Calender (6 day + Holiday)-25 | Physical Progress [1730 h]; Firefighting [13417 INR]; TATA Projects Ltd-25 | 13,417 |
| 4S-WMI-2nd640 |  | Installation of sprinkler heads, nozzles, and final alignment | 35d | 2028-10-24 | 2028-12-02 | 4S-WMI-2nd205, 4S-WMI-2nd230, 4S-WMI-2nd595, 4S-WMI-2nd620 | CSD-LKO Calender (6 day + Holiday)-25 | Physical Progress [12950 h]; Firefighting [201258 INR]; TATA Projects Ltd-25 | 201,258 |
| 4S-WMI-2nd670 |  | Integration with fire alarm system | 20d | 2028-11-04 | 2028-11-27 | 4S-WMI-2nd615 | CSD-LKO Calender (6 day + Holiday)-25 | Physical Progress [5750 h]; Firefighting [67086 INR]; TATA Projects Ltd-25 | 67,086 |
|  | 5 | **ELV** |  | 2028-10-24 | 2028-12-08 |  |  |  |  |
| 4S-WMI-2nd645 |  | Installation of data and Voice Faceplate | 25d | 2028-10-24 | 2028-11-21 | 4S-WMI-2nd415, E-GFC-Misc-ICT/Security-35, P-MEP-ICT/Security-20, P-MEP-BMS-20, 4S-WMI-2nd595, 4S-WMI-2nd620 | CSD-LKO Calender (6 day + Holiday)-25 | Physical Progress [2880 h]; ELV [53835 INR]; TATA Projects Ltd-25 | 53,835 |
| 4S-WMI-2nd650 |  | Installation of Camera & Wifi | 30d | 2028-10-24 | 2028-11-27 | E-GFC-Misc-ICT/Security-35, P-MEP-ICT/Security-20, P-MEP-BMS-20, 4S-WMI-2nd595, 4S-WMI-2nd620 | CSD-LKO Calender (6 day + Holiday)-25 | Physical Progress [2880 h]; ELV [53835 INR]; TATA Projects Ltd-25 | 53,835 |
| 4S-WMI-2nd655 |  | Installation of fire alarm devices + Public Address | 10d | 2028-10-24 | 2028-11-03 | E-GFC-Misc-ICT/Security-35, P-MEP-ICT/Security-20, P-MEP-BMS-20, 4S-WMI-2nd595, 4S-WMI-2nd620 | CSD-LKO Calender (6 day + Holiday)-25 | Physical Progress [2880 h]; ELV [64602 INR]; TATA Projects Ltd-25 | 64,602 |
| 4S-WMI-2nd675 |  | Installation of Active System | 15d | 2028-11-04 | 2028-11-21 | E-GFC-Misc-ICT/Security-35, P-MEP-ICT/Security-20, P-MEP-BMS-20, 4S-WMI-2nd655 | CSD-LKO Calender (6 day + Holiday)-25 | Physical Progress [4320 h]; ELV [107671 INR]; TATA Projects Ltd-25 | 107,671 |
| 4S-WMI-2nd680 |  | Fire Panel Intallation & Integration | 25d | 2028-11-04 | 2028-12-02 | 4S-WMI-2nd655 | CSD-LKO Calender (6 day + Holiday)-25 | Physical Progress [7190 h]; ELV [53835 INR]; TATA Projects Ltd-25 | 53,835 |
| 4S-WMI-2nd685 |  | Installation & Integration of Audio Visual System | 25d | 2028-11-04 | 2028-12-02 | 4S-WMI-2nd655 | CSD-LKO Calender (6 day + Holiday)-25 | Physical Progress [7190 h]; ELV [53835 INR]; TATA Projects Ltd-25 | 53,835 |
| 4S-WMI-2nd690 |  | Installation & Integration of Access Control | 25d | 2028-11-04 | 2028-12-02 | 4S-WMI-2nd655 | CSD-LKO Calender (6 day + Holiday)-25 | Physical Progress [7190 h]; ELV [53835 INR]; TATA Projects Ltd-25 | 53,835 |
| 4S-WMI-2nd700 |  | Integration of Active components | 15d | 2028-11-22 | 2028-12-08 | 4S-WMI-2nd675 | CSD-LKO Calender (6 day + Holiday)-25 | Physical Progress [4320 h]; ELV [21534 INR]; TATA Projects Ltd-25 | 21,534 |
|  | 2 | **Back Face - Toward CC** |  | 2028-01-10 | 2028-08-08 |  |  |  |  |
|  | 2 | **Dry Finishes/ID Works** |  | 2028-01-10 | 2028-08-08 |  |  |  |  |
| 4S-WMI-2nd215 |  | Running of Wild Air | 1d | 2028-01-10 | 2028-01-11 | 4S-F-2nd50, 4S-WMI-2nd140, 4S-WMI-2nd170, 4S-WMI-2nd200, 4S-WMI-2nd285, 4S-WMI-2nd530 | CSD-LKO Calender (6 day + Holiday)-25 | Physical Progress [290 h]; TATA Projects Ltd-25 |  |
| 4S-WMI-2nd220 |  | Wall finish ID Works | 35d | 2028-01-11 | 2028-02-22 | 4S-WMI-2nd215 | CSD-LKO Calender (6 day + Holiday)-25 | ID Work [2845286 INR]; Physical Progress [2880 h]; TATA Projects Ltd-25 | 2,845,286 |
| 4S-WMI-2nd235 |  | False Ceiling Installation | 35d | 2028-02-22 | 2028-04-04 | 4S-WMI-2nd220 | CSD-LKO Calender (6 day + Holiday)-25 | ID Work [3414343 INR]; Physical Progress [5750 h]; TATA Projects Ltd-25 | 3,414,343 |
| 4S-WMI-2nd270 |  | Flooring of toilets/kitchen/Balcony | 10d | 2028-04-04 | 2028-04-17 | 4S-WMI-2nd235, 4S-WMI-2nd55 | CSD-LKO Calender (6 day + Holiday)-25 | ID Work [2276229 INR]; Physical Progress [2880 h]; TATA Projects Ltd-25 | 2,276,229 |
| 4S-WMI-2nd290 |  | Doors & Windows/Fire Doors/Shaft Doors | 35d | 2028-04-17 | 2028-05-30 | 4S-WMI-2nd220, 4S-WMI-2nd270 | CSD-LKO Calender (6 day + Holiday)-25 | ID Work [2845286 INR]; Physical Progress [2880 h]; TATA Projects Ltd-25 | 2,845,286 |
| 4S-WMI-2nd295 |  | Putty & First Coat of Paint | 10d | 2028-04-17 | 2028-04-28 | 4S-WMI-2nd220, 4S-WMI-2nd270 | CSD-LKO Calender (6 day + Holiday)-25 | Painting [869 Sq m]; Painter [870 h]; Helper [870 h]; Physical Progress [2880 h]; TATA Projects Ltd-25 | 198,670.78 |
| 4S-WMI-2nd355 |  | Wooden Flooring/Flooring | 20d | 2028-04-28 | 2028-05-24 | 4S-WMI-2nd295 | CSD-LKO Calender (6 day + Holiday)-25 | ID Work [2845286 INR]; Physical Progress [5750 h]; TATA Projects Ltd-25 | 2,845,286 |
| 4S-WMI-2nd360 |  | Railing for staircase | 35d | 2028-04-28 | 2028-06-10 | 4S-WMI-2nd220, 4S-WMI-2nd295 | CSD-LKO Calender (6 day + Holiday)-25 | ID Work [1280379 INR]; Physical Progress [4320 h]; TATA Projects Ltd-25 | 1,280,379 |
| 4S-WMI-2nd445 |  | Fixed Furniture | 40d | 2028-05-24 | 2028-07-10 | 4S-WMI-2nd355 | CSD-LKO Calender (6 day + Holiday)-25 | ID Work [2560757 INR]; Physical Progress [2300 h]; TATA Projects Ltd-25 | 2,560,757 |
| 4S-WMI-2nd525 |  | False ceiling final finishes | 20d | 2028-06-16 | 2028-07-10 | 4S-WMI-2nd375 | CSD-LKO Calender (6 day + Holiday)-25 | ID Work [853586 INR]; Physical Progress [2880 h]; TATA Projects Ltd-25 | 853,586 |
| 4S-WMI-2nd545 |  | Final coat of paint | 10d | 2028-07-10 | 2028-07-21 | 4S-WMI-2nd525, 4S-WMI-2nd360, 4S-WMI-2nd445, 4S-WMI-2nd485, 4S-WMI-2nd420, 4S-WMI-2nd425, 4S-WMI-2nd490, 4S-WMI-2nd535, 4S-WMI-2nd510, 4S-WMI-2nd505, 4S-WMI-2nd500, 4S-WMI-2nd435, 4S-WMI-2nd430, 4S-WMI-2nd290, 4S-WMI-2nd345, 4S-WMI-2nd310 | CSD-LKO Calender (6 day + Holiday)-25 | Painting [869 Sq m]; Painter [870 h]; Helper [870 h]; Physical Progress [2880 h]; TATA Projects Ltd-25 | 198,670.78 |
| 4S-WMI-2nd560 |  | Soft Furnishing & Signage | 15d | 2028-07-21 | 2028-08-08 | 4S-WMI-2nd545 | CSD-LKO Calender (6 day + Holiday)-25 | ID Work [4267929 INR]; Physical Progress [860 h]; TATA Projects Ltd-25 | 4,267,929 |
| 4S-WMI-2nd565 |  | Loose Furniture | 15d | 2028-07-21 | 2028-08-08 | 4S-WMI-2nd545 | CSD-LKO Calender (6 day + Holiday)-25 | ID Work [5690571 INR]; Physical Progress [860 h]; TATA Projects Ltd-25 | 5,690,571 |

| ID | WBS | Activity | Duration | Start | Finish | Predecessors | Calendar | Resources | Cost |
| --- | --- | --- | --- | --- | --- | --- | --- | --- | --- |
|  | 1 | **MEP Final Fix** |  | 2028-04-04 | 2028-07-10 |  |  |  |  |
|  | 3 | **HVAC** |  | 2028-04-04 | 2028-06-16 |  |  |  |  |
| 4S-WMI-2nd265 |  | Installing grills, diffusers, dampers | 30d | 2028-04-04 | 2028-05-12 | 4S-WMI-2nd235 | CSD-LKO Calender (6 day + Holiday)-25 | Physical Progress [1730 h]; HVAC [358248 INR]; TATA Projects Ltd-25 | 358,248 |
| 4S-WMI-2nd375 |  | Installation of thermostats and control panels | 30d | 2028-05-12 | 2028-06-16 | 4S-WMI-2nd265, 4S-WMI-2nd295 | CSD-LKO Calender (6 day + Holiday)-25 | Physical Progress [1730 h]; HVAC [179124 INR]; TATA Projects Ltd-25 | 179,124 |
|  | 1 | **Electrical** |  | 2028-04-28 | 2028-07-10 |  |  |  |  |
| 4S-WMI-2nd335 |  | Switches & Socket | 30d | 2028-04-28 | 2028-06-05 | 4S-WMI-2nd295 | CSD-LKO Calender (6 day + Holiday)-25 | Physical Progress [5750 h]; Electrical [401028 INR]; TATA Projects Ltd-25 | 401,028 |
| 4S-WMI-2nd485 |  | Light Fixtures | 30d | 2028-06-05 | 2028-07-10 | 4S-WMI-2nd335 | CSD-LKO Calender (6 day + Holiday)-25 | Physical Progress [4320 h]; Electrical [601542 INR]; TATA Projects Ltd-25 | 601,542 |
|  | 2 | **Plumbing** |  | 2028-04-28 | 2028-06-22 |  |  |  |  |
| 4S-WMI-2nd340 |  | Installation of sanitary fixtures (WC, washbasins, urinals, sinks) | 10d | 2028-04-28 | 2028-05-12 | 4S-WMI-2nd295 | CSD-LKO Calender (6 day + Holiday)-25 | Physical Progress [2880 h]; Plumbing [515596 INR]; TATA Projects Ltd-25 | 515,596 |
| 4S-WMI-2nd380 |  | Installation of CP fittings (taps, mixers, showers, health faucets) | 10d | 2028-05-12 | 2028-05-24 | 4S-WMI-2nd340, 4S-WMI-2nd295 | CSD-LKO Calender (6 day + Holiday)-25 | Physical Progress [2880 h]; Plumbing [257798 INR]; TATA Projects Ltd-25 | 257,798 |
| 4S-WMI-2nd420 |  | Connection of appliances | 25d | 2028-05-24 | 2028-06-22 | 4S-WMI-2nd380 | CSD-LKO Calender (6 day + Holiday)-25 | Physical Progress [2010 h]; Plumbing [128899 INR]; TATA Projects Ltd-25 | 128,899 |
|  | 4 | **Firefighting** |  | 2028-04-28 | 2028-07-04 |  |  |  |  |
| 4S-WMI-2nd345 |  | Installation of hydrant accessories (valves, hose reels, cabinets) | 25d | 2028-04-28 | 2028-05-30 | 4S-WMI-2nd295 | CSD-LKO Calender (6 day + Holiday)-25 | Physical Progress [2880 h]; Firefighting [134172 INR]; TATA Projects Ltd-25 | 134,172 |
| 4S-WMI-2nd350 |  | Installation of portable fire extinguishers | 30d | 2028-04-28 | 2028-06-05 | 4S-WMI-2nd295 | CSD-LKO Calender (6 day + Holiday)-25 | Physical Progress [1730 h]; Firefighting [13417 INR]; TATA Projects Ltd-25 | 13,417 |
| 4S-WMI-2nd425 |  | Installation of sprinkler heads, nozzles, and final alignment | 35d | 2028-05-24 | 2028-07-04 | 4S-WMI-2nd295, 4S-WMI-2nd355 | CSD-LKO Calender (6 day + Holiday)-25 | Physical Progress [12950 h]; Firefighting [201258 INR]; TATA Projects Ltd-25 | 201,258 |
| 4S-WMI-2nd490 |  | Integration with fire alarm system | 20d | 2028-06-05 | 2028-06-28 | 4S-WMI-2nd350 | CSD-LKO Calender (6 day + Holiday)-25 | Physical Progress [5750 h]; Firefighting [67086 INR]; TATA Projects Ltd-25 | 67,086 |
|  | 5 | **ELV** |  | 2028-05-24 | 2028-07-10 |  |  |  |  |
| 4S-WMI-2nd430 |  | Installation of data and Voice Faceplate | 25d | 2028-05-24 | 2028-06-22 | 4S-WMI-2nd295, 4S-WMI-2nd355 | CSD-LKO Calender (6 day + Holiday)-25 | Physical Progress [2880 h]; ELV [53835 INR]; TATA Projects Ltd-25 | 53,835 |
| 4S-WMI-2nd435 |  | Installation of Camera & Wifi | 30d | 2028-05-24 | 2028-06-28 | 4S-WMI-2nd295, 4S-WMI-2nd355 | CSD-LKO Calender (6 day + Holiday)-25 | Physical Progress [2880 h]; ELV [53835 INR]; TATA Projects Ltd-25 | 53,835 |
| 4S-WMI-2nd440 |  | Installation of fire alarm devices + Public Address | 10d | 2028-05-24 | 2028-06-05 | 4S-WMI-2nd295, 4S-WMI-2nd355 | CSD-LKO Calender (6 day + Holiday)-25 | Physical Progress [2880 h]; ELV [64602 INR]; TATA Projects Ltd-25 | 64,602 |
| 4S-WMI-2nd495 |  | Installation of Active System | 15d | 2028-06-05 | 2028-06-22 | 4S-WMI-2nd440 | CSD-LKO Calender (6 day + Holiday)-25 | Physical Progress [4320 h]; ELV [107671 INR]; TATA Projects Ltd-25 | 107,671 |
| 4S-WMI-2nd500 |  | Fire Panel Intallation & Integration | 25d | 2028-06-05 | 2028-07-04 | 4S-WMI-2nd440 | CSD-LKO Calender (6 day + Holiday)-25 | Physical Progress [7190 h]; ELV [53835 INR]; TATA Projects Ltd-25 | 53,835 |
| 4S-WMI-2nd505 |  | Installation & Integration of Audio Visual System | 25d | 2028-06-05 | 2028-07-04 | 4S-WMI-2nd440 | CSD-LKO Calender (6 day + Holiday)-25 | Physical Progress [7190 h]; ELV [53835 INR]; TATA Projects Ltd-25 | 53,835 |
| 4S-WMI-2nd510 |  | Installation & Integration of Access Control | 25d | 2028-06-05 | 2028-07-04 | 4S-WMI-2nd440 | CSD-LKO Calender (6 day + Holiday)-25 | Physical Progress [7190 h]; ELV [53835 INR]; TATA Projects Ltd-25 | 53,835 |
| 4S-WMI-2nd535 |  | Integration of Active components | 15d | 2028-06-22 | 2028-07-10 | 4S-WMI-2nd495 | CSD-LKO Calender (6 day + Holiday)-25 | Physical Progress [4320 h]; ELV [21534 INR]; TATA Projects Ltd-25 | 21,534 |

| ID | WBS | Activity | Duration | Start | Finish | Predecessors | Calendar | Resources | Cost |
| --- | --- | --- | --- | --- | --- | --- | --- | --- | --- |
|  | 4 | **Side Face** |  | 2028-01-07 | 2028-08-05 |  |  |  |  |
|  | 2 | **Dry Finishes/ID Works** |  | 2028-01-07 | 2028-08-05 |  |  |  |  |
| 4S-WMI-2nd185 |  | Running of Wild Air | 1d | 2028-01-07 | 2028-01-08 | 4S-F-2nd45, 4S-WMI-2nd140, 4S-WMI-2nd170, 4S-WMI-2nd200, 4S-WMI-2nd285, 4S-WMI-2nd530 | CSD-LKO Calender (6 day + Holiday)-25 | Physical Progress [290 h]; TATA Projects Ltd-25 |  |
| 4S-WMI-2nd190 |  | Wall finish ID Works | 35d | 2028-01-08 | 2028-02-19 | 4S-WMI-2nd185 | CSD-LKO Calender (6 day + Holiday)-25 | ID Work [2845286 INR]; Physical Progress [2880 h]; TATA Projects Ltd-25 | 2,845,286 |
| 4S-WMI-2nd225 |  | False Ceiling Installation | 35d | 2028-02-19 | 2028-04-01 | 4S-WMI-2nd190 | CSD-LKO Calender (6 day + Holiday)-25 | ID Work [3414343 INR]; Physical Progress [5750 h]; TATA Projects Ltd-25 | 3,414,343 |
| 4S-WMI-2nd255 |  | Flooring of toilets/kitchen/Balcony | 10d | 2028-04-01 | 2028-04-13 | 4S-WMI-2nd225, 4S-WMI-2nd55 | CSD-LKO Calender (6 day + Holiday)-25 | ID Work [2276229 INR]; Physical Progress [2880 h]; TATA Projects Ltd-25 | 2,276,229 |
| 4S-WMI-2nd275 |  | Doors & Windows/Fire Doors/Shaft Doors | 35d | 2028-04-13 | 2028-05-27 | 4S-WMI-2nd190, 4S-WMI-2nd255 | CSD-LKO Calender (6 day + Holiday)-25 | ID Work [2845286 INR]; Physical Progress [2880 h]; TATA Projects Ltd-25 | 2,845,286 |
| 4S-WMI-2nd280 |  | Putty & First Coat of Paint | 10d | 2028-04-13 | 2028-04-26 | 4S-WMI-2nd190, 4S-WMI-2nd255 | CSD-LKO Calender (6 day + Holiday)-25 | Painting [869 Sq m]; Painter [870 h]; Helper [870 h]; Physical Progress [2880 h]; TATA Projects Ltd-25 | 198,670.78 |
| 4S-WMI-2nd320 |  | Wooden Flooring/Flooring | 20d | 2028-04-26 | 2028-05-22 | 4S-WMI-2nd280 | CSD-LKO Calender (6 day + Holiday)-25 | ID Work [2845286 INR]; Physical Progress [5750 h]; TATA Projects Ltd-25 | 2,845,286 |
| 4S-WMI-2nd325 |  | Railing for staircase | 35d | 2028-04-26 | 2028-06-08 | 4S-WMI-2nd190, 4S-WMI-2nd280 | CSD-LKO Calender (6 day + Holiday)-25 | ID Work [1280379 INR]; Physical Progress [4320 h]; TATA Projects Ltd-25 | 1,280,379 |
| 4S-WMI-2nd410 |  | Fixed Furniture | 40d | 2028-05-22 | 2028-07-07 | 4S-WMI-2nd320 | CSD-LKO Calender (6 day + Holiday)-25 | ID Work [2560757 INR]; Physical Progress [2300 h]; TATA Projects Ltd-25 | 2,560,757 |
| 4S-WMI-2nd515 |  | False ceiling final finishes | 10d | 2028-06-14 | 2028-06-26 | 4S-WMI-2nd365 | CSD-LKO Calender (6 day + Holiday)-25 | ID Work [853586 INR]; Physical Progress [2880 h]; TATA Projects Ltd-25 | 853,586 |
| 4S-WMI-2nd540 |  | Final coat of paint | 10d | 2028-07-07 | 2028-07-19 | 4S-WMI-2nd515, 4S-WMI-2nd325, 4S-WMI-2nd410, 4S-WMI-2nd450, 4S-WMI-2nd385, 4S-WMI-2nd390, 4S-WMI-2nd455, 4S-WMI-2nd520, 4S-WMI-2nd475, 4S-WMI-2nd470, 4S-WMI-2nd465, 4S-WMI-2nd400, 4S-WMI-2nd395, 4S-WMI-2nd275, 4S-WMI-2nd310 | CSD-LKO Calender (6 day + Holiday)-25 | Painting [869 Sq m]; Painter [870 h]; Helper [870 h]; Physical Progress [2880 h]; TATA Projects Ltd-25 | 198,670.78 |
| 4S-WMI-2nd550 |  | Soft Furnishing & Signage | 15d | 2028-07-19 | 2028-08-05 | 4S-WMI-2nd540 | CSD-LKO Calender (6 day + Holiday)-25 | ID Work [4267929 INR]; Physical Progress [860 h]; TATA Projects Ltd-25 | 4,267,929 |
| 4S-WMI-2nd555 |  | Loose Furniture | 15d | 2028-07-19 | 2028-08-05 | 4S-WMI-2nd540 | CSD-LKO Calender (6 day + Holiday)-25 | ID Work [5690571 INR]; Physical Progress [860 h]; TATA Projects Ltd-25 | 5,690,571 |
|  | 1 | **MEP Final Fix** |  | 2028-04-01 | 2028-07-07 |  |  |  |  |
|  | 3 | **HVAC** |  | 2028-04-01 | 2028-06-14 |  |  |  |  |
| 4S-WMI-2nd250 |  | Installing grills, diffusers, dampers | 30d | 2028-04-01 | 2028-05-10 | 4S-WMI-2nd225 | CSD-LKO Calender (6 day + Holiday)-25 | Physical Progress [1730 h]; HVAC [358248 INR]; TATA Projects Ltd-25 | 358,248 |
| 4S-WMI-2nd365 |  | Installation of thermostats and control panels | 30d | 2028-05-10 | 2028-06-14 | 4S-WMI-2nd250, 4S-WMI-2nd280 | CSD-LKO Calender (6 day + Holiday)-25 | Physical Progress [1730 h]; HVAC [179124 INR]; TATA Projects Ltd-25 | 179,124 |
|  | 1 | **Electrical** |  | 2028-04-26 | 2028-07-07 |  |  |  |  |
| 4S-WMI-2nd300 |  | Switches & Socket | 30d | 2028-04-26 | 2028-06-02 | 4S-WMI-2nd280 | CSD-LKO Calender (6 day + Holiday)-25 | Physical Progress [5750 h]; Electrical [401028 INR]; TATA Projects Ltd-25 | 401,028 |
| 4S-WMI-2nd450 |  | Light Fixtures | 30d | 2028-06-02 | 2028-07-07 | 4S-WMI-2nd300 | CSD-LKO Calender (6 day + Holiday)-25 | Physical Progress [4320 h]; Electrical [601542 INR]; TATA Projects Ltd-25 | 601,542 |
|  | 2 | **Plumbing** |  | 2028-04-26 | 2028-06-20 |  |  |  |  |
| 4S-WMI-2nd305 |  | Installation of sanitary fixtures (WC, washbasins, urinals, sinks) | 10d | 2028-04-26 | 2028-05-10 | 4S-WMI-2nd280 | CSD-LKO Calender (6 day + Holiday)-25 | Physical Progress [2880 h]; Plumbing [515596 INR]; TATA Projects Ltd-25 | 515,596 |
| 4S-WMI-2nd370 |  | Installation of CP fittings (taps, mixers, showers, health faucets) | 10d | 2028-05-10 | 2028-05-22 | 4S-WMI-2nd305, 4S-WMI-2nd280 | CSD-LKO Calender (6 day + Holiday)-25 | Physical Progress [2880 h]; Plumbing [257798 INR]; TATA Projects Ltd-25 | 257,798 |
| 4S-WMI-2nd385 |  | Connection of appliances | 25d | 2028-05-22 | 2028-06-20 | 4S-WMI-2nd370 | CSD-LKO Calender (6 day + Holiday)-25 | Physical Progress [2010 h]; Plumbing [128899 INR]; TATA Projects Ltd-25 | 128,899 |

| ID | WBS | Activity | Duration | Start | Finish | Predecessors | Calendar | Resources | Cost |
| --- | --- | --- | --- | --- | --- | --- | --- | --- | --- |
|  | 4 | **Firefighting** |  | 2028-04-26 | 2028-07-01 |  |  |  |  |
| 4S-WMI-2nd310 |  | Installation of hydrant accessories (valves, hose reels, cabinets) | 25d | 2028-04-26 | 2028-05-27 | 4S-WMI-2nd280 | CSD-LKO Calender (6 day + Holiday)-25 | Physical Progress [2880 h]; Firefighting [134172 INR]; TATA Projects Ltd-25 | 134,172 |
| 4S-WMI-2nd315 |  | Installation of portable fire extinguishers | 30d | 2028-04-26 | 2028-06-02 | 4S-WMI-2nd280 | CSD-LKO Calender (6 day + Holiday)-25 | Physical Progress [1730 h]; Firefighting [13417 INR]; TATA Projects Ltd-25 | 13,417 |
| 4S-WMI-2nd390 |  | Installation of sprinkler heads, nozzles, and final alignment | 35d | 2028-05-22 | 2028-07-01 | 4S-WMI-2nd280, 4S-WMI-2nd320 | CSD-LKO Calender (6 day + Holiday)-25 | Physical Progress [12950 h]; Firefighting [201258 INR]; TATA Projects Ltd-25 | 201,258 |
| 4S-WMI-2nd455 |  | Integration with fire alarm system | 20d | 2028-06-02 | 2028-06-26 | 4S-WMI-2nd315 | CSD-LKO Calender (6 day + Holiday)-25 | Physical Progress [5750 h]; Firefighting [67086 INR]; TATA Projects Ltd-25 | 67,086 |
|  | 5 | **ELV** |  | 2028-05-22 | 2028-07-07 |  |  |  |  |
| 4S-WMI-2nd395 |  | Installation of data and Voice Faceplate | 25d | 2028-05-22 | 2028-06-20 | 4S-WMI-2nd280, 4S-WMI-2nd320 | CSD-LKO Calender (6 day + Holiday)-25 | Physical Progress [2880 h]; ELV [53835 INR]; TATA Projects Ltd-25 | 53,835 |
| 4S-WMI-2nd400 |  | Installation of Camera & Wifi | 30d | 2028-05-22 | 2028-06-26 | 4S-WMI-2nd280, 4S-WMI-2nd320 | CSD-LKO Calender (6 day + Holiday)-25 | Physical Progress [2880 h]; ELV [53835 INR]; TATA Projects Ltd-25 | 53,835 |
| 4S-WMI-2nd405 |  | Installation of fire alarm devices + Public Address | 10d | 2028-05-22 | 2028-06-02 | 4S-WMI-2nd280, 4S-WMI-2nd320 | CSD-LKO Calender (6 day + Holiday)-25 | Physical Progress [2880 h]; ELV [64602 INR]; TATA Projects Ltd-25 | 64,602 |
| 4S-WMI-2nd460 |  | Installation of Active System | 15d | 2028-06-02 | 2028-06-20 | 4S-WMI-2nd405 | CSD-LKO Calender (6 day + Holiday)-25 | Physical Progress [4320 h]; ELV [107671 INR]; TATA Projects Ltd-25 | 107,671 |
| 4S-WMI-2nd465 |  | Fire Panel Intallation & Integration | 25d | 2028-06-02 | 2028-07-01 | 4S-WMI-2nd405 | CSD-LKO Calender (6 day + Holiday)-25 | Physical Progress [7190 h]; ELV [53835 INR]; TATA Projects Ltd-25 | 53,835 |
| 4S-WMI-2nd470 |  | Installation & Integration of Audio Visual System | 25d | 2028-06-02 | 2028-07-01 | 4S-WMI-2nd405 | CSD-LKO Calender (6 day + Holiday)-25 | Physical Progress [7190 h]; ELV [53835 INR]; TATA Projects Ltd-25 | 53,835 |
| 4S-WMI-2nd475 |  | Installation & Integration of Access Control | 25d | 2028-06-02 | 2028-07-01 | 4S-WMI-2nd405 | CSD-LKO Calender (6 day + Holiday)-25 | Physical Progress [7190 h]; ELV [53835 INR]; TATA Projects Ltd-25 | 53,835 |
| 4S-WMI-2nd520 |  | Integration of Active components | 15d | 2028-06-20 | 2028-07-07 | 4S-WMI-2nd460 | CSD-LKO Calender (6 day + Holiday)-25 | Physical Progress [4320 h]; ELV [21534 INR]; TATA Projects Ltd-25 | 21,534 |
|  | 3 | **Third Floor** |  | 2027-08-04 | 2028-11-21 |  |  |  |  |
|  | 1 | **Wet Finishes** |  | 2027-08-04 | 2027-11-15 |  |  |  |  |
| 4S-WMI-3rd10 |  | Deshuttering | 4d | 2027-08-04 | 2027-08-09 | 4S-SS-4th.F.415 | CSD-LKO Calender (6 day + Holiday)-25 | Physical Progress [1160 h]; TATA Projects Ltd-25 |  |
| 4S-WMI-3rd15 |  | Brickwork/Blockwork | 30d | 2027-08-09 | 2027-09-14 | 4S-WMI-3rd10, E-GFC-AR-4S-255 | CSD-LKO Calender (6 day + Holiday)-25 | Masonry [546 CuM]; Mason [3640 h]; Helper [1820 h]; Physical Progress [8630 h]; TATA Projects Ltd-25 | 5,206,306.56 |
| 4S-WMI-3rd55 |  | Waterproofing of Toilets, Balcony & Kitchen | 15d | 2027-09-14 | 2027-10-01 | 4S-WMI-3rd15 | CSD-LKO Calender (6 day + Holiday)-25 | Waterproofing [8564838 INR]; Waterprrofing Mason [8160 h]; Helper [4080 h]; Physical Progress [4320 h]; TATA Projects Ltd-25 | 8,564,838 |
| 4S-WMI-3rd95 |  | Plaster | 15d | 2027-10-27 | 2027-11-15 | 4S-WMI-3rd30, 4S-WMI-3rd75, 4S-WMI-3rd80, 4S-WMI-3rd55 | CSD-LKO Calender (6 day + Holiday)-25 | Plaster [8485 Sqr Mtr]; Mason [5660 h]; Helper [2830 h]; Physical Progress [4320 h]; TATA Projects Ltd-25 | 4,699,926.35 |
|  | 5 | **MEP 1st Fix, 2nd Fix** |  | 2027-08-09 | 2028-03-08 |  |  |  |  |
|  | 2 | **HVAC** |  | 2027-09-14 | 2028-03-08 |  |  |  |  |
|  | 1 | **1st Fix** |  | 2027-09-14 | 2027-12-27 |  |  |  |  |
| 4S-WMI-3rd50 |  | Duct Support Fabrication | 25d | 2027-09-14 | 2027-10-15 | 4S-WMI-3rd15, E-GFC-MEP-4S-255 | CSD-LKO Calender (6 day + Holiday)-25 | Physical Progress [4320 h]; HVAC [214949 INR]; TATA Projects Ltd-25 | 214,949 |
| 4S-WMI-3rd100 |  | Installing duct hangers and supports | 30d | 2027-10-15 | 2027-11-20 | 4S-WMI-3rd50, E-GFC-MEP-4S-255 | CSD-LKO Calender (6 day + Holiday)-25 | Physical Progress [2880 h]; HVAC [429898 INR]; TATA Projects Ltd-25 | 429,898 |
| 4S-WMI-3rd130 |  | Laying concealed/exposed refrigerant piping | 30d | 2027-11-20 | 2027-12-27 | 4S-WMI-3rd100, E-GFC-MEP-4S-255 | CSD-LKO Calender (6 day + Holiday)-25 | Physical Progress [4320 h]; HVAC [107474 INR]; TATA Projects Ltd-25 | 107,474 |
| 4S-WMI-3rd135 |  | Laying concealed/exposed drain piping | 30d | 2027-11-20 | 2027-12-27 | 4S-WMI-3rd100, E-GFC-MEP-4S-255 | CSD-LKO Calender (6 day + Holiday)-25 | Physical Progress [2880 h]; HVAC [644847 INR]; TATA Projects Ltd-25 | 644,847 |

| ID | WBS | Activity | Duration | Start | Finish | Predecessors | Calendar | Resources | Cost |
| --- | --- | --- | --- | --- | --- | --- | --- | --- | --- |
|  | 2 | **2nd Fix** |  | 2027-11-20 | 2028-03-08 |  |  |  |  |
| 4S-WMI-3rd140 |  | Duct installation | 20d | 2027-11-20 | 2027-12-14 | 4S-WMI-3rd100 | CSD-LKO Calender (6 day + Holiday)-25 | Physical Progress [4320 h]; HVAC [1612117 INR]; TATA Projects Ltd-25 | 1,612,117 |
| 4S-WMI-3rd170 |  | Insulation of ducts (thermal/acoustic) | 10d | 2027-12-14 | 2027-12-27 | 4S-WMI-3rd140 | CSD-LKO Calender (6 day + Holiday)-25 | Physical Progress [1730 h]; HVAC [967270 INR]; TATA Projects Ltd-25 | 967,270 |
| 4S-WMI-3rd185 |  | Installation of chilled water piping / VRF piping | 15d | 2027-12-27 | 2028-01-14 | 4S-WMI-3rd170, 4S-WMI-3rd130, 4S-WMI-3rd135 | CSD-LKO Calender (6 day + Holiday)-25 | Physical Progress [1730 h]; HVAC [2149489 INR]; TATA Projects Ltd-25 | 2,149,489 |
| 4S-WMI-3rd255 |  | Installation of indoor units including AHU, FCU | 35d | 2028-01-14 | 2028-02-25 | 4S-WMI-3rd185, 4S-WMI-3rd130, 4S-WMI-3rd135 | CSD-LKO Calender (6 day + Holiday)-25 | Physical Progress [12950 h]; HVAC [1934540 INR]; TATA Projects Ltd-25 | 1,934,540 |
| 4S-WMI-3rd485 |  | Connecting refrigerant and drain piping to indoor units | 10d | 2028-02-25 | 2028-03-08 | 4S-WMI-3rd255 | CSD-LKO Calender (6 day + Holiday)-25 | Physical Progress [1730 h]; HVAC [537372 INR]; TATA Projects Ltd-25 | 537,372 |
|  | 1 | **Electrical** |  | 2027-08-09 | 2028-03-02 |  |  |  |  |
|  | 1 | **1st Fix** |  | 2027-08-09 | 2027-10-27 |  |  |  |  |
| 4S-WMI-3rd25 |  | Slab Conduiting | 35d | 2027-08-09 | 2027-09-20 | 4S-WMI-3rd10, E-GFC-MEP-4S-255 | CSD-LKO Calender (6 day + Holiday)-25 | Physical Progress [7190 h]; Electrical [1203084 INR]; TATA Projects Ltd-25 | 1,203,084 |
| 4S-WMI-3rd30 |  | Wall Conduiting | 30d | 2027-09-14 | 2027-10-21 | 4S-WMI-3rd15, E-GFC-MEP-4S-255 | CSD-LKO Calender (6 day + Holiday)-25 | Physical Progress [2880 h]; Electrical [601542 INR]; TATA Projects Ltd-25 | 601,542 |
| 4S-WMI-3rd75 |  | Installing back boxes for switches, sockets | 5d | 2027-10-21 | 2027-10-27 | 4S-WMI-3rd30, 4S-WMI-3rd25, E-GFC-MEP-4S-255 | CSD-LKO Calender (6 day + Holiday)-25 | Physical Progress [1440 h]; Electrical [360925 INR]; TATA Projects Ltd-25 | 360,925 |
|  | 2 | **2nd Fix** |  | 2027-11-15 | 2028-03-02 |  |  |  |  |
| 4S-WMI-3rd115 |  | Cable tray laying | 25d | 2027-11-15 | 2027-12-14 | 4S-WMI-3rd95 | CSD-LKO Calender (6 day + Holiday)-25 | Physical Progress [7190 h]; Electrical [481234 INR]; TATA Projects Ltd-25 | 481,234 |
| 4S-WMI-3rd155 |  | Cabling & Wire Pulling | 25d | 2027-12-14 | 2028-01-14 | 4S-WMI-3rd115 | CSD-LKO Calender (6 day + Holiday)-25 | Physical Progress [12950 h]; Electrical [2406168 INR]; TATA Projects Ltd-25 | 2,406,168 |
| 4S-WMI-3rd215 |  | DB fixing and connecting | 20d | 2028-01-14 | 2028-02-08 | 4S-WMI-3rd155 | CSD-LKO Calender (6 day + Holiday)-25 | Physical Progress [4320 h]; Electrical [360925 INR]; TATA Projects Ltd-25 | 360,925 |
| 4S-WMI-3rd220 |  | Floor Rising Main Installation | 20d | 2028-01-14 | 2028-02-08 | 4S-WMI-3rd155 | CSD-LKO Calender (6 day + Holiday)-25 | Physical Progress [1440 h]; Electrical [1684318 INR]; TATA Projects Ltd-25 | 1,684,318 |
| 4S-WMI-3rd270 |  | Floor/Distribution Panel Installation | 10d | 2028-02-08 | 2028-02-19 | 4S-WMI-3rd215 | CSD-LKO Calender (6 day + Holiday)-25 | Physical Progress [1440 h]; Electrical [962467 INR]; TATA Projects Ltd-25 | 962,467 |
| 4S-WMI-3rd380 |  | Equipment Earthing | 10d | 2028-02-19 | 2028-03-02 | 4S-WMI-3rd270, 4S-WMI-3rd220 | CSD-LKO Calender (6 day + Holiday)-25 | Physical Progress [2880 h]; Electrical [360925 INR]; TATA Projects Ltd-25 | 360,925 |
|  | 3 | **Plumbing** |  | 2027-09-14 | 2028-03-08 |  |  |  |  |
|  | 1 | **1st Fix** |  | 2027-09-14 | 2028-01-20 |  |  |  |  |
| 4S-WMI-3rd35 |  | Fixing pipe supports and clamps | 25d | 2027-09-14 | 2027-10-15 | 4S-WMI-3rd15, E-GFC-MEP-4S-255 | CSD-LKO Calender (6 day + Holiday)-25 | Physical Progress [2880 h]; Plumbing [386697 INR]; TATA Projects Ltd-25 | 386,697 |
| 4S-WMI-3rd60 |  | Laying water supply pipes (hot & cold) | 25d | 2027-10-15 | 2027-11-15 | 4S-WMI-3rd35, E-GFC-MEP-4S-255 | CSD-LKO Calender (6 day + Holiday)-25 | Physical Progress [4320 h]; Plumbing [773394 INR]; TATA Projects Ltd-25 | 773,394 |
| 4S-WMI-3rd65 |  | Laying drainage pipes (soil, waste, vent) | 25d | 2027-10-15 | 2027-11-15 | 4S-WMI-3rd35, E-GFC-MEP-4S-255 | CSD-LKO Calender (6 day + Holiday)-25 | Physical Progress [4320 h]; Plumbing [773394 INR]; TATA Projects Ltd-25 | 773,394 |
| 4S-WMI-3rd70 |  | Installation of plumbing fixture base supports (WC frames, sink brackets) | 30d | 2027-11-15 | 2027-12-20 | 4S-WMI-3rd65, E-GFC-MEP-4S-255 | CSD-LKO Calender (6 day + Holiday)-25 | Physical Progress [1730 h]; Plumbing [386697 INR]; TATA Projects Ltd-25 | 386,697 |
| 4S-WMI-3rd85 |  | Pressure testing of water supply lines | 25d | 2027-12-20 | 2028-01-20 | 4S-WMI-3rd60, 4S-WMI-3rd65, 4S-WMI-3rd70, E-GFC-MEP-4S-255 | CSD-LKO Calender (6 day + Holiday)-25 | Physical Progress [2010 h]; Plumbing [77339 INR]; TATA Projects Ltd-25 | 77,339 |
| 4S-WMI-3rd90 |  | Installation of concealed parts of toilet fixtures | 25d | 2027-12-20 | 2028-01-20 | 4S-WMI-3rd70, E-GFC-MEP-4S-255 | CSD-LKO Calender (6 day + Holiday)-25 | Physical Progress [2880 h]; Plumbing [386697 INR]; TATA Projects Ltd-25 | 386,697 |

| ID | WBS | Activity | Duration | Start | Finish | Predecessors | Calendar | Resources | Cost |
| --- | --- | --- | --- | --- | --- | --- | --- | --- | --- |
|  | 2 | **2nd FIx** |  | 2028-01-20 | 2028-03-08 |  |  |  |  |
| 4S-WMI-3rd110 |  | Insulation of hot water pipes (if applicable) | 20d | 2028-01-20 | 2028-02-14 | 4S-WMI-3rd85 | CSD-LKO Calender (6 day + Holiday)-25 | Physical Progress [1730 h]; Plumbing [386697 INR]; TATA Projects Ltd-25 | 386,697 |
| 4S-WMI-3rd120 |  | Installation of vertical risers and main distribution lines | 20d | 2028-01-20 | 2028-02-14 | 4S-WMI-3rd95, 4S-WMI-3rd85, 4S-WMI-3rd90 | CSD-LKO Calender (6 day + Holiday)-25 | Physical Progress [5750 h]; Plumbing [773394 INR]; TATA Projects Ltd-25 | 773,394 |
| 4S-WMI-3rd145 |  | Testing drainage lines for leakage/blockage | 20d | 2028-02-14 | 2028-03-08 | 4S-WMI-3rd70, 4S-WMI-3rd110 | CSD-LKO Calender (6 day + Holiday)-25 | Physical Progress [1730 h]; Plumbing [77339 INR]; TATA Projects Ltd-25 | 77,339 |
| 4S-WMI-3rd160 |  | Fixing floor traps and gully traps | 20d | 2028-02-14 | 2028-03-08 | 4S-WMI-3rd120 | CSD-LKO Calender (6 day + Holiday)-25 | Physical Progress [1730 h]; Plumbing [232018 INR]; TATA Projects Ltd-25 | 232,018 |
|  | 4 | **Firefighting** |  | 2027-09-14 | 2028-03-08 |  |  |  |  |
|  | 1 | **1st Fix** |  | 2027-09-14 | 2027-12-27 |  |  |  |  |
| 4S-WMI-3rd40 |  | Fixing pipe supports and hangers | 25d | 2027-09-14 | 2027-10-15 | 4S-WMI-3rd15, E-GFC-MEP-4S-255 | CSD-LKO Calender (6 day + Holiday)-25 | Physical Progress [2880 h]; Firefighting [281762 INR]; TATA Projects Ltd-25 | 281,762 |
| 4S-WMI-3rd105 |  | Laying branch piping | 30d | 2027-10-15 | 2027-11-20 | 4S-WMI-3rd40, E-GFC-MEP-4S-255 | CSD-LKO Calender (6 day + Holiday)-25 | Physical Progress [4320 h]; Firefighting [603775 INR]; TATA Projects Ltd-25 | 603,775 |
| 4S-WMI-3rd150 |  | Hydrostatic pressure testing of piping | 30d | 2027-11-20 | 2027-12-27 | 4S-WMI-3rd105, E-GFC-MEP-4S-255 | CSD-LKO Calender (6 day + Holiday)-25 | Physical Progress [1730 h]; Firefighting [80503 INR]; TATA Projects Ltd-25 | 80,503 |
|  | 2 | **2nd Fix** |  | 2027-12-27 | 2028-03-08 |  |  |  |  |
| 4S-WMI-3rd175 |  | Installation of vertical risers and distribution piping in shafts | 35d | 2027-12-27 | 2028-02-08 | 4S-WMI-3rd95, 4S-WMI-3rd150 | CSD-LKO Calender (6 day + Holiday)-25 | Physical Progress [7190 h]; Firefighting [805034 INR]; TATA Projects Ltd-25 | 805,034 |
| 4S-WMI-3rd180 |  | Painting/insulation of exposed fire pipes | 20d | 2027-12-27 | 2028-01-20 | 4S-WMI-3rd150 | CSD-LKO Calender (6 day + Holiday)-25 | Physical Progress [2880 h]; Firefighting [40252 INR]; TATA Projects Ltd-25 | 40,252 |
| 4S-WMI-3rd190 |  | Testing risers and branch lines for leakage | 10d | 2028-01-20 | 2028-02-02 | 4S-WMI-3rd180 | CSD-LKO Calender (6 day + Holiday)-25 | Physical Progress [1730 h]; Firefighting [80503 INR]; TATA Projects Ltd-25 | 80,503 |
| 4S-WMI-3rd200 |  | Installation of sprinkler branch lines in ceilings | 25d | 2028-02-08 | 2028-03-08 | 4S-WMI-3rd175 | CSD-LKO Calender (6 day + Holiday)-25 | Physical Progress [7190 h]; Firefighting [603775 INR]; TATA Projects Ltd-25 | 603,775 |
|  | 5 | **ELV** |  | 2027-08-09 | 2028-03-08 |  |  |  |  |
|  | 1 | **1st Fix** |  | 2027-08-09 | 2027-10-27 |  |  |  |  |
| 4S-WMI-3rd20 |  | Slab Conduiting | 35d | 2027-08-09 | 2027-09-20 | 4S-WMI-3rd10, E-GFC-MEP-4S-255 | CSD-LKO Calender (6 day + Holiday)-25 | Physical Progress [7190 h]; ELV [226108 INR]; TATA Projects Ltd-25 | 226,108 |
| 4S-WMI-3rd45 |  | Wall Conduiting | 30d | 2027-09-14 | 2027-10-21 | 4S-WMI-3rd15, E-GFC-MEP-4S-255 | CSD-LKO Calender (6 day + Holiday)-25 | Physical Progress [2880 h]; ELV [96904 INR]; TATA Projects Ltd-25 | 96,904 |
| 4S-WMI-3rd80 |  | Installing back boxes for switches, sockets | 5d | 2027-10-21 | 2027-10-27 | 4S-WMI-3rd45, 4S-WMI-3rd20, E-GFC-MEP-4S-255 | CSD-LKO Calender (6 day + Holiday)-25 | Physical Progress [1440 h]; ELV [161506 INR]; TATA Projects Ltd-25 | 161,506 |
|  | 2 | **2nd Fix** |  | 2027-11-15 | 2028-03-08 |  |  |  |  |
| 4S-WMI-3rd125 |  | Cable tray installation | 20d | 2027-11-15 | 2027-12-08 | 4S-WMI-3rd95 | CSD-LKO Calender (6 day + Holiday)-25 | Physical Progress [7190 h]; ELV [161506 INR]; TATA Projects Ltd-25 | 161,506 |
| 4S-WMI-3rd165 |  | Cabeling of ELV cable - IT/Fire Alarm/Public Address | 30d | 2027-12-08 | 2028-01-14 | 4S-WMI-3rd125 | CSD-LKO Calender (6 day + Holiday)-25 | Physical Progress [12950 h]; ELV [387614 INR]; TATA Projects Ltd-25 | 387,614 |
| 4S-WMI-3rd195 |  | ELV Rack Installation | 15d | 2028-01-14 | 2028-02-02 | 4S-WMI-3rd165 | CSD-LKO Calender (6 day + Holiday)-25 | Physical Progress [2880 h]; ELV [161506 INR]; TATA Projects Ltd-25 | 161,506 |
| 4S-WMI-3rd245 |  | Termination of cables at junction boxes, patch panels, and control panels | 15d | 2028-02-02 | 2028-02-19 | 4S-WMI-3rd195 | CSD-LKO Calender (6 day + Holiday)-25 | Physical Progress [8630 h]; ELV [161506 INR]; TATA Projects Ltd-25 | 161,506 |
| 4S-WMI-3rd335 |  | Fixing devices like CCTV camera bases, card reader bases, smoke detector bases, PA Bases, Wifi Bases | 15d | 2028-02-19 | 2028-03-08 | 4S-WMI-3rd245 | CSD-LKO Calender (6 day + Holiday)-25 | Physical Progress [1150 h]; ELV [323012 INR]; TATA Projects Ltd-25 | 323,012 |

| ID | WBS | Activity | Duration | Start | Finish | Predecessors | Calendar | Resources | Cost |
| --- | --- | --- | --- | --- | --- | --- | --- | --- | --- |
|  | 3 | **Front Face - Toward Airport** |  | 2028-04-17 | 2028-11-15 |  |  |  |  |
|  | 2 | **Dry Finishes/ID Works** |  | 2028-04-17 | 2028-11-15 |  |  |  |  |
| 4S-WMI-3rd225 |  | Running of Wild Air | 1d | 2028-04-17 | 2028-04-17 | 4S-F-3rd40, 4S-WMI-3rd140, 4S-WMI-3rd170, 4S-WMI-3rd185, 4S-WMI-3rd255, 4S-WMI-3rd485 | CSD-LKO Calender (6 day + Holiday)-25 | Physical Progress [290 h]; TATA Projects Ltd-25 |  |
| 4S-WMI-3rd545 |  | Wall finish ID Works | 35d | 2028-04-18 | 2028-05-30 | 4S-WMI-3rd225, 4S-WMI-3rd140, 4S-WMI-3rd170, 4S-WMI-3rd185, 4S-WMI-3rd255, 4S-WMI-3rd485, 4S-WMI-3rd115, 4S-WMI-3rd155, 4S-WMI-3rd215, 4S-WMI-3rd220, 4S-WMI-3rd270, 4S-WMI-3rd380, 4S-WMI-3rd110, 4S-WMI-3rd120, 4S-WMI-3rd145, 4S-WMI-3rd160, 4S-WMI-3rd175, 4S-WMI-3rd180, 4S-WMI-3rd190, 4S-WMI-3rd200, 4S-WMI-3rd125, 4S-WMI-3rd165, 4S-WMI-3rd195, 4S-WMI-3rd245, 4S-WMI-3rd335 | CSD-LKO Calender (6 day + Holiday)-25 | ID Work [2845286 INR]; Physical Progress [2880 h]; TATA Projects Ltd-25 | 2,845,286 |
| 4S-WMI-3rd565 |  | False Ceiling Installation | 35d | 2028-05-31 | 2028-07-10 | 4S-WMI-3rd545 | CSD-LKO Calender (6 day + Holiday)-25 | ID Work [3414343 INR]; Physical Progress [5750 h]; TATA Projects Ltd-25 | 3,414,343 |
| 4S-WMI-3rd585 |  | Flooring of toilets/kitchen/Balcony | 10d | 2028-07-11 | 2028-07-21 | 4S-WMI-3rd55, 4S-WMI-3rd565 | CSD-LKO Calender (6 day + Holiday)-25 | ID Work [2276229 INR]; Physical Progress [2880 h]; TATA Projects Ltd-25 | 2,276,229 |
| 4S-WMI-3rd590 |  | Doors & Windows/Fire Doors/Shaft Doors | 35d | 2028-07-22 | 2028-09-02 | 4S-WMI-3rd545, 4S-WMI-3rd585 | CSD-LKO Calender (6 day + Holiday)-25 | ID Work [2845286 INR]; Physical Progress [2880 h]; TATA Projects Ltd-25 | 2,845,286 |
| 4S-WMI-3rd595 |  | Putty & First Coat of Paint | 10d | 2028-07-22 | 2028-08-02 | 4S-WMI-3rd545, 4S-WMI-3rd585 | CSD-LKO Calender (6 day + Holiday)-25 | Painting [869 Sq m]; Painter [870 h]; Helper [870 h]; Physical Progress [2880 h]; TATA Projects Ltd-25 | 198,670.78 |
| 4S-WMI-3rd620 |  | Wooden Flooring/Flooring | 20d | 2028-08-03 | 2028-08-28 | 4S-WMI-3rd595 | CSD-LKO Calender (6 day + Holiday)-25 | ID Work [2845286 INR]; Physical Progress [5750 h]; TATA Projects Ltd-25 | 2,845,286 |
| 4S-WMI-3rd660 |  | Fixed Furniture | 8d | 2028-08-29 | 2028-09-06 | 4S-WMI-3rd620 | CSD-LKO Calender (6 day + Holiday)-25 | ID Work [2560757 INR]; Physical Progress [2300 h]; TATA Projects Ltd-25 | 2,560,757 |
| 4S-WMI-3rd695 |  | False ceiling final finishes | 10d | 2028-09-21 | 2028-10-04 | 4S-WMI-3rd625 | CSD-LKO Calender (6 day + Holiday)-25 | ID Work [853586 INR]; Physical Progress [2880 h]; TATA Projects Ltd-25 | 853,586 |
| 4S-WMI-3rd705 |  | Final coat of paint | 10d | 2028-10-18 | 2028-10-28 | 4S-WMI-3rd695, 4S-WMI-3rd660, 4S-WMI-3rd665, 4S-WMI-3rd635, 4S-WMI-3rd640, 4S-WMI-3rd670, 4S-WMI-3rd700, 4S-WMI-3rd690, 4S-WMI-3rd685, 4S-WMI-3rd680, 4S-WMI-3rd650, 4S-WMI-3rd645, 4S-WMI-3rd590, 4S-WMI-3rd610 | CSD-LKO Calender (6 day + Holiday)-25 | Painting [869 Sq m]; Painter [870 h]; Helper [870 h]; Physical Progress [2880 h]; TATA Projects Ltd-25 | 198,670.78 |
| 4S-WMI-3rd710 |  | Soft Furnishing & Signage | 15d | 2028-10-30 | 2028-11-15 | 4S-WMI-3rd705 | CSD-LKO Calender (6 day + Holiday)-25 | ID Work [4267929 INR]; Physical Progress [860 h]; TATA Projects Ltd-25 | 4,267,929 |
| 4S-WMI-3rd715 |  | Loose Furniture | 15d | 2028-10-30 | 2028-11-15 | 4S-WMI-3rd705 | CSD-LKO Calender (6 day + Holiday)-25 | ID Work [5690571 INR]; Physical Progress [860 h]; TATA Projects Ltd-25 | 5,690,571 |
|  | 1 | **MEP Final Fix** |  | 2028-07-11 | 2028-10-16 |  |  |  |  |
|  | 3 | **HVAC** |  | 2028-07-11 | 2028-09-20 |  |  |  |  |
| 4S-WMI-3rd580 |  | Installing grills, diffusers, dampers | 30d | 2028-07-11 | 2028-08-14 | 4S-WMI-3rd565 | CSD-LKO Calender (6 day + Holiday)-25 | Physical Progress [1730 h]; HVAC [358248 INR]; TATA Projects Ltd-25 | 358,248 |
| 4S-WMI-3rd625 |  | Installation of thermostats and control panels | 30d | 2028-08-16 | 2028-09-20 | 4S-WMI-3rd580, 4S-WMI-3rd595, 4S-WMI-3rd485 | CSD-LKO Calender (6 day + Holiday)-25 | Physical Progress [1730 h]; HVAC [179124 INR]; TATA Projects Ltd-25 | 179,124 |
|  | 1 | **Electrical** |  | 2028-08-03 | 2028-10-16 |  |  |  |  |
| 4S-WMI-3rd600 |  | Switches & Socket | 30d | 2028-08-03 | 2028-09-08 | 4S-WMI-3rd595 | CSD-LKO Calender (6 day + Holiday)-25 | Physical Progress [5750 h]; Electrical [401028 INR]; TATA Projects Ltd-25 | 401,028 |
| 4S-WMI-3rd665 |  | Light Fixtures | 30d | 2028-09-09 | 2028-10-16 | 4S-WMI-3rd600, 4S-WMI-3rd380 | CSD-LKO Calender (6 day + Holiday)-25 | Physical Progress [4320 h]; Electrical [601542 INR]; TATA Projects Ltd-25 | 601,542 |
|  | 2 | **Plumbing** |  | 2028-08-03 | 2028-09-26 |  |  |  |  |
| 4S-WMI-3rd605 |  | Installation of sanitary fixtures (WC, washbasins, urinals, sinks) | 10d | 2028-08-03 | 2028-08-14 | 4S-WMI-3rd595, 4S-WMI-3rd145, 4S-WMI-3rd160 | CSD-LKO Calender (6 day + Holiday)-25 | Physical Progress [2880 h]; Plumbing [515596 INR]; TATA Projects Ltd-25 | 515,596 |
| 4S-WMI-3rd630 |  | Installation of CP fittings (taps, mixers, showers, health faucets) | 10d | 2028-08-16 | 2028-08-28 | 4S-WMI-3rd605, 4S-WMI-3rd595 | CSD-LKO Calender (6 day + Holiday)-25 | Physical Progress [2880 h]; Plumbing [257798 INR]; TATA Projects Ltd-25 | 257,798 |
| 4S-WMI-3rd635 |  | Connection of appliances | 25d | 2028-08-29 | 2028-09-26 | 4S-WMI-3rd630 | CSD-LKO Calender (6 day + Holiday)-25 | Physical Progress [2010 h]; Plumbing [128899 INR]; TATA Projects Ltd-25 | 128,899 |

| ID | WBS | Activity | Duration | Start | Finish | Predecessors | Calendar | Resources | Cost |
| --- | --- | --- | --- | --- | --- | --- | --- | --- | --- |
|  | 4 | **Firefighting** |  | 2028-08-03 | 2028-10-10 |  |  |  |  |
| 4S-WMI-3rd610 |  | Installation of hydrant accessories (valves, hose reels, cabinets) | 25d | 2028-08-03 | 2028-09-02 | 4S-WMI-3rd595 | CSD-LKO Calender (6 day + Holiday)-25 | Physical Progress [2880 h]; Firefighting [134172 INR]; TATA Projects Ltd-25 | 134,172 |
| 4S-WMI-3rd615 |  | Installation of portable fire extinguishers | 30d | 2028-08-03 | 2028-09-08 | 4S-WMI-3rd595 | CSD-LKO Calender (6 day + Holiday)-25 | Physical Progress [1730 h]; Firefighting [13417 INR]; TATA Projects Ltd-25 | 13,417 |
| 4S-WMI-3rd640 |  | Installation of sprinkler heads, nozzles, and final alignment | 35d | 2028-08-29 | 2028-10-10 | 4S-WMI-3rd595, 4S-WMI-3rd620, 4S-WMI-3rd190, 4S-WMI-3rd200 | CSD-LKO Calender (6 day + Holiday)-25 | Physical Progress [12950 h]; Firefighting [201258 INR]; TATA Projects Ltd-25 | 201,258 |
| 4S-WMI-3rd670 |  | Integration with fire alarm system | 20d | 2028-09-09 | 2028-10-04 | 4S-WMI-3rd615 | CSD-LKO Calender (6 day + Holiday)-25 | Physical Progress [5750 h]; Firefighting [67086 INR]; TATA Projects Ltd-25 | 67,086 |
|  | 5 | **ELV** |  | 2028-08-29 | 2028-10-16 |  |  |  |  |
| 4S-WMI-3rd645 |  | Installation of data and Voice Faceplate | 25d | 2028-08-29 | 2028-09-26 | 4S-WMI-3rd595, 4S-WMI-3rd620, 4S-WMI-3rd335 | CSD-LKO Calender (6 day + Holiday)-25 | Physical Progress [2880 h]; ELV [53835 INR]; TATA Projects Ltd-25 | 53,835 |
| 4S-WMI-3rd650 |  | Installation of Camera & Wifi | 30d | 2028-08-29 | 2028-10-04 | 4S-WMI-3rd595, 4S-WMI-3rd620 | CSD-LKO Calender (6 day + Holiday)-25 | Physical Progress [2880 h]; ELV [53835 INR]; TATA Projects Ltd-25 | 53,835 |
| 4S-WMI-3rd655 |  | Installation of fire alarm devices + Public Address | 10d | 2028-08-29 | 2028-09-08 | 4S-WMI-3rd595, 4S-WMI-3rd620 | CSD-LKO Calender (6 day + Holiday)-25 | Physical Progress [2880 h]; ELV [64602 INR]; TATA Projects Ltd-25 | 64,602 |
| 4S-WMI-3rd675 |  | Installation of Active System | 15d | 2028-09-09 | 2028-09-26 | 4S-WMI-3rd655 | CSD-LKO Calender (6 day + Holiday)-25 | Physical Progress [4320 h]; ELV [107671 INR]; TATA Projects Ltd-25 | 107,671 |
| 4S-WMI-3rd680 |  | Fire Panel Intallation & Integration | 25d | 2028-09-09 | 2028-10-10 | 4S-WMI-3rd655 | CSD-LKO Calender (6 day + Holiday)-25 | Physical Progress [7190 h]; ELV [53835 INR]; TATA Projects Ltd-25 | 53,835 |
| 4S-WMI-3rd685 |  | Installation & Integration of Audio Visual System | 25d | 2028-09-09 | 2028-10-10 | 4S-WMI-3rd655 | CSD-LKO Calender (6 day + Holiday)-25 | Physical Progress [7190 h]; ELV [53835 INR]; TATA Projects Ltd-25 | 53,835 |
| 4S-WMI-3rd690 |  | Installation & Integration of Access Control | 25d | 2028-09-09 | 2028-10-10 | 4S-WMI-3rd655 | CSD-LKO Calender (6 day + Holiday)-25 | Physical Progress [7190 h]; ELV [53835 INR]; TATA Projects Ltd-25 | 53,835 |
| 4S-WMI-3rd700 |  | Integration of Active components | 15d | 2028-09-28 | 2028-10-16 | 4S-WMI-3rd675 | CSD-LKO Calender (6 day + Holiday)-25 | Physical Progress [4320 h]; ELV [21534 INR]; TATA Projects Ltd-25 | 21,534 |
|  | 2 | **Back Face - Toward CC** |  | 2028-04-22 | 2028-11-21 |  |  |  |  |
|  | 2 | **Dry Finishes/ID Works** |  | 2028-04-22 | 2028-11-21 |  |  |  |  |
| 4S-WMI-3rd230 |  | Running of Wild Air | 1d | 2028-04-22 | 2028-04-22 | 4S-F-3rd50, 4S-WMI-3rd140, 4S-WMI-3rd170, 4S-WMI-3rd185, 4S-WMI-3rd255, 4S-WMI-3rd485 | CSD-LKO Calender (6 day + Holiday)-25 | Physical Progress [290 h]; TATA Projects Ltd-25 |  |
| 4S-WMI-3rd235 |  | Wall finish ID Works | 35d | 2028-04-24 | 2028-06-05 | 4S-WMI-3rd230 | CSD-LKO Calender (6 day + Holiday)-25 | ID Work [2845286 INR]; Physical Progress [2880 h]; TATA Projects Ltd-25 | 2,845,286 |
| 4S-WMI-3rd250 |  | False Ceiling Installation | 35d | 2028-06-06 | 2028-07-15 | 4S-WMI-3rd235 | CSD-LKO Calender (6 day + Holiday)-25 | ID Work [3414343 INR]; Physical Progress [5750 h]; TATA Projects Ltd-25 | 3,414,343 |
| 4S-WMI-3rd280 |  | Flooring of toilets/kitchen/Balcony | 10d | 2028-07-17 | 2028-07-27 | 4S-WMI-3rd250, 4S-WMI-3rd55 | CSD-LKO Calender (6 day + Holiday)-25 | ID Work [2276229 INR]; Physical Progress [2880 h]; TATA Projects Ltd-25 | 2,276,229 |
| 4S-WMI-3rd295 |  | Doors & Windows/Fire Doors/Shaft Doors | 35d | 2028-07-28 | 2028-09-08 | 4S-WMI-3rd235, 4S-WMI-3rd280 | CSD-LKO Calender (6 day + Holiday)-25 | ID Work [2845286 INR]; Physical Progress [2880 h]; TATA Projects Ltd-25 | 2,845,286 |
| 4S-WMI-3rd300 |  | Putty & First Coat of Paint | 10d | 2028-07-28 | 2028-08-08 | 4S-WMI-3rd235, 4S-WMI-3rd280 | CSD-LKO Calender (6 day + Holiday)-25 | Painting [869 Sq m]; Painter [870 h]; Helper [870 h]; Physical Progress [2880 h]; TATA Projects Ltd-25 | 198,670.78 |
| 4S-WMI-3rd360 |  | Wooden Flooring/Flooring | 20d | 2028-08-09 | 2028-09-02 | 4S-WMI-3rd300 | CSD-LKO Calender (6 day + Holiday)-25 | ID Work [2845286 INR]; Physical Progress [5750 h]; TATA Projects Ltd-25 | 2,845,286 |
| 4S-WMI-3rd365 |  | Railing for staircase | 35d | 2028-08-09 | 2028-09-20 | 4S-WMI-3rd235, 4S-WMI-3rd300 | CSD-LKO Calender (6 day + Holiday)-25 | ID Work [1280379 INR]; Physical Progress [4320 h]; TATA Projects Ltd-25 | 1,280,379 |
| 4S-WMI-3rd450 |  | Fixed Furniture | 8d | 2028-09-04 | 2028-09-12 | 4S-WMI-3rd360 | CSD-LKO Calender (6 day + Holiday)-25 | ID Work [2560757 INR]; Physical Progress [2300 h]; TATA Projects Ltd-25 | 2,560,757 |
| 4S-WMI-3rd530 |  | False ceiling final finishes | 10d | 2028-09-28 | 2028-10-10 | 4S-WMI-3rd385 | CSD-LKO Calender (6 day + Holiday)-25 | ID Work [853586 INR]; Physical Progress [2880 h]; TATA Projects Ltd-25 | 853,586 |
| 4S-WMI-3rd550 |  | Final coat of paint | 10d | 2028-10-24 | 2028-11-03 | 4S-WMI-3rd530, 4S-WMI-3rd365, 4S-WMI-3rd450, 4S-WMI-3rd490, 4S-WMI-3rd425, 4S-WMI-3rd430, 4S-WMI-3rd495, 4S-WMI-3rd535, 4S-WMI-3rd515, 4S-WMI-3rd510, 4S-WMI-3rd505, 4S-WMI-3rd440, 4S-WMI-3rd435, 4S-WMI-3rd295, 4S-WMI-3rd350 | CSD-LKO Calender (6 day + Holiday)-25 | Painting [869 Sq m]; Painter [870 h]; Helper [870 h]; Physical Progress [2880 h]; TATA Projects Ltd-25 | 198,670.78 |
| 4S-WMI-3rd570 |  | Soft Furnishing & Signage | 15d | 2028-11-04 | 2028-11-21 | 4S-WMI-3rd550 | CSD-LKO Calender (6 day + Holiday)-25 | ID Work [4267929 INR]; Physical Progress [860 h]; TATA Projects Ltd-25 | 4,267,929 |
| 4S-WMI-3rd575 |  | Loose Furniture | 15d | 2028-11-04 | 2028-11-21 | 4S-WMI-3rd550 | CSD-LKO Calender (6 day + Holiday)-25 | ID Work [5690571 INR]; Physical Progress [860 h]; TATA Projects Ltd-25 | 5,690,571 |

| ID | WBS | Activity | Duration | Start | Finish | Predecessors | Calendar | Resources | Cost |
| --- | --- | --- | --- | --- | --- | --- | --- | --- | --- |
|  | 1 | **MEP Final Fix** |  | 2028-07-17 | 2028-10-23 |  |  |  |  |
|  | 3 | **HVAC** |  | 2028-07-17 | 2028-09-26 |  |  |  |  |
| 4S-WMI-3rd275 |  | Installing grills, diffusers, dampers | 30d | 2028-07-17 | 2028-08-21 | 4S-WMI-3rd250 | CSD-LKO Calender (6 day + Holiday)-25 | Physical Progress [1730 h]; HVAC [358248 INR]; TATA Projects Ltd-25 | 358,248 |
| 4S-WMI-3rd385 |  | Installation of thermostats and control panels | 30d | 2028-08-22 | 2028-09-26 | 4S-WMI-3rd275, 4S-WMI-3rd300 | CSD-LKO Calender (6 day + Holiday)-25 | Physical Progress [1730 h]; HVAC [179124 INR]; TATA Projects Ltd-25 | 179,124 |
|  | 1 | **Electrical** |  | 2028-08-09 | 2028-10-23 |  |  |  |  |
| 4S-WMI-3rd340 |  | Switches & Socket | 30d | 2028-08-09 | 2028-09-14 | 4S-WMI-3rd300 | CSD-LKO Calender (6 day + Holiday)-25 | Physical Progress [5750 h]; Electrical [401028 INR]; TATA Projects Ltd-25 | 401,028 |
| 4S-WMI-3rd490 |  | Light Fixtures | 30d | 2028-09-15 | 2028-10-23 | 4S-WMI-3rd340 | CSD-LKO Calender (6 day + Holiday)-25 | Physical Progress [4320 h]; Electrical [601542 INR]; TATA Projects Ltd-25 | 601,542 |
|  | 2 | **Plumbing** |  | 2028-08-09 | 2028-10-04 |  |  |  |  |
| 4S-WMI-3rd345 |  | Installation of sanitary fixtures (WC, washbasins, urinals, sinks) | 10d | 2028-08-09 | 2028-08-21 | 4S-WMI-3rd300 | CSD-LKO Calender (6 day + Holiday)-25 | Physical Progress [2880 h]; Plumbing [515596 INR]; TATA Projects Ltd-25 | 515,596 |
| 4S-WMI-3rd390 |  | Installation of CP fittings (taps, mixers, showers, health faucets) | 10d | 2028-08-22 | 2028-09-02 | 4S-WMI-3rd345, 4S-WMI-3rd300 | CSD-LKO Calender (6 day + Holiday)-25 | Physical Progress [2880 h]; Plumbing [257798 INR]; TATA Projects Ltd-25 | 257,798 |
| 4S-WMI-3rd425 |  | Connection of appliances | 25d | 2028-09-04 | 2028-10-04 | 4S-WMI-3rd390 | CSD-LKO Calender (6 day + Holiday)-25 | Physical Progress [2010 h]; Plumbing [128899 INR]; TATA Projects Ltd-25 | 128,899 |
|  | 4 | **Firefighting** |  | 2028-08-09 | 2028-10-16 |  |  |  |  |
| 4S-WMI-3rd350 |  | Installation of hydrant accessories (valves, hose reels, cabinets) | 25d | 2028-08-09 | 2028-09-08 | 4S-WMI-3rd300 | CSD-LKO Calender (6 day + Holiday)-25 | Physical Progress [2880 h]; Firefighting [134172 INR]; TATA Projects Ltd-25 | 134,172 |
| 4S-WMI-3rd355 |  | Installation of portable fire extinguishers | 30d | 2028-08-09 | 2028-09-14 | 4S-WMI-3rd300 | CSD-LKO Calender (6 day + Holiday)-25 | Physical Progress [1730 h]; Firefighting [13417 INR]; TATA Projects Ltd-25 | 13,417 |
| 4S-WMI-3rd430 |  | Installation of sprinkler heads, nozzles, and final alignment | 35d | 2028-09-04 | 2028-10-16 | 4S-WMI-3rd300, 4S-WMI-3rd360 | CSD-LKO Calender (6 day + Holiday)-25 | Physical Progress [12950 h]; Firefighting [201258 INR]; TATA Projects Ltd-25 | 201,258 |
| 4S-WMI-3rd495 |  | Integration with fire alarm system | 20d | 2028-09-15 | 2028-10-10 | 4S-WMI-3rd355 | CSD-LKO Calender (6 day + Holiday)-25 | Physical Progress [5750 h]; Firefighting [67086 INR]; TATA Projects Ltd-25 | 67,086 |
|  | 5 | **ELV** |  | 2028-09-04 | 2028-10-23 |  |  |  |  |
| 4S-WMI-3rd435 |  | Installation of data and Voice Faceplate | 25d | 2028-09-04 | 2028-10-04 | 4S-WMI-3rd300, 4S-WMI-3rd360 | CSD-LKO Calender (6 day + Holiday)-25 | Physical Progress [2880 h]; ELV [53835 INR]; TATA Projects Ltd-25 | 53,835 |
| 4S-WMI-3rd440 |  | Installation of Camera & Wifi | 30d | 2028-09-04 | 2028-10-10 | 4S-WMI-3rd300, 4S-WMI-3rd360 | CSD-LKO Calender (6 day + Holiday)-25 | Physical Progress [2880 h]; ELV [53835 INR]; TATA Projects Ltd-25 | 53,835 |
| 4S-WMI-3rd445 |  | Installation of fire alarm devices + Public Address | 10d | 2028-09-04 | 2028-09-14 | 4S-WMI-3rd300, 4S-WMI-3rd360 | CSD-LKO Calender (6 day + Holiday)-25 | Physical Progress [2880 h]; ELV [64602 INR]; TATA Projects Ltd-25 | 64,602 |
| 4S-WMI-3rd500 |  | Installation of Active System | 15d | 2028-09-15 | 2028-10-04 | 4S-WMI-3rd445 | CSD-LKO Calender (6 day + Holiday)-25 | Physical Progress [4320 h]; ELV [107671 INR]; TATA Projects Ltd-25 | 107,671 |
| 4S-WMI-3rd505 |  | Fire Panel Intallation & Integration | 25d | 2028-09-15 | 2028-10-16 | 4S-WMI-3rd445 | CSD-LKO Calender (6 day + Holiday)-25 | Physical Progress [7190 h]; ELV [53835 INR]; TATA Projects Ltd-25 | 53,835 |
| 4S-WMI-3rd510 |  | Installation & Integration of Audio Visual System | 25d | 2028-09-15 | 2028-10-16 | 4S-WMI-3rd445 | CSD-LKO Calender (6 day + Holiday)-25 | Physical Progress [7190 h]; ELV [53835 INR]; TATA Projects Ltd-25 | 53,835 |
| 4S-WMI-3rd515 |  | Installation & Integration of Access Control | 25d | 2028-09-15 | 2028-10-16 | 4S-WMI-3rd445 | CSD-LKO Calender (6 day + Holiday)-25 | Physical Progress [7190 h]; ELV [53835 INR]; TATA Projects Ltd-25 | 53,835 |
| 4S-WMI-3rd535 |  | Integration of Active components | 15d | 2028-10-05 | 2028-10-23 | 4S-WMI-3rd500 | CSD-LKO Calender (6 day + Holiday)-25 | Physical Progress [4320 h]; ELV [21534 INR]; TATA Projects Ltd-25 | 21,534 |

| ID | WBS | Activity | Duration | Start | Finish | Predecessors | Calendar | Resources | Cost |
| --- | --- | --- | --- | --- | --- | --- | --- | --- | --- |
|  | 4 | **Side Face** |  | 2028-04-17 | 2028-11-15 |  |  |  |  |
|  | 2 | **Dry Finishes/ID Works** |  | 2028-04-17 | 2028-11-15 |  |  |  |  |
| 4S-WMI-3rd205 |  | Running of Wild Air | 1d | 2028-04-17 | 2028-04-17 | 4S-F-3rd45, 4S-WMI-3rd140, 4S-WMI-3rd170, 4S-WMI-3rd185, 4S-WMI-3rd255, 4S-WMI-3rd485 | CSD-LKO Calender (6 day + Holiday)-25 | Physical Progress [290 h]; TATA Projects Ltd-25 |  |
| 4S-WMI-3rd210 |  | Wall finish ID Works | 35d | 2028-04-18 | 2028-05-30 | 4S-WMI-3rd205 | CSD-LKO Calender (6 day + Holiday)-25 | ID Work [2845286 INR]; Physical Progress [2880 h]; TATA Projects Ltd-25 | 2,845,286 |
| 4S-WMI-3rd240 |  | False Ceiling Installation | 35d | 2028-05-31 | 2028-07-10 | 4S-WMI-3rd210 | CSD-LKO Calender (6 day + Holiday)-25 | ID Work [3414343 INR]; Physical Progress [5750 h]; TATA Projects Ltd-25 | 3,414,343 |
| 4S-WMI-3rd265 |  | Flooring of toilets/kitchen/Balcony | 10d | 2028-07-11 | 2028-07-21 | 4S-WMI-3rd240, 4S-WMI-3rd55 | CSD-LKO Calender (6 day + Holiday)-25 | ID Work [2276229 INR]; Physical Progress [2880 h]; TATA Projects Ltd-25 | 2,276,229 |
| 4S-WMI-3rd285 |  | Doors & Windows/Fire Doors/Shaft Doors | 35d | 2028-07-22 | 2028-09-02 | 4S-WMI-3rd210, 4S-WMI-3rd265 | CSD-LKO Calender (6 day + Holiday)-25 | ID Work [2845286 INR]; Physical Progress [2880 h]; TATA Projects Ltd-25 | 2,845,286 |
| 4S-WMI-3rd290 |  | Putty & First Coat of Paint | 10d | 2028-07-22 | 2028-08-02 | 4S-WMI-3rd210, 4S-WMI-3rd265 | CSD-LKO Calender (6 day + Holiday)-25 | Painting [869 Sq m]; Painter [870 h]; Helper [870 h]; Physical Progress [2880 h]; TATA Projects Ltd-25 | 198,670.78 |
| 4S-WMI-3rd325 |  | Wooden Flooring/Flooring | 20d | 2028-08-03 | 2028-08-28 | 4S-WMI-3rd290 | CSD-LKO Calender (6 day + Holiday)-25 | ID Work [2845286 INR]; Physical Progress [5750 h]; TATA Projects Ltd-25 | 2,845,286 |
| 4S-WMI-3rd330 |  | Railing for staircase | 35d | 2028-08-03 | 2028-09-14 | 4S-WMI-3rd210, 4S-WMI-3rd290 | CSD-LKO Calender (6 day + Holiday)-25 | ID Work [1280379 INR]; Physical Progress [4320 h]; TATA Projects Ltd-25 | 1,280,379 |
| 4S-WMI-3rd420 |  | Fixed Furniture | 8d | 2028-08-29 | 2028-09-06 | 4S-WMI-3rd325 | CSD-LKO Calender (6 day + Holiday)-25 | ID Work [2560757 INR]; Physical Progress [2300 h]; TATA Projects Ltd-25 | 2,560,757 |
| 4S-WMI-3rd520 |  | False ceiling final finishes | 10d | 2028-09-21 | 2028-10-04 | 4S-WMI-3rd370 | CSD-LKO Calender (6 day + Holiday)-25 | ID Work [853586 INR]; Physical Progress [2880 h]; TATA Projects Ltd-25 | 853,586 |
| 4S-WMI-3rd540 |  | Final coat of paint | 10d | 2028-10-18 | 2028-10-28 | 4S-WMI-3rd520, 4S-WMI-3rd330, 4S-WMI-3rd420, 4S-WMI-3rd455, 4S-WMI-3rd395, 4S-WMI-3rd400, 4S-WMI-3rd460, 4S-WMI-3rd525, 4S-WMI-3rd480, 4S-WMI-3rd475, 4S-WMI-3rd470, 4S-WMI-3rd410, 4S-WMI-3rd405, 4S-WMI-3rd285 | CSD-LKO Calender (6 day + Holiday)-25 | Painting [869 Sq m]; Painter [870 h]; Helper [870 h]; Physical Progress [2880 h]; TATA Projects Ltd-25 | 198,670.78 |
| 4S-WMI-3rd555 |  | Soft Furnishing & Signage | 15d | 2028-10-30 | 2028-11-15 | 4S-WMI-3rd540 | CSD-LKO Calender (6 day + Holiday)-25 | ID Work [4267929 INR]; Physical Progress [860 h]; TATA Projects Ltd-25 | 4,267,929 |
| 4S-WMI-3rd560 |  | Loose Furniture | 15d | 2028-10-30 | 2028-11-15 | 4S-WMI-3rd540 | CSD-LKO Calender (6 day + Holiday)-25 | ID Work [5690571 INR]; Physical Progress [860 h]; TATA Projects Ltd-25 | 5,690,571 |
|  | 1 | **MEP Final Fix** |  | 2028-07-11 | 2028-10-16 |  |  |  |  |
|  | 3 | **HVAC** |  | 2028-07-11 | 2028-09-20 |  |  |  |  |
| 4S-WMI-3rd260 |  | Installing grills, diffusers, dampers | 30d | 2028-07-11 | 2028-08-14 | 4S-WMI-3rd240 | CSD-LKO Calender (6 day + Holiday)-25 | Physical Progress [1730 h]; HVAC [358248 INR]; TATA Projects Ltd-25 | 358,248 |
| 4S-WMI-3rd370 |  | Installation of thermostats and control panels | 30d | 2028-08-16 | 2028-09-20 | 4S-WMI-3rd260, 4S-WMI-3rd290 | CSD-LKO Calender (6 day + Holiday)-25 | Physical Progress [1730 h]; HVAC [179124 INR]; TATA Projects Ltd-25 | 179,124 |
|  | 1 | **Electrical** |  | 2028-08-03 | 2028-10-16 |  |  |  |  |
| 4S-WMI-3rd305 |  | Switches & Socket | 30d | 2028-08-03 | 2028-09-08 | 4S-WMI-3rd290 | CSD-LKO Calender (6 day + Holiday)-25 | Physical Progress [5750 h]; Electrical [401028 INR]; TATA Projects Ltd-25 | 401,028 |
| 4S-WMI-3rd455 |  | Light Fixtures | 30d | 2028-09-09 | 2028-10-16 | 4S-WMI-3rd305 | CSD-LKO Calender (6 day + Holiday)-25 | Physical Progress [4320 h]; Electrical [601542 INR]; TATA Projects Ltd-25 | 601,542 |
|  | 2 | **Plumbing** |  | 2028-08-03 | 2028-09-26 |  |  |  |  |
| 4S-WMI-3rd310 |  | Installation of sanitary fixtures (WC, washbasins, urinals, sinks) | 10d | 2028-08-03 | 2028-08-14 | 4S-WMI-3rd290 | CSD-LKO Calender (6 day + Holiday)-25 | Physical Progress [2880 h]; Plumbing [515596 INR]; TATA Projects Ltd-25 | 515,596 |
| 4S-WMI-3rd375 |  | Installation of CP fittings (taps, mixers, showers, health faucets) | 10d | 2028-08-16 | 2028-08-28 | 4S-WMI-3rd310, 4S-WMI-3rd290 | CSD-LKO Calender (6 day + Holiday)-25 | Physical Progress [2880 h]; Plumbing [257798 INR]; TATA Projects Ltd-25 | 257,798 |
| 4S-WMI-3rd395 |  | Connection of appliances | 25d | 2028-08-29 | 2028-09-26 | 4S-WMI-3rd375 | CSD-LKO Calender (6 day + Holiday)-25 | Physical Progress [2010 h]; Plumbing [128899 INR]; TATA Projects Ltd-25 | 128,899 |

| ID | WBS | Activity | Duration | Start | Finish | Predecessors | Calendar | Resources | Cost |
| --- | --- | --- | --- | --- | --- | --- | --- | --- | --- |
|  | 4 | **Firefighting** |  | 2028-08-03 | 2028-10-10 |  |  |  |  |
| 4S-WMI-3rd315 |  | Installation of hydrant accessories (valves, hose reels, cabinets) | 25d | 2028-08-03 | 2028-09-02 | 4S-WMI-3rd290 | CSD-LKO Calender (6 day + Holiday)-25 | Physical Progress [2880 h]; Firefighting [134172 INR]; TATA Projects Ltd-25 | 134,172 |
| 4S-WMI-3rd320 |  | Installation of portable fire extinguishers | 30d | 2028-08-03 | 2028-09-08 | 4S-WMI-3rd290 | CSD-LKO Calender (6 day + Holiday)-25 | Physical Progress [1730 h]; Firefighting [13417 INR]; TATA Projects Ltd-25 | 13,417 |
| 4S-WMI-3rd400 |  | Installation of sprinkler heads, nozzles, and final alignment | 35d | 2028-08-29 | 2028-10-10 | 4S-WMI-3rd290, 4S-WMI-3rd325 | CSD-LKO Calender (6 day + Holiday)-25 | Physical Progress [12950 h]; Firefighting [201258 INR]; TATA Projects Ltd-25 | 201,258 |
| 4S-WMI-3rd460 |  | Integration with fire alarm system | 20d | 2028-09-09 | 2028-10-04 | 4S-WMI-3rd320 | CSD-LKO Calender (6 day + Holiday)-25 | Physical Progress [5750 h]; Firefighting [67086 INR]; TATA Projects Ltd-25 | 67,086 |
|  | 5 | **ELV** |  | 2028-08-29 | 2028-10-16 |  |  |  |  |
| 4S-WMI-3rd405 |  | Installation of data and Voice Faceplate | 25d | 2028-08-29 | 2028-09-26 | 4S-WMI-3rd290, 4S-WMI-3rd325 | CSD-LKO Calender (6 day + Holiday)-25 | Physical Progress [2880 h]; ELV [53835 INR]; TATA Projects Ltd-25 | 53,835 |
| 4S-WMI-3rd410 |  | Installation of Camera & Wifi | 30d | 2028-08-29 | 2028-10-04 | 4S-WMI-3rd290, 4S-WMI-3rd325 | CSD-LKO Calender (6 day + Holiday)-25 | Physical Progress [2880 h]; ELV [53835 INR]; TATA Projects Ltd-25 | 53,835 |
| 4S-WMI-3rd415 |  | Installation of fire alarm devices + Public Address | 10d | 2028-08-29 | 2028-09-08 | 4S-WMI-3rd290, 4S-WMI-3rd325 | CSD-LKO Calender (6 day + Holiday)-25 | Physical Progress [2880 h]; ELV [64602 INR]; TATA Projects Ltd-25 | 64,602 |
| 4S-WMI-3rd465 |  | Installation of Active System | 15d | 2028-09-09 | 2028-09-26 | 4S-WMI-3rd415 | CSD-LKO Calender (6 day + Holiday)-25 | Physical Progress [4320 h]; ELV [107671 INR]; TATA Projects Ltd-25 | 107,671 |
| 4S-WMI-3rd470 |  | Fire Panel Intallation & Integration | 25d | 2028-09-09 | 2028-10-10 | 4S-WMI-3rd415 | CSD-LKO Calender (6 day + Holiday)-25 | Physical Progress [7190 h]; ELV [53835 INR]; TATA Projects Ltd-25 | 53,835 |
| 4S-WMI-3rd475 |  | Installation & Integration of Audio Visual System | 25d | 2028-09-09 | 2028-10-10 | 4S-WMI-3rd415 | CSD-LKO Calender (6 day + Holiday)-25 | Physical Progress [7190 h]; ELV [53835 INR]; TATA Projects Ltd-25 | 53,835 |
| 4S-WMI-3rd480 |  | Installation & Integration of Access Control | 25d | 2028-09-09 | 2028-10-10 | 4S-WMI-3rd415 | CSD-LKO Calender (6 day + Holiday)-25 | Physical Progress [7190 h]; ELV [53835 INR]; TATA Projects Ltd-25 | 53,835 |
| 4S-WMI-3rd525 |  | Integration of Active components | 15d | 2028-09-28 | 2028-10-16 | 4S-WMI-3rd465 | CSD-LKO Calender (6 day + Holiday)-25 | Physical Progress [4320 h]; ELV [21534 INR]; TATA Projects Ltd-25 | 21,534 |
|  | 5 | **Fourth Floor** |  | 2027-09-10 | 2029-01-23 |  |  |  |  |
|  | 1 | **Wet Finishes** |  | 2027-09-10 | 2027-12-21 |  |  |  |  |
| 4S-WMI-4th10 |  | Deshuttering | 4d | 2027-09-10 | 2027-09-15 | 4S-SS-5th.F.415 | CSD-LKO Calender (6 day + Holiday)-25 | Physical Progress [1160 h]; TATA Projects Ltd-25 |  |
| 4S-WMI-4th15 |  | Brickwork/Blockwork | 30d | 2027-09-15 | 2027-10-22 | 4S-WMI-4th10, E-GFC-AR-4S-260 | CSD-LKO Calender (6 day + Holiday)-25 | Masonry [546 CuM]; Mason [3640 h]; Helper [1820 h]; Physical Progress [8630 h]; TATA Projects Ltd-25 | 5,206,306.56 |
| 4S-WMI-4th55 |  | Waterproofing of Toilets, Balcony & Kitchen | 15d | 2027-10-22 | 2027-11-10 | 4S-WMI-4th15 | CSD-LKO Calender (6 day + Holiday)-25 | Waterproofing [8564838 INR]; Waterprrofing Mason [8160 h]; Helper [4080 h]; Physical Progress [4320 h]; TATA Projects Ltd-25 | 8,564,838 |
| 4S-WMI-4th95 |  | Plaster | 15d | 2027-12-03 | 2027-12-21 | 4S-WMI-4th30, 4S-WMI-4th75, 4S-WMI-4th80, 4S-WMI-4th55 | CSD-LKO Calender (6 day + Holiday)-25 | Plaster [8485 Sqr Mtr]; Mason [5660 h]; Helper [2830 h]; Physical Progress [4320 h]; TATA Projects Ltd-25 | 4,699,926.35 |
|  | 5 | **MEP 1st Fix, 2nd Fix** |  | 2027-09-15 | 2028-05-11 |  |  |  |  |
|  | 2 | **HVAC** |  | 2027-10-22 | 2028-05-11 |  |  |  |  |
|  | 1 | **1st Fix** |  | 2027-10-22 | 2028-02-15 |  |  |  |  |
| 4S-WMI-4th50 |  | Duct Support Fabrication | 35d | 2027-10-22 | 2027-12-03 | 4S-WMI-4th15, E-GFC-MEP-4S-260 | CSD-LKO Calender (6 day + Holiday)-25 | Physical Progress [4320 h]; HVAC [214949 INR]; TATA Projects Ltd-25 | 214,949 |
| 4S-WMI-4th100 |  | Installing duct hangers and supports | 30d | 2027-12-03 | 2028-01-10 | 4S-WMI-4th50, E-GFC-MEP-4S-260 | CSD-LKO Calender (6 day + Holiday)-25 | Physical Progress [2880 h]; HVAC [429898 INR]; TATA Projects Ltd-25 | 429,898 |
| 4S-WMI-4th130 |  | Laying concealed/exposed refrigerant piping | 30d | 2028-01-10 | 2028-02-15 | 4S-WMI-4th100, E-GFC-MEP-4S-260 | CSD-LKO Calender (6 day + Holiday)-25 | Physical Progress [4320 h]; HVAC [107474 INR]; TATA Projects Ltd-25 | 107,474 |
| 4S-WMI-4th135 |  | Laying concealed/exposed drain piping | 30d | 2028-01-10 | 2028-02-15 | 4S-WMI-4th100, E-GFC-MEP-4S-260 | CSD-LKO Calender (6 day + Holiday)-25 | Physical Progress [2880 h]; HVAC [644847 INR]; TATA Projects Ltd-25 | 644,847 |

| ID | WBS | Activity | Duration | Start | Finish | Predecessors | Calendar | Resources | Cost |
| --- | --- | --- | --- | --- | --- | --- | --- | --- | --- |
|  | 2 | **2nd Fix** |  | 2028-01-10 | 2028-05-11 |  |  |  |  |
| 4S-WMI-4th140 |  | Duct installation | 20d | 2028-01-10 | 2028-02-03 | 4S-WMI-4th100 | CSD-LKO Calender (6 day + Holiday)-25 | Physical Progress [4320 h]; HVAC [1612117 INR]; TATA Projects Ltd-25 | 1,612,117 |
| 4S-WMI-4th170 |  | Insulation of ducts (thermal/acoustic) | 10d | 2028-02-03 | 2028-02-15 | 4S-WMI-4th140 | CSD-LKO Calender (6 day + Holiday)-25 | Physical Progress [1730 h]; HVAC [967270 INR]; TATA Projects Ltd-25 | 967,270 |
| 4S-WMI-4th185 |  | Installation of chilled water piping / VRF piping | 20d | 2028-02-15 | 2028-03-09 | 4S-WMI-4th170, 4S-WMI-4th130, 4S-WMI-4th135 | CSD-LKO Calender (6 day + Holiday)-25 | Physical Progress [1730 h]; HVAC [2149489 INR]; TATA Projects Ltd-25 | 2,149,489 |
| 4S-WMI-4th220 |  | Installation of indoor units including AHU, FCU | 35d | 2028-03-09 | 2028-04-21 | 4S-WMI-4th185, 4S-WMI-4th130, 4S-WMI-4th135 | CSD-LKO Calender (6 day + Holiday)-25 | Physical Progress [12950 h]; HVAC [1934540 INR]; TATA Projects Ltd-25 | 1,934,540 |
| 4S-WMI-4th345 |  | Connecting refrigerant and drain piping to indoor units | 15d | 2028-04-21 | 2028-05-11 | 4S-WMI-4th220 | CSD-LKO Calender (6 day + Holiday)-25 | Physical Progress [1730 h]; HVAC [537372 INR]; TATA Projects Ltd-25 | 537,372 |
|  | 1 | **Electrical** |  | 2027-09-15 | 2028-05-11 |  |  |  |  |
|  | 1 | **1st Fix** |  | 2027-09-15 | 2027-12-03 |  |  |  |  |
| 4S-WMI-4th20 |  | Slab Conduiting | 35d | 2027-09-15 | 2027-10-28 | 4S-WMI-4th10, E-GFC-MEP-4S-260 | CSD-LKO Calender (6 day + Holiday)-25 | Physical Progress [7190 h]; Electrical [1203084 INR]; TATA Projects Ltd-25 | 1,203,084 |
| 4S-WMI-4th30 |  | Wall Conduiting | 30d | 2027-10-22 | 2027-11-27 | 4S-WMI-4th15, E-GFC-MEP-4S-260 | CSD-LKO Calender (6 day + Holiday)-25 | Physical Progress [2880 h]; Electrical [601542 INR]; TATA Projects Ltd-25 | 601,542 |
| 4S-WMI-4th75 |  | Installing back boxes for switches, sockets | 5d | 2027-11-27 | 2027-12-03 | 4S-WMI-4th30, 4S-WMI-4th20, E-GFC-MEP-4S-260 | CSD-LKO Calender (6 day + Holiday)-25 | Physical Progress [1440 h]; Electrical [360925 INR]; TATA Projects Ltd-25 | 360,925 |
|  | 2 | **2nd Fix** |  | 2027-12-21 | 2028-05-11 |  |  |  |  |
| 4S-WMI-4th115 |  | Cable tray laying | 25d | 2027-12-21 | 2028-01-21 | 4S-WMI-4th95 | CSD-LKO Calender (6 day + Holiday)-25 | Physical Progress [7190 h]; Electrical [481234 INR]; TATA Projects Ltd-25 | 481,234 |
| 4S-WMI-4th155 |  | Cabling & Wire Pulling | 35d | 2028-01-21 | 2028-03-03 | 4S-WMI-4th115 | CSD-LKO Calender (6 day + Holiday)-25 | Physical Progress [12950 h]; Electrical [2406168 INR]; TATA Projects Ltd-25 | 2,406,168 |
| 4S-WMI-4th205 |  | DB fixing and connecting | 20d | 2028-03-03 | 2028-03-28 | 4S-WMI-4th155 | CSD-LKO Calender (6 day + Holiday)-25 | Physical Progress [4320 h]; Electrical [360925 INR]; TATA Projects Ltd-25 | 360,925 |
| 4S-WMI-4th210 |  | Floor Rising Main Installation | 20d | 2028-03-03 | 2028-03-28 | 4S-WMI-4th155 | CSD-LKO Calender (6 day + Holiday)-25 | Physical Progress [1440 h]; Electrical [1684318 INR]; TATA Projects Ltd-25 | 1,684,318 |
| 4S-WMI-4th250 |  | Floor/Distribution Panel Installation | 20d | 2028-03-28 | 2028-04-21 | 4S-WMI-4th205 | CSD-LKO Calender (6 day + Holiday)-25 | Physical Progress [1440 h]; Electrical [962467 INR]; TATA Projects Ltd-25 | 962,467 |
| 4S-WMI-4th290 |  | Equipment Earthing | 15d | 2028-04-21 | 2028-05-11 | 4S-WMI-4th250, 4S-WMI-4th210 | CSD-LKO Calender (6 day + Holiday)-25 | Physical Progress [2880 h]; Electrical [360925 INR]; TATA Projects Ltd-25 | 360,925 |
|  | 3 | **Plumbing** |  | 2027-10-22 | 2028-05-11 |  |  |  |  |
|  | 1 | **1st Fix** |  | 2027-10-22 | 2028-03-28 |  |  |  |  |
| 4S-WMI-4th35 |  | Fixing pipe supports and clamps | 35d | 2027-10-22 | 2027-12-03 | 4S-WMI-4th15, E-GFC-MEP-4S-260 | CSD-LKO Calender (6 day + Holiday)-25 | Physical Progress [2880 h]; Plumbing [386697 INR]; TATA Projects Ltd-25 | 386,697 |
| 4S-WMI-4th60 |  | Laying water supply pipes (hot & cold) | 35d | 2027-12-03 | 2028-01-15 | 4S-WMI-4th35, E-GFC-MEP-4S-260 | CSD-LKO Calender (6 day + Holiday)-25 | Physical Progress [4320 h]; Plumbing [773394 INR]; TATA Projects Ltd-25 | 773,394 |
| 4S-WMI-4th65 |  | Laying drainage pipes (soil, waste, vent) | 35d | 2027-12-03 | 2028-01-15 | 4S-WMI-4th35, E-GFC-MEP-4S-260 | CSD-LKO Calender (6 day + Holiday)-25 | Physical Progress [4320 h]; Plumbing [773394 INR]; TATA Projects Ltd-25 | 773,394 |
| 4S-WMI-4th70 |  | Installation of plumbing fixture base supports (WC frames, sink brackets) | 30d | 2028-01-15 | 2028-02-21 | 4S-WMI-4th65, E-GFC-MEP-4S-260 | CSD-LKO Calender (6 day + Holiday)-25 | Physical Progress [1730 h]; Plumbing [386697 INR]; TATA Projects Ltd-25 | 386,697 |
| 4S-WMI-4th85 |  | Pressure testing of water supply lines | 25d | 2028-02-21 | 2028-03-22 | 4S-WMI-4th60, 4S-WMI-4th65, 4S-WMI-4th70, E-GFC-MEP-4S-260 | CSD-LKO Calender (6 day + Holiday)-25 | Physical Progress [2010 h]; Plumbing [77339 INR]; TATA Projects Ltd-25 | 77,339 |
| 4S-WMI-4th90 |  | Installation of concealed parts of toilet fixtures | 30d | 2028-02-21 | 2028-03-28 | 4S-WMI-4th70, E-GFC-MEP-4S-260 | CSD-LKO Calender (6 day + Holiday)-25 | Physical Progress [2880 h]; Plumbing [386697 INR]; TATA Projects Ltd-25 | 386,697 |

| ID | WBS | Activity | Duration | Start | Finish | Predecessors | Calendar | Resources | Cost |
| --- | --- | --- | --- | --- | --- | --- | --- | --- | --- |
|  | 2 | **2nd FIx** |  | 2028-03-22 | 2028-05-11 |  |  |  |  |
| 4S-WMI-4th110 |  | Insulation of hot water pipes (if applicable) | 20d | 2028-03-22 | 2028-04-15 | 4S-WMI-4th85 | CSD-LKO Calender (6 day + Holiday)-25 | Physical Progress [1730 h]; Plumbing [386697 INR]; TATA Projects Ltd-25 | 386,697 |
| 4S-WMI-4th120 |  | Installation of vertical risers and main distribution lines | 20d | 2028-03-28 | 2028-04-21 | 4S-WMI-4th95, 4S-WMI-4th85, 4S-WMI-4th90 | CSD-LKO Calender (6 day + Holiday)-25 | Physical Progress [5750 h]; Plumbing [773394 INR]; TATA Projects Ltd-25 | 773,394 |
| 4S-WMI-4th145 |  | Testing drainage lines for leakage/blockage | 20d | 2028-04-15 | 2028-05-11 | 4S-WMI-4th70, 4S-WMI-4th110 | CSD-LKO Calender (6 day + Holiday)-25 | Physical Progress [1730 h]; Plumbing [77339 INR]; TATA Projects Ltd-25 | 77,339 |
| 4S-WMI-4th160 |  | Fixing floor traps and gully traps | 15d | 2028-04-21 | 2028-05-11 | 4S-WMI-4th120 | CSD-LKO Calender (6 day + Holiday)-25 | Physical Progress [1730 h]; Plumbing [232018 INR]; TATA Projects Ltd-25 | 232,018 |
|  | 4 | **Firefighting** |  | 2027-10-22 | 2028-05-11 |  |  |  |  |
|  | 1 | **1st Fix** |  | 2027-10-22 | 2028-02-21 |  |  |  |  |
| 4S-WMI-4th40 |  | Fixing pipe supports and hangers | 35d | 2027-10-22 | 2027-12-03 | 4S-WMI-4th15, E-GFC-MEP-4S-260 | CSD-LKO Calender (6 day + Holiday)-25 | Physical Progress [2880 h]; Firefighting [281762 INR]; TATA Projects Ltd-25 | 281,762 |
| 4S-WMI-4th105 |  | Laying branch piping | 35d | 2027-12-03 | 2028-01-15 | 4S-WMI-4th40, E-GFC-MEP-4S-260 | CSD-LKO Calender (6 day + Holiday)-25 | Physical Progress [4320 h]; Firefighting [603775 INR]; TATA Projects Ltd-25 | 603,775 |
| 4S-WMI-4th150 |  | Hydrostatic pressure testing of piping | 30d | 2028-01-15 | 2028-02-21 | 4S-WMI-4th105, E-GFC-MEP-4S-260 | CSD-LKO Calender (6 day + Holiday)-25 | Physical Progress [1730 h]; Firefighting [80503 INR]; TATA Projects Ltd-25 | 80,503 |
|  | 2 | **2nd Fix** |  | 2028-02-21 | 2028-05-11 |  |  |  |  |
| 4S-WMI-4th175 |  | Installation of vertical risers and distribution piping in shafts | 35d | 2028-02-21 | 2028-04-03 | 4S-WMI-4th95, 4S-WMI-4th150 | CSD-LKO Calender (6 day + Holiday)-25 | Physical Progress [7190 h]; Firefighting [805034 INR]; TATA Projects Ltd-25 | 805,034 |
| 4S-WMI-4th180 |  | Painting/insulation of exposed fire pipes | 30d | 2028-02-21 | 2028-03-28 | 4S-WMI-4th150 | CSD-LKO Calender (6 day + Holiday)-25 | Physical Progress [2880 h]; Firefighting [40252 INR]; TATA Projects Ltd-25 | 40,252 |
| 4S-WMI-4th190 |  | Testing risers and branch lines for leakage | 30d | 2028-03-28 | 2028-05-05 | 4S-WMI-4th180 | CSD-LKO Calender (6 day + Holiday)-25 | Physical Progress [1730 h]; Firefighting [80503 INR]; TATA Projects Ltd-25 | 80,503 |
| 4S-WMI-4th200 |  | Installation of sprinkler branch lines in ceilings | 30d | 2028-04-03 | 2028-05-11 | 4S-WMI-4th175 | CSD-LKO Calender (6 day + Holiday)-25 | Physical Progress [7190 h]; Firefighting [603775 INR]; TATA Projects Ltd-25 | 603,775 |
|  | 5 | **ELV** |  | 2027-09-15 | 2028-05-11 |  |  |  |  |
|  | 1 | **1st Fix** |  | 2027-09-15 | 2027-12-03 |  |  |  |  |
| 4S-WMI-4th25 |  | Slab Conduiting | 35d | 2027-09-15 | 2027-10-28 | 4S-WMI-4th10, E-GFC-MEP-4S-260 | CSD-LKO Calender (6 day + Holiday)-25 | Physical Progress [7190 h]; ELV [226108 INR]; TATA Projects Ltd-25 | 226,108 |
| 4S-WMI-4th45 |  | Wall Conduiting | 30d | 2027-10-22 | 2027-11-27 | 4S-WMI-4th15, E-GFC-MEP-4S-260 | CSD-LKO Calender (6 day + Holiday)-25 | Physical Progress [2880 h]; ELV [96904 INR]; TATA Projects Ltd-25 | 96,904 |
| 4S-WMI-4th80 |  | Installing back boxes for switches, sockets | 5d | 2027-11-27 | 2027-12-03 | 4S-WMI-4th45, 4S-WMI-4th25, E-GFC-MEP-4S-260 | CSD-LKO Calender (6 day + Holiday)-25 | Physical Progress [1440 h]; ELV [161506 INR]; TATA Projects Ltd-25 | 161,506 |
|  | 2 | **2nd Fix** |  | 2027-12-21 | 2028-05-11 |  |  |  |  |
| 4S-WMI-4th125 |  | Cable tray installation | 25d | 2027-12-21 | 2028-01-21 | 4S-WMI-4th95 | CSD-LKO Calender (6 day + Holiday)-25 | Physical Progress [7190 h]; ELV [161506 INR]; TATA Projects Ltd-25 | 161,506 |
| 4S-WMI-4th165 |  | Cabeling of ELV cable - IT/Fire Alarm/Public Address | 35d | 2028-01-21 | 2028-03-03 | 4S-WMI-4th125 | CSD-LKO Calender (6 day + Holiday)-25 | Physical Progress [12950 h]; ELV [387614 INR]; TATA Projects Ltd-25 | 387,614 |
| 4S-WMI-4th195 |  | ELV Rack Installation | 20d | 2028-03-03 | 2028-03-28 | 4S-WMI-4th165 | CSD-LKO Calender (6 day + Holiday)-25 | Physical Progress [2880 h]; ELV [161506 INR]; TATA Projects Ltd-25 | 161,506 |
| 4S-WMI-4th215 |  | Termination of cables at junction boxes, patch panels, and control panels | 20d | 2028-03-28 | 2028-04-21 | 4S-WMI-4th195 | CSD-LKO Calender (6 day + Holiday)-25 | Physical Progress [8630 h]; ELV [161506 INR]; TATA Projects Ltd-25 | 161,506 |
| 4S-WMI-4th265 |  | Fixing devices like CCTV camera bases, card reader bases, smoke detector bases, PA Bases, Wifi Bases | 15d | 2028-04-21 | 2028-05-11 | 4S-WMI-4th215 | CSD-LKO Calender (6 day + Holiday)-25 | Physical Progress [1150 h]; ELV [323012 INR]; TATA Projects Ltd-25 | 323,012 |

| ID | WBS | Activity | Duration | Start | Finish | Predecessors | Calendar | Resources | Cost |
| --- | --- | --- | --- | --- | --- | --- | --- | --- | --- |
|  | 3 | **Front Face - Toward Airport** |  | 2028-06-19 | 2029-01-11 |  |  |  |  |
|  | 2 | **Dry Finishes/ID Works** |  | 2028-06-19 | 2029-01-11 |  |  |  |  |
| 4S-WMI-4th225 |  | Running of Wild Air | 1d | 2028-06-19 | 2028-06-19 | 4S-F-4th40, 4S-WMI-4th140, 4S-WMI-4th170, 4S-WMI-4th185, 4S-WMI-4th220, 4S-WMI-4th345 | CSD-LKO Calender (6 day + Holiday)-25 | Physical Progress [290 h]; TATA Projects Ltd-25 |  |
| 4S-WMI-4th520 |  | Wall finish ID Works | 35d | 2028-06-20 | 2028-07-29 | 4S-WMI-4th225, 4S-WMI-4th140, 4S-WMI-4th170, 4S-WMI-4th185, 4S-WMI-4th220, 4S-WMI-4th345, 4S-WMI-4th115, 4S-WMI-4th155, 4S-WMI-4th205, 4S-WMI-4th210, 4S-WMI-4th250, 4S-WMI-4th290, 4S-WMI-4th110, 4S-WMI-4th120, 4S-WMI-4th145, 4S-WMI-4th160, 4S-WMI-4th175, 4S-WMI-4th180, 4S-WMI-4th190, 4S-WMI-4th200, 4S-WMI-4th125, 4S-WMI-4th165, 4S-WMI-4th195, 4S-WMI-4th215, 4S-WMI-4th265 | CSD-LKO Calender (6 day + Holiday)-25 | ID Work [2845286 INR]; Physical Progress [2880 h]; TATA Projects Ltd-25 | 2,845,286 |
| 4S-WMI-4th540 |  | False Ceiling Installation | 35d | 2028-07-31 | 2028-09-11 | 4S-WMI-4th520 | CSD-LKO Calender (6 day + Holiday)-25 | ID Work [3414343 INR]; Physical Progress [5750 h]; TATA Projects Ltd-25 | 3,414,343 |
| 4S-WMI-4th560 |  | Flooring of toilets/kitchen/Balcony | 10d | 2028-09-12 | 2028-09-22 | 4S-WMI-4th55, 4S-WMI-4th540 | CSD-LKO Calender (6 day + Holiday)-25 | ID Work [2276229 INR]; Physical Progress [2880 h]; TATA Projects Ltd-25 | 2,276,229 |
| 4S-WMI-4th580 |  | Doors & Windows/Fire Doors/Shaft Doors | 35d | 2028-09-23 | 2028-11-06 | 4S-WMI-4th520, 4S-WMI-4th560 | CSD-LKO Calender (6 day + Holiday)-25 | ID Work [2845286 INR]; Physical Progress [2880 h]; TATA Projects Ltd-25 | 2,845,286 |
| 4S-WMI-4th585 |  | Putty & First Coat of Paint | 10d | 2028-09-23 | 2028-10-06 | 4S-WMI-4th520, 4S-WMI-4th560 | CSD-LKO Calender (6 day + Holiday)-25 | Painting [869 Sq m]; Painter [870 h]; Helper [870 h]; Physical Progress [2880 h]; TATA Projects Ltd-25 | 198,670.78 |
| 4S-WMI-4th620 |  | Wooden Flooring/Flooring | 20d | 2028-10-07 | 2028-10-31 | 4S-WMI-4th585 | CSD-LKO Calender (6 day + Holiday)-25 | ID Work [2845286 INR]; Physical Progress [5750 h]; TATA Projects Ltd-25 | 2,845,286 |
| 4S-WMI-4th660 |  | Fixed Furniture | 8d | 2028-11-01 | 2028-11-09 | 4S-WMI-4th620 | CSD-LKO Calender (6 day + Holiday)-25 | ID Work [2560757 INR]; Physical Progress [2300 h]; TATA Projects Ltd-25 | 2,560,757 |
| 4S-WMI-4th695 |  | False ceiling final finishes | 10d | 2028-11-24 | 2028-12-05 | 4S-WMI-4th625 | CSD-LKO Calender (6 day + Holiday)-25 | ID Work [853586 INR]; Physical Progress [2880 h]; TATA Projects Ltd-25 | 853,586 |
| 4S-WMI-4th705 |  | Final coat of paint | 10d | 2028-12-12 | 2028-12-22 | 4S-WMI-4th695, 4S-WMI-4th660, 4S-WMI-4th665, 4S-WMI-4th635, 4S-WMI-4th640, 4S-WMI-4th670, 4S-WMI-4th700, 4S-WMI-4th690, 4S-WMI-4th685, 4S-WMI-4th680, 4S-WMI-4th650, 4S-WMI-4th645, 4S-WMI-4th580, 4S-WMI-4th610 | CSD-LKO Calender (6 day + Holiday)-25 | Painting [869 Sq m]; Painter [870 h]; Helper [870 h]; Physical Progress [2880 h]; TATA Projects Ltd-25 | 198,670.78 |
| 4S-WMI-4th710 |  | Soft Furnishing & Signage | 15d | 2028-12-23 | 2029-01-11 | 4S-WMI-4th705 | CSD-LKO Calender (6 day + Holiday)-25 | ID Work [4267929 INR]; Physical Progress [860 h]; TATA Projects Ltd-25 | 4,267,929 |
| 4S-WMI-4th715 |  | Loose Furniture | 15d | 2028-12-23 | 2029-01-11 | 4S-WMI-4th705 | CSD-LKO Calender (6 day + Holiday)-25 | ID Work [5690571 INR]; Physical Progress [860 h]; TATA Projects Ltd-25 | 5,690,571 |
|  | 1 | **MEP Final Fix** |  | 2028-09-12 | 2028-12-11 |  |  |  |  |
|  | 3 | **HVAC** |  | 2028-09-12 | 2028-11-23 |  |  |  |  |
| 4S-WMI-4th555 |  | Installing grills, diffusers, dampers | 30d | 2028-09-12 | 2028-10-19 | 4S-WMI-4th540 | CSD-LKO Calender (6 day + Holiday)-25 | Physical Progress [1730 h]; HVAC [358248 INR]; TATA Projects Ltd-25 | 358,248 |
| 4S-WMI-4th625 |  | Installation of thermostats and control panels | 30d | 2028-10-20 | 2028-11-23 | 4S-WMI-4th555, 4S-WMI-4th585, 4S-WMI-4th345 | CSD-LKO Calender (6 day + Holiday)-25 | Physical Progress [1730 h]; HVAC [179124 INR]; TATA Projects Ltd-25 | 179,124 |
|  | 1 | **Electrical** |  | 2028-10-07 | 2028-12-11 |  |  |  |  |
| 4S-WMI-4th600 |  | Switches & Socket | 30d | 2028-10-07 | 2028-11-11 | 4S-WMI-4th585 | CSD-LKO Calender (6 day + Holiday)-25 | Physical Progress [5750 h]; Electrical [401028 INR]; TATA Projects Ltd-25 | 401,028 |
| 4S-WMI-4th665 |  | Light Fixtures | 25d | 2028-11-13 | 2028-12-11 | 4S-WMI-4th600, 4S-WMI-4th290 | CSD-LKO Calender (6 day + Holiday)-25 | Physical Progress [4320 h]; Electrical [601542 INR]; TATA Projects Ltd-25 | 601,542 |
|  | 2 | **Plumbing** |  | 2028-10-07 | 2028-11-24 |  |  |  |  |
| 4S-WMI-4th605 |  | Installation of sanitary fixtures (WC, washbasins, urinals, sinks) | 10d | 2028-10-07 | 2028-10-19 | 4S-WMI-4th585, 4S-WMI-4th145, 4S-WMI-4th160 | CSD-LKO Calender (6 day + Holiday)-25 | Physical Progress [2880 h]; Plumbing [515596 INR]; TATA Projects Ltd-25 | 515,596 |
| 4S-WMI-4th630 |  | Installation of CP fittings (taps, mixers, showers, health faucets) | 10d | 2028-10-20 | 2028-10-31 | 4S-WMI-4th605, 4S-WMI-4th585 | CSD-LKO Calender (6 day + Holiday)-25 | Physical Progress [2880 h]; Plumbing [257798 INR]; TATA Projects Ltd-25 | 257,798 |
| 4S-WMI-4th635 |  | Connection of appliances | 21d | 2028-11-01 | 2028-11-24 | 4S-WMI-4th630 | CSD-LKO Calender (6 day + Holiday)-25 | Physical Progress [2010 h]; Plumbing [128899 INR]; TATA Projects Ltd-25 | 128,899 |

| ID | WBS | Activity | Duration | Start | Finish | Predecessors | Calendar | Resources | Cost |
| --- | --- | --- | --- | --- | --- | --- | --- | --- | --- |
|  | 4 | **Firefighting** |  | 2028-10-07 | 2028-12-11 |  |  |  |  |
| 4S-WMI-4th610 |  | Installation of hydrant accessories (valves, hose reels, cabinets) | 25d | 2028-10-07 | 2028-11-06 | 4S-WMI-4th585 | CSD-LKO Calender (6 day + Holiday)-25 | Physical Progress [2880 h]; Firefighting [134172 INR]; TATA Projects Ltd-25 | 134,172 |
| 4S-WMI-4th615 |  | Installation of portable fire extinguishers | 30d | 2028-10-07 | 2028-11-11 | 4S-WMI-4th585 | CSD-LKO Calender (6 day + Holiday)-25 | Physical Progress [1730 h]; Firefighting [13417 INR]; TATA Projects Ltd-25 | 13,417 |
| 4S-WMI-4th640 |  | Installation of sprinkler heads, nozzles, and final alignment | 35d | 2028-11-01 | 2028-12-11 | 4S-WMI-4th585, 4S-WMI-4th620, 4S-WMI-4th190, 4S-WMI-4th200 | CSD-LKO Calender (6 day + Holiday)-25 | Physical Progress [12950 h]; Firefighting [201258 INR]; TATA Projects Ltd-25 | 201,258 |
| 4S-WMI-4th670 |  | Integration with fire alarm system | 20d | 2028-11-13 | 2028-12-05 | 4S-WMI-4th615 | CSD-LKO Calender (6 day + Holiday)-25 | Physical Progress [5750 h]; Firefighting [67086 INR]; TATA Projects Ltd-25 | 67,086 |
|  | 5 | **ELV** |  | 2028-11-01 | 2028-12-11 |  |  |  |  |
| 4S-WMI-4th645 |  | Installation of data and Voice Faceplate | 25d | 2028-11-01 | 2028-11-29 | 4S-WMI-4th585, 4S-WMI-4th620, 4S-WMI-4th265 | CSD-LKO Calender (6 day + Holiday)-25 | Physical Progress [2880 h]; ELV [53835 INR]; TATA Projects Ltd-25 | 53,835 |
| 4S-WMI-4th650 |  | Installation of Camera & Wifi | 30d | 2028-11-01 | 2028-12-05 | 4S-WMI-4th585, 4S-WMI-4th620 | CSD-LKO Calender (6 day + Holiday)-25 | Physical Progress [2880 h]; ELV [53835 INR]; TATA Projects Ltd-25 | 53,835 |
| 4S-WMI-4th655 |  | Installation of fire alarm devices + Public Address | 10d | 2028-11-01 | 2028-11-11 | 4S-WMI-4th585, 4S-WMI-4th620 | CSD-LKO Calender (6 day + Holiday)-25 | Physical Progress [2880 h]; ELV [64602 INR]; TATA Projects Ltd-25 | 64,602 |
| 4S-WMI-4th675 |  | Installation of Active System | 15d | 2028-11-13 | 2028-11-29 | 4S-WMI-4th655 | CSD-LKO Calender (6 day + Holiday)-25 | Physical Progress [4320 h]; ELV [107671 INR]; TATA Projects Ltd-25 | 107,671 |
| 4S-WMI-4th680 |  | Fire Panel Intallation & Integration | 25d | 2028-11-13 | 2028-12-11 | 4S-WMI-4th655 | CSD-LKO Calender (6 day + Holiday)-25 | Physical Progress [7190 h]; ELV [53835 INR]; TATA Projects Ltd-25 | 53,835 |
| 4S-WMI-4th685 |  | Installation & Integration of Audio Visual System | 25d | 2028-11-13 | 2028-12-11 | 4S-WMI-4th655 | CSD-LKO Calender (6 day + Holiday)-25 | Physical Progress [7190 h]; ELV [53835 INR]; TATA Projects Ltd-25 | 53,835 |
| 4S-WMI-4th690 |  | Installation & Integration of Access Control | 25d | 2028-11-13 | 2028-12-11 | 4S-WMI-4th655 | CSD-LKO Calender (6 day + Holiday)-25 | Physical Progress [7190 h]; ELV [53835 INR]; TATA Projects Ltd-25 | 53,835 |
| 4S-WMI-4th700 |  | Integration of Active components | 10d | 2028-11-30 | 2028-12-11 | 4S-WMI-4th675 | CSD-LKO Calender (6 day + Holiday)-25 | Physical Progress [4320 h]; ELV [21534 INR]; TATA Projects Ltd-25 | 21,534 |
|  | 2 | **Back Face - Toward CC** |  | 2028-06-24 | 2029-01-23 |  |  |  |  |
|  | 2 | **Dry Finishes/ID Works** |  | 2028-06-24 | 2029-01-23 |  |  |  |  |
| 4S-WMI-4th240 |  | Running of Wild Air | 1d | 2028-06-24 | 2028-06-24 | 4S-F-4th45, 4S-WMI-4th140, 4S-WMI-4th170, 4S-WMI-4th185, 4S-WMI-4th220, 4S-WMI-4th345 | CSD-LKO Calender (6 day + Holiday)-25 | Physical Progress [290 h]; TATA Projects Ltd-25 |  |
| 4S-WMI-4th245 |  | Wall finish ID Works | 35d | 2028-06-26 | 2028-08-04 | 4S-WMI-4th240 | CSD-LKO Calender (6 day + Holiday)-25 | ID Work [2845286 INR]; Physical Progress [2880 h]; TATA Projects Ltd-25 | 2,845,286 |
| 4S-WMI-4th260 |  | False Ceiling Installation | 35d | 2028-08-05 | 2028-09-16 | 4S-WMI-4th245 | CSD-LKO Calender (6 day + Holiday)-25 | ID Work [3414343 INR]; Physical Progress [5750 h]; TATA Projects Ltd-25 | 3,414,343 |
| 4S-WMI-4th285 |  | Flooring of toilets/kitchen/Balcony | 10d | 2028-09-18 | 2028-09-29 | 4S-WMI-4th260, 4S-WMI-4th55 | CSD-LKO Calender (6 day + Holiday)-25 | ID Work [2276229 INR]; Physical Progress [2880 h]; TATA Projects Ltd-25 | 2,276,229 |
| 4S-WMI-4th305 |  | Doors & Windows/Fire Doors/Shaft Doors | 35d | 2028-09-30 | 2028-11-11 | 4S-WMI-4th245, 4S-WMI-4th285 | CSD-LKO Calender (6 day + Holiday)-25 | ID Work [2845286 INR]; Physical Progress [2880 h]; TATA Projects Ltd-25 | 2,845,286 |
| 4S-WMI-4th310 |  | Putty & First Coat of Paint | 10d | 2028-09-30 | 2028-10-12 | 4S-WMI-4th245, 4S-WMI-4th285 | CSD-LKO Calender (6 day + Holiday)-25 | Painting [869 Sq m]; Painter [870 h]; Helper [870 h]; Physical Progress [2880 h]; TATA Projects Ltd-25 | 198,670.78 |
| 4S-WMI-4th370 |  | Wooden Flooring/Flooring | 20d | 2028-10-13 | 2028-11-06 | 4S-WMI-4th310 | CSD-LKO Calender (6 day + Holiday)-25 | ID Work [2845286 INR]; Physical Progress [5750 h]; TATA Projects Ltd-25 | 2,845,286 |
| 4S-WMI-4th375 |  | Railing for staircase | 35d | 2028-10-13 | 2028-11-23 | 4S-WMI-4th245, 4S-WMI-4th310 | CSD-LKO Calender (6 day + Holiday)-25 | ID Work [1280379 INR]; Physical Progress [4320 h]; TATA Projects Ltd-25 | 1,280,379 |
| 4S-WMI-4th455 |  | Fixed Furniture | 8d | 2028-11-07 | 2028-11-15 | 4S-WMI-4th370 | CSD-LKO Calender (6 day + Holiday)-25 | ID Work [2560757 INR]; Physical Progress [2300 h]; TATA Projects Ltd-25 | 2,560,757 |
| 4S-WMI-4th530 |  | False ceiling final finishes | 10d | 2028-11-30 | 2028-12-11 | 4S-WMI-4th390 | CSD-LKO Calender (6 day + Holiday)-25 | ID Work [853586 INR]; Physical Progress [2880 h]; TATA Projects Ltd-25 | 853,586 |
| 4S-WMI-4th565 |  | Final coat of paint | 10d | 2028-12-23 | 2029-01-05 | 4S-WMI-4th530, 4S-WMI-4th375, 4S-WMI-4th455, 4S-WMI-4th490, 4S-WMI-4th430, 4S-WMI-4th435, 4S-WMI-4th495, 4S-WMI-4th545, 4S-WMI-4th515, 4S-WMI-4th510, 4S-WMI-4th505, 4S-WMI-4th445, 4S-WMI-4th440, 4S-WMI-4th305, 4S-WMI-4th360 | CSD-LKO Calender (6 day + Holiday)-25 | Painting [869 Sq m]; Painter [870 h]; Helper [870 h]; Physical Progress [2880 h]; TATA Projects Ltd-25 | 198,670.78 |
| 4S-WMI-4th590 |  | Soft Furnishing & Signage | 15d | 2029-01-06 | 2029-01-23 | 4S-WMI-4th565 | CSD-LKO Calender (6 day + Holiday)-25 | ID Work [4267929 INR]; Physical Progress [860 h]; TATA Projects Ltd-25 | 4,267,929 |
| 4S-WMI-4th595 |  | Loose Furniture | 15d | 2029-01-06 | 2029-01-23 | 4S-WMI-4th565 | CSD-LKO Calender (6 day + Holiday)-25 | ID Work [5690571 INR]; Physical Progress [860 h]; TATA Projects Ltd-25 | 5,690,571 |

| ID | WBS | Activity | Duration | Start | Finish | Predecessors | Calendar | Resources | Cost |
| --- | --- | --- | --- | --- | --- | --- | --- | --- | --- |
|  | 1 | **MEP Final Fix** |  | 2028-09-18 | 2028-12-22 |  |  |  |  |
|  | 3 | **HVAC** |  | 2028-09-18 | 2028-11-29 |  |  |  |  |
| 4S-WMI-4th280 |  | Installing grills, diffusers, dampers | 30d | 2028-09-18 | 2028-10-25 | 4S-WMI-4th260 | CSD-LKO Calender (6 day + Holiday)-25 | Physical Progress [1730 h]; HVAC [358248 INR]; TATA Projects Ltd-25 | 358,248 |
| 4S-WMI-4th390 |  | Installation of thermostats and control panels | 30d | 2028-10-26 | 2028-11-29 | 4S-WMI-4th280, 4S-WMI-4th310 | CSD-LKO Calender (6 day + Holiday)-25 | Physical Progress [1730 h]; HVAC [179124 INR]; TATA Projects Ltd-25 | 179,124 |
|  | 1 | **Electrical** |  | 2028-10-13 | 2028-12-22 |  |  |  |  |
| 4S-WMI-4th350 |  | Switches & Socket | 30d | 2028-10-13 | 2028-11-17 | 4S-WMI-4th310 | CSD-LKO Calender (6 day + Holiday)-25 | Physical Progress [5750 h]; Electrical [401028 INR]; TATA Projects Ltd-25 | 401,028 |
| 4S-WMI-4th490 |  | Light Fixtures | 30d | 2028-11-18 | 2028-12-22 | 4S-WMI-4th350 | CSD-LKO Calender (6 day + Holiday)-25 | Physical Progress [4320 h]; Electrical [601542 INR]; TATA Projects Ltd-25 | 601,542 |
|  | 2 | **Plumbing** |  | 2028-10-13 | 2028-12-05 |  |  |  |  |
| 4S-WMI-4th355 |  | Installation of sanitary fixtures (WC, washbasins, urinals, sinks) | 10d | 2028-10-13 | 2028-10-25 | 4S-WMI-4th310 | CSD-LKO Calender (6 day + Holiday)-25 | Physical Progress [2880 h]; Plumbing [515596 INR]; TATA Projects Ltd-25 | 515,596 |
| 4S-WMI-4th395 |  | Installation of CP fittings (taps, mixers, showers, health faucets) | 10d | 2028-10-26 | 2028-11-06 | 4S-WMI-4th355, 4S-WMI-4th310 | CSD-LKO Calender (6 day + Holiday)-25 | Physical Progress [2880 h]; Plumbing [257798 INR]; TATA Projects Ltd-25 | 257,798 |
| 4S-WMI-4th430 |  | Connection of appliances | 25d | 2028-11-07 | 2028-12-05 | 4S-WMI-4th395 | CSD-LKO Calender (6 day + Holiday)-25 | Physical Progress [2010 h]; Plumbing [128899 INR]; TATA Projects Ltd-25 | 128,899 |
|  | 4 | **Firefighting** |  | 2028-10-13 | 2028-12-16 |  |  |  |  |
| 4S-WMI-4th360 |  | Installation of hydrant accessories (valves, hose reels, cabinets) | 25d | 2028-10-13 | 2028-11-11 | 4S-WMI-4th310 | CSD-LKO Calender (6 day + Holiday)-25 | Physical Progress [2880 h]; Firefighting [134172 INR]; TATA Projects Ltd-25 | 134,172 |
| 4S-WMI-4th365 |  | Installation of portable fire extinguishers | 30d | 2028-10-13 | 2028-11-17 | 4S-WMI-4th310 | CSD-LKO Calender (6 day + Holiday)-25 | Physical Progress [1730 h]; Firefighting [13417 INR]; TATA Projects Ltd-25 | 13,417 |
| 4S-WMI-4th435 |  | Installation of sprinkler heads, nozzles, and final alignment | 35d | 2028-11-07 | 2028-12-16 | 4S-WMI-4th310, 4S-WMI-4th370 | CSD-LKO Calender (6 day + Holiday)-25 | Physical Progress [12950 h]; Firefighting [201258 INR]; TATA Projects Ltd-25 | 201,258 |
| 4S-WMI-4th495 |  | Integration with fire alarm system | 20d | 2028-11-18 | 2028-12-11 | 4S-WMI-4th365 | CSD-LKO Calender (6 day + Holiday)-25 | Physical Progress [5750 h]; Firefighting [67086 INR]; TATA Projects Ltd-25 | 67,086 |
|  | 5 | **ELV** |  | 2028-11-07 | 2028-12-22 |  |  |  |  |
| 4S-WMI-4th440 |  | Installation of data and Voice Faceplate | 25d | 2028-11-07 | 2028-12-05 | 4S-WMI-4th310, 4S-WMI-4th370 | CSD-LKO Calender (6 day + Holiday)-25 | Physical Progress [2880 h]; ELV [53835 INR]; TATA Projects Ltd-25 | 53,835 |
| 4S-WMI-4th445 |  | Installation of Camera & Wifi | 30d | 2028-11-07 | 2028-12-11 | 4S-WMI-4th310, 4S-WMI-4th370 | CSD-LKO Calender (6 day + Holiday)-25 | Physical Progress [2880 h]; ELV [53835 INR]; TATA Projects Ltd-25 | 53,835 |
| 4S-WMI-4th450 |  | Installation of fire alarm devices + Public Address | 10d | 2028-11-07 | 2028-11-17 | 4S-WMI-4th310, 4S-WMI-4th370 | CSD-LKO Calender (6 day + Holiday)-25 | Physical Progress [2880 h]; ELV [64602 INR]; TATA Projects Ltd-25 | 64,602 |
| 4S-WMI-4th500 |  | Installation of Active System | 15d | 2028-11-18 | 2028-12-05 | 4S-WMI-4th450 | CSD-LKO Calender (6 day + Holiday)-25 | Physical Progress [4320 h]; ELV [107671 INR]; TATA Projects Ltd-25 | 107,671 |
| 4S-WMI-4th505 |  | Fire Panel Intallation & Integration | 25d | 2028-11-18 | 2028-12-16 | 4S-WMI-4th450 | CSD-LKO Calender (6 day + Holiday)-25 | Physical Progress [7190 h]; ELV [53835 INR]; TATA Projects Ltd-25 | 53,835 |
| 4S-WMI-4th510 |  | Installation & Integration of Audio Visual System | 25d | 2028-11-18 | 2028-12-16 | 4S-WMI-4th450 | CSD-LKO Calender (6 day + Holiday)-25 | Physical Progress [7190 h]; ELV [53835 INR]; TATA Projects Ltd-25 | 53,835 |
| 4S-WMI-4th515 |  | Installation & Integration of Access Control | 25d | 2028-11-18 | 2028-12-16 | 4S-WMI-4th450 | CSD-LKO Calender (6 day + Holiday)-25 | Physical Progress [7190 h]; ELV [53835 INR]; TATA Projects Ltd-25 | 53,835 |
| 4S-WMI-4th545 |  | Integration of Active components | 15d | 2028-12-06 | 2028-12-22 | 4S-WMI-4th500 | CSD-LKO Calender (6 day + Holiday)-25 | Physical Progress [4320 h]; ELV [21534 INR]; TATA Projects Ltd-25 | 21,534 |

| ID | WBS | Activity | Duration | Start | Finish | Predecessors | Calendar | Resources | Cost |
| --- | --- | --- | --- | --- | --- | --- | --- | --- | --- |
|  | 4 | **Side Face** |  | 2028-06-19 | 2029-01-17 |  |  |  |  |
|  | 2 | **Dry Finishes/ID Works** |  | 2028-06-19 | 2029-01-17 |  |  |  |  |
| 4S-WMI-4th230 |  | Running of Wild Air | 1d | 2028-06-19 | 2028-06-19 | 4S-F-4th50, 4S-WMI-4th140, 4S-WMI-4th170, 4S-WMI-4th185, 4S-WMI-4th220, 4S-WMI-4th345 | CSD-LKO Calender (6 day + Holiday)-25 | Physical Progress [290 h]; TATA Projects Ltd-25 |  |
| 4S-WMI-4th235 |  | Wall finish ID Works | 35d | 2028-06-20 | 2028-07-29 | 4S-WMI-4th230 | CSD-LKO Calender (6 day + Holiday)-25 | ID Work [2845286 INR]; Physical Progress [2880 h]; TATA Projects Ltd-25 | 2,845,286 |
| 4S-WMI-4th255 |  | False Ceiling Installation | 35d | 2028-07-31 | 2028-09-11 | 4S-WMI-4th235 | CSD-LKO Calender (6 day + Holiday)-25 | ID Work [3414343 INR]; Physical Progress [5750 h]; TATA Projects Ltd-25 | 3,414,343 |
| 4S-WMI-4th275 |  | Flooring of toilets/kitchen/Balcony | 10d | 2028-09-12 | 2028-09-22 | 4S-WMI-4th255, 4S-WMI-4th55 | CSD-LKO Calender (6 day + Holiday)-25 | ID Work [2276229 INR]; Physical Progress [2880 h]; TATA Projects Ltd-25 | 2,276,229 |
| 4S-WMI-4th295 |  | Doors & Windows/Fire Doors/Shaft Doors | 35d | 2028-09-23 | 2028-11-06 | 4S-WMI-4th235, 4S-WMI-4th275 | CSD-LKO Calender (6 day + Holiday)-25 | ID Work [2845286 INR]; Physical Progress [2880 h]; TATA Projects Ltd-25 | 2,845,286 |
| 4S-WMI-4th300 |  | Putty & First Coat of Paint | 10d | 2028-09-23 | 2028-10-06 | 4S-WMI-4th235, 4S-WMI-4th275 | CSD-LKO Calender (6 day + Holiday)-25 | Painting [869 Sq m]; Painter [870 h]; Helper [870 h]; Physical Progress [2880 h]; TATA Projects Ltd-25 | 198,670.78 |
| 4S-WMI-4th335 |  | Wooden Flooring/Flooring | 20d | 2028-10-07 | 2028-10-31 | 4S-WMI-4th300 | CSD-LKO Calender (6 day + Holiday)-25 | ID Work [2845286 INR]; Physical Progress [5750 h]; TATA Projects Ltd-25 | 2,845,286 |
| 4S-WMI-4th340 |  | Railing for staircase | 35d | 2028-10-07 | 2028-11-17 | 4S-WMI-4th235, 4S-WMI-4th300 | CSD-LKO Calender (6 day + Holiday)-25 | ID Work [1280379 INR]; Physical Progress [4320 h]; TATA Projects Ltd-25 | 1,280,379 |
| 4S-WMI-4th425 |  | Fixed Furniture | 8d | 2028-11-01 | 2028-11-09 | 4S-WMI-4th335 | CSD-LKO Calender (6 day + Holiday)-25 | ID Work [2560757 INR]; Physical Progress [2300 h]; TATA Projects Ltd-25 | 2,560,757 |
| 4S-WMI-4th525 |  | False ceiling final finishes | 10d | 2028-11-24 | 2028-12-05 | 4S-WMI-4th380 | CSD-LKO Calender (6 day + Holiday)-25 | ID Work [853586 INR]; Physical Progress [2880 h]; TATA Projects Ltd-25 | 853,586 |
| 4S-WMI-4th550 |  | Final coat of paint | 10d | 2028-12-18 | 2028-12-29 | 4S-WMI-4th525, 4S-WMI-4th340, 4S-WMI-4th425, 4S-WMI-4th460, 4S-WMI-4th400, 4S-WMI-4th405, 4S-WMI-4th465, 4S-WMI-4th535, 4S-WMI-4th485, 4S-WMI-4th480, 4S-WMI-4th475, 4S-WMI-4th415, 4S-WMI-4th410, 4S-WMI-4th295 | CSD-LKO Calender (6 day + Holiday)-25 | Painting [869 Sq m]; Painter [870 h]; Helper [870 h]; Physical Progress [2880 h]; TATA Projects Ltd-25 | 198,670.78 |
| 4S-WMI-4th570 |  | Soft Furnishing & Signage | 15d | 2028-12-30 | 2029-01-17 | 4S-WMI-4th550 | CSD-LKO Calender (6 day + Holiday)-25 | ID Work [4267929 INR]; Physical Progress [860 h]; TATA Projects Ltd-25 | 4,267,929 |
| 4S-WMI-4th575 |  | Loose Furniture | 15d | 2028-12-30 | 2029-01-17 | 4S-WMI-4th550 | CSD-LKO Calender (6 day + Holiday)-25 | ID Work [5690571 INR]; Physical Progress [860 h]; TATA Projects Ltd-25 | 5,690,571 |
|  | 1 | **MEP Final Fix** |  | 2028-09-12 | 2028-12-16 |  |  |  |  |
|  | 3 | **HVAC** |  | 2028-09-12 | 2028-11-23 |  |  |  |  |
| 4S-WMI-4th270 |  | Installing grills, diffusers, dampers | 30d | 2028-09-12 | 2028-10-19 | 4S-WMI-4th255 | CSD-LKO Calender (6 day + Holiday)-25 | Physical Progress [1730 h]; HVAC [358248 INR]; TATA Projects Ltd-25 | 358,248 |
| 4S-WMI-4th380 |  | Installation of thermostats and control panels | 30d | 2028-10-20 | 2028-11-23 | 4S-WMI-4th270, 4S-WMI-4th300 | CSD-LKO Calender (6 day + Holiday)-25 | Physical Progress [1730 h]; HVAC [179124 INR]; TATA Projects Ltd-25 | 179,124 |
|  | 1 | **Electrical** |  | 2028-10-07 | 2028-12-16 |  |  |  |  |
| 4S-WMI-4th315 |  | Switches & Socket | 30d | 2028-10-07 | 2028-11-11 | 4S-WMI-4th300 | CSD-LKO Calender (6 day + Holiday)-25 | Physical Progress [5750 h]; Electrical [401028 INR]; TATA Projects Ltd-25 | 401,028 |
| 4S-WMI-4th460 |  | Light Fixtures | 30d | 2028-11-13 | 2028-12-16 | 4S-WMI-4th315 | CSD-LKO Calender (6 day + Holiday)-25 | Physical Progress [4320 h]; Electrical [601542 INR]; TATA Projects Ltd-25 | 601,542 |
|  | 2 | **Plumbing** |  | 2028-10-07 | 2028-11-29 |  |  |  |  |
| 4S-WMI-4th320 |  | Installation of sanitary fixtures (WC, washbasins, urinals, sinks) | 10d | 2028-10-07 | 2028-10-19 | 4S-WMI-4th300 | CSD-LKO Calender (6 day + Holiday)-25 | Physical Progress [2880 h]; Plumbing [515596 INR]; TATA Projects Ltd-25 | 515,596 |
| 4S-WMI-4th385 |  | Installation of CP fittings (taps, mixers, showers, health faucets) | 10d | 2028-10-20 | 2028-10-31 | 4S-WMI-4th320, 4S-WMI-4th300 | CSD-LKO Calender (6 day + Holiday)-25 | Physical Progress [2880 h]; Plumbing [257798 INR]; TATA Projects Ltd-25 | 257,798 |
| 4S-WMI-4th400 |  | Connection of appliances | 25d | 2028-11-01 | 2028-11-29 | 4S-WMI-4th385 | CSD-LKO Calender (6 day + Holiday)-25 | Physical Progress [2010 h]; Plumbing [128899 INR]; TATA Projects Ltd-25 | 128,899 |

| ID | WBS | Activity | Duration | Start | Finish | Predecessors | Calendar | Resources | Cost |
| --- | --- | --- | --- | --- | --- | --- | --- | --- | --- |
|  | 4 | **Firefighting** |  | 2028-10-07 | 2028-12-11 |  |  |  |  |
| 4S-WMI-4th325 |  | Installation of hydrant accessories (valves, hose reels, cabinets) | 25d | 2028-10-07 | 2028-11-06 | 4S-WMI-4th300 | CSD-LKO Calender (6 day + Holiday)-25 | Physical Progress [2880 h]; Firefighting [134172 INR]; TATA Projects Ltd-25 | 134,172 |
| 4S-WMI-4th330 |  | Installation of portable fire extinguishers | 30d | 2028-10-07 | 2028-11-11 | 4S-WMI-4th300 | CSD-LKO Calender (6 day + Holiday)-25 | Physical Progress [1730 h]; Firefighting [13417 INR]; TATA Projects Ltd-25 | 13,417 |
| 4S-WMI-4th405 |  | Installation of sprinkler heads, nozzles, and final alignment | 35d | 2028-11-01 | 2028-12-11 | 4S-WMI-4th300, 4S-WMI-4th335 | CSD-LKO Calender (6 day + Holiday)-25 | Physical Progress [12950 h]; Firefighting [201258 INR]; TATA Projects Ltd-25 | 201,258 |
| 4S-WMI-4th465 |  | Integration with fire alarm system | 20d | 2028-11-13 | 2028-12-05 | 4S-WMI-4th330 | CSD-LKO Calender (6 day + Holiday)-25 | Physical Progress [5750 h]; Firefighting [67086 INR]; TATA Projects Ltd-25 | 67,086 |
|  | 5 | **ELV** |  | 2028-11-01 | 2028-12-16 |  |  |  |  |
| 4S-WMI-4th410 |  | Installation of data and Voice Faceplate | 25d | 2028-11-01 | 2028-11-29 | 4S-WMI-4th300, 4S-WMI-4th335 | CSD-LKO Calender (6 day + Holiday)-25 | Physical Progress [2880 h]; ELV [53835 INR]; TATA Projects Ltd-25 | 53,835 |
| 4S-WMI-4th415 |  | Installation of Camera & Wifi | 30d | 2028-11-01 | 2028-12-05 | 4S-WMI-4th300, 4S-WMI-4th335 | CSD-LKO Calender (6 day + Holiday)-25 | Physical Progress [2880 h]; ELV [53835 INR]; TATA Projects Ltd-25 | 53,835 |
| 4S-WMI-4th420 |  | Installation of fire alarm devices + Public Address | 10d | 2028-11-01 | 2028-11-11 | 4S-WMI-4th300, 4S-WMI-4th335 | CSD-LKO Calender (6 day + Holiday)-25 | Physical Progress [2880 h]; ELV [64602 INR]; TATA Projects Ltd-25 | 64,602 |
| 4S-WMI-4th470 |  | Installation of Active System | 15d | 2028-11-13 | 2028-11-29 | 4S-WMI-4th420 | CSD-LKO Calender (6 day + Holiday)-25 | Physical Progress [4320 h]; ELV [107671 INR]; TATA Projects Ltd-25 | 107,671 |
| 4S-WMI-4th475 |  | Fire Panel Intallation & Integration | 25d | 2028-11-13 | 2028-12-11 | 4S-WMI-4th420 | CSD-LKO Calender (6 day + Holiday)-25 | Physical Progress [7190 h]; ELV [53835 INR]; TATA Projects Ltd-25 | 53,835 |
| 4S-WMI-4th480 |  | Installation & Integration of Audio Visual System | 25d | 2028-11-13 | 2028-12-11 | 4S-WMI-4th420 | CSD-LKO Calender (6 day + Holiday)-25 | Physical Progress [7190 h]; ELV [53835 INR]; TATA Projects Ltd-25 | 53,835 |
| 4S-WMI-4th485 |  | Installation & Integration of Access Control | 25d | 2028-11-13 | 2028-12-11 | 4S-WMI-4th420 | CSD-LKO Calender (6 day + Holiday)-25 | Physical Progress [7190 h]; ELV [53835 INR]; TATA Projects Ltd-25 | 53,835 |
| 4S-WMI-4th535 |  | Integration of Active components | 15d | 2028-11-30 | 2028-12-16 | 4S-WMI-4th470 | CSD-LKO Calender (6 day + Holiday)-25 | Physical Progress [4320 h]; ELV [21534 INR]; TATA Projects Ltd-25 | 21,534 |
|  | 6 | **Fifth Floor** |  | 2027-10-12 | 2029-03-31 |  |  |  |  |
|  | 1 | **Wet Finishes** |  | 2027-10-12 | 2028-01-21 |  |  |  |  |
| 4S-WMI-5th10 |  | Deshuttering | 4d | 2027-10-12 | 2027-10-16 | 4S-SS-6th.F.415 | CSD-LKO Calender (6 day + Holiday)-25 | Physical Progress [1160 h]; TATA Projects Ltd-25 |  |
| 4S-WMI-5th15 |  | Brickwork/Blockwork | 30d | 2027-10-16 | 2027-11-22 | 4S-WMI-5th10, E-GFC-AR-4S-265 | CSD-LKO Calender (6 day + Holiday)-25 | Masonry [546 CuM]; Mason [3640 h]; Helper [1820 h]; Physical Progress [8630 h]; TATA Projects Ltd-25 | 5,206,306.56 |
| 4S-WMI-5th55 |  | Waterproofing of Toilets, Balcony & Kitchen | 15d | 2027-11-22 | 2027-12-09 | 4S-WMI-5th15 | CSD-LKO Calender (6 day + Holiday)-25 | Waterproofing [8564838 INR]; Waterprrofing Mason [8160 h]; Helper [4080 h]; Physical Progress [4320 h]; TATA Projects Ltd-25 | 8,564,838 |
| 4S-WMI-5th95 |  | Plaster | 15d | 2028-01-04 | 2028-01-21 | 4S-WMI-5th30, 4S-WMI-5th75, 4S-WMI-5th80, 4S-WMI-5th55 | CSD-LKO Calender (6 day + Holiday)-25 | Plaster [8485 Sqr Mtr]; Mason [5660 h]; Helper [2830 h]; Physical Progress [4320 h]; TATA Projects Ltd-25 | 4,699,926.35 |
|  | 5 | **MEP 1st Fix, 2nd Fix** |  | 2027-10-16 | 2028-07-20 |  |  |  |  |
|  | 2 | **HVAC** |  | 2027-11-22 | 2028-06-15 |  |  |  |  |
|  | 1 | **1st Fix** |  | 2027-11-22 | 2028-03-16 |  |  |  |  |
| 4S-WMI-5th50 |  | Duct Support Fabrication | 35d | 2027-11-22 | 2028-01-04 | 4S-WMI-5th15, E-GFC-MEP-4S-265 | CSD-LKO Calender (6 day + Holiday)-25 | Physical Progress [4320 h]; HVAC [214949 INR]; TATA Projects Ltd-25 | 214,949 |
| 4S-WMI-5th100 |  | Installing duct hangers and supports | 30d | 2028-01-04 | 2028-02-09 | 4S-WMI-5th50, E-GFC-MEP-4S-265 | CSD-LKO Calender (6 day + Holiday)-25 | Physical Progress [2880 h]; HVAC [429898 INR]; TATA Projects Ltd-25 | 429,898 |
| 4S-WMI-5th130 |  | Laying concealed/exposed refrigerant piping | 30d | 2028-02-09 | 2028-03-16 | 4S-WMI-5th100, E-GFC-MEP-4S-265 | CSD-LKO Calender (6 day + Holiday)-25 | Physical Progress [4320 h]; HVAC [107474 INR]; TATA Projects Ltd-25 | 107,474 |
| 4S-WMI-5th135 |  | Laying concealed/exposed drain piping | 30d | 2028-02-09 | 2028-03-16 | 4S-WMI-5th100, E-GFC-MEP-4S-265 | CSD-LKO Calender (6 day + Holiday)-25 | Physical Progress [2880 h]; HVAC [644847 INR]; TATA Projects Ltd-25 | 644,847 |

| ID | WBS | Activity | Duration | Start | Finish | Predecessors | Calendar | Resources | Cost |
| --- | --- | --- | --- | --- | --- | --- | --- | --- | --- |
|  | 2 | **2nd Fix** |  | 2028-02-09 | 2028-06-15 |  |  |  |  |
| 4S-WMI-5th140 |  | Duct installation | 20d | 2028-02-09 | 2028-03-03 | 4S-WMI-5th100 | CSD-LKO Calender (6 day + Holiday)-25 | Physical Progress [4320 h]; HVAC [1612117 INR]; TATA Projects Ltd-25 | 1,612,117 |
| 4S-WMI-5th170 |  | Insulation of ducts (thermal/acoustic) | 10d | 2028-03-03 | 2028-03-16 | 4S-WMI-5th140 | CSD-LKO Calender (6 day + Holiday)-25 | Physical Progress [1730 h]; HVAC [967270 INR]; TATA Projects Ltd-25 | 967,270 |
| 4S-WMI-5th185 |  | Installation of chilled water piping / VRF piping | 20d | 2028-03-16 | 2028-04-08 | 4S-WMI-5th170, 4S-WMI-5th130, 4S-WMI-5th135 | CSD-LKO Calender (6 day + Holiday)-25 | Physical Progress [1730 h]; HVAC [2149489 INR]; TATA Projects Ltd-25 | 2,149,489 |
| 4S-WMI-5th220 |  | Installation of indoor units including AHU, FCU | 35d | 2028-04-08 | 2028-05-23 | 4S-WMI-5th185, 4S-WMI-5th130, 4S-WMI-5th135 | CSD-LKO Calender (6 day + Holiday)-25 | Physical Progress [12950 h]; HVAC [1934540 INR]; TATA Projects Ltd-25 | 1,934,540 |
| 4S-WMI-5th275 |  | Connecting refrigerant and drain piping to indoor units | 20d | 2028-05-23 | 2028-06-15 | 4S-WMI-5th220 | CSD-LKO Calender (6 day + Holiday)-25 | Physical Progress [1730 h]; HVAC [537372 INR]; TATA Projects Ltd-25 | 537,372 |
|  | 1 | **Electrical** |  | 2027-10-16 | 2028-06-15 |  |  |  |  |
|  | 1 | **1st Fix** |  | 2027-10-16 | 2028-01-04 |  |  |  |  |
| 4S-WMI-5th25 |  | Slab Conduiting | 35d | 2027-10-16 | 2027-11-27 | 4S-WMI-5th10, E-GFC-MEP-4S-265 | CSD-LKO Calender (6 day + Holiday)-25 | Physical Progress [7190 h]; Electrical [1203084 INR]; TATA Projects Ltd-25 | 1,203,084 |
| 4S-WMI-5th30 |  | Wall Conduiting | 30d | 2027-11-22 | 2027-12-28 | 4S-WMI-5th15, E-GFC-MEP-4S-265 | CSD-LKO Calender (6 day + Holiday)-25 | Physical Progress [2880 h]; Electrical [601542 INR]; TATA Projects Ltd-25 | 601,542 |
| 4S-WMI-5th75 |  | Installing back boxes for switches, sockets | 5d | 2027-12-28 | 2028-01-04 | 4S-WMI-5th30, 4S-WMI-5th25, E-GFC-MEP-4S-265 | CSD-LKO Calender (6 day + Holiday)-25 | Physical Progress [1440 h]; Electrical [360925 INR]; TATA Projects Ltd-25 | 360,925 |
|  | 2 | **2nd Fix** |  | 2028-01-21 | 2028-06-15 |  |  |  |  |
| 4S-WMI-5th115 |  | Cable tray laying | 25d | 2028-01-21 | 2028-02-21 | 4S-WMI-5th95 | CSD-LKO Calender (6 day + Holiday)-25 | Physical Progress [7190 h]; Electrical [481234 INR]; TATA Projects Ltd-25 | 481,234 |
| 4S-WMI-5th155 |  | Cabling & Wire Pulling | 35d | 2028-02-21 | 2028-04-03 | 4S-WMI-5th115 | CSD-LKO Calender (6 day + Holiday)-25 | Physical Progress [12950 h]; Electrical [2406168 INR]; TATA Projects Ltd-25 | 2,406,168 |
| 4S-WMI-5th205 |  | DB fixing and connecting | 20d | 2028-04-03 | 2028-04-27 | 4S-WMI-5th155 | CSD-LKO Calender (6 day + Holiday)-25 | Physical Progress [4320 h]; Electrical [360925 INR]; TATA Projects Ltd-25 | 360,925 |
| 4S-WMI-5th210 |  | Floor Rising Main Installation | 20d | 2028-04-03 | 2028-04-27 | 4S-WMI-5th155 | CSD-LKO Calender (6 day + Holiday)-25 | Physical Progress [1440 h]; Electrical [1684318 INR]; TATA Projects Ltd-25 | 1,684,318 |
| 4S-WMI-5th225 |  | Floor/Distribution Panel Installation | 20d | 2028-04-27 | 2028-05-23 | 4S-WMI-5th205 | CSD-LKO Calender (6 day + Holiday)-25 | Physical Progress [1440 h]; Electrical [962467 INR]; TATA Projects Ltd-25 | 962,467 |
| 4S-WMI-5th255 |  | Equipment Earthing | 20d | 2028-05-23 | 2028-06-15 | 4S-WMI-5th225, 4S-WMI-5th210 | CSD-LKO Calender (6 day + Holiday)-25 | Physical Progress [2880 h]; Electrical [360925 INR]; TATA Projects Ltd-25 | 360,925 |
|  | 3 | **Plumbing** |  | 2027-11-22 | 2028-07-14 |  |  |  |  |
|  | 1 | **1st Fix** |  | 2027-11-22 | 2028-04-27 |  |  |  |  |
| 4S-WMI-5th35 |  | Fixing pipe supports and clamps | 35d | 2027-11-22 | 2028-01-04 | 4S-WMI-5th15, E-GFC-MEP-4S-265 | CSD-LKO Calender (6 day + Holiday)-25 | Physical Progress [2880 h]; Plumbing [386697 INR]; TATA Projects Ltd-25 | 386,697 |
| 4S-WMI-5th60 |  | Laying water supply pipes (hot & cold) | 35d | 2028-01-04 | 2028-02-15 | 4S-WMI-5th35, E-GFC-MEP-4S-265 | CSD-LKO Calender (6 day + Holiday)-25 | Physical Progress [4320 h]; Plumbing [773394 INR]; TATA Projects Ltd-25 | 773,394 |
| 4S-WMI-5th65 |  | Laying drainage pipes (soil, waste, vent) | 35d | 2028-01-04 | 2028-02-15 | 4S-WMI-5th35, E-GFC-MEP-4S-265 | CSD-LKO Calender (6 day + Holiday)-25 | Physical Progress [4320 h]; Plumbing [773394 INR]; TATA Projects Ltd-25 | 773,394 |
| 4S-WMI-5th70 |  | Installation of plumbing fixture base supports (WC frames, sink brackets) | 30d | 2028-02-15 | 2028-03-22 | 4S-WMI-5th65, E-GFC-MEP-4S-265 | CSD-LKO Calender (6 day + Holiday)-25 | Physical Progress [1730 h]; Plumbing [386697 INR]; TATA Projects Ltd-25 | 386,697 |
| 4S-WMI-5th85 |  | Pressure testing of water supply lines | 25d | 2028-03-22 | 2028-04-21 | 4S-WMI-5th60, 4S-WMI-5th65, 4S-WMI-5th70, E-GFC-MEP-4S-265 | CSD-LKO Calender (6 day + Holiday)-25 | Physical Progress [2010 h]; Plumbing [77339 INR]; TATA Projects Ltd-25 | 77,339 |
| 4S-WMI-5th90 |  | Installation of concealed parts of toilet fixtures | 30d | 2028-03-22 | 2028-04-27 | 4S-WMI-5th70, E-GFC-MEP-4S-265 | CSD-LKO Calender (6 day + Holiday)-25 | Physical Progress [2880 h]; Plumbing [386697 INR]; TATA Projects Ltd-25 | 386,697 |

| ID | WBS | Activity | Duration | Start | Finish | Predecessors | Calendar | Resources | Cost |
| --- | --- | --- | --- | --- | --- | --- | --- | --- | --- |
|  | 2 | **2nd FIx** |  | 2028-04-21 | 2028-07-14 |  |  |  |  |
| 4S-WMI-5th110 |  | Insulation of hot water pipes (if applicable) | 20d | 2028-04-21 | 2028-05-17 | 4S-WMI-5th85 | CSD-LKO Calender (6 day + Holiday)-25 | Physical Progress [1730 h]; Plumbing [386697 INR]; TATA Projects Ltd-25 | 386,697 |
| 4S-WMI-5th120 |  | Installation of vertical risers and main distribution lines | 35d | 2028-04-27 | 2028-06-09 | 4S-WMI-5th95, 4S-WMI-5th85, 4S-WMI-5th90 | CSD-LKO Calender (6 day + Holiday)-25 | Physical Progress [5750 h]; Plumbing [773394 INR]; TATA Projects Ltd-25 | 773,394 |
| 4S-WMI-5th145 |  | Testing drainage lines for leakage/blockage | 30d | 2028-05-17 | 2028-06-21 | 4S-WMI-5th70, 4S-WMI-5th110 | CSD-LKO Calender (6 day + Holiday)-25 | Physical Progress [1730 h]; Plumbing [77339 INR]; TATA Projects Ltd-25 | 77,339 |
| 4S-WMI-5th160 |  | Fixing floor traps and gully traps | 30d | 2028-06-09 | 2028-07-14 | 4S-WMI-5th120 | CSD-LKO Calender (6 day + Holiday)-25 | Physical Progress [1730 h]; Plumbing [232018 INR]; TATA Projects Ltd-25 | 232,018 |
|  | 4 | **Firefighting** |  | 2027-11-22 | 2028-06-15 |  |  |  |  |
|  | 1 | **1st Fix** |  | 2027-11-22 | 2028-03-22 |  |  |  |  |
| 4S-WMI-5th40 |  | Fixing pipe supports and hangers | 35d | 2027-11-22 | 2028-01-04 | 4S-WMI-5th15, E-GFC-MEP-4S-265 | CSD-LKO Calender (6 day + Holiday)-25 | Physical Progress [2880 h]; Firefighting [281762 INR]; TATA Projects Ltd-25 | 281,762 |
| 4S-WMI-5th105 |  | Laying branch piping | 35d | 2028-01-04 | 2028-02-15 | 4S-WMI-5th40, E-GFC-MEP-4S-265 | CSD-LKO Calender (6 day + Holiday)-25 | Physical Progress [4320 h]; Firefighting [603775 INR]; TATA Projects Ltd-25 | 603,775 |
| 4S-WMI-5th150 |  | Hydrostatic pressure testing of piping | 30d | 2028-02-15 | 2028-03-22 | 4S-WMI-5th105, E-GFC-MEP-4S-265 | CSD-LKO Calender (6 day + Holiday)-25 | Physical Progress [1730 h]; Firefighting [80503 INR]; TATA Projects Ltd-25 | 80,503 |
|  | 2 | **2nd Fix** |  | 2028-03-22 | 2028-06-15 |  |  |  |  |
| 4S-WMI-5th175 |  | Installation of vertical risers and distribution piping in shafts | 35d | 2028-03-22 | 2028-05-05 | 4S-WMI-5th95, 4S-WMI-5th150 | CSD-LKO Calender (6 day + Holiday)-25 | Physical Progress [7190 h]; Firefighting [805034 INR]; TATA Projects Ltd-25 | 805,034 |
| 4S-WMI-5th180 |  | Painting/insulation of exposed fire pipes | 30d | 2028-03-22 | 2028-04-27 | 4S-WMI-5th150 | CSD-LKO Calender (6 day + Holiday)-25 | Physical Progress [2880 h]; Firefighting [40252 INR]; TATA Projects Ltd-25 | 40,252 |
| 4S-WMI-5th190 |  | Testing risers and branch lines for leakage | 30d | 2028-04-27 | 2028-06-03 | 4S-WMI-5th180 | CSD-LKO Calender (6 day + Holiday)-25 | Physical Progress [1730 h]; Firefighting [80503 INR]; TATA Projects Ltd-25 | 80,503 |
| 4S-WMI-5th200 |  | Installation of sprinkler branch lines in ceilings | 35d | 2028-05-05 | 2028-06-15 | 4S-WMI-5th175 | CSD-LKO Calender (6 day + Holiday)-25 | Physical Progress [7190 h]; Firefighting [603775 INR]; TATA Projects Ltd-25 | 603,775 |
|  | 5 | **ELV** |  | 2027-10-16 | 2028-07-20 |  |  |  |  |
|  | 1 | **1st Fix** |  | 2027-10-16 | 2028-01-04 |  |  |  |  |
| 4S-WMI-5th20 |  | Slab Conduiting | 35d | 2027-10-16 | 2027-11-27 | 4S-WMI-5th10, E-GFC-MEP-4S-265 | CSD-LKO Calender (6 day + Holiday)-25 | Physical Progress [7190 h]; ELV [226108 INR]; TATA Projects Ltd-25 | 226,108 |
| 4S-WMI-5th45 |  | Wall Conduiting | 30d | 2027-11-22 | 2027-12-28 | 4S-WMI-5th15, E-GFC-MEP-4S-265 | CSD-LKO Calender (6 day + Holiday)-25 | Physical Progress [2880 h]; ELV [96904 INR]; TATA Projects Ltd-25 | 96,904 |
| 4S-WMI-5th80 |  | Installing back boxes for switches, sockets | 5d | 2027-12-28 | 2028-01-04 | 4S-WMI-5th45, 4S-WMI-5th20, E-GFC-MEP-4S-265 | CSD-LKO Calender (6 day + Holiday)-25 | Physical Progress [1440 h]; ELV [161506 INR]; TATA Projects Ltd-25 | 161,506 |
|  | 2 | **2nd Fix** |  | 2028-01-21 | 2028-07-20 |  |  |  |  |
| 4S-WMI-5th125 |  | Cable tray installation | 35d | 2028-01-21 | 2028-03-03 | 4S-WMI-5th95 | CSD-LKO Calender (6 day + Holiday)-25 | Physical Progress [7190 h]; ELV [161506 INR]; TATA Projects Ltd-25 | 161,506 |
| 4S-WMI-5th165 |  | Cabeling of ELV cable - IT/Fire Alarm/Public Address | 35d | 2028-03-03 | 2028-04-15 | 4S-WMI-5th125 | CSD-LKO Calender (6 day + Holiday)-25 | Physical Progress [12950 h]; ELV [387614 INR]; TATA Projects Ltd-25 | 387,614 |
| 4S-WMI-5th195 |  | ELV Rack Installation | 25d | 2028-04-15 | 2028-05-17 | 4S-WMI-5th165 | CSD-LKO Calender (6 day + Holiday)-25 | Physical Progress [2880 h]; ELV [161506 INR]; TATA Projects Ltd-25 | 161,506 |
| 4S-WMI-5th215 |  | Termination of cables at junction boxes, patch panels, and control panels | 35d | 2028-05-17 | 2028-06-27 | 4S-WMI-5th195 | CSD-LKO Calender (6 day + Holiday)-25 | Physical Progress [8630 h]; ELV [161506 INR]; TATA Projects Ltd-25 | 161,506 |
| 4S-WMI-5th230 |  | Fixing devices like CCTV camera bases, card reader bases, smoke detector bases, PA Bases, Wifi Bases | 20d | 2028-06-27 | 2028-07-20 | 4S-WMI-5th215 | CSD-LKO Calender (6 day + Holiday)-25 | Physical Progress [1150 h]; ELV [323012 INR]; TATA Projects Ltd-25 | 323,012 |

| ID | WBS | Activity | Duration | Start | Finish | Predecessors | Calendar | Resources | Cost |
| --- | --- | --- | --- | --- | --- | --- | --- | --- | --- |
|  | 3 | **Front Face - Toward Airport** |  | 2028-08-14 | 2029-03-14 |  |  |  |  |
|  | 2 | **Dry Finishes/ID Works** |  | 2028-08-14 | 2029-03-14 |  |  |  |  |
| 4S-WMI-5th235 |  | Running of Wild Air | 1d | 2028-08-14 | 2028-08-14 | 4S-F-5th40, 4S-WMI-5th140, 4S-WMI-5th170, 4S-WMI-5th185, 4S-WMI-5th220, 4S-WMI-5th275 | CSD-LKO Calender (6 day + Holiday)-25 | Physical Progress [290 h]; TATA Projects Ltd-25 |  |
| 4S-WMI-5th350 |  | Wall finish ID Works | 35d | 2028-08-16 | 2028-09-26 | 4S-WMI-5th235, 4S-WMI-5th140, 4S-WMI-5th170, 4S-WMI-5th185, 4S-WMI-5th220, 4S-WMI-5th275, 4S-WMI-5th115, 4S-WMI-5th155, 4S-WMI-5th205, 4S-WMI-5th210, 4S-WMI-5th225, 4S-WMI-5th255, 4S-WMI-5th110, 4S-WMI-5th120, 4S-WMI-5th145, 4S-WMI-5th160, 4S-WMI-5th175, 4S-WMI-5th180, 4S-WMI-5th190, 4S-WMI-5th200, 4S-WMI-5th125, 4S-WMI-5th165, 4S-WMI-5th195, 4S-WMI-5th215, 4S-WMI-5th230 | CSD-LKO Calender (6 day + Holiday)-25 | ID Work [2845286 INR]; Physical Progress [2880 h]; TATA Projects Ltd-25 | 2,845,286 |
| 4S-WMI-5th395 |  | False Ceiling Installation | 35d | 2028-09-28 | 2028-11-09 | 4S-WMI-5th350 | CSD-LKO Calender (6 day + Holiday)-25 | ID Work [3414343 INR]; Physical Progress [5750 h]; TATA Projects Ltd-25 | 3,414,343 |
| 4S-WMI-5th505 |  | Flooring of toilets/kitchen/Balcony | 10d | 2028-11-10 | 2028-11-21 | 4S-WMI-5th55, 4S-WMI-5th395 | CSD-LKO Calender (6 day + Holiday)-25 | ID Work [2276229 INR]; Physical Progress [2880 h]; TATA Projects Ltd-25 | 2,276,229 |
| 4S-WMI-5th545 |  | Doors & Windows/Fire Doors/Shaft Doors | 35d | 2028-11-22 | 2029-01-03 | 4S-WMI-5th350, 4S-WMI-5th505 | CSD-LKO Calender (6 day + Holiday)-25 | ID Work [2845286 INR]; Physical Progress [2880 h]; TATA Projects Ltd-25 | 2,845,286 |
| 4S-WMI-5th550 |  | Putty & First Coat of Paint | 10d | 2028-11-22 | 2028-12-02 | 4S-WMI-5th350, 4S-WMI-5th505 | CSD-LKO Calender (6 day + Holiday)-25 | Painting [869 Sq m]; Painter [870 h]; Helper [870 h]; Physical Progress [2880 h]; TATA Projects Ltd-25 | 198,670.78 |
| 4S-WMI-5th590 |  | Wooden Flooring/Flooring | 20d | 2028-12-04 | 2028-12-27 | 4S-WMI-5th550 | CSD-LKO Calender (6 day + Holiday)-25 | ID Work [2845286 INR]; Physical Progress [5750 h]; TATA Projects Ltd-25 | 2,845,286 |
| 4S-WMI-5th640 |  | Fixed Furniture | 8d | 2028-12-28 | 2029-01-06 | 4S-WMI-5th590 | CSD-LKO Calender (6 day + Holiday)-25 | ID Work [2560757 INR]; Physical Progress [2300 h]; TATA Projects Ltd-25 | 2,560,757 |
| 4S-WMI-5th695 |  | False ceiling final finishes | 10d | 2029-01-22 | 2029-02-02 | 4S-WMI-5th595 | CSD-LKO Calender (6 day + Holiday)-25 | ID Work [853586 INR]; Physical Progress [2880 h]; TATA Projects Ltd-25 | 853,586 |
| 4S-WMI-5th705 |  | Final coat of paint | 10d | 2029-02-12 | 2029-02-23 | 4S-WMI-5th695, 4S-WMI-5th640, 4S-WMI-5th665, 4S-WMI-5th615, 4S-WMI-5th620, 4S-WMI-5th670, 4S-WMI-5th700, 4S-WMI-5th690, 4S-WMI-5th685, 4S-WMI-5th680, 4S-WMI-5th630, 4S-WMI-5th625, 4S-WMI-5th545, 4S-WMI-5th580 | CSD-LKO Calender (6 day + Holiday)-25 | Painting [869 Sq m]; Painter [870 h]; Helper [870 h]; Physical Progress [2880 h]; TATA Projects Ltd-25 | 198,670.78 |
| 4S-WMI-5th710 |  | Soft Furnishing & Signage | 15d | 2029-02-24 | 2029-03-14 | 4S-WMI-5th705 | CSD-LKO Calender (6 day + Holiday)-25 | ID Work [4267929 INR]; Physical Progress [860 h]; TATA Projects Ltd-25 | 4,267,929 |
| 4S-WMI-5th715 |  | Loose Furniture | 15d | 2029-02-24 | 2029-03-14 | 4S-WMI-5th705 | CSD-LKO Calender (6 day + Holiday)-25 | ID Work [5690571 INR]; Physical Progress [860 h]; TATA Projects Ltd-25 | 5,690,571 |
|  | 1 | **MEP Final Fix** |  | 2028-11-10 | 2029-02-10 |  |  |  |  |
|  | 3 | **HVAC** |  | 2028-11-10 | 2029-01-20 |  |  |  |  |
| 4S-WMI-5th500 |  | Installing grills, diffusers, dampers | 30d | 2028-11-10 | 2028-12-14 | 4S-WMI-5th395 | CSD-LKO Calender (6 day + Holiday)-25 | Physical Progress [1730 h]; HVAC [358248 INR]; TATA Projects Ltd-25 | 358,248 |
| 4S-WMI-5th595 |  | Installation of thermostats and control panels | 30d | 2028-12-15 | 2029-01-20 | 4S-WMI-5th500, 4S-WMI-5th550, 4S-WMI-5th275 | CSD-LKO Calender (6 day + Holiday)-25 | Physical Progress [1730 h]; HVAC [179124 INR]; TATA Projects Ltd-25 | 179,124 |
|  | 1 | **Electrical** |  | 2028-12-04 | 2029-01-09 |  |  |  |  |
| 4S-WMI-5th570 |  | Switches & Socket | 15d | 2028-12-04 | 2028-12-20 | 4S-WMI-5th550 | CSD-LKO Calender (6 day + Holiday)-25 | Physical Progress [5750 h]; Electrical [401028 INR]; TATA Projects Ltd-25 | 401,028 |
| 4S-WMI-5th665 |  | Light Fixtures | 15d | 2028-12-21 | 2029-01-09 | 4S-WMI-5th570, 4S-WMI-5th255 | CSD-LKO Calender (6 day + Holiday)-25 | Physical Progress [4320 h]; Electrical [601542 INR]; TATA Projects Ltd-25 | 601,542 |
|  | 2 | **Plumbing** |  | 2028-12-04 | 2029-01-27 |  |  |  |  |
| 4S-WMI-5th575 |  | Installation of sanitary fixtures (WC, washbasins, urinals, sinks) | 10d | 2028-12-04 | 2028-12-14 | 4S-WMI-5th550, 4S-WMI-5th145, 4S-WMI-5th160 | CSD-LKO Calender (6 day + Holiday)-25 | Physical Progress [2880 h]; Plumbing [515596 INR]; TATA Projects Ltd-25 | 515,596 |
| 4S-WMI-5th600 |  | Installation of CP fittings (taps, mixers, showers, health faucets) | 10d | 2028-12-15 | 2028-12-27 | 4S-WMI-5th575, 4S-WMI-5th550 | CSD-LKO Calender (6 day + Holiday)-25 | Physical Progress [2880 h]; Plumbing [257798 INR]; TATA Projects Ltd-25 | 257,798 |
| 4S-WMI-5th615 |  | Connection of appliances | 25d | 2028-12-28 | 2029-01-27 | 4S-WMI-5th600 | CSD-LKO Calender (6 day + Holiday)-25 | Physical Progress [2010 h]; Plumbing [128899 INR]; TATA Projects Ltd-25 | 128,899 |

| ID | WBS | Activity | Duration | Start | Finish | Predecessors | Calendar | Resources | Cost |
| --- | --- | --- | --- | --- | --- | --- | --- | --- | --- |
|  | 4 | **Firefighting** |  | 2028-12-04 | 2029-02-08 |  |  |  |  |
| 4S-WMI-5th580 |  | Installation of hydrant accessories (valves, hose reels, cabinets) | 25d | 2028-12-04 | 2029-01-03 | 4S-WMI-5th550 | CSD-LKO Calender (6 day + Holiday)-25 | Physical Progress [2880 h]; Firefighting [134172 INR]; TATA Projects Ltd-25 | 134,172 |
| 4S-WMI-5th585 |  | Installation of portable fire extinguishers | 30d | 2028-12-04 | 2029-01-09 | 4S-WMI-5th550 | CSD-LKO Calender (6 day + Holiday)-25 | Physical Progress [1730 h]; Firefighting [13417 INR]; TATA Projects Ltd-25 | 13,417 |
| 4S-WMI-5th620 |  | Installation of sprinkler heads, nozzles, and final alignment | 35d | 2028-12-28 | 2029-02-08 | 4S-WMI-5th550, 4S-WMI-5th590, 4S-WMI-5th190, 4S-WMI-5th200 | CSD-LKO Calender (6 day + Holiday)-25 | Physical Progress [12950 h]; Firefighting [201258 INR]; TATA Projects Ltd-25 | 201,258 |
| 4S-WMI-5th670 |  | Integration with fire alarm system | 20d | 2029-01-10 | 2029-02-02 | 4S-WMI-5th585 | CSD-LKO Calender (6 day + Holiday)-25 | Physical Progress [5750 h]; Firefighting [67086 INR]; TATA Projects Ltd-25 | 67,086 |
|  | 5 | **ELV** |  | 2028-12-28 | 2029-02-10 |  |  |  |  |
| 4S-WMI-5th625 |  | Installation of data and Voice Faceplate | 25d | 2028-12-28 | 2029-01-27 | 4S-WMI-5th550, 4S-WMI-5th590 | CSD-LKO Calender (6 day + Holiday)-25 | Physical Progress [2880 h]; ELV [53835 INR]; TATA Projects Ltd-25 | 53,835 |
| 4S-WMI-5th630 |  | Installation of Camera & Wifi | 30d | 2028-12-28 | 2029-02-02 | 4S-WMI-5th550, 4S-WMI-5th590 | CSD-LKO Calender (6 day + Holiday)-25 | Physical Progress [2880 h]; ELV [53835 INR]; TATA Projects Ltd-25 | 53,835 |
| 4S-WMI-5th635 |  | Installation of fire alarm devices + Public Address | 10d | 2028-12-28 | 2029-01-09 | 4S-WMI-5th550, 4S-WMI-5th590 | CSD-LKO Calender (6 day + Holiday)-25 | Physical Progress [2880 h]; ELV [64602 INR]; TATA Projects Ltd-25 | 64,602 |
| 4S-WMI-5th675 |  | Installation of Active System | 15d | 2029-01-10 | 2029-01-27 | 4S-WMI-5th635 | CSD-LKO Calender (6 day + Holiday)-25 | Physical Progress [4320 h]; ELV [107671 INR]; TATA Projects Ltd-25 | 107,671 |
| 4S-WMI-5th680 |  | Fire Panel Intallation & Integration | 25d | 2029-01-10 | 2029-02-08 | 4S-WMI-5th635 | CSD-LKO Calender (6 day + Holiday)-25 | Physical Progress [7190 h]; ELV [53835 INR]; TATA Projects Ltd-25 | 53,835 |
| 4S-WMI-5th685 |  | Installation & Integration of Audio Visual System | 25d | 2029-01-10 | 2029-02-08 | 4S-WMI-5th635 | CSD-LKO Calender (6 day + Holiday)-25 | Physical Progress [7190 h]; ELV [53835 INR]; TATA Projects Ltd-25 | 53,835 |
| 4S-WMI-5th690 |  | Installation & Integration of Access Control | 25d | 2029-01-10 | 2029-02-08 | 4S-WMI-5th635 | CSD-LKO Calender (6 day + Holiday)-25 | Physical Progress [7190 h]; ELV [53835 INR]; TATA Projects Ltd-25 | 53,835 |
| 4S-WMI-5th700 |  | Integration of Active components | 12d | 2029-01-29 | 2029-02-10 | 4S-WMI-5th675 | CSD-LKO Calender (6 day + Holiday)-25 | Physical Progress [4320 h]; ELV [21534 INR]; TATA Projects Ltd-25 | 21,534 |
|  | 2 | **Back Face - Toward CC** |  | 2028-08-21 | 2029-03-23 |  |  |  |  |
|  | 2 | **Dry Finishes/ID Works** |  | 2028-08-21 | 2029-03-23 |  |  |  |  |
| 4S-WMI-5th250 |  | Running of Wild Air | 1d | 2028-08-21 | 2028-08-21 | 4S-F-5th45, 4S-WMI-5th140, 4S-WMI-5th170, 4S-WMI-5th185, 4S-WMI-5th220, 4S-WMI-5th275 | CSD-LKO Calender (6 day + Holiday)-25 | Physical Progress [290 h]; TATA Projects Ltd-25 |  |
| 4S-WMI-5th260 |  | Wall finish ID Works | 35d | 2028-08-22 | 2028-10-04 | 4S-WMI-5th250 | CSD-LKO Calender (6 day + Holiday)-25 | ID Work [2845286 INR]; Physical Progress [2880 h]; TATA Projects Ltd-25 | 2,845,286 |
| 4S-WMI-5th270 |  | False Ceiling Installation | 35d | 2028-10-05 | 2028-11-15 | 4S-WMI-5th260 | CSD-LKO Calender (6 day + Holiday)-25 | ID Work [3414343 INR]; Physical Progress [5750 h]; TATA Projects Ltd-25 | 3,414,343 |
| 4S-WMI-5th295 |  | Flooring of toilets/kitchen/Balcony | 10d | 2028-11-16 | 2028-11-27 | 4S-WMI-5th270, 4S-WMI-5th55 | CSD-LKO Calender (6 day + Holiday)-25 | ID Work [2276229 INR]; Physical Progress [2880 h]; TATA Projects Ltd-25 | 2,276,229 |
| 4S-WMI-5th310 |  | Doors & Windows/Fire Doors/Shaft Doors | 35d | 2028-11-28 | 2029-01-09 | 4S-WMI-5th260, 4S-WMI-5th295 | CSD-LKO Calender (6 day + Holiday)-25 | ID Work [2845286 INR]; Physical Progress [2880 h]; TATA Projects Ltd-25 | 2,845,286 |
| 4S-WMI-5th315 |  | Putty & First Coat of Paint | 10d | 2028-11-28 | 2028-12-08 | 4S-WMI-5th260, 4S-WMI-5th295 | CSD-LKO Calender (6 day + Holiday)-25 | Painting [869 Sq m]; Painter [870 h]; Helper [870 h]; Physical Progress [2880 h]; TATA Projects Ltd-25 | 198,670.78 |
| 4S-WMI-5th375 |  | Wooden Flooring/Flooring | 20d | 2028-12-09 | 2029-01-03 | 4S-WMI-5th315 | CSD-LKO Calender (6 day + Holiday)-25 | ID Work [2845286 INR]; Physical Progress [5750 h]; TATA Projects Ltd-25 | 2,845,286 |
| 4S-WMI-5th380 |  | Railing for staircase | 35d | 2028-12-09 | 2029-01-20 | 4S-WMI-5th260, 4S-WMI-5th315 | CSD-LKO Calender (6 day + Holiday)-25 | ID Work [1280379 INR]; Physical Progress [4320 h]; TATA Projects Ltd-25 | 1,280,379 |
| 4S-WMI-5th465 |  | Fixed Furniture | 8d | 2029-01-04 | 2029-01-12 | 4S-WMI-5th375 | CSD-LKO Calender (6 day + Holiday)-25 | ID Work [2560757 INR]; Physical Progress [2300 h]; TATA Projects Ltd-25 | 2,560,757 |
| 4S-WMI-5th555 |  | False ceiling final finishes | 10d | 2029-01-29 | 2029-02-08 | 4S-WMI-5th400 | CSD-LKO Calender (6 day + Holiday)-25 | ID Work [853586 INR]; Physical Progress [2880 h]; TATA Projects Ltd-25 | 853,586 |
| 4S-WMI-5th610 |  | Final coat of paint | 10d | 2029-02-22 | 2029-03-06 | 4S-WMI-5th555, 4S-WMI-5th380, 4S-WMI-5th465, 4S-WMI-5th510, 4S-WMI-5th440, 4S-WMI-5th445, 4S-WMI-5th515, 4S-WMI-5th565, 4S-WMI-5th535, 4S-WMI-5th530, 4S-WMI-5th525, 4S-WMI-5th455, 4S-WMI-5th450, 4S-WMI-5th310, 4S-WMI-5th365 | CSD-LKO Calender (6 day + Holiday)-25 | Painting [869 Sq m]; Painter [870 h]; Helper [870 h]; Physical Progress [2880 h]; TATA Projects Ltd-25 | 198,670.78 |
| 4S-WMI-5th655 |  | Soft Furnishing & Signage | 15d | 2029-03-07 | 2029-03-23 | 4S-WMI-5th610 | CSD-LKO Calender (6 day + Holiday)-25 | ID Work [4267929 INR]; Physical Progress [860 h]; TATA Projects Ltd-25 | 4,267,929 |
| 4S-WMI-5th660 |  | Loose Furniture | 15d | 2029-03-07 | 2029-03-23 | 4S-WMI-5th610 | CSD-LKO Calender (6 day + Holiday)-25 | ID Work [5690571 INR]; Physical Progress [860 h]; TATA Projects Ltd-25 | 5,690,571 |

| ID | WBS | Activity | Duration | Start | Finish | Predecessors | Calendar | Resources | Cost |
| --- | --- | --- | --- | --- | --- | --- | --- | --- | --- |
|  | 1 | **MEP Final Fix** |  | 2028-11-16 | 2029-02-21 |  |  |  |  |
|  | 3 | **HVAC** |  | 2028-11-16 | 2029-01-27 |  |  |  |  |
| 4S-WMI-5th290 |  | Installing grills, diffusers, dampers | 30d | 2028-11-16 | 2028-12-20 | 4S-WMI-5th270 | CSD-LKO Calender (6 day + Holiday)-25 | Physical Progress [1730 h]; HVAC [358248 INR]; TATA Projects Ltd-25 | 358,248 |
| 4S-WMI-5th400 |  | Installation of thermostats and control panels | 30d | 2028-12-21 | 2029-01-27 | 4S-WMI-5th290, 4S-WMI-5th315 | CSD-LKO Calender (6 day + Holiday)-25 | Physical Progress [1730 h]; HVAC [179124 INR]; TATA Projects Ltd-25 | 179,124 |
|  | 1 | **Electrical** |  | 2028-12-09 | 2029-02-21 |  |  |  |  |
| 4S-WMI-5th355 |  | Switches & Socket | 30d | 2028-12-09 | 2029-01-15 | 4S-WMI-5th315 | CSD-LKO Calender (6 day + Holiday)-25 | Physical Progress [5750 h]; Electrical [401028 INR]; TATA Projects Ltd-25 | 401,028 |
| 4S-WMI-5th510 |  | Light Fixtures | 30d | 2029-01-16 | 2029-02-21 | 4S-WMI-5th355 | CSD-LKO Calender (6 day + Holiday)-25 | Physical Progress [4320 h]; Electrical [601542 INR]; TATA Projects Ltd-25 | 601,542 |
|  | 2 | **Plumbing** |  | 2028-12-09 | 2029-02-02 |  |  |  |  |
| 4S-WMI-5th360 |  | Installation of sanitary fixtures (WC, washbasins, urinals, sinks) | 10d | 2028-12-09 | 2028-12-20 | 4S-WMI-5th315 | CSD-LKO Calender (6 day + Holiday)-25 | Physical Progress [2880 h]; Plumbing [515596 INR]; TATA Projects Ltd-25 | 515,596 |
| 4S-WMI-5th405 |  | Installation of CP fittings (taps, mixers, showers, health faucets) | 10d | 2028-12-21 | 2029-01-03 | 4S-WMI-5th360, 4S-WMI-5th315 | CSD-LKO Calender (6 day + Holiday)-25 | Physical Progress [2880 h]; Plumbing [257798 INR]; TATA Projects Ltd-25 | 257,798 |
| 4S-WMI-5th440 |  | Connection of appliances | 25d | 2029-01-04 | 2029-02-02 | 4S-WMI-5th405 | CSD-LKO Calender (6 day + Holiday)-25 | Physical Progress [2010 h]; Plumbing [128899 INR]; TATA Projects Ltd-25 | 128,899 |
|  | 4 | **Firefighting** |  | 2028-12-09 | 2029-02-15 |  |  |  |  |
| 4S-WMI-5th365 |  | Installation of hydrant accessories (valves, hose reels, cabinets) | 25d | 2028-12-09 | 2029-01-09 | 4S-WMI-5th315 | CSD-LKO Calender (6 day + Holiday)-25 | Physical Progress [2880 h]; Firefighting [134172 INR]; TATA Projects Ltd-25 | 134,172 |
| 4S-WMI-5th370 |  | Installation of portable fire extinguishers | 30d | 2028-12-09 | 2029-01-15 | 4S-WMI-5th315 | CSD-LKO Calender (6 day + Holiday)-25 | Physical Progress [1730 h]; Firefighting [13417 INR]; TATA Projects Ltd-25 | 13,417 |
| 4S-WMI-5th445 |  | Installation of sprinkler heads, nozzles, and final alignment | 35d | 2029-01-04 | 2029-02-15 | 4S-WMI-5th315, 4S-WMI-5th375 | CSD-LKO Calender (6 day + Holiday)-25 | Physical Progress [12950 h]; Firefighting [201258 INR]; TATA Projects Ltd-25 | 201,258 |
| 4S-WMI-5th515 |  | Integration with fire alarm system | 20d | 2029-01-16 | 2029-02-08 | 4S-WMI-5th370 | CSD-LKO Calender (6 day + Holiday)-25 | Physical Progress [5750 h]; Firefighting [67086 INR]; TATA Projects Ltd-25 | 67,086 |
|  | 5 | **ELV** |  | 2029-01-04 | 2029-02-21 |  |  |  |  |
| 4S-WMI-5th450 |  | Installation of data and Voice Faceplate | 25d | 2029-01-04 | 2029-02-02 | 4S-WMI-5th315, 4S-WMI-5th375 | CSD-LKO Calender (6 day + Holiday)-25 | Physical Progress [2880 h]; ELV [53835 INR]; TATA Projects Ltd-25 | 53,835 |
| 4S-WMI-5th455 |  | Installation of Camera & Wifi | 30d | 2029-01-04 | 2029-02-08 | 4S-WMI-5th315, 4S-WMI-5th375 | CSD-LKO Calender (6 day + Holiday)-25 | Physical Progress [2880 h]; ELV [53835 INR]; TATA Projects Ltd-25 | 53,835 |
| 4S-WMI-5th460 |  | Installation of fire alarm devices + Public Address | 10d | 2029-01-04 | 2029-01-15 | 4S-WMI-5th315, 4S-WMI-5th375 | CSD-LKO Calender (6 day + Holiday)-25 | Physical Progress [2880 h]; ELV [64602 INR]; TATA Projects Ltd-25 | 64,602 |
| 4S-WMI-5th520 |  | Installation of Active System | 15d | 2029-01-16 | 2029-02-02 | 4S-WMI-5th460 | CSD-LKO Calender (6 day + Holiday)-25 | Physical Progress [4320 h]; ELV [107671 INR]; TATA Projects Ltd-25 | 107,671 |
| 4S-WMI-5th525 |  | Fire Panel Intallation & Integration | 25d | 2029-01-16 | 2029-02-15 | 4S-WMI-5th460 | CSD-LKO Calender (6 day + Holiday)-25 | Physical Progress [7190 h]; ELV [53835 INR]; TATA Projects Ltd-25 | 53,835 |
| 4S-WMI-5th530 |  | Installation & Integration of Audio Visual System | 25d | 2029-01-16 | 2029-02-15 | 4S-WMI-5th460 | CSD-LKO Calender (6 day + Holiday)-25 | Physical Progress [7190 h]; ELV [53835 INR]; TATA Projects Ltd-25 | 53,835 |
| 4S-WMI-5th535 |  | Installation & Integration of Access Control | 25d | 2029-01-16 | 2029-02-15 | 4S-WMI-5th460 | CSD-LKO Calender (6 day + Holiday)-25 | Physical Progress [7190 h]; ELV [53835 INR]; TATA Projects Ltd-25 | 53,835 |
| 4S-WMI-5th565 |  | Integration of Active components | 15d | 2029-02-03 | 2029-02-21 | 4S-WMI-5th520 | CSD-LKO Calender (6 day + Holiday)-25 | Physical Progress [4320 h]; ELV [21534 INR]; TATA Projects Ltd-25 | 21,534 |

| ID | WBS | Activity | Duration | Start | Finish | Predecessors | Calendar | Resources | Cost |
| --- | --- | --- | --- | --- | --- | --- | --- | --- | --- |
|  | 4 | **Side Face** |  | 2028-08-29 | 2029-03-31 |  |  |  |  |
|  | 2 | **Dry Finishes/ID Works** |  | 2028-08-29 | 2029-03-31 |  |  |  |  |
| 4S-WMI-5th240 |  | Running of Wild Air | 1d | 2028-08-29 | 2028-08-29 | 4S-F-5th50, 4S-WMI-5th140, 4S-WMI-5th170, 4S-WMI-5th185, 4S-WMI-5th220, 4S-WMI-5th275 | CSD-LKO Calender (6 day + Holiday)-25 | Physical Progress [290 h]; TATA Projects Ltd-25 |  |
| 4S-WMI-5th245 |  | Wall finish ID Works | 35d | 2028-08-30 | 2028-10-11 | 4S-WMI-5th240 | CSD-LKO Calender (6 day + Holiday)-25 | ID Work [2845286 INR]; Physical Progress [2880 h]; TATA Projects Ltd-25 | 2,845,286 |
| 4S-WMI-5th265 |  | False Ceiling Installation | 35d | 2028-10-12 | 2028-11-22 | 4S-WMI-5th245 | CSD-LKO Calender (6 day + Holiday)-25 | ID Work [3414343 INR]; Physical Progress [5750 h]; TATA Projects Ltd-25 | 3,414,343 |
| 4S-WMI-5th285 |  | Flooring of toilets/kitchen/Balcony | 10d | 2028-11-23 | 2028-12-04 | 4S-WMI-5th265, 4S-WMI-5th55 | CSD-LKO Calender (6 day + Holiday)-25 | ID Work [2276229 INR]; Physical Progress [2880 h]; TATA Projects Ltd-25 | 2,276,229 |
| 4S-WMI-5th300 |  | Doors & Windows/Fire Doors/Shaft Doors | 35d | 2028-12-05 | 2029-01-16 | 4S-WMI-5th245, 4S-WMI-5th285 | CSD-LKO Calender (6 day + Holiday)-25 | ID Work [2845286 INR]; Physical Progress [2880 h]; TATA Projects Ltd-25 | 2,845,286 |
| 4S-WMI-5th305 |  | Putty & First Coat of Paint | 10d | 2028-12-05 | 2028-12-15 | 4S-WMI-5th245, 4S-WMI-5th285 | CSD-LKO Calender (6 day + Holiday)-25 | Painting [869 Sq m]; Painter [870 h]; Helper [870 h]; Physical Progress [2880 h]; TATA Projects Ltd-25 | 198,670.78 |
| 4S-WMI-5th340 |  | Wooden Flooring/Flooring | 20d | 2028-12-16 | 2029-01-10 | 4S-WMI-5th305 | CSD-LKO Calender (6 day + Holiday)-25 | ID Work [2845286 INR]; Physical Progress [5750 h]; TATA Projects Ltd-25 | 2,845,286 |
| 4S-WMI-5th345 |  | Railing for staircase | 35d | 2028-12-16 | 2029-01-29 | 4S-WMI-5th245, 4S-WMI-5th305 | CSD-LKO Calender (6 day + Holiday)-25 | ID Work [1280379 INR]; Physical Progress [4320 h]; TATA Projects Ltd-25 | 1,280,379 |
| 4S-WMI-5th435 |  | Fixed Furniture | 8d | 2029-01-11 | 2029-01-19 | 4S-WMI-5th340 | CSD-LKO Calender (6 day + Holiday)-25 | ID Work [2560757 INR]; Physical Progress [2300 h]; TATA Projects Ltd-25 | 2,560,757 |
| 4S-WMI-5th540 |  | False ceiling final finishes | 10d | 2029-02-05 | 2029-02-16 | 4S-WMI-5th385 | CSD-LKO Calender (6 day + Holiday)-25 | ID Work [853586 INR]; Physical Progress [2880 h]; TATA Projects Ltd-25 | 853,586 |
| 4S-WMI-5th605 |  | Final coat of paint | 10d | 2029-03-02 | 2029-03-13 | 4S-WMI-5th540, 4S-WMI-5th345, 4S-WMI-5th435, 4S-WMI-5th470, 4S-WMI-5th410, 4S-WMI-5th415, 4S-WMI-5th475, 4S-WMI-5th560, 4S-WMI-5th495, 4S-WMI-5th490, 4S-WMI-5th485, 4S-WMI-5th425, 4S-WMI-5th420, 4S-WMI-5th300 | CSD-LKO Calender (6 day + Holiday)-25 | Painting [869 Sq m]; Painter [870 h]; Helper [870 h]; Physical Progress [2880 h]; TATA Projects Ltd-25 | 198,670.78 |
| 4S-WMI-5th645 |  | Soft Furnishing & Signage | 15d | 2029-03-14 | 2029-03-31 | 4S-WMI-5th605 | CSD-LKO Calender (6 day + Holiday)-25 | ID Work [4267929 INR]; Physical Progress [860 h]; TATA Projects Ltd-25 | 4,267,929 |
| 4S-WMI-5th650 |  | Loose Furniture | 15d | 2029-03-14 | 2029-03-31 | 4S-WMI-5th605 | CSD-LKO Calender (6 day + Holiday)-25 | ID Work [5690571 INR]; Physical Progress [860 h]; TATA Projects Ltd-25 | 5,690,571 |
|  | 1 | **MEP Final Fix** |  | 2028-11-23 | 2029-02-28 |  |  |  |  |
|  | 3 | **HVAC** |  | 2028-11-23 | 2029-02-03 |  |  |  |  |
| 4S-WMI-5th280 |  | Installing grills, diffusers, dampers | 30d | 2028-11-23 | 2028-12-28 | 4S-WMI-5th265 | CSD-LKO Calender (6 day + Holiday)-25 | Physical Progress [1730 h]; HVAC [358248 INR]; TATA Projects Ltd-25 | 358,248 |
| 4S-WMI-5th385 |  | Installation of thermostats and control panels | 30d | 2028-12-29 | 2029-02-03 | 4S-WMI-5th280, 4S-WMI-5th305 | CSD-LKO Calender (6 day + Holiday)-25 | Physical Progress [1730 h]; HVAC [179124 INR]; TATA Projects Ltd-25 | 179,124 |
|  | 1 | **Electrical** |  | 2028-12-16 | 2029-02-28 |  |  |  |  |
| 4S-WMI-5th320 |  | Switches & Socket | 30d | 2028-12-16 | 2029-01-22 | 4S-WMI-5th305 | CSD-LKO Calender (6 day + Holiday)-25 | Physical Progress [5750 h]; Electrical [401028 INR]; TATA Projects Ltd-25 | 401,028 |
| 4S-WMI-5th470 |  | Light Fixtures | 30d | 2029-01-23 | 2029-02-28 | 4S-WMI-5th320 | CSD-LKO Calender (6 day + Holiday)-25 | Physical Progress [4320 h]; Electrical [601542 INR]; TATA Projects Ltd-25 | 601,542 |
|  | 2 | **Plumbing** |  | 2028-12-16 | 2029-02-09 |  |  |  |  |
| 4S-WMI-5th325 |  | Installation of sanitary fixtures (WC, washbasins, urinals, sinks) | 10d | 2028-12-16 | 2028-12-28 | 4S-WMI-5th305 | CSD-LKO Calender (6 day + Holiday)-25 | Physical Progress [2880 h]; Plumbing [515596 INR]; TATA Projects Ltd-25 | 515,596 |
| 4S-WMI-5th390 |  | Installation of CP fittings (taps, mixers, showers, health faucets) | 10d | 2028-12-29 | 2029-01-10 | 4S-WMI-5th325, 4S-WMI-5th305 | CSD-LKO Calender (6 day + Holiday)-25 | Physical Progress [2880 h]; Plumbing [257798 INR]; TATA Projects Ltd-25 | 257,798 |
| 4S-WMI-5th410 |  | Connection of appliances | 25d | 2029-01-11 | 2029-02-09 | 4S-WMI-5th390 | CSD-LKO Calender (6 day + Holiday)-25 | Physical Progress [2010 h]; Plumbing [128899 INR]; TATA Projects Ltd-25 | 128,899 |

| ID | WBS | Activity | Duration | Start | Finish | Predecessors | Calendar | Resources | Cost |
| --- | --- | --- | --- | --- | --- | --- | --- | --- | --- |
|  | 4 | **Firefighting** |  | 2028-12-16 | 2029-02-22 |  |  |  |  |
| 4S-WMI-5th330 |  | Installation of hydrant accessories (valves, hose reels, cabinets) | 25d | 2028-12-16 | 2029-01-16 | 4S-WMI-5th305 | CSD-LKO Calender (6 day + Holiday)-25 | Physical Progress [2880 h]; Firefighting [134172 INR]; TATA Projects Ltd-25 | 134,172 |
| 4S-WMI-5th335 |  | Installation of portable fire extinguishers | 30d | 2028-12-16 | 2029-01-22 | 4S-WMI-5th305 | CSD-LKO Calender (6 day + Holiday)-25 | Physical Progress [1730 h]; Firefighting [13417 INR]; TATA Projects Ltd-25 | 13,417 |
| 4S-WMI-5th415 |  | Installation of sprinkler heads, nozzles, and final alignment | 35d | 2029-01-11 | 2029-02-22 | 4S-WMI-5th305, 4S-WMI-5th340 | CSD-LKO Calender (6 day + Holiday)-25 | Physical Progress [12950 h]; Firefighting [201258 INR]; TATA Projects Ltd-25 | 201,258 |
| 4S-WMI-5th475 |  | Integration with fire alarm system | 20d | 2029-01-23 | 2029-02-16 | 4S-WMI-5th335 | CSD-LKO Calender (6 day + Holiday)-25 | Physical Progress [5750 h]; Firefighting [67086 INR]; TATA Projects Ltd-25 | 67,086 |
|  | 5 | **ELV** |  | 2029-01-11 | 2029-02-28 |  |  |  |  |
| 4S-WMI-5th420 |  | Installation of data and Voice Faceplate | 25d | 2029-01-11 | 2029-02-09 | 4S-WMI-5th305, 4S-WMI-5th340 | CSD-LKO Calender (6 day + Holiday)-25 | Physical Progress [2880 h]; ELV [53835 INR]; TATA Projects Ltd-25 | 53,835 |
| 4S-WMI-5th425 |  | Installation of Camera & Wifi | 30d | 2029-01-11 | 2029-02-16 | 4S-WMI-5th305, 4S-WMI-5th340 | CSD-LKO Calender (6 day + Holiday)-25 | Physical Progress [2880 h]; ELV [53835 INR]; TATA Projects Ltd-25 | 53,835 |
| 4S-WMI-5th430 |  | Installation of fire alarm devices + Public Address | 10d | 2029-01-11 | 2029-01-22 | 4S-WMI-5th305, 4S-WMI-5th340 | CSD-LKO Calender (6 day + Holiday)-25 | Physical Progress [2880 h]; ELV [64602 INR]; TATA Projects Ltd-25 | 64,602 |
| 4S-WMI-5th480 |  | Installation of Active System | 15d | 2029-01-23 | 2029-02-09 | 4S-WMI-5th430 | CSD-LKO Calender (6 day + Holiday)-25 | Physical Progress [4320 h]; ELV [107671 INR]; TATA Projects Ltd-25 | 107,671 |
| 4S-WMI-5th485 |  | Fire Panel Intallation & Integration | 25d | 2029-01-23 | 2029-02-22 | 4S-WMI-5th430 | CSD-LKO Calender (6 day + Holiday)-25 | Physical Progress [7190 h]; ELV [53835 INR]; TATA Projects Ltd-25 | 53,835 |
| 4S-WMI-5th490 |  | Installation & Integration of Audio Visual System | 25d | 2029-01-23 | 2029-02-22 | 4S-WMI-5th430 | CSD-LKO Calender (6 day + Holiday)-25 | Physical Progress [7190 h]; ELV [53835 INR]; TATA Projects Ltd-25 | 53,835 |
| 4S-WMI-5th495 |  | Installation & Integration of Access Control | 25d | 2029-01-23 | 2029-02-22 | 4S-WMI-5th430 | CSD-LKO Calender (6 day + Holiday)-25 | Physical Progress [7190 h]; ELV [53835 INR]; TATA Projects Ltd-25 | 53,835 |
| 4S-WMI-5th560 |  | Integration of Active components | 15d | 2029-02-10 | 2029-02-28 | 4S-WMI-5th480 | CSD-LKO Calender (6 day + Holiday)-25 | Physical Progress [4320 h]; ELV [21534 INR]; TATA Projects Ltd-25 | 21,534 |
|  | 7 | **Sixth Floor** |  | 2027-11-13 | 2029-04-20 |  |  |  |  |
|  | 1 | **Wet Finishes** |  | 2027-11-13 | 2028-02-05 |  |  |  |  |
| 4S-WMI-6th10 |  | Deshuttering | 4d | 2027-11-13 | 2027-11-18 | 4S-SS-Roof40 | CSD-LKO Calender (6 day + Holiday)-25 | Physical Progress [1160 h]; TATA Projects Ltd-25 |  |
| 4S-WMI-6th15 |  | Brickwork/Blockwork | 30d | 2027-11-18 | 2027-12-23 | 4S-WMI-6th10, E-GFC-AR-4S-270 | CSD-LKO Calender (6 day + Holiday)-25 | Masonry [546 CuM]; Mason [3640 h]; Helper [1820 h]; Physical Progress [8630 h]; TATA Projects Ltd-25 | 5,206,306.56 |
| 4S-WMI-6th55 |  | Waterproofing of Toilets, Balcony & Kitchen | 20d | 2027-12-23 | 2028-01-18 | 4S-WMI-6th15 | CSD-LKO Calender (6 day + Holiday)-25 | Waterproofing [8564838 INR]; Waterprrofing Mason [8160 h]; Helper [4080 h]; Physical Progress [4320 h]; TATA Projects Ltd-25 | 8,564,838 |
| 4S-WMI-6th80 |  | Plaster | 15d | 2028-01-18 | 2028-02-05 | 4S-WMI-6th30, 4S-WMI-6th70, 4S-WMI-6th75, 4S-WMI-6th55 | CSD-LKO Calender (6 day + Holiday)-25 | Plaster [8485 Sqr Mtr]; Mason [5660 h]; Helper [2830 h]; Physical Progress [4320 h]; TATA Projects Ltd-25 | 4,699,926.35 |
|  | 5 | **MEP 1st Fix, 2nd Fix** |  | 2027-11-18 | 2028-08-29 |  |  |  |  |
|  | 2 | **HVAC** |  | 2027-12-23 | 2028-07-17 |  |  |  |  |
|  | 1 | **1st Fix** |  | 2027-12-23 | 2028-04-18 |  |  |  |  |
| 4S-WMI-6th50 |  | Duct Support Fabrication | 35d | 2027-12-23 | 2028-02-05 | 4S-WMI-6th15, E-GFC-MEP-4S-270 | CSD-LKO Calender (6 day + Holiday)-25 | Physical Progress [4320 h]; HVAC [214949 INR]; TATA Projects Ltd-25 | 214,949 |
| 4S-WMI-6th105 |  | Installing duct hangers and supports | 30d | 2028-02-05 | 2028-03-13 | 4S-WMI-6th50, E-GFC-MEP-4S-270 | CSD-LKO Calender (6 day + Holiday)-25 | Physical Progress [2880 h]; HVAC [429898 INR]; TATA Projects Ltd-25 | 429,898 |
| 4S-WMI-6th130 |  | Laying concealed/exposed refrigerant piping | 30d | 2028-03-13 | 2028-04-18 | 4S-WMI-6th105, E-GFC-MEP-4S-270 | CSD-LKO Calender (6 day + Holiday)-25 | Physical Progress [4320 h]; HVAC [107474 INR]; TATA Projects Ltd-25 | 107,474 |
| 4S-WMI-6th135 |  | Laying concealed/exposed drain piping | 30d | 2028-03-13 | 2028-04-18 | 4S-WMI-6th105, E-GFC-MEP-4S-270 | CSD-LKO Calender (6 day + Holiday)-25 | Physical Progress [2880 h]; HVAC [644847 INR]; TATA Projects Ltd-25 | 644,847 |

| ID | WBS | Activity | Duration | Start | Finish | Predecessors | Calendar | Resources | Cost |
| --- | --- | --- | --- | --- | --- | --- | --- | --- | --- |
|  | 2 | **2nd Fix** |  | 2028-03-13 | 2028-07-17 |  |  |  |  |
| 4S-WMI-6th140 |  | Duct installation | 20d | 2028-03-13 | 2028-04-05 | 4S-WMI-6th105 | CSD-LKO Calender (6 day + Holiday)-25 | Physical Progress [4320 h]; HVAC [1612117 INR]; TATA Projects Ltd-25 | 1,612,117 |
| 4S-WMI-6th170 |  | Insulation of ducts (thermal/acoustic) | 10d | 2028-04-05 | 2028-04-18 | 4S-WMI-6th140 | CSD-LKO Calender (6 day + Holiday)-25 | Physical Progress [1730 h]; HVAC [967270 INR]; TATA Projects Ltd-25 | 967,270 |
| 4S-WMI-6th195 |  | Installation of chilled water piping / VRF piping | 20d | 2028-04-18 | 2028-05-13 | 4S-WMI-6th170, 4S-WMI-6th130, 4S-WMI-6th135 | CSD-LKO Calender (6 day + Holiday)-25 | Physical Progress [1730 h]; HVAC [2149489 INR]; TATA Projects Ltd-25 | 2,149,489 |
| 4S-WMI-6th220 |  | Installation of indoor units including AHU, FCU | 35d | 2028-05-13 | 2028-06-23 | 4S-WMI-6th195, 4S-WMI-6th130, 4S-WMI-6th135 | CSD-LKO Calender (6 day + Holiday)-25 | Physical Progress [12950 h]; HVAC [1934540 INR]; TATA Projects Ltd-25 | 1,934,540 |
| 4S-WMI-6th240 |  | Connecting refrigerant and drain piping to indoor units | 20d | 2028-06-23 | 2028-07-17 | 4S-WMI-6th220 | CSD-LKO Calender (6 day + Holiday)-25 | Physical Progress [1730 h]; HVAC [537372 INR]; TATA Projects Ltd-25 | 537,372 |
|  | 1 | **Electrical** |  | 2027-11-18 | 2028-06-29 |  |  |  |  |
|  | 1 | **1st Fix** |  | 2027-11-18 | 2028-01-18 |  |  |  |  |
| 4S-WMI-6th25 |  | Slab Conduiting | 35d | 2027-11-18 | 2027-12-30 | 4S-WMI-6th10, E-GFC-MEP-4S-270 | CSD-LKO Calender (6 day + Holiday)-25 | Physical Progress [7190 h]; Electrical [1203084 INR]; TATA Projects Ltd-25 | 1,203,084 |
| 4S-WMI-6th30 |  | Wall Conduiting | 15d | 2027-12-23 | 2028-01-12 | 4S-WMI-6th15, E-GFC-MEP-4S-270 | CSD-LKO Calender (6 day + Holiday)-25 | Physical Progress [2880 h]; Electrical [601542 INR]; TATA Projects Ltd-25 | 601,542 |
| 4S-WMI-6th70 |  | Installing back boxes for switches, sockets | 5d | 2028-01-12 | 2028-01-18 | 4S-WMI-6th30, 4S-WMI-6th25, E-GFC-MEP-4S-270 | CSD-LKO Calender (6 day + Holiday)-25 | Physical Progress [1440 h]; Electrical [360925 INR]; TATA Projects Ltd-25 | 360,925 |
|  | 2 | **2nd Fix** |  | 2028-02-05 | 2028-06-29 |  |  |  |  |
| 4S-WMI-6th100 |  | Cable tray laying | 25d | 2028-02-05 | 2028-03-06 | 4S-WMI-6th80 | CSD-LKO Calender (6 day + Holiday)-25 | Physical Progress [7190 h]; Electrical [481234 INR]; TATA Projects Ltd-25 | 481,234 |
| 4S-WMI-6th150 |  | Cabling & Wire Pulling | 35d | 2028-03-06 | 2028-04-18 | 4S-WMI-6th100 | CSD-LKO Calender (6 day + Holiday)-25 | Physical Progress [12950 h]; Electrical [2406168 INR]; TATA Projects Ltd-25 | 2,406,168 |
| 4S-WMI-6th190 |  | DB fixing and connecting | 20d | 2028-04-18 | 2028-05-13 | 4S-WMI-6th150 | CSD-LKO Calender (6 day + Holiday)-25 | Physical Progress [4320 h]; Electrical [360925 INR]; TATA Projects Ltd-25 | 360,925 |
| 4S-WMI-6th205 |  | Floor Rising Main Installation | 20d | 2028-04-18 | 2028-05-13 | 4S-WMI-6th150 | CSD-LKO Calender (6 day + Holiday)-25 | Physical Progress [1440 h]; Electrical [1684318 INR]; TATA Projects Ltd-25 | 1,684,318 |
| 4S-WMI-6th225 |  | Floor/Distribution Panel Installation | 20d | 2028-05-13 | 2028-06-06 | 4S-WMI-6th190 | CSD-LKO Calender (6 day + Holiday)-25 | Physical Progress [1440 h]; Electrical [962467 INR]; TATA Projects Ltd-25 | 962,467 |
| 4S-WMI-6th235 |  | Equipment Earthing | 20d | 2028-06-06 | 2028-06-29 | 4S-WMI-6th225, 4S-WMI-6th205 | CSD-LKO Calender (6 day + Holiday)-25 | Physical Progress [2880 h]; Electrical [360925 INR]; TATA Projects Ltd-25 | 360,925 |
|  | 3 | **Plumbing** |  | 2027-12-23 | 2028-08-16 |  |  |  |  |
|  | 1 | **1st Fix** |  | 2027-12-23 | 2028-05-31 |  |  |  |  |
| 4S-WMI-6th35 |  | Fixing pipe supports and clamps | 35d | 2027-12-23 | 2028-02-05 | 4S-WMI-6th15, E-GFC-MEP-4S-270 | CSD-LKO Calender (6 day + Holiday)-25 | Physical Progress [2880 h]; Plumbing [386697 INR]; TATA Projects Ltd-25 | 386,697 |
| 4S-WMI-6th60 |  | Laying water supply pipes (hot & cold) | 35d | 2028-02-05 | 2028-03-18 | 4S-WMI-6th35, E-GFC-MEP-4S-270 | CSD-LKO Calender (6 day + Holiday)-25 | Physical Progress [4320 h]; Plumbing [773394 INR]; TATA Projects Ltd-25 | 773,394 |
| 4S-WMI-6th65 |  | Laying drainage pipes (soil, waste, vent) | 35d | 2028-02-05 | 2028-03-18 | 4S-WMI-6th35, E-GFC-MEP-4S-270 | CSD-LKO Calender (6 day + Holiday)-25 | Physical Progress [4320 h]; Plumbing [773394 INR]; TATA Projects Ltd-25 | 773,394 |
| 4S-WMI-6th85 |  | Installation of plumbing fixture base supports (WC frames, sink brackets) | 30d | 2028-03-18 | 2028-04-24 | 4S-WMI-6th65, E-GFC-MEP-4S-270 | CSD-LKO Calender (6 day + Holiday)-25 | Physical Progress [1730 h]; Plumbing [386697 INR]; TATA Projects Ltd-25 | 386,697 |
| 4S-WMI-6th90 |  | Pressure testing of water supply lines | 25d | 2028-04-24 | 2028-05-25 | 4S-WMI-6th60, 4S-WMI-6th65, 4S-WMI-6th85, E-GFC-MEP-4S-270 | CSD-LKO Calender (6 day + Holiday)-25 | Physical Progress [2010 h]; Plumbing [77339 INR]; TATA Projects Ltd-25 | 77,339 |
| 4S-WMI-6th95 |  | Installation of concealed parts of toilet fixtures | 30d | 2028-04-24 | 2028-05-31 | 4S-WMI-6th85, E-GFC-MEP-4S-270 | CSD-LKO Calender (6 day + Holiday)-25 | Physical Progress [2880 h]; Plumbing [386697 INR]; TATA Projects Ltd-25 | 386,697 |

| ID | WBS | Activity | Duration | Start | Finish | Predecessors | Calendar | Resources | Cost |
| --- | --- | --- | --- | --- | --- | --- | --- | --- | --- |
|  | 2 | **2nd FIx** |  | 2028-05-25 | 2028-08-16 |  |  |  |  |
| 4S-WMI-6th120 |  | Insulation of hot water pipes (if applicable) | 20d | 2028-05-25 | 2028-06-17 | 4S-WMI-6th90 | CSD-LKO Calender (6 day + Holiday)-25 | Physical Progress [1730 h]; Plumbing [386697 INR]; TATA Projects Ltd-25 | 386,697 |
| 4S-WMI-6th125 |  | Installation of vertical risers and main distribution lines | 35d | 2028-05-31 | 2028-07-11 | 4S-WMI-6th80, 4S-WMI-6th90, 4S-WMI-6th95 | CSD-LKO Calender (6 day + Holiday)-25 | Physical Progress [5750 h]; Plumbing [773394 INR]; TATA Projects Ltd-25 | 773,394 |
| 4S-WMI-6th145 |  | Testing drainage lines for leakage/blockage | 30d | 2028-06-17 | 2028-07-22 | 4S-WMI-6th85, 4S-WMI-6th120 | CSD-LKO Calender (6 day + Holiday)-25 | Physical Progress [1730 h]; Plumbing [77339 INR]; TATA Projects Ltd-25 | 77,339 |
| 4S-WMI-6th165 |  | Fixing floor traps and gully traps | 30d | 2028-07-11 | 2028-08-16 | 4S-WMI-6th125 | CSD-LKO Calender (6 day + Holiday)-25 | Physical Progress [1730 h]; Plumbing [232018 INR]; TATA Projects Ltd-25 | 232,018 |
|  | 4 | **Firefighting** |  | 2027-12-23 | 2028-07-17 |  |  |  |  |
|  | 1 | **1st Fix** |  | 2027-12-23 | 2028-04-24 |  |  |  |  |
| 4S-WMI-6th40 |  | Fixing pipe supports and hangers | 35d | 2027-12-23 | 2028-02-05 | 4S-WMI-6th15, E-GFC-MEP-4S-270 | CSD-LKO Calender (6 day + Holiday)-25 | Physical Progress [2880 h]; Firefighting [281762 INR]; TATA Projects Ltd-25 | 281,762 |
| 4S-WMI-6th110 |  | Laying branch piping | 35d | 2028-02-05 | 2028-03-18 | 4S-WMI-6th40, E-GFC-MEP-4S-270 | CSD-LKO Calender (6 day + Holiday)-25 | Physical Progress [4320 h]; Firefighting [603775 INR]; TATA Projects Ltd-25 | 603,775 |
| 4S-WMI-6th155 |  | Hydrostatic pressure testing of piping | 30d | 2028-03-18 | 2028-04-24 | 4S-WMI-6th110, E-GFC-MEP-4S-270 | CSD-LKO Calender (6 day + Holiday)-25 | Physical Progress [1730 h]; Firefighting [80503 INR]; TATA Projects Ltd-25 | 80,503 |
|  | 2 | **2nd Fix** |  | 2028-04-24 | 2028-07-17 |  |  |  |  |
| 4S-WMI-6th175 |  | Installation of vertical risers and distribution piping in shafts | 35d | 2028-04-24 | 2028-06-06 | 4S-WMI-6th80, 4S-WMI-6th155 | CSD-LKO Calender (6 day + Holiday)-25 | Physical Progress [7190 h]; Firefighting [805034 INR]; TATA Projects Ltd-25 | 805,034 |
| 4S-WMI-6th180 |  | Painting/insulation of exposed fire pipes | 30d | 2028-04-24 | 2028-05-31 | 4S-WMI-6th155 | CSD-LKO Calender (6 day + Holiday)-25 | Physical Progress [2880 h]; Firefighting [40252 INR]; TATA Projects Ltd-25 | 40,252 |
| 4S-WMI-6th200 |  | Testing risers and branch lines for leakage | 30d | 2028-05-31 | 2028-07-05 | 4S-WMI-6th180 | CSD-LKO Calender (6 day + Holiday)-25 | Physical Progress [1730 h]; Firefighting [80503 INR]; TATA Projects Ltd-25 | 80,503 |
| 4S-WMI-6th210 |  | Installation of sprinkler branch lines in ceilings | 35d | 2028-06-06 | 2028-07-17 | 4S-WMI-6th175 | CSD-LKO Calender (6 day + Holiday)-25 | Physical Progress [7190 h]; Firefighting [603775 INR]; TATA Projects Ltd-25 | 603,775 |
|  | 5 | **ELV** |  | 2027-11-18 | 2028-08-29 |  |  |  |  |
|  | 1 | **1st Fix** |  | 2027-11-18 | 2028-01-18 |  |  |  |  |
| 4S-WMI-6th20 |  | Slab Conduiting | 35d | 2027-11-18 | 2027-12-30 | 4S-WMI-6th10, E-GFC-MEP-4S-270 | CSD-LKO Calender (6 day + Holiday)-25 | Physical Progress [7190 h]; ELV [226108 INR]; TATA Projects Ltd-25 | 226,108 |
| 4S-WMI-6th45 |  | Wall Conduiting | 15d | 2027-12-23 | 2028-01-12 | 4S-WMI-6th15, E-GFC-MEP-4S-270 | CSD-LKO Calender (6 day + Holiday)-25 | Physical Progress [2880 h]; ELV [96904 INR]; TATA Projects Ltd-25 | 96,904 |
| 4S-WMI-6th75 |  | Installing back boxes for switches, sockets | 5d | 2028-01-12 | 2028-01-18 | 4S-WMI-6th45, 4S-WMI-6th20, E-GFC-MEP-4S-270 | CSD-LKO Calender (6 day + Holiday)-25 | Physical Progress [1440 h]; ELV [161506 INR]; TATA Projects Ltd-25 | 161,506 |
|  | 2 | **2nd Fix** |  | 2028-02-05 | 2028-08-29 |  |  |  |  |
| 4S-WMI-6th115 |  | Cable tray installation | 35d | 2028-02-05 | 2028-03-18 | 4S-WMI-6th80 | CSD-LKO Calender (6 day + Holiday)-25 | Physical Progress [7190 h]; ELV [161506 INR]; TATA Projects Ltd-25 | 161,506 |
| 4S-WMI-6th160 |  | Cabeling of ELV cable - IT/Fire Alarm/Public Address | 45d | 2028-03-18 | 2028-05-13 | 4S-WMI-6th115 | CSD-LKO Calender (6 day + Holiday)-25 | Physical Progress [12950 h]; ELV [387614 INR]; TATA Projects Ltd-25 | 387,614 |
| 4S-WMI-6th185 |  | ELV Rack Installation | 30d | 2028-05-13 | 2028-06-17 | 4S-WMI-6th160 | CSD-LKO Calender (6 day + Holiday)-25 | Physical Progress [2880 h]; ELV [161506 INR]; TATA Projects Ltd-25 | 161,506 |
| 4S-WMI-6th215 |  | Termination of cables at junction boxes, patch panels, and control panels | 35d | 2028-06-17 | 2028-07-28 | 4S-WMI-6th185 | CSD-LKO Calender (6 day + Holiday)-25 | Physical Progress [8630 h]; ELV [161506 INR]; TATA Projects Ltd-25 | 161,506 |
| 4S-WMI-6th230 |  | Fixing devices like CCTV camera bases, card reader bases, smoke detector bases, PA Bases, Wifi Bases | 25d | 2028-07-28 | 2028-08-29 | 4S-WMI-6th215 | CSD-LKO Calender (6 day + Holiday)-25 | Physical Progress [1150 h]; ELV [323012 INR]; TATA Projects Ltd-25 | 323,012 |

| ID | WBS | Activity | Duration | Start | Finish | Predecessors | Calendar | Resources | Cost |
| --- | --- | --- | --- | --- | --- | --- | --- | --- | --- |
|  | 3 | **Front Face - Toward Airport** |  | 2028-10-13 | 2029-04-14 |  |  |  |  |
|  | 2 | **Dry Finishes/ID Works** |  | 2028-10-13 | 2029-04-14 |  |  |  |  |
| 4S-WMI-6th245 |  | Running of Wild Air | 1d | 2028-10-13 | 2028-10-13 | 4S-F-6th40, 4S-WMI-6th140, 4S-WMI-6th170, 4S-WMI-6th195, 4S-WMI-6th220, 4S-WMI-6th240 | CSD-LKO Calender (6 day + Holiday)-25 | Physical Progress [290 h]; TATA Projects Ltd-25 |  |
| 4S-WMI-6th270 |  | Wall finish ID Works | 25d | 2028-10-14 | 2028-11-13 | 4S-WMI-6th245, 4S-WMI-6th140, 4S-WMI-6th170, 4S-WMI-6th195, 4S-WMI-6th220, 4S-WMI-6th240, 4S-WMI-6th100, 4S-WMI-6th150, 4S-WMI-6th190, 4S-WMI-6th205, 4S-WMI-6th225, 4S-WMI-6th235, 4S-WMI-6th120, 4S-WMI-6th125, 4S-WMI-6th145, 4S-WMI-6th165, 4S-WMI-6th175, 4S-WMI-6th180, 4S-WMI-6th200, 4S-WMI-6th210, 4S-WMI-6th115, 4S-WMI-6th160, 4S-WMI-6th185, 4S-WMI-6th215, 4S-WMI-6th230 | CSD-LKO Calender (6 day + Holiday)-25 | ID Work [2845286 INR]; Physical Progress [2880 h]; TATA Projects Ltd-25 | 2,845,286 |
| 4S-WMI-6th285 |  | False Ceiling Installation | 25d | 2028-11-14 | 2028-12-12 | 4S-WMI-6th270 | CSD-LKO Calender (6 day + Holiday)-25 | ID Work [3414343 INR]; Physical Progress [5750 h]; TATA Projects Ltd-25 | 3,414,343 |
| 4S-WMI-6th315 |  | Flooring of toilets/kitchen/Balcony | 10d | 2028-12-13 | 2028-12-23 | 4S-WMI-6th55, 4S-WMI-6th285 | CSD-LKO Calender (6 day + Holiday)-25 | ID Work [2276229 INR]; Physical Progress [2880 h]; TATA Projects Ltd-25 | 2,276,229 |
| 4S-WMI-6th340 |  | Doors & Windows/Fire Doors/Shaft Doors | 15d | 2028-12-26 | 2029-01-12 | 4S-WMI-6th270, 4S-WMI-6th315 | CSD-LKO Calender (6 day + Holiday)-25 | ID Work [2845286 INR]; Physical Progress [2880 h]; TATA Projects Ltd-25 | 2,845,286 |
| 4S-WMI-6th345 |  | Putty & First Coat of Paint | 10d | 2028-12-26 | 2029-01-06 | 4S-WMI-6th270, 4S-WMI-6th315 | CSD-LKO Calender (6 day + Holiday)-25 | Painting [869 Sq m]; Painter [870 h]; Helper [870 h]; Physical Progress [2880 h]; TATA Projects Ltd-25 | 198,670.78 |
| 4S-WMI-6th430 |  | Wooden Flooring/Flooring | 20d | 2029-01-13 | 2029-02-06 | 4S-WMI-6th345, 4S-WMI-6th340 | CSD-LKO Calender (6 day + Holiday)-25 | ID Work [2845286 INR]; Physical Progress [5750 h]; TATA Projects Ltd-25 | 2,845,286 |
| 4S-WMI-6th550 |  | Fixed Furniture | 8d | 2029-02-07 | 2029-02-16 | 4S-WMI-6th430 | CSD-LKO Calender (6 day + Holiday)-25 | ID Work [2560757 INR]; Physical Progress [2300 h]; TATA Projects Ltd-25 | 2,560,757 |
| 4S-WMI-6th670 |  | False ceiling final finishes | 10d | 2029-02-26 | 2029-03-09 | 4S-WMI-6th455 | CSD-LKO Calender (6 day + Holiday)-25 | ID Work [853586 INR]; Physical Progress [2880 h]; TATA Projects Ltd-25 | 853,586 |
| 4S-WMI-6th685 |  | Final coat of paint | 10d | 2029-03-16 | 2029-03-27 | 4S-WMI-6th670, 4S-WMI-6th550, 4S-WMI-6th565, 4S-WMI-6th525, 4S-WMI-6th530, 4S-WMI-6th620, 4S-WMI-6th665, 4S-WMI-6th640, 4S-WMI-6th635, 4S-WMI-6th630, 4S-WMI-6th540, 4S-WMI-6th535, 4S-WMI-6th340, 4S-WMI-6th420 | CSD-LKO Calender (6 day + Holiday)-25 | Painting [869 Sq m]; Painter [870 h]; Helper [870 h]; Physical Progress [2880 h]; TATA Projects Ltd-25 | 198,670.78 |
| 4S-WMI-6th710 |  | Soft Furnishing & Signage | 15d | 2029-03-28 | 2029-04-14 | 4S-WMI-6th685 | CSD-LKO Calender (6 day + Holiday)-25 | ID Work [4267929 INR]; Physical Progress [860 h]; TATA Projects Ltd-25 | 4,267,929 |
| 4S-WMI-6th715 |  | Loose Furniture | 15d | 2029-03-28 | 2029-04-14 | 4S-WMI-6th685 | CSD-LKO Calender (6 day + Holiday)-25 | ID Work [5690571 INR]; Physical Progress [860 h]; TATA Projects Ltd-25 | 5,690,571 |
|  | 1 | **MEP Final Fix** |  | 2028-12-13 | 2029-03-15 |  |  |  |  |
|  | 3 | **HVAC** |  | 2028-12-13 | 2029-02-24 |  |  |  |  |
| 4S-WMI-6th310 |  | Installing grills, diffusers, dampers | 30d | 2028-12-13 | 2029-01-18 | 4S-WMI-6th285 | CSD-LKO Calender (6 day + Holiday)-25 | Physical Progress [1730 h]; HVAC [358248 INR]; TATA Projects Ltd-25 | 358,248 |
| 4S-WMI-6th455 |  | Installation of thermostats and control panels | 30d | 2029-01-19 | 2029-02-24 | 4S-WMI-6th310, 4S-WMI-6th345, 4S-WMI-6th240 | CSD-LKO Calender (6 day + Holiday)-25 | Physical Progress [1730 h]; HVAC [179124 INR]; TATA Projects Ltd-25 | 179,124 |
|  | 1 | **Electrical** |  | 2029-01-08 | 2029-03-09 |  |  |  |  |
| 4S-WMI-6th410 |  | Switches & Socket | 25d | 2029-01-08 | 2029-02-06 | 4S-WMI-6th345 | CSD-LKO Calender (6 day + Holiday)-25 | Physical Progress [5750 h]; Electrical [401028 INR]; TATA Projects Ltd-25 | 401,028 |
| 4S-WMI-6th565 |  | Light Fixtures | 25d | 2029-02-07 | 2029-03-09 | 4S-WMI-6th410, 4S-WMI-6th235 | CSD-LKO Calender (6 day + Holiday)-25 | Physical Progress [4320 h]; Electrical [601542 INR]; TATA Projects Ltd-25 | 601,542 |
|  | 2 | **Plumbing** |  | 2029-01-08 | 2029-03-03 |  |  |  |  |
| 4S-WMI-6th415 |  | Installation of sanitary fixtures (WC, washbasins, urinals, sinks) | 10d | 2029-01-08 | 2029-01-18 | 4S-WMI-6th345, 4S-WMI-6th145, 4S-WMI-6th165 | CSD-LKO Calender (6 day + Holiday)-25 | Physical Progress [2880 h]; Plumbing [515596 INR]; TATA Projects Ltd-25 | 515,596 |
| 4S-WMI-6th460 |  | Installation of CP fittings (taps, mixers, showers, health faucets) | 10d | 2029-01-19 | 2029-01-31 | 4S-WMI-6th415, 4S-WMI-6th345 | CSD-LKO Calender (6 day + Holiday)-25 | Physical Progress [2880 h]; Plumbing [257798 INR]; TATA Projects Ltd-25 | 257,798 |
| 4S-WMI-6th525 |  | Connection of appliances | 25d | 2029-02-01 | 2029-03-03 | 4S-WMI-6th460 | CSD-LKO Calender (6 day + Holiday)-25 | Physical Progress [2010 h]; Plumbing [128899 INR]; TATA Projects Ltd-25 | 128,899 |

| ID | WBS | Activity | Duration | Start | Finish | Predecessors | Calendar | Resources | Cost |
| --- | --- | --- | --- | --- | --- | --- | --- | --- | --- |
|  | 4 | **Firefighting** |  | 2029-01-08 | 2029-03-15 |  |  |  |  |
| 4S-WMI-6th420 |  | Installation of hydrant accessories (valves, hose reels, cabinets) | 25d | 2029-01-08 | 2029-02-06 | 4S-WMI-6th345 | CSD-LKO Calender (6 day + Holiday)-25 | Physical Progress [2880 h]; Firefighting [134172 INR]; TATA Projects Ltd-25 | 134,172 |
| 4S-WMI-6th425 |  | Installation of portable fire extinguishers | 30d | 2029-01-08 | 2029-02-12 | 4S-WMI-6th345 | CSD-LKO Calender (6 day + Holiday)-25 | Physical Progress [1730 h]; Firefighting [13417 INR]; TATA Projects Ltd-25 | 13,417 |
| 4S-WMI-6th530 |  | Installation of sprinkler heads, nozzles, and final alignment | 30d | 2029-02-07 | 2029-03-15 | 4S-WMI-6th345, 4S-WMI-6th430, 4S-WMI-6th200, 4S-WMI-6th210 | CSD-LKO Calender (6 day + Holiday)-25 | Physical Progress [12950 h]; Firefighting [201258 INR]; TATA Projects Ltd-25 | 201,258 |
| 4S-WMI-6th620 |  | Integration with fire alarm system | 20d | 2029-02-13 | 2029-03-09 | 4S-WMI-6th425 | CSD-LKO Calender (6 day + Holiday)-25 | Physical Progress [5750 h]; Firefighting [67086 INR]; TATA Projects Ltd-25 | 67,086 |
|  | 5 | **ELV** |  | 2029-02-07 | 2029-03-15 |  |  |  |  |
| 4S-WMI-6th535 |  | Installation of data and Voice Faceplate | 25d | 2029-02-07 | 2029-03-09 | 4S-WMI-6th345, 4S-WMI-6th430, 4S-WMI-6th230 | CSD-LKO Calender (6 day + Holiday)-25 | Physical Progress [2880 h]; ELV [53835 INR]; TATA Projects Ltd-25 | 53,835 |
| 4S-WMI-6th540 |  | Installation of Camera & Wifi | 30d | 2029-02-07 | 2029-03-15 | 4S-WMI-6th345, 4S-WMI-6th430 | CSD-LKO Calender (6 day + Holiday)-25 | Physical Progress [2880 h]; ELV [53835 INR]; TATA Projects Ltd-25 | 53,835 |
| 4S-WMI-6th545 |  | Installation of fire alarm devices + Public Address | 10d | 2029-02-07 | 2029-02-19 | 4S-WMI-6th345, 4S-WMI-6th430 | CSD-LKO Calender (6 day + Holiday)-25 | Physical Progress [2880 h]; ELV [64602 INR]; TATA Projects Ltd-25 | 64,602 |
| 4S-WMI-6th625 |  | Installation of Active System | 10d | 2029-02-20 | 2029-03-03 | 4S-WMI-6th545 | CSD-LKO Calender (6 day + Holiday)-25 | Physical Progress [4320 h]; ELV [107671 INR]; TATA Projects Ltd-25 | 107,671 |
| 4S-WMI-6th630 |  | Fire Panel Intallation & Integration | 20d | 2029-02-20 | 2029-03-15 | 4S-WMI-6th545 | CSD-LKO Calender (6 day + Holiday)-25 | Physical Progress [7190 h]; ELV [53835 INR]; TATA Projects Ltd-25 | 53,835 |
| 4S-WMI-6th635 |  | Installation & Integration of Audio Visual System | 20d | 2029-02-20 | 2029-03-15 | 4S-WMI-6th545 | CSD-LKO Calender (6 day + Holiday)-25 | Physical Progress [7190 h]; ELV [53835 INR]; TATA Projects Ltd-25 | 53,835 |
| 4S-WMI-6th640 |  | Installation & Integration of Access Control | 20d | 2029-02-20 | 2029-03-15 | 4S-WMI-6th545 | CSD-LKO Calender (6 day + Holiday)-25 | Physical Progress [7190 h]; ELV [53835 INR]; TATA Projects Ltd-25 | 53,835 |
| 4S-WMI-6th665 |  | Integration of Active components | 10d | 2029-03-05 | 2029-03-15 | 4S-WMI-6th625 | CSD-LKO Calender (6 day + Holiday)-25 | Physical Progress [4320 h]; ELV [21534 INR]; TATA Projects Ltd-25 | 21,534 |
|  | 2 | **Back Face - Toward CC** |  | 2028-10-20 | 2029-04-14 |  |  |  |  |
|  | 2 | **Dry Finishes/ID Works** |  | 2028-10-20 | 2029-04-14 |  |  |  |  |
| 4S-WMI-6th250 |  | Running of Wild Air | 1d | 2028-10-20 | 2028-10-20 | 4S-F-6th45, 4S-WMI-6th140, 4S-WMI-6th170, 4S-WMI-6th195, 4S-WMI-6th220, 4S-WMI-6th240 | CSD-LKO Calender (6 day + Holiday)-25 | Physical Progress [290 h]; TATA Projects Ltd-25 |  |
| 4S-WMI-6th260 |  | Wall finish ID Works | 25d | 2028-10-21 | 2028-11-18 | 4S-WMI-6th250 | CSD-LKO Calender (6 day + Holiday)-25 | ID Work [2845286 INR]; Physical Progress [2880 h]; TATA Projects Ltd-25 | 2,845,286 |
| 4S-WMI-6th275 |  | False Ceiling Installation | 25d | 2028-11-20 | 2028-12-18 | 4S-WMI-6th260 | CSD-LKO Calender (6 day + Holiday)-25 | ID Work [3414343 INR]; Physical Progress [5750 h]; TATA Projects Ltd-25 | 3,414,343 |
| 4S-WMI-6th295 |  | Flooring of toilets/kitchen/Balcony | 10d | 2028-12-19 | 2028-12-30 | 4S-WMI-6th275, 4S-WMI-6th55 | CSD-LKO Calender (6 day + Holiday)-25 | ID Work [2276229 INR]; Physical Progress [2880 h]; TATA Projects Ltd-25 | 2,276,229 |
| 4S-WMI-6th320 |  | Doors & Windows/Fire Doors/Shaft Doors | 35d | 2029-01-02 | 2029-02-12 | 4S-WMI-6th260, 4S-WMI-6th295 | CSD-LKO Calender (6 day + Holiday)-25 | ID Work [2845286 INR]; Physical Progress [2880 h]; TATA Projects Ltd-25 | 2,845,286 |
| 4S-WMI-6th325 |  | Putty & First Coat of Paint | 10d | 2029-01-02 | 2029-01-12 | 4S-WMI-6th260, 4S-WMI-6th295 | CSD-LKO Calender (6 day + Holiday)-25 | Painting [869 Sq m]; Painter [870 h]; Helper [870 h]; Physical Progress [2880 h]; TATA Projects Ltd-25 | 198,670.78 |
| 4S-WMI-6th370 |  | Wooden Flooring/Flooring | 20d | 2029-01-13 | 2029-02-06 | 4S-WMI-6th325 | CSD-LKO Calender (6 day + Holiday)-25 | ID Work [2845286 INR]; Physical Progress [5750 h]; TATA Projects Ltd-25 | 2,845,286 |
| 4S-WMI-6th375 |  | Railing for staircase | 35d | 2029-01-13 | 2029-02-24 | 4S-WMI-6th260, 4S-WMI-6th325 | CSD-LKO Calender (6 day + Holiday)-25 | ID Work [1280379 INR]; Physical Progress [4320 h]; TATA Projects Ltd-25 | 1,280,379 |
| 4S-WMI-6th490 |  | Fixed Furniture | 8d | 2029-02-07 | 2029-02-16 | 4S-WMI-6th370 | CSD-LKO Calender (6 day + Holiday)-25 | ID Work [2560757 INR]; Physical Progress [2300 h]; TATA Projects Ltd-25 | 2,560,757 |
| 4S-WMI-6th650 |  | False ceiling final finishes | 10d | 2029-03-05 | 2029-03-15 | 4S-WMI-6th435 | CSD-LKO Calender (6 day + Holiday)-25 | ID Work [853586 INR]; Physical Progress [2880 h]; TATA Projects Ltd-25 | 853,586 |
| 4S-WMI-6th675 |  | Final coat of paint | 10d | 2029-03-16 | 2029-03-27 | 4S-WMI-6th650, 4S-WMI-6th375, 4S-WMI-6th490, 4S-WMI-6th555, 4S-WMI-6th465, 4S-WMI-6th470, 4S-WMI-6th570, 4S-WMI-6th645, 4S-WMI-6th590, 4S-WMI-6th585, 4S-WMI-6th580, 4S-WMI-6th480, 4S-WMI-6th475, 4S-WMI-6th320, 4S-WMI-6th360 | CSD-LKO Calender (6 day + Holiday)-25 | Painting [869 Sq m]; Painter [870 h]; Helper [870 h]; Physical Progress [2880 h]; TATA Projects Ltd-25 | 198,670.78 |
| 4S-WMI-6th690 |  | Soft Furnishing & Signage | 15d | 2029-03-28 | 2029-04-14 | 4S-WMI-6th675 | CSD-LKO Calender (6 day + Holiday)-25 | ID Work [4267929 INR]; Physical Progress [860 h]; TATA Projects Ltd-25 | 4,267,929 |
| 4S-WMI-6th695 |  | Loose Furniture | 15d | 2029-03-28 | 2029-04-14 | 4S-WMI-6th675 | CSD-LKO Calender (6 day + Holiday)-25 | ID Work [5690571 INR]; Physical Progress [860 h]; TATA Projects Ltd-25 | 5,690,571 |

| ID | WBS | Activity | Duration | Start | Finish | Predecessors | Calendar | Resources | Cost |
| --- | --- | --- | --- | --- | --- | --- | --- | --- | --- |
|  | 1 | **MEP Final Fix** |  | 2028-12-19 | 2029-03-15 |  |  |  |  |
|  | 3 | **HVAC** |  | 2028-12-19 | 2029-03-03 |  |  |  |  |
| 4S-WMI-6th290 |  | Installing grills, diffusers, dampers | 30d | 2028-12-19 | 2029-01-24 | 4S-WMI-6th275 | CSD-LKO Calender (6 day + Holiday)-25 | Physical Progress [1730 h]; HVAC [358248 INR]; TATA Projects Ltd-25 | 358,248 |
| 4S-WMI-6th435 |  | Installation of thermostats and control panels | 30d | 2029-01-25 | 2029-03-03 | 4S-WMI-6th290, 4S-WMI-6th325 | CSD-LKO Calender (6 day + Holiday)-25 | Physical Progress [1730 h]; HVAC [179124 INR]; TATA Projects Ltd-25 | 179,124 |
|  | 1 | **Electrical** |  | 2029-01-13 | 2029-03-15 |  |  |  |  |
| 4S-WMI-6th350 |  | Switches & Socket | 25d | 2029-01-13 | 2029-02-12 | 4S-WMI-6th325 | CSD-LKO Calender (6 day + Holiday)-25 | Physical Progress [5750 h]; Electrical [401028 INR]; TATA Projects Ltd-25 | 401,028 |
| 4S-WMI-6th555 |  | Light Fixtures | 25d | 2029-02-13 | 2029-03-15 | 4S-WMI-6th350 | CSD-LKO Calender (6 day + Holiday)-25 | Physical Progress [4320 h]; Electrical [601542 INR]; TATA Projects Ltd-25 | 601,542 |
|  | 2 | **Plumbing** |  | 2029-01-13 | 2029-03-09 |  |  |  |  |
| 4S-WMI-6th355 |  | Installation of sanitary fixtures (WC, washbasins, urinals, sinks) | 10d | 2029-01-13 | 2029-01-24 | 4S-WMI-6th325 | CSD-LKO Calender (6 day + Holiday)-25 | Physical Progress [2880 h]; Plumbing [515596 INR]; TATA Projects Ltd-25 | 515,596 |
| 4S-WMI-6th440 |  | Installation of CP fittings (taps, mixers, showers, health faucets) | 10d | 2029-01-25 | 2029-02-06 | 4S-WMI-6th355, 4S-WMI-6th325 | CSD-LKO Calender (6 day + Holiday)-25 | Physical Progress [2880 h]; Plumbing [257798 INR]; TATA Projects Ltd-25 | 257,798 |
| 4S-WMI-6th465 |  | Connection of appliances | 25d | 2029-02-07 | 2029-03-09 | 4S-WMI-6th440 | CSD-LKO Calender (6 day + Holiday)-25 | Physical Progress [2010 h]; Plumbing [128899 INR]; TATA Projects Ltd-25 | 128,899 |
|  | 4 | **Firefighting** |  | 2029-01-13 | 2029-03-15 |  |  |  |  |
| 4S-WMI-6th360 |  | Installation of hydrant accessories (valves, hose reels, cabinets) | 25d | 2029-01-13 | 2029-02-12 | 4S-WMI-6th325 | CSD-LKO Calender (6 day + Holiday)-25 | Physical Progress [2880 h]; Firefighting [134172 INR]; TATA Projects Ltd-25 | 134,172 |
| 4S-WMI-6th365 |  | Installation of portable fire extinguishers | 30d | 2029-01-13 | 2029-02-19 | 4S-WMI-6th325 | CSD-LKO Calender (6 day + Holiday)-25 | Physical Progress [1730 h]; Firefighting [13417 INR]; TATA Projects Ltd-25 | 13,417 |
| 4S-WMI-6th470 |  | Installation of sprinkler heads, nozzles, and final alignment | 30d | 2029-02-07 | 2029-03-15 | 4S-WMI-6th325, 4S-WMI-6th370 | CSD-LKO Calender (6 day + Holiday)-25 | Physical Progress [12950 h]; Firefighting [201258 INR]; TATA Projects Ltd-25 | 201,258 |
| 4S-WMI-6th570 |  | Integration with fire alarm system | 20d | 2029-02-20 | 2029-03-15 | 4S-WMI-6th365 | CSD-LKO Calender (6 day + Holiday)-25 | Physical Progress [5750 h]; Firefighting [67086 INR]; TATA Projects Ltd-25 | 67,086 |
|  | 5 | **ELV** |  | 2029-02-07 | 2029-03-15 |  |  |  |  |
| 4S-WMI-6th475 |  | Installation of data and Voice Faceplate | 25d | 2029-02-07 | 2029-03-09 | 4S-WMI-6th325, 4S-WMI-6th370 | CSD-LKO Calender (6 day + Holiday)-25 | Physical Progress [2880 h]; ELV [53835 INR]; TATA Projects Ltd-25 | 53,835 |
| 4S-WMI-6th480 |  | Installation of Camera & Wifi | 30d | 2029-02-07 | 2029-03-15 | 4S-WMI-6th325, 4S-WMI-6th370 | CSD-LKO Calender (6 day + Holiday)-25 | Physical Progress [2880 h]; ELV [53835 INR]; TATA Projects Ltd-25 | 53,835 |
| 4S-WMI-6th485 |  | Installation of fire alarm devices + Public Address | 10d | 2029-02-07 | 2029-02-19 | 4S-WMI-6th325, 4S-WMI-6th370 | CSD-LKO Calender (6 day + Holiday)-25 | Physical Progress [2880 h]; ELV [64602 INR]; TATA Projects Ltd-25 | 64,602 |
| 4S-WMI-6th575 |  | Installation of Active System | 10d | 2029-02-20 | 2029-03-03 | 4S-WMI-6th485 | CSD-LKO Calender (6 day + Holiday)-25 | Physical Progress [4320 h]; ELV [107671 INR]; TATA Projects Ltd-25 | 107,671 |
| 4S-WMI-6th580 |  | Fire Panel Intallation & Integration | 20d | 2029-02-20 | 2029-03-15 | 4S-WMI-6th485 | CSD-LKO Calender (6 day + Holiday)-25 | Physical Progress [7190 h]; ELV [53835 INR]; TATA Projects Ltd-25 | 53,835 |
| 4S-WMI-6th585 |  | Installation & Integration of Audio Visual System | 20d | 2029-02-20 | 2029-03-15 | 4S-WMI-6th485 | CSD-LKO Calender (6 day + Holiday)-25 | Physical Progress [7190 h]; ELV [53835 INR]; TATA Projects Ltd-25 | 53,835 |
| 4S-WMI-6th590 |  | Installation & Integration of Access Control | 20d | 2029-02-20 | 2029-03-15 | 4S-WMI-6th485 | CSD-LKO Calender (6 day + Holiday)-25 | Physical Progress [7190 h]; ELV [53835 INR]; TATA Projects Ltd-25 | 53,835 |
| 4S-WMI-6th645 |  | Integration of Active components | 10d | 2029-03-05 | 2029-03-15 | 4S-WMI-6th575 | CSD-LKO Calender (6 day + Holiday)-25 | Physical Progress [4320 h]; ELV [21534 INR]; TATA Projects Ltd-25 | 21,534 |

| ID | WBS | Activity | Duration | Start | Finish | Predecessors | Calendar | Resources | Cost |
| --- | --- | --- | --- | --- | --- | --- | --- | --- | --- |
|  | 4 | **Side Face** |  | 2028-10-26 | 2029-04-20 |  |  |  |  |
|  | 2 | **Dry Finishes/ID Works** |  | 2028-10-26 | 2029-04-20 |  |  |  |  |
| 4S-WMI-6th255 |  | Running of Wild Air | 1d | 2028-10-26 | 2028-10-26 | 4S-F-6th50, 4S-WMI-6th140, 4S-WMI-6th170, 4S-WMI-6th195, 4S-WMI-6th220, 4S-WMI-6th240 | CSD-LKO Calender (6 day + Holiday)-25 | Physical Progress [290 h]; TATA Projects Ltd-25 |  |
| 4S-WMI-6th265 |  | Wall finish ID Works | 25d | 2028-10-27 | 2028-11-24 | 4S-WMI-6th255 | CSD-LKO Calender (6 day + Holiday)-25 | ID Work [2845286 INR]; Physical Progress [2880 h]; TATA Projects Ltd-25 | 2,845,286 |
| 4S-WMI-6th280 |  | False Ceiling Installation | 25d | 2028-11-25 | 2028-12-23 | 4S-WMI-6th265 | CSD-LKO Calender (6 day + Holiday)-25 | ID Work [3414343 INR]; Physical Progress [5750 h]; TATA Projects Ltd-25 | 3,414,343 |
| 4S-WMI-6th305 |  | Flooring of toilets/kitchen/Balcony | 10d | 2028-12-26 | 2029-01-06 | 4S-WMI-6th280, 4S-WMI-6th55 | CSD-LKO Calender (6 day + Holiday)-25 | ID Work [2276229 INR]; Physical Progress [2880 h]; TATA Projects Ltd-25 | 2,276,229 |
| 4S-WMI-6th330 |  | Doors & Windows/Fire Doors/Shaft Doors | 10d | 2029-01-08 | 2029-01-18 | 4S-WMI-6th265, 4S-WMI-6th305 | CSD-LKO Calender (6 day + Holiday)-25 | ID Work [2845286 INR]; Physical Progress [2880 h]; TATA Projects Ltd-25 | 2,845,286 |
| 4S-WMI-6th335 |  | Putty & First Coat of Paint | 10d | 2029-01-08 | 2029-01-18 | 4S-WMI-6th265, 4S-WMI-6th305 | CSD-LKO Calender (6 day + Holiday)-25 | Painting [869 Sq m]; Painter [870 h]; Helper [870 h]; Physical Progress [2880 h]; TATA Projects Ltd-25 | 198,670.78 |
| 4S-WMI-6th400 |  | Wooden Flooring/Flooring | 20d | 2029-01-19 | 2029-02-12 | 4S-WMI-6th335, 4S-WMI-6th330 | CSD-LKO Calender (6 day + Holiday)-25 | ID Work [2845286 INR]; Physical Progress [5750 h]; TATA Projects Ltd-25 | 2,845,286 |
| 4S-WMI-6th405 |  | Railing for staircase | 35d | 2029-01-19 | 2029-03-03 | 4S-WMI-6th265, 4S-WMI-6th335 | CSD-LKO Calender (6 day + Holiday)-25 | ID Work [1280379 INR]; Physical Progress [4320 h]; TATA Projects Ltd-25 | 1,280,379 |
| 4S-WMI-6th520 |  | Fixed Furniture | 8d | 2029-02-13 | 2029-02-22 | 4S-WMI-6th400 | CSD-LKO Calender (6 day + Holiday)-25 | ID Work [2560757 INR]; Physical Progress [2300 h]; TATA Projects Ltd-25 | 2,560,757 |
| 4S-WMI-6th660 |  | False ceiling final finishes | 10d | 2029-03-10 | 2029-03-21 | 4S-WMI-6th445 | CSD-LKO Calender (6 day + Holiday)-25 | ID Work [853586 INR]; Physical Progress [2880 h]; TATA Projects Ltd-25 | 853,586 |
| 4S-WMI-6th680 |  | Final coat of paint | 10d | 2029-03-22 | 2029-04-03 | 4S-WMI-6th660, 4S-WMI-6th405, 4S-WMI-6th520, 4S-WMI-6th560, 4S-WMI-6th495, 4S-WMI-6th500, 4S-WMI-6th595, 4S-WMI-6th655, 4S-WMI-6th615, 4S-WMI-6th610, 4S-WMI-6th605, 4S-WMI-6th510, 4S-WMI-6th505, 4S-WMI-6th330 | CSD-LKO Calender (6 day + Holiday)-25 | Painting [869 Sq m]; Painter [870 h]; Helper [870 h]; Physical Progress [2880 h]; TATA Projects Ltd-25 | 198,670.78 |
| 4S-WMI-6th700 |  | Soft Furnishing & Signage | 15d | 2029-04-04 | 2029-04-20 | 4S-WMI-6th680 | CSD-LKO Calender (6 day + Holiday)-25 | ID Work [4267929 INR]; Physical Progress [860 h]; TATA Projects Ltd-25 | 4,267,929 |
| 4S-WMI-6th705 |  | Loose Furniture | 15d | 2029-04-04 | 2029-04-20 | 4S-WMI-6th680 | CSD-LKO Calender (6 day + Holiday)-25 | ID Work [5690571 INR]; Physical Progress [860 h]; TATA Projects Ltd-25 | 5,690,571 |
|  | 1 | **MEP Final Fix** |  | 2028-12-26 | 2029-03-21 |  |  |  |  |
|  | 3 | **HVAC** |  | 2028-12-26 | 2029-03-09 |  |  |  |  |
| 4S-WMI-6th300 |  | Installing grills, diffusers, dampers | 30d | 2028-12-26 | 2029-01-31 | 4S-WMI-6th280 | CSD-LKO Calender (6 day + Holiday)-25 | Physical Progress [1730 h]; HVAC [358248 INR]; TATA Projects Ltd-25 | 358,248 |
| 4S-WMI-6th445 |  | Installation of thermostats and control panels | 30d | 2029-02-01 | 2029-03-09 | 4S-WMI-6th300, 4S-WMI-6th335 | CSD-LKO Calender (6 day + Holiday)-25 | Physical Progress [1730 h]; HVAC [179124 INR]; TATA Projects Ltd-25 | 179,124 |
|  | 1 | **Electrical** |  | 2029-01-19 | 2029-03-21 |  |  |  |  |
| 4S-WMI-6th380 |  | Switches & Socket | 25d | 2029-01-19 | 2029-02-19 | 4S-WMI-6th335 | CSD-LKO Calender (6 day + Holiday)-25 | Physical Progress [5750 h]; Electrical [401028 INR]; TATA Projects Ltd-25 | 401,028 |
| 4S-WMI-6th560 |  | Light Fixtures | 25d | 2029-02-20 | 2029-03-21 | 4S-WMI-6th380 | CSD-LKO Calender (6 day + Holiday)-25 | Physical Progress [4320 h]; Electrical [601542 INR]; TATA Projects Ltd-25 | 601,542 |
|  | 2 | **Plumbing** |  | 2029-01-19 | 2029-03-15 |  |  |  |  |
| 4S-WMI-6th385 |  | Installation of sanitary fixtures (WC, washbasins, urinals, sinks) | 10d | 2029-01-19 | 2029-01-31 | 4S-WMI-6th335 | CSD-LKO Calender (6 day + Holiday)-25 | Physical Progress [2880 h]; Plumbing [515596 INR]; TATA Projects Ltd-25 | 515,596 |
| 4S-WMI-6th450 |  | Installation of CP fittings (taps, mixers, showers, health faucets) | 10d | 2029-02-01 | 2029-02-12 | 4S-WMI-6th385, 4S-WMI-6th335 | CSD-LKO Calender (6 day + Holiday)-25 | Physical Progress [2880 h]; Plumbing [257798 INR]; TATA Projects Ltd-25 | 257,798 |
| 4S-WMI-6th495 |  | Connection of appliances | 25d | 2029-02-13 | 2029-03-15 | 4S-WMI-6th450 | CSD-LKO Calender (6 day + Holiday)-25 | Physical Progress [2010 h]; Plumbing [128899 INR]; TATA Projects Ltd-25 | 128,899 |

| ID | WBS | Activity | Duration | Start | Finish | Predecessors | Calendar | Resources | Cost |
| --- | --- | --- | --- | --- | --- | --- | --- | --- | --- |
|  | 4 | **Firefighting** |  | 2029-01-19 | 2029-03-21 |  |  |  |  |
| 4S-WMI-6th390 |  | Installation of hydrant accessories (valves, hose reels, cabinets) | 25d | 2029-01-19 | 2029-02-19 | 4S-WMI-6th335 | CSD-LKO Calender (6 day + Holiday)-25 | Physical Progress [2880 h]; Firefighting [134172 INR]; TATA Projects Ltd-25 | 134,172 |
| 4S-WMI-6th395 |  | Installation of portable fire extinguishers | 30d | 2029-01-19 | 2029-02-24 | 4S-WMI-6th335 | CSD-LKO Calender (6 day + Holiday)-25 | Physical Progress [1730 h]; Firefighting [13417 INR]; TATA Projects Ltd-25 | 13,417 |
| 4S-WMI-6th500 |  | Installation of sprinkler heads, nozzles, and final alignment | 30d | 2029-02-13 | 2029-03-21 | 4S-WMI-6th335, 4S-WMI-6th400 | CSD-LKO Calender (6 day + Holiday)-25 | Physical Progress [5750 h]; Firefighting [201258 INR]; TATA Projects Ltd-25 | 201,258 |
| 4S-WMI-6th595 |  | Integration with fire alarm system | 20d | 2029-02-26 | 2029-03-21 | 4S-WMI-6th395 | CSD-LKO Calender (6 day + Holiday)-25 | Physical Progress [5750 h]; Firefighting [67086 INR]; TATA Projects Ltd-25 | 67,086 |
|  | 5 | **ELV** |  | 2029-02-13 | 2029-03-21 |  |  |  |  |
| 4S-WMI-6th505 |  | Installation of data and Voice Faceplate | 25d | 2029-02-13 | 2029-03-15 | 4S-WMI-6th335, 4S-WMI-6th400 | CSD-LKO Calender (6 day + Holiday)-25 | Physical Progress [2880 h]; ELV [53835 INR]; TATA Projects Ltd-25 | 53,835 |
| 4S-WMI-6th510 |  | Installation of Camera & Wifi | 30d | 2029-02-13 | 2029-03-21 | 4S-WMI-6th335, 4S-WMI-6th400 | CSD-LKO Calender (6 day + Holiday)-25 | Physical Progress [2880 h]; ELV [53835 INR]; TATA Projects Ltd-25 | 53,835 |
| 4S-WMI-6th515 |  | Installation of fire alarm devices + Public Address | 10d | 2029-02-13 | 2029-02-24 | 4S-WMI-6th335, 4S-WMI-6th400 | CSD-LKO Calender (6 day + Holiday)-25 | Physical Progress [2880 h]; ELV [64602 INR]; TATA Projects Ltd-25 | 64,602 |
| 4S-WMI-6th600 |  | Installation of Active System | 10d | 2029-02-26 | 2029-03-09 | 4S-WMI-6th515 | CSD-LKO Calender (6 day + Holiday)-25 | Physical Progress [4320 h]; ELV [107671 INR]; TATA Projects Ltd-25 | 107,671 |
| 4S-WMI-6th605 |  | Fire Panel Intallation & Integration | 20d | 2029-02-26 | 2029-03-21 | 4S-WMI-6th515 | CSD-LKO Calender (6 day + Holiday)-25 | Physical Progress [7190 h]; ELV [53835 INR]; TATA Projects Ltd-25 | 53,835 |
| 4S-WMI-6th610 |  | Installation & Integration of Audio Visual System | 20d | 2029-02-26 | 2029-03-21 | 4S-WMI-6th515 | CSD-LKO Calender (6 day + Holiday)-25 | Physical Progress [7190 h]; ELV [53835 INR]; TATA Projects Ltd-25 | 53,835 |
| 4S-WMI-6th615 |  | Installation & Integration of Access Control | 20d | 2029-02-26 | 2029-03-21 | 4S-WMI-6th515 | CSD-LKO Calender (6 day + Holiday)-25 | Physical Progress [7190 h]; ELV [53835 INR]; TATA Projects Ltd-25 | 53,835 |
| 4S-WMI-6th655 |  | Integration of Active components | 10d | 2029-03-10 | 2029-03-21 | 4S-WMI-6th600 | CSD-LKO Calender (6 day + Holiday)-25 | Physical Progress [4320 h]; ELV [21534 INR]; TATA Projects Ltd-25 | 21,534 |
|  | 13 | **Structural Steel works for Facade** |  | 2027-10-15 | 2028-04-05 |  |  |  |  |
| 4S-F-SS10 |  | Second Floor to Third Floor | 25d | 2027-10-15 | 2027-11-15 | SSF15 SS+90d, 4S-SS-6th.F.415, 4S-SS-6th.F.320 FF+10d, 4S-SS-6th.F.190 FF+10d |  | Physical Progress [100000 h]; TATA Projects Ltd-25 |  |
| 4S-F-SS15 |  | GF to Service Floor | 25d | 2027-11-15 | 2027-12-14 | 4S-F-SS10 |  | Physical Progress [100000 h]; TATA Projects Ltd-25 |  |
| 4S-F-SS20 |  | Third Floor to Fourth Floor | 25d | 2027-12-14 | 2028-01-14 | 4S-F-SS15 |  | Physical Progress [100000 h]; TATA Projects Ltd-25 |  |
| 4S-F-SS25 |  | Fourth Floor to Fifth Floor | 25d | 2028-01-14 | 2028-02-14 | 4S-F-SS20 |  | Physical Progress [100000 h]; TATA Projects Ltd-25 |  |
| 4S-F-SS30 |  | Fifth Floor to Sixth Floor | 21d | 2028-02-14 | 2028-03-10 | 4S-F-SS25 |  | Physical Progress [100000 h]; TATA Projects Ltd-25 |  |
| 4S-F-SS35 |  | Sixth Floor to Terrace | 21d | 2028-03-10 | 2028-04-05 | 4S-F-SS30, 4S-SS-Roof40 FF+15d, SSF20 FF+30d |  | Physical Progress [100000 h]; TATA Projects Ltd-25 |  |
|  | 5 | **Facade** |  | 2027-11-02 | 2028-12-22 |  |  |  |  |
|  | 2 | **GF to Service Floor** |  | 2027-12-28 | 2028-06-10 |  |  |  |  |
|  | 1 | **Front Face - Toward Airport** |  | 2027-12-28 | 2028-05-18 |  |  |  |  |
| 4S-F-GF10 |  | Integration of Services Before Facade | 5d | 2027-12-28 | 2028-01-04 | 4S-F-2nd45 |  | Facade [677760 INR]; Physical Progress [5830 h]; TATA Projects Ltd-25 | 677,760 |
| 4S-F-GF15 |  | Fixing of Facade Support | 40d | 2028-01-04 | 2028-02-21 | 4S-F-SS15, 4S-F-GF10 |  | Facade [3388799 INR]; Physical Progress [46630 h]; TATA Projects Ltd-25 | 3,388,799 |
| 4S-F-GF40 |  | Fixing of Facade | 40d | 2028-02-21 | 2028-04-10 | 4S-F-GF15 |  | Facade [8133117 INR]; Physical Progress [46630 h]; TATA Projects Ltd-25 | 8,133,117 |
| 4S-F-GF55 |  | Integration of Services After Facade | 30d | 2028-04-10 | 2028-05-18 | 4S-F-2nd60, 4S-F-GF40 |  | Facade [1355520 INR]; Physical Progress [11660 h]; TATA Projects Ltd-25 | 1,355,520 |

| ID | WBS | Activity | Duration | Start | Finish | Predecessors | Resources | Cost |
| --- | --- | --- | --- | --- | --- | --- | --- | --- |
|  | 2 | **Back Face - Toward CC** |  | 2028-01-04 | 2028-05-30 |  |  |  |
| 4S-F-GF20 |  | Integration of Services Before Facade | 10d | 2028-01-04 | 2028-01-15 | 4S-F-GF10 | Facade [677760 INR]; Physical Progress [11660 h]; TATA Projects Ltd-25 | 677,760 |
| 4S-F-GF25 |  | Fixing of Facade Support | 40d | 2028-01-15 | 2028-03-04 | 4S-F-GF20 | Facade [3388799 INR]; Physical Progress [46630 h]; TATA Projects Ltd-25 | 3,388,799 |
| 4S-F-GF45 |  | Fixing of Facade | 40d | 2028-03-04 | 2028-04-22 | 4S-F-GF25 | Facade [8133117 INR]; Physical Progress [46630 h]; TATA Projects Ltd-25 | 8,133,117 |
| 4S-F-GF60 |  | Integration of Services After Facade | 30d | 2028-04-22 | 2028-05-30 | 4S-F-2nd65, 4S-F-GF45 | Facade [1355520 INR]; Physical Progress [11660 h]; TATA Projects Ltd-25 | 1,355,520 |
|  | 3 | **Side Face** |  | 2028-01-15 | 2028-06-10 |  |  |  |
| 4S-F-GF30 |  | Integration of Services Before Facade | 10d | 2028-01-15 | 2028-01-28 | 4S-F-GF20 | Facade [677760 INR]; Physical Progress [11660 h]; TATA Projects Ltd-25 | 677,760 |
| 4S-F-GF35 |  | Fixing of Facade Support | 40d | 2028-01-28 | 2028-03-17 | 4S-F-GF30 | Facade [3388799 INR]; Physical Progress [46630 h]; TATA Projects Ltd-25 | 3,388,799 |
| 4S-F-GF50 |  | Fixing of Facade | 40d | 2028-03-17 | 2028-05-06 | 4S-F-GF35 | Facade [8133117 INR]; Physical Progress [46630 h]; TATA Projects Ltd-25 | 8,133,117 |
| 4S-F-GF65 |  | Integration of Services After Facade | 30d | 2028-05-06 | 2028-06-10 | 4S-F-2nd55, 4S-F-GF50 | Facade [1355520 INR]; Physical Progress [11660 h]; TATA Projects Ltd-25 | 1,355,520 |
|  | 3 | **Second Floor - Third Floor** |  | 2027-11-02 | 2028-03-20 |  |  |  |
|  | 1 | **Front Face - Toward Airport** |  | 2027-11-02 | 2028-03-20 |  |  |  |
| 4S-F-2nd10 |  | Integration of Services Before Facade | 5d | 2027-11-02 | 2027-11-08 | 4S-SS-6th.F.425 FS+7d | Facade [246458 INR]; Physical Progress [5830 h]; TATA Projects Ltd-25 | 246,458 |
| 4S-F-2nd15 |  | Fixing of Facade Support | 25d | 2027-12-13 | 2028-01-12 | P-F-Glass-15, 4S-SS-6th.F.425 FF, 4S-F-SS10, 4S-F-2nd10 SS+2d | Facade [1232290 INR]; Physical Progress [29150 h]; TATA Projects Ltd-25 | 1,232,290 |
| 4S-F-2nd40 |  | Fixing of Facade | 25d | 2028-01-13 | 2028-02-11 | 4S-F-2nd15 | Facade [2957497 INR]; Physical Progress [29150 h]; TATA Projects Ltd-25 | 2,957,497 |
| 4S-F-2nd60 |  | Integration of Services After Facade | 30d | 2028-02-12 | 2028-03-20 | 4S-F-2nd40 | Facade [492916 INR]; Physical Progress [11660 h]; TATA Projects Ltd-25 | 492,916 |
|  | 2 | **Back Face - Toward CC** |  | 2027-11-08 | 2028-02-15 |  |  |  |
| 4S-F-2nd20 |  | Integration of Services Before Facade | 5d | 2027-11-08 | 2027-11-13 | 4S-F-2nd10 | Facade [246458 INR]; Physical Progress [5830 h]; TATA Projects Ltd-25 | 246,458 |
| 4S-F-2nd25 |  | Fixing of Facade Support | 25d | 2027-11-10 | 2027-12-09 | 4S-F-2nd20 SS+2d | Facade [1232290 INR]; Physical Progress [29150 h]; TATA Projects Ltd-25 | 1,232,290 |
| 4S-F-2nd50 |  | Fixing of Facade | 25d | 2027-12-09 | 2028-01-10 | 4S-F-2nd25 | Facade [2957497 INR]; Physical Progress [29150 h]; TATA Projects Ltd-25 | 2,957,497 |
| 4S-F-2nd65 |  | Integration of Services After Facade | 30d | 2028-01-10 | 2028-02-15 | 4S-F-2nd50 | Facade [492916 INR]; Physical Progress [11660 h]; TATA Projects Ltd-25 | 492,916 |
|  | 3 | **Side Face** |  | 2027-11-13 | 2028-02-03 |  |  |  |
| 4S-F-2nd30 |  | Integration of Services Before Facade | 5d | 2027-11-13 | 2027-11-19 | 4S-F-2nd20 | Facade [246458 INR]; Physical Progress [5830 h]; TATA Projects Ltd-25 | 246,458 |
| 4S-F-2nd35 |  | Fixing of Facade Support | 15d | 2027-11-16 | 2027-12-03 | 4S-F-2nd30 SS+2d | Facade [1232290 INR]; Physical Progress [17490 h]; TATA Projects Ltd-25 | 1,232,290 |
| 4S-F-2nd45 |  | Fixing of Facade | 20d | 2027-12-03 | 2027-12-28 | 4S-F-2nd35 | Facade [2957497 INR]; Physical Progress [23320 h]; TATA Projects Ltd-25 | 2,957,497 |
| 4S-F-2nd55 |  | Integration of Services After Facade | 30d | 2027-12-28 | 2028-02-03 | 4S-F-2nd45 | Facade [492916 INR]; Physical Progress [11660 h]; TATA Projects Ltd-25 | 492,916 |

| ID | WBS | Activity | Duration | Start | Finish | Predecessors | Resources | Cost |
| --- | --- | --- | --- | --- | --- | --- | --- | --- |
|  | 4 | **Third Floor - Fourth Floor** |  | 2028-02-12 | 2028-05-29 |  |  |  |
|  | 1 | **Front Face - Toward Airport** |  | 2028-02-12 | 2028-05-23 |  |  |  |
| 4S-F-3rd10 |  | Integration of Services Before Facade | 5d | 2028-02-12 | 2028-02-17 | 4S-F-2nd40 | Facade [246458 INR]; Physical Progress [5830 h]; TATA Projects Ltd-25 | 246,458 |
| 4S-F-3rd15 |  | Fixing of Facade Support | 25d | 2028-02-15 | 2028-03-16 | 4S-F-SS20, 4S-F-3rd10 SS+2d | Facade [1232290 INR]; Physical Progress [29150 h]; TATA Projects Ltd-25 | 1,232,290 |
| 4S-F-3rd40 |  | Fixing of Facade | 25d | 2028-03-17 | 2028-04-15 | 4S-F-3rd15 | Facade [2957497 INR]; Physical Progress [29150 h]; TATA Projects Ltd-25 | 2,957,497 |
| 4S-F-3rd60 |  | Integration of Services After Facade | 30d | 2028-04-17 | 2028-05-23 | 4S-F-2nd60, 4S-F-3rd40 | Facade [492916 INR]; Physical Progress [11660 h]; TATA Projects Ltd-25 | 492,916 |
|  | 2 | **Back Face - Toward CC** |  | 2028-02-18 | 2028-05-29 |  |  |  |
| 4S-F-3rd20 |  | Integration of Services Before Facade | 5d | 2028-02-18 | 2028-02-23 | 4S-F-3rd10, 4S-F-2nd50 | Facade [246458 INR]; Physical Progress [5830 h]; TATA Projects Ltd-25 | 246,458 |
| 4S-F-3rd25 |  | Fixing of Facade Support | 25d | 2028-02-21 | 2028-03-22 | 4S-F-3rd20 SS+2d | Facade [1232290 INR]; Physical Progress [29150 h]; TATA Projects Ltd-25 | 1,232,290 |
| 4S-F-3rd50 |  | Fixing of Facade | 25d | 2028-03-23 | 2028-04-21 | 4S-F-3rd25 | Facade [2957497 INR]; Physical Progress [29150 h]; TATA Projects Ltd-25 | 2,957,497 |
| 4S-F-3rd65 |  | Integration of Services After Facade | 30d | 2028-04-22 | 2028-05-29 | 4S-F-2nd65, 4S-F-3rd50 | Facade [492916 INR]; Physical Progress [11660 h]; TATA Projects Ltd-25 | 492,916 |
|  | 3 | **Side Face** |  | 2028-02-24 | 2028-05-23 |  |  |  |
| 4S-F-3rd30 |  | Integration of Services Before Facade | 5d | 2028-02-24 | 2028-03-01 | 4S-F-3rd20, 4S-F-2nd45 | Facade [246458 INR]; Physical Progress [5830 h]; TATA Projects Ltd-25 | 246,458 |
| 4S-F-3rd35 |  | Fixing of Facade Support | 20d | 2028-02-28 | 2028-03-22 | 4S-F-3rd30 SS+2d | Facade [1232290 INR]; Physical Progress [17490 h]; TATA Projects Ltd-25 | 1,232,290 |
| 4S-F-3rd45 |  | Fixing of Facade | 20d | 2028-03-23 | 2028-04-15 | 4S-F-3rd35 | Facade [2957497 INR]; Physical Progress [23320 h]; TATA Projects Ltd-25 | 2,957,497 |
| 4S-F-3rd55 |  | Integration of Services After Facade | 30d | 2028-04-17 | 2028-05-23 | 4S-F-2nd55, 4S-F-3rd45 | Facade [492916 INR]; Physical Progress [11660 h]; TATA Projects Ltd-25 | 492,916 |
|  | 5 | **Fourth Floor - Fifth Floor** |  | 2028-04-17 | 2028-08-03 |  |  |  |
|  | 1 | **Front Face - Toward Airport** |  | 2028-04-17 | 2028-07-27 |  |  |  |
| 4S-F-4th10 |  | Integration of Services Before Facade | 5d | 2028-04-17 | 2028-04-21 | 4S-F-SS25, 4S-F-3rd40 | Facade [246458 INR]; Physical Progress [5830 h]; TATA Projects Ltd-25 | 246,458 |
| 4S-F-4th15 |  | Fixing of Facade Support | 25d | 2028-04-19 | 2028-05-19 | 4S-F-SS25, 4S-F-4th10 SS+2d | Facade [1232290 INR]; Physical Progress [29150 h]; TATA Projects Ltd-25 | 1,232,290 |
| 4S-F-4th40 |  | Fixing of Facade | 25d | 2028-05-20 | 2028-06-17 | 4S-F-4th15 | Facade [2957497 INR]; Physical Progress [29150 h]; TATA Projects Ltd-25 | 2,957,497 |
| 4S-F-4th55 |  | Integration of Services After Facade | 30d | 2028-06-19 | 2028-07-27 | 4S-F-3rd60, 4S-F-4th40 | Facade [492916 INR]; Physical Progress [11660 h]; TATA Projects Ltd-25 | 492,916 |
|  | 2 | **Back Face - Toward CC** |  | 2028-04-22 | 2028-08-03 |  |  |  |
| 4S-F-4th20 |  | Integration of Services Before Facade | 5d | 2028-04-22 | 2028-04-27 | 4S-F-3rd50, 4S-F-4th10 | Facade [246458 INR]; Physical Progress [5830 h]; TATA Projects Ltd-25 | 246,458 |
| 4S-F-4th25 |  | Fixing of Facade Support | 25d | 2028-04-25 | 2028-05-25 | 4S-F-4th20 SS+2d | Facade [1232290 INR]; Physical Progress [29150 h]; TATA Projects Ltd-25 | 1,232,290 |
| 4S-F-4th45 |  | Fixing of Facade | 25d | 2028-05-26 | 2028-06-23 | 4S-F-4th25 | Facade [2957497 INR]; Physical Progress [29150 h]; TATA Projects Ltd-25 | 2,957,497 |
| 4S-F-4th65 |  | Integration of Services After Facade | 30d | 2028-06-24 | 2028-08-03 | 4S-F-3rd65, 4S-F-4th45 | Facade [492916 INR]; Physical Progress [11660 h]; TATA Projects Ltd-25 | 492,916 |

| ID | WBS | Activity | Duration | Start | Finish | Predecessors | Resources | Cost |
| --- | --- | --- | --- | --- | --- | --- | --- | --- |
|  | 3 | **Side Face** |  | 2028-04-28 | 2028-07-27 |  |  |  |
| 4S-F-4th30 |  | Integration of Services Before Facade | 5d | 2028-04-28 | 2028-05-05 | 4S-F-4th20, 4S-F-3rd45 | Facade [246458 INR]; Physical Progress [5830 h]; TATA Projects Ltd-25 | 246,458 |
| 4S-F-4th35 |  | Fixing of Facade Support | 20d | 2028-05-02 | 2028-05-25 | 4S-F-4th30 SS+2d | Facade [1232290 INR]; Physical Progress [23320 h]; TATA Projects Ltd-25 | 1,232,290 |
| 4S-F-4th50 |  | Fixing of Facade | 20d | 2028-05-26 | 2028-06-17 | 4S-F-4th35 | Facade [2957497 INR]; Physical Progress [23320 h]; TATA Projects Ltd-25 | 2,957,497 |
| 4S-F-4th60 |  | Integration of Services After Facade | 30d | 2028-06-19 | 2028-07-27 | 4S-F-3rd55, 4S-F-4th50 | Facade [492916 INR]; Physical Progress [11660 h]; TATA Projects Ltd-25 | 492,916 |
|  | 6 | **Fifth Floor - Sixth Floor** |  | 2028-06-19 | 2028-10-10 |  |  |  |
|  | 1 | **Front Face - Toward Airport** |  | 2028-06-19 | 2028-09-25 |  |  |  |
| 4S-F-5th10 |  | Integration of Services Before Facade | 5d | 2028-06-19 | 2028-06-23 | 4S-F-4th40 | Facade [246458 INR]; Physical Progress [5830 h]; TATA Projects Ltd-25 | 246,458 |
| 4S-F-5th15 |  | Fixing of Facade Support | 20d | 2028-06-21 | 2028-07-15 | 4S-F-SS30, 4S-F-5th10 SS+2d | Facade [1232290 INR]; Physical Progress [29150 h]; TATA Projects Ltd-25 | 1,232,290 |
| 4S-F-5th40 |  | Fixing of Facade | 20d | 2028-07-17 | 2028-08-12 | 4S-F-5th15 | Facade [2957497 INR]; Physical Progress [29150 h]; TATA Projects Ltd-25 | 2,957,497 |
| 4S-F-5th55 |  | Integration of Services After Facade | 30d | 2028-08-14 | 2028-09-25 | 4S-F-4th55, 4S-F-5th40 | Facade [492916 INR]; Physical Progress [11660 h]; TATA Projects Ltd-25 | 492,916 |
|  | 2 | **Back Face - Toward CC** |  | 2028-06-24 | 2028-10-04 |  |  |  |
| 4S-F-5th20 |  | Integration of Services Before Facade | 5d | 2028-06-24 | 2028-06-29 | 4S-F-5th10, 4S-F-4th45 | Facade [246458 INR]; Physical Progress [5830 h]; TATA Projects Ltd-25 | 246,458 |
| 4S-F-5th25 |  | Fixing of Facade Support | 20d | 2028-06-27 | 2028-07-22 | 4S-F-5th20 SS+2d | Facade [1232290 INR]; Physical Progress [29150 h]; TATA Projects Ltd-25 | 1,232,290 |
| 4S-F-5th45 |  | Fixing of Facade | 20d | 2028-07-24 | 2028-08-19 | 4S-F-5th25 | Facade [2957497 INR]; Physical Progress [29150 h]; TATA Projects Ltd-25 | 2,957,497 |
| 4S-F-5th65 |  | Integration of Services After Facade | 30d | 2028-08-21 | 2028-10-04 | 4S-F-4th65, 4S-F-5th45 | Facade [492916 INR]; Physical Progress [11660 h]; TATA Projects Ltd-25 | 492,916 |
|  | 3 | **Side Face** |  | 2028-06-30 | 2028-10-10 |  |  |  |
| 4S-F-5th30 |  | Integration of Services Before Facade | 5d | 2028-06-30 | 2028-07-06 | 4S-F-5th20, 4S-F-4th50 | Facade [246458 INR]; Physical Progress [5830 h]; TATA Projects Ltd-25 | 246,458 |
| 4S-F-5th35 |  | Fixing of Facade Support | 20d | 2028-07-03 | 2028-07-29 | 4S-F-5th30 SS+2d | Facade [1232290 INR]; Physical Progress [23320 h]; TATA Projects Ltd-25 | 1,232,290 |
| 4S-F-5th50 |  | Fixing of Facade | 20d | 2028-07-31 | 2028-08-28 | 4S-F-5th35 | Facade [2957497 INR]; Physical Progress [23320 h]; TATA Projects Ltd-25 | 2,957,497 |
| 4S-F-5th60 |  | Integration of Services After Facade | 30d | 2028-08-30 | 2028-10-10 | 4S-F-4th60, 4S-F-5th50 | Facade [492916 INR]; Physical Progress [11660 h]; TATA Projects Ltd-25 | 492,916 |
|  | 7 | **Sixth Floor - Terrace** |  | 2028-08-14 | 2028-11-29 |  |  |  |
|  | 1 | **Front Face - Toward Airport** |  | 2028-08-14 | 2028-11-17 |  |  |  |
| 4S-F-6th10 |  | Integration of Services Before Facade | 5d | 2028-08-14 | 2028-08-19 | 4S-F-5th40 | Facade [246458 INR]; Physical Progress [5830 h]; TATA Projects Ltd-25 | 246,458 |
| 4S-F-6th15 |  | Fixing of Facade Support | 20d | 2028-08-17 | 2028-09-13 | 4S-F-6th10 SS+2d | Facade [1232290 INR]; Physical Progress [23320 h]; TATA Projects Ltd-25 | 1,232,290 |
| 4S-F-6th40 |  | Fixing of Facade | 20d | 2028-09-15 | 2028-10-12 | 4S-F-SS35, 4S-F-6th15 | Facade [2957497 INR]; Physical Progress [29150 h]; TATA Projects Ltd-25 | 2,957,497 |
| 4S-F-6th55 |  | Integration of Services After Facade | 30d | 2028-10-13 | 2028-11-17 | 4S-F-5th55, 4S-F-6th40 | Facade [492916 INR]; Physical Progress [11660 h]; TATA Projects Ltd-25 | 492,916 |

| ID | WBS | Activity | Duration | Start | Finish | Predecessors | Resources | Cost |
| --- | --- | --- | --- | --- | --- | --- | --- | --- |
|  | 2 | **Back Face - Toward CC** |  | 2028-08-21 | 2028-11-23 |  |  |  |
| 4S-F-6th20 |  | Integration of Services Before Facade | 5d | 2028-08-21 | 2028-08-28 | 4S-F-6th10, 4S-F-5th45 | Facade [246458 INR]; Physical Progress [5830 h]; TATA Projects Ltd-25 | 246,458 |
| 4S-F-6th25 |  | Fixing of Facade Support | 20d | 2028-08-25 | 2028-09-20 | 4S-F-6th20 SS+2d | Facade [1232290 INR]; Physical Progress [23320 h]; TATA Projects Ltd-25 | 1,232,290 |
| 4S-F-6th45 |  | Fixing of Facade | 20d | 2028-09-22 | 2028-10-19 | 4S-F-6th25 | Facade [2957497 INR]; Physical Progress [29150 h]; TATA Projects Ltd-25 | 2,957,497 |
| 4S-F-6th60 |  | Integration of Services After Facade | 30d | 2028-10-20 | 2028-11-23 | 4S-F-5th65, 4S-F-6th45 | Facade [492916 INR]; Physical Progress [11660 h]; TATA Projects Ltd-25 | 492,916 |
|  | 3 | **Side Face** |  | 2028-08-30 | 2028-11-29 |  |  |  |
| 4S-F-6th30 |  | Integration of Services Before Facade | 5d | 2028-08-30 | 2028-09-04 | 4S-F-6th20, 4S-F-5th50 | Facade [246458 INR]; Physical Progress [5830 h]; TATA Projects Ltd-25 | 246,458 |
| 4S-F-6th35 |  | Fixing of Facade Support | 20d | 2028-09-01 | 2028-09-29 | 4S-F-6th30 SS+2d | Facade [1232290 INR]; Physical Progress [23320 h]; TATA Projects Ltd-25 | 1,232,290 |
| 4S-F-6th50 |  | Fixing of Facade | 20d | 2028-09-30 | 2028-10-25 | 4S-F-6th35 | Facade [2957497 INR]; Physical Progress [23320 h]; TATA Projects Ltd-25 | 2,957,497 |
| 4S-F-6th65 |  | Integration of Services After Facade | 30d | 2028-10-26 | 2028-11-29 | 4S-F-5th60, 4S-F-6th50 | Facade [492916 INR]; Physical Progress [11660 h]; TATA Projects Ltd-25 | 492,916 |
|  | 1 | **Above Terrace** |  | 2028-06-19 | 2028-12-22 |  |  |  |
|  | 1 | **Front Face - Toward Airport** |  | 2028-10-13 | 2028-12-11 |  |  |  |
| 4S-F-Terrace25 |  | Integration of Services Before Facade | 5d | 2028-10-13 | 2028-10-19 | 4S-F-6th40 | Facade [246458 INR]; Physical Progress [5830 h]; TATA Projects Ltd-25 | 246,458 |
| 4S-F-Terrace30 |  | Fixing of Facade Support | 20d | 2028-10-16 | 2028-11-08 | 4S-F-Terrace25 SS+2d | Facade [1232290 INR]; Physical Progress [23320 h]; TATA Projects Ltd-25 | 1,232,290 |
| 4S-F-Terrace55 |  | Fixing of Facade | 20d | 2028-11-09 | 2028-12-01 | 4S-F-Terrace30 | Facade [2957497 INR]; Physical Progress [29150 h]; TATA Projects Ltd-25 | 2,957,497 |
| 4S-F-Terrace75 |  | Integration of Services After Facade | 8d | 2028-12-02 | 2028-12-11 | 4S-F-Terrace55, 4S-F-6th55 | Facade [492916 INR]; Physical Progress [11660 h]; TATA Projects Ltd-25 | 492,916 |
|  | 2 | **Back Face - Toward CC** |  | 2028-10-20 | 2028-12-16 |  |  |  |
| 4S-F-Terrace35 |  | Integration of Services Before Facade | 5d | 2028-10-20 | 2028-10-25 | 4S-F-Terrace25, 4S-F-6th45 | Facade [246458 INR]; Physical Progress [5830 h]; TATA Projects Ltd-25 | 246,458 |
| 4S-F-Terrace40 |  | Fixing of Facade Support | 20d | 2028-10-23 | 2028-11-14 | 4S-F-Terrace35 SS+2d | Facade [1232290 INR]; Physical Progress [23320 h]; TATA Projects Ltd-25 | 1,232,290 |
| 4S-F-Terrace60 |  | Fixing of Facade | 20d | 2028-11-15 | 2028-12-07 | 4S-F-Terrace40 | Facade [2957497 INR]; Physical Progress [29150 h]; TATA Projects Ltd-25 | 2,957,497 |
| 4S-F-Terrace80 |  | Integration of Services After Facade | 8d | 2028-12-08 | 2028-12-16 | 4S-F-Terrace60, 4S-F-6th60 | Facade [492916 INR]; Physical Progress [11660 h]; TATA Projects Ltd-25 | 492,916 |
|  | 3 | **Side Face** |  | 2028-10-26 | 2028-12-22 |  |  |  |
| 4S-F-Terrace45 |  | Integration of Services Before Facade | 5d | 2028-10-26 | 2028-10-31 | 4S-F-Terrace35, 4S-F-6th50 | Facade [246458 INR]; Physical Progress [5830 h]; TATA Projects Ltd-25 | 246,458 |
| 4S-F-Terrace50 |  | Fixing of Facade Support | 20d | 2028-10-28 | 2028-11-20 | 4S-F-Terrace45 SS+2d | Facade [1232290 INR]; Physical Progress [23320 h]; TATA Projects Ltd-25 | 1,232,290 |
| 4S-F-Terrace70 |  | Fixing of Facade | 20d | 2028-11-21 | 2028-12-13 | 4S-F-Terrace50 | Facade [2957497 INR]; Physical Progress [23320 h]; TATA Projects Ltd-25 | 2,957,497 |
| 4S-F-Terrace85 |  | Integration of Services After Facade | 8d | 2028-12-14 | 2028-12-22 | 4S-F-Terrace70, 4S-F-6th65 | Facade [492916 INR]; Physical Progress [11660 h]; TATA Projects Ltd-25 | 492,916 |

| ID | WBS | Activity | Duration | Start | Finish | Predecessors | Calendar | Resources | Cost |
| --- | --- | --- | --- | --- | --- | --- | --- | --- | --- |
|  | 4 | **Rooftop** |  | 2028-06-19 | 2028-12-22 |  |  |  |  |
| 4S-F-Terrace10 |  | Integration of Services Before Facade | 4d | 2028-06-19 | 2028-06-22 | 4S-F-4th50, 4S-Terrace15 |  | Facade [3701848 INR]; Physical Progress [4660 h]; TATA Projects Ltd-25 | 3,701,848 |
| 4S-F-Terrace15 |  | Fixing of Facade Support | 45d | 2028-06-23 | 2028-08-24 | 4S-F-Terrace10, P-F-FRP-15, SSF20 |  | Facade [18509240 INR]; Physical Progress [52460 h]; TATA Projects Ltd-25 | 18,509,240 |
| 4S-F-Terrace20 |  | Fixing of FRP Facade with aluminium bars and louvers | 90d | 2028-08-25 | 2028-12-16 | 4S-F-Terrace15 |  | Facade [44422175 INR]; Physical Progress [104920 h]; TATA Projects Ltd-25 | 44,422,175 |
| 4S-F-Terrace65 |  | Integration of Services After Facade | 5d | 2028-12-18 | 2028-12-22 | 4S-F-Terrace20 |  | Facade [7403696 INR]; Physical Progress [34970 h]; TATA Projects Ltd-25 | 7,403,696 |
|  | 3 | **Terrace Works** |  | 2027-11-13 | 2029-02-17 |  |  |  |  |
| 4S-Terrace10 |  | Waterproofing | 45d | 2027-11-13 | 2028-01-07 | 4S-SS-Roof40 |  | Waterproofing [8564838 INR]; Waterprrofing Mason [8160 h]; Helper [4080 h]; Physical Progress [90000 h]; TATA Projects Ltd-25 | 8,564,838 |
| 4S-Terrace15 |  | Flooring | 30d | 2028-01-07 | 2028-02-12 | 4S-Terrace10, E-GFC-AR-4S-275 |  | ID Work [2210466 INR]; Physical Progress [60000 h]; TATA Projects Ltd-25 | 2,210,466 |
| 4S-Terrace20 |  | Installation of Fans, Solar and other MEP Equipments | 45d | 2028-12-23 | 2029-02-17 | 4S-Terrace15, 4S-F-Terrace65, P-MEP-Solar-25, E-GFC-MEP-4S-275, 4S-F-Terrace75, 4S-F-Terrace80, 4S-F-Terrace85 |  | Physical Progress [90000 h]; MEP Equipments on Terrace [3000000 INR]; TATA Projects Ltd-25 | 3,000,000 |
|  | 4 | **Swimming Pool** |  | 2027-09-16 | 2028-10-18 |  |  |  |  |
| 4S-SP10 |  | Pump Room | 60d | 2027-09-16 | 2027-12-01 | CB-B01-HS-MEP135 |  | Physical Progress [61280 h]; Plumbing [2000000 INR]; TATA Projects Ltd-25 | 2,000,000 |
| 4S-SP15 |  | Balancing Tank | 60d | 2027-12-01 | 2028-02-12 | 4S-SP10 |  | Physical Progress [61280 h]; Plumbing [2000000 INR]; TATA Projects Ltd-25 | 2,000,000 |
| 4S-SP20 |  | Fixing of Plumbing Connenctions | 60d | 2028-02-12 | 2028-04-26 | 4S-SP15 |  | Physical Progress [61280 h]; Plumbing [750000 INR]; TATA Projects Ltd-25 | 750,000 |
| 4S-SP25 |  | Waterproofing | 30d | 2028-05-11 | 2028-06-15 | P-Misc-SP/WB-20, 4S-SP20 |  | Waterproofing [8564838 INR]; Waterprrofing Mason [8160 h]; Helper [4080 h]; Physical Progress [61280 h]; TATA Projects Ltd-25 | 8,564,838 |
| 4S-SP30 |  | Tiling inside Swimming Pool | 30d | 2028-06-15 | 2028-07-24 | 4S-SP20, 4S-SP25 |  | ID Work [700000 INR]; Physical Progress [61280 h]; TATA Projects Ltd-25 | 700,000 |
| 4S-SP35 |  | Tiling on Deck | 25d | 2028-07-24 | 2028-08-30 | 4S-SP30 |  | ID Work [300000 INR]; Physical Progress [51060 h]; TATA Projects Ltd-25 | 300,000 |
| 4S-SP40 |  | Testing & Commissioning | 60d | 2028-07-24 | 2028-10-18 | 4S-SP20, 4S-SP25, 4S-SP30 |  | Physical Progress [61280 h]; Testing & Commissioing [250000 INR]; TATA Projects Ltd-25 | 250,000 |
| 4S-SP45 |  | Landscape around Swimming Pool | 30d | 2028-08-30 | 2028-10-11 | 4S-SP30, 4S-SP35 |  | Physical Progress [61280 h]; Softscape [2500000 INR]; TATA Projects Ltd-25 | 2,500,000 |
|  | 10 | **Vertical Transport** |  | 2027-11-13 | 2028-07-01 |  |  |  |  |
| 4S-VT10 |  | Wait for Strength Gain | 6d | 2027-11-13 | 2027-11-20 | 4S-SS-Roof40 |  | Physical Progress [61170 h]; TATA Projects Ltd-25 |  |
| 4S-VT15 |  | Deshuttering | 5d | 2027-11-20 | 2027-11-26 | 4S-VT10 | CSD-LKO Calender (6 day + Holiday)-25 | Physical Progress [14560 h]; TATA Projects Ltd-25 |  |
| 4S-VT20 |  | Plaster | 15d | 2027-11-26 | 2027-12-14 | 4S-VT15 | CSD-LKO Calender (6 day + Holiday)-25 | Plaster [1000 Sqr Mtr]; Mason [670 h]; Helper [340 h]; Physical Progress [43690 h]; TATA Projects Ltd-25 | 553,910 |
| 4S-VT25 |  | Installation of Lift/Escalator | 120d | 2027-12-14 | 2028-05-10 | P-MEP-VT-20, 4S-VT20 | CSD-LKO Calender (6 day + Holiday)-25 | Physical Progress [349520 h]; Lift [69300000 INR]; TATA Projects Ltd-25 | 69,300,000 |
| 4S-VT30 |  | Testing & Commissioning | 45d | 2028-05-10 | 2028-07-01 | 4S-VT25 | CSD-LKO Calender (6 day + Holiday)-25 | Physical Progress [131070 h]; Testing & Commissioing [7700000 INR]; TATA Projects Ltd-25 | 7,700,000 |

| ID | WBS | Activity | Duration | Start | Finish | Predecessors | Calendar | Resources | Cost |
| --- | --- | --- | --- | --- | --- | --- | --- | --- | --- |
|  | 2 | **Testing, Commissioning, HO** |  | 2028-10-16 | 2029-05-15 |  |  |  |  |
|  | 1 | **Ground Floor** |  | 2029-03-13 | 2029-05-07 |  |  |  |  |
| 4S-T&C-GF10 |  | Testing & Commissioning | 30d | 2029-03-13 | 2029-04-17 | 4S-WMI-GF260, 4S-WMI-GF285, 4S-WMI-GF280, 4S-WMI-GF335, 4S-WMI-GF290, 4S-WMI-GF320, 4S-WMI-GF325, 4S-WMI-GF295, 4S-WMI-GF300, 4S-WMI-GF345, 4S-WMI-GF340, 4S-WMI-GF350, 4S-WMI-GF355, 4S-WMI-GF360, 4S-WMI-GF380, 4S-WMI-GF385, 4S-WMI-GF390, 4S-WMI-GF395, 4S-WMI-GF400, 4S-WMI-GF405 FF | CSD-LKO Calender (6 day + Holiday)-25 | Physical Progress [35110 h]; Testing & Commissioing [2355576 INR]; TATA Projects Ltd-25 | 2,355,576 |
| 4S-T&C-GF15 |  | Snagging & Desnagging | 30d | 2029-03-31 | 2029-05-07 | 4S-T&C-GF10 SS+5d, 4S-WMI-GF270, 4S-WMI-GF275, 4S-WMI-GF305, 4S-WMI-GF310, 4S-WMI-GF365, 4S-WMI-GF370, 4S-WMI-GF410, 4S-WMI-GF415 SS, 4S-WMI-GF420 SS | CSD-LKO Calender (6 day + Holiday)-25 | Physical Progress [35110 h]; TATA Projects Ltd-25 |  |
| 4S-T&C-GF20 |  | Handing Over | 1d | 2029-03-31 | 2029-03-31 | 4S-T&C-GF15 SS | CSD-LKO Calender (6 day + Holiday)-25 | Physical Progress [780 h]; TATA Projects Ltd-25 |  |
|  | 2 | **First Floor** |  | 2028-11-22 | 2029-03-02 |  |  |  |  |
| 4S-T&C-1st10 |  | Testing & Commissioning | 40d | 2028-11-22 | 2029-01-10 | 4S-WMI-1st260, 4S-WMI-1st285, 4S-WMI-1st280, 4S-WMI-1st325, 4S-WMI-1st290, 4S-WMI-1st315, 4S-WMI-1st320, 4S-WMI-1st295, 4S-WMI-1st300, 4S-WMI-1st360, 4S-WMI-1st330, 4S-WMI-1st335, 4S-WMI-1st340, 4S-WMI-1st345, 4S-WMI-1st365, 4S-WMI-1st370, 4S-WMI-1st375, 4S-WMI-1st380, 4S-WMI-1st385 | CSD-LKO Calender (6 day + Holiday)-25 | Physical Progress [35110 h]; Testing & Commissioing [2355576 INR]; TATA Projects Ltd-25 | 2,355,576 |
| 4S-T&C-1st15 |  | Snagging & Desnagging | 40d | 2029-01-10 | 2029-02-28 | 4S-T&C-1st10, 4S-WMI-1st270, 4S-WMI-1st275, 4S-WMI-1st305, 4S-WMI-1st310, 4S-WMI-1st350, 4S-WMI-1st355, 4S-WMI-1st390, 4S-WMI-1st395, 4S-WMI-1st400 | CSD-LKO Calender (6 day + Holiday)-25 | Physical Progress [35110 h]; TATA Projects Ltd-25 |  |
| 4S-T&C-1st20 |  | Handing Over | 1d | 2029-02-28 | 2029-03-02 | 4S-T&C-1st15 | CSD-LKO Calender (6 day + Holiday)-25 | Physical Progress [780 h]; TATA Projects Ltd-25 |  |
|  | 5 | **Service Floor** |  | 2028-10-16 | 2029-03-13 |  |  |  |  |
| 4S-T&C-Serv.F10 |  | Testing & Commissioning | 70d | 2028-10-16 | 2029-01-09 | 4S-WMI-Serv.F345, 4S-WMI-Serv.F365, 4S-WMI-Serv.F265, 4S-WMI-Serv.F340, 4S-WMI-Serv.F270, 4S-WMI-Serv.F310, 4S-WMI-Serv.F335, 4S-WMI-Serv.F280, 4S-WMI-Serv.F285, 4S-WMI-Serv.F275, 4S-WMI-Serv.F350, 4S-WMI-Serv.F290, 4S-WMI-Serv.F295, 4S-WMI-Serv.F300, 4S-WMI-Serv.F315, 4S-WMI-Serv.F320, 4S-WMI-Serv.F325, 4S-WMI-Serv.F330, 4S-WMI-Serv.F355 | CSD-LKO Calender (6 day + Holiday)-25 | Physical Progress [35110 h]; Testing & Commissioing [2355576 INR]; TATA Projects Ltd-25 | 2,355,576 |
| 4S-T&C-Serv.F15 |  | Snagging & Desnagging | 50d | 2029-01-09 | 2029-03-12 | 4S-T&C-Serv.F10, 4S-WMI-Serv.F255, 4S-WMI-Serv.F260, 4S-WMI-Serv.F305, 4S-WMI-Serv.F360, 4S-WMI-Serv.F370, 4S-WMI-Serv.F375, 4S-WMI-Serv.F380, 4S-WMI-Serv.F385, 4S-WMI-Serv.F390 | CSD-LKO Calender (6 day + Holiday)-25 | Physical Progress [35110 h]; TATA Projects Ltd-25 |  |
| 4S-T&C-Serv.F20 |  | Handing Over | 1d | 2029-03-12 | 2029-03-13 | 4S-T&C-Serv.F15 | CSD-LKO Calender (6 day + Holiday)-25 | Physical Progress [780 h]; TATA Projects Ltd-25 |  |
|  | 3 | **Second Floor** |  | 2028-12-09 | 2029-03-31 |  |  |  |  |
| 4S-T&C-2nd10 |  | Testing & Commissioning | 40d | 2028-12-09 | 2029-01-27 | 4S-WMI-2nd580, 4S-WMI-2nd625, 4S-WMI-2nd600, 4S-WMI-2nd665, 4S-WMI-2nd605, 4S-WMI-2nd630, 4S-WMI-2nd635, 4S-WMI-2nd610, 4S-WMI-2nd615, 4S-WMI-2nd670, 4S-WMI-2nd640, 4S-WMI-2nd645, 4S-WMI-2nd650, 4S-WMI-2nd655, 4S-WMI-2nd675, 4S-WMI-2nd680, 4S-WMI-2nd685, 4S-WMI-2nd690, 4S-WMI-2nd700, 4S-WMI-2nd265, 4S-WMI-2nd375, 4S-WMI-2nd335, 4S-WMI-2nd485, 4S-WMI-2nd340, 4S-WMI-2nd380, 4S-WMI-2nd420, 4S-WMI-2nd345, 4S-WMI-2nd350, 4S-WMI-2nd490, 4S-WMI-2nd425, 4S-WMI-2nd430, 4S-WMI-2nd435, 4S-WMI-2nd440, 4S-WMI-2nd495, 4S-WMI-2nd500, 4S-WMI-2nd505, 4S-WMI-2nd510, 4S-WMI-2nd535, 4S-WMI-2nd250, 4S-WMI-2nd365, 4S-WMI-2nd300, 4S-WMI-2nd450, 4S-WMI-2nd305, 4S-WMI-2nd370, 4S-WMI-2nd385, 4S-WMI-2nd310, 4S-WMI-2nd315, 4S-WMI-2nd455, 4S-WMI-2nd390, 4S-WMI-2nd395, 4S-WMI-2nd400, 4S-WMI-2nd405, 4S-WMI-2nd460, 4S-WMI-2nd465, 4S-WMI-2nd470, 4S-WMI-2nd475, 4S-WMI-2nd520, 4S-SP40 FF | CSD-LKO Calender (6 day + Holiday)-25 | Physical Progress [35110 h]; Testing & Commissioing [2355576 INR]; TATA Projects Ltd-25 | 2,355,576 |
| 4S-T&C-2nd15 |  | Snagging & Desnagging | 40d | 2029-02-08 | 2029-03-29 | 4S-T&C-2nd10, 4S-WMI-2nd570, 4S-WMI-2nd575, 4S-WMI-2nd585, 4S-WMI-2nd590, 4S-WMI-2nd595, 4S-WMI-2nd620, 4S-WMI-2nd660, 4S-WMI-2nd695, 4S-WMI-2nd705, 4S-WMI-2nd710, 4S-WMI-2nd715, 4S-WMI-2nd220, 4S-WMI-2nd235, 4S-WMI-2nd270, 4S-WMI-2nd290, 4S-WMI-2nd295, 4S-WMI-2nd355, 4S-WMI-2nd360, 4S-WMI-2nd445, 4S-WMI-2nd525, 4S-WMI-2nd545, 4S-WMI-2nd560, 4S-WMI-2nd565, 4S-WMI-2nd190, 4S-WMI-2nd225, 4S-WMI-2nd255, 4S-WMI-2nd275, 4S-WMI-2nd280, 4S-WMI-2nd320, 4S-WMI-2nd325, 4S-WMI-2nd410, 4S-WMI-2nd515, 4S-WMI-2nd540, 4S-WMI-2nd550, 4S-WMI-2nd555 | CSD-LKO Calender (6 day + Holiday)-25 | Physical Progress [35110 h]; TATA Projects Ltd-25 |  |
| 4S-T&C-2nd20 |  | Handing Over | 1d | 2029-03-29 | 2029-03-31 | 4S-T&C-2nd15 | CSD-LKO Calender (6 day + Holiday)-25 | Physical Progress [780 h]; TATA Projects Ltd-25 |  |
|  | 4 | **Third Floor** |  | 2028-10-24 | 2029-01-29 |  |  |  |  |
| 4S-T&C-3rd10 |  | Testing & Commissioning | 40d | 2028-10-24 | 2028-12-08 | 4S-WMI-3rd580, 4S-WMI-3rd625, 4S-WMI-3rd600, 4S-WMI-3rd665, 4S-WMI-3rd605, 4S-WMI-3rd630, 4S-WMI-3rd635, 4S-WMI-3rd610, 4S-WMI-3rd615, 4S-WMI-3rd670, 4S-WMI-3rd640, 4S-WMI-3rd645, 4S-WMI-3rd650, 4S-WMI-3rd655, 4S-WMI-3rd675, 4S-WMI-3rd680, 4S-WMI-3rd685, 4S-WMI-3rd690, 4S-WMI-3rd700, 4S-WMI-3rd275, 4S-WMI-3rd385, 4S-WMI-3rd340, 4S-WMI-3rd490, 4S-WMI-3rd345, 4S-WMI-3rd390, 4S-WMI-3rd425, 4S-WMI-3rd350, 4S-WMI-3rd355, 4S-WMI-3rd495, 4S-WMI-3rd430, 4S-WMI-3rd435, 4S-WMI-3rd440, 4S-WMI-3rd445, 4S-WMI-3rd500, 4S-WMI-3rd505, 4S-WMI-3rd510, 4S-WMI-3rd515, 4S-WMI-3rd535, 4S-WMI-3rd260, 4S-WMI-3rd370, 4S-WMI-3rd305, 4S-WMI-3rd455, 4S-WMI-3rd310, 4S-WMI-3rd375, 4S-WMI-3rd395, 4S-WMI-3rd315, 4S-WMI-3rd320, 4S-WMI-3rd460, 4S-WMI-3rd400, 4S-WMI-3rd405, 4S-WMI-3rd410, 4S-WMI-3rd415, 4S-WMI-3rd465, 4S-WMI-3rd470, 4S-WMI-3rd475, 4S-WMI-3rd480, 4S-WMI-3rd525 | CSD-LKO Calender (6 day + Holiday)-25 | Physical Progress [35110 h]; Testing & Commissioing [2355576 INR]; TATA Projects Ltd-25 | 2,355,576 |
| 4S-T&C-3rd15 |  | Snagging & Desnagging | 40d | 2028-12-09 | 2029-01-27 | 4S-T&C-3rd10, 4S-WMI-3rd545, 4S-WMI-3rd565, 4S-WMI-3rd585, 4S-WMI-3rd590, 4S-WMI-3rd595, 4S-WMI-3rd620, 4S-WMI-3rd660, 4S-WMI-3rd695, 4S-WMI-3rd705, 4S-WMI-3rd710, 4S-WMI-3rd715, 4S-WMI-3rd235, 4S-WMI-3rd250, 4S-WMI-3rd280, 4S-WMI-3rd295, 4S-WMI-3rd300, 4S-WMI-3rd360, 4S-WMI-3rd365, 4S-WMI-3rd450, 4S-WMI-3rd530, 4S-WMI-3rd550, 4S-WMI-3rd570, 4S-WMI-3rd575, 4S-WMI-3rd210, 4S-WMI-3rd240, 4S-WMI-3rd265, 4S-WMI-3rd285, 4S-WMI-3rd290, 4S-WMI-3rd325, 4S-WMI-3rd330, 4S-WMI-3rd420, 4S-WMI-3rd520, 4S-WMI-3rd540, 4S-WMI-3rd555, 4S-WMI-3rd560 | CSD-LKO Calender (6 day + Holiday)-25 | Physical Progress [35110 h]; TATA Projects Ltd-25 |  |
| 4S-T&C-3rd20 |  | Handing Over | 1d | 2029-01-29 | 2029-01-29 | 4S-T&C-3rd15 | CSD-LKO Calender (6 day + Holiday)-25 | Physical Progress [780 h]; TATA Projects Ltd-25 |  |
|  | 6 | **Fourth Floor** |  | 2028-12-23 | 2029-04-03 |  |  |  |  |
| 4S-T&C-4th10 |  | Testing & Commissioning | 40d | 2028-12-23 | 2029-02-10 | 4S-WMI-4th555, 4S-WMI-4th625, 4S-WMI-4th600, 4S-WMI-4th665, 4S-WMI-4th605, 4S-WMI-4th630, 4S-WMI-4th635, 4S-WMI-4th615, 4S-WMI-4th610, 4S-WMI-4th670, 4S-WMI-4th640, 4S-WMI-4th645, 4S-WMI-4th650, 4S-WMI-4th655, 4S-WMI-4th675, 4S-WMI-4th680, 4S-WMI-4th685, 4S-WMI-4th690, 4S-WMI-4th700, 4S-WMI-4th280, 4S-WMI-4th390, 4S-WMI-4th350, 4S-WMI-4th490, 4S-WMI-4th355, 4S-WMI-4th395, 4S-WMI-4th430, 4S-WMI-4th365, 4S-WMI-4th360, 4S-WMI-4th495, 4S-WMI-4th435, 4S-WMI-4th440, 4S-WMI-4th445, 4S-WMI-4th450, 4S-WMI-4th500, 4S-WMI-4th505, 4S-WMI-4th510, 4S-WMI-4th515, 4S-WMI-4th545, 4S-WMI-4th270, 4S-WMI-4th380, 4S-WMI-4th315, 4S-WMI-4th460, 4S-WMI-4th320, 4S-WMI-4th385, 4S-WMI-4th400, 4S-WMI-4th330, 4S-WMI-4th325, 4S-WMI-4th465, 4S-WMI-4th405, 4S-WMI-4th410, 4S-WMI-4th415, 4S-WMI-4th420, 4S-WMI-4th470, 4S-WMI-4th475, 4S-WMI-4th480, 4S-WMI-4th485, 4S-WMI-4th535 | CSD-LKO Calender (6 day + Holiday)-25 | Physical Progress [35110 h]; Testing & Commissioing [2355576 INR]; TATA Projects Ltd-25 | 2,355,576 |
| 4S-T&C-4th15 |  | Snagging & Desnagging | 40d | 2029-02-12 | 2029-04-02 | 4S-T&C-4th10, 4S-WMI-4th235, 4S-WMI-4th255, 4S-WMI-4th275, 4S-WMI-4th295, 4S-WMI-4th300, 4S-WMI-4th335, 4S-WMI-4th340, 4S-WMI-4th425, 4S-WMI-4th525, 4S-WMI-4th550, 4S-WMI-4th570, 4S-WMI-4th575 | CSD-LKO Calender (6 day + Holiday)-25 | Physical Progress [35110 h]; TATA Projects Ltd-25 |  |
| 4S-T&C-4th20 |  | Handing Over | 1d | 2029-04-03 | 2029-04-03 | 4S-T&C-4th15 | CSD-LKO Calender (6 day + Holiday)-25 | Physical Progress [780 h]; TATA Projects Ltd-25 |  |

| ID | WBS | Activity | Duration | Start | Finish | Predecessors | Complete | Remaining | Planned start | Planned finish | Calendar | Resources | Cost | Actual cost |
| --- | --- | --- | --- | --- | --- | --- | --- | --- | --- | --- | --- | --- | --- | --- |
|  | 7 | **Fifth Floor** |  | 2029-03-02 | 2029-05-15 |  |  |  |  |  |  |  |  |  |
| 4S-T&C-5th10 |  | Testing & Commissioning | 30d | 2029-03-02 | 2029-04-06 | 4S-WMI-5th500, 4S-WMI-5th595, 4S-WMI-5th570, 4S-WMI-5th665, 4S-WMI-5th575, 4S-WMI-5th600, 4S-WMI-5th615, 4S-WMI-5th580, 4S-WMI-5th585, 4S-WMI-5th670, 4S-WMI-5th620, 4S-WMI-5th625, 4S-WMI-5th630, 4S-WMI-5th635, 4S-WMI-5th675, 4S-WMI-5th680, 4S-WMI-5th685, 4S-WMI-5th690, 4S-WMI-5th700, 4S-WMI-5th290, 4S-WMI-5th400, 4S-WMI-5th355, 4S-WMI-5th510, 4S-WMI-5th360, 4S-WMI-5th405, 4S-WMI-5th440, 4S-WMI-5th365, 4S-WMI-5th370, 4S-WMI-5th515, 4S-WMI-5th445, 4S-WMI-5th450, 4S-WMI-5th455, 4S-WMI-5th460, 4S-WMI-5th520, 4S-WMI-5th525, 4S-WMI-5th530, 4S-WMI-5th535, 4S-WMI-5th565, 4S-WMI-5th280, 4S-WMI-5th385, 4S-WMI-5th320, 4S-WMI-5th470, 4S-WMI-5th325, 4S-WMI-5th390, 4S-WMI-5th410, 4S-WMI-5th330, 4S-WMI-5th335, 4S-WMI-5th475, 4S-WMI-5th415, 4S-WMI-5th420, 4S-WMI-5th425, 4S-WMI-5th430, 4S-WMI-5th480, 4S-WMI-5th485, 4S-WMI-5th490, 4S-WMI-5th495, 4S-WMI-5th560 |  |  |  |  | CSD-LKO Calender (6 day + Holiday)-25 | Physical Progress [35110 h]; Testing & Commissioing [2355576 INR]; TATA Projects Ltd-25 | 2,355,576 |  |
| 4S-T&C-5th15 |  | Snagging & Desnagging | 30d | 2029-04-07 | 2029-05-14 | 4S-T&C-5th10, 4S-WMI-5th245, 4S-WMI-5th265, 4S-WMI-5th285, 4S-WMI-5th300, 4S-WMI-5th305, 4S-WMI-5th340, 4S-WMI-5th345, 4S-WMI-5th435, 4S-WMI-5th540, 4S-WMI-5th605, 4S-WMI-5th645, 4S-WMI-5th650 |  |  |  |  | CSD-LKO Calender (6 day + Holiday)-25 | Physical Progress [35110 h]; TATA Projects Ltd-25 |  |  |
| 4S-T&C-5th20 |  | Handing Over | 1d | 2029-05-15 | 2029-05-15 | 4S-T&C-5th15 |  |  |  |  | CSD-LKO Calender (6 day + Holiday)-25 | Physical Progress [780 h]; TATA Projects Ltd-25 |  |  |
|  | 8 | **Sixth Floor** |  | 2029-03-22 | 2029-05-10 |  |  |  |  |  |  |  |  |  |
| 4S-T&C-6th10 |  | Testing & Commissioning | 25d | 2029-03-22 | 2029-04-20 | 4S-WMI-6th300, 4S-WMI-6th445, 4S-WMI-6th380, 4S-WMI-6th560, 4S-WMI-6th385, 4S-WMI-6th450, 4S-WMI-6th495, 4S-WMI-6th395, 4S-WMI-6th390, 4S-WMI-6th595, 4S-WMI-6th500, 4S-WMI-6th505, 4S-WMI-6th510, 4S-WMI-6th515, 4S-WMI-6th600, 4S-WMI-6th605, 4S-WMI-6th610, 4S-WMI-6th615, 4S-WMI-6th655, 4S-WMI-6th290, 4S-WMI-6th435, 4S-WMI-6th350, 4S-WMI-6th555, 4S-WMI-6th355, 4S-WMI-6th440, 4S-WMI-6th465, 4S-WMI-6th365, 4S-WMI-6th360, 4S-WMI-6th570, 4S-WMI-6th470, 4S-WMI-6th475, 4S-WMI-6th480, 4S-WMI-6th485, 4S-WMI-6th575, 4S-WMI-6th580, 4S-WMI-6th585, 4S-WMI-6th590, 4S-WMI-6th645, 4S-WMI-6th310, 4S-WMI-6th455, 4S-WMI-6th410, 4S-WMI-6th565, 4S-WMI-6th415, 4S-WMI-6th460, 4S-WMI-6th525, 4S-WMI-6th425, 4S-WMI-6th420, 4S-WMI-6th620, 4S-WMI-6th530, 4S-WMI-6th535, 4S-WMI-6th540, 4S-WMI-6th545, 4S-WMI-6th625, 4S-WMI-6th630, 4S-WMI-6th635, 4S-WMI-6th640, 4S-WMI-6th665 |  |  |  |  | CSD-LKO Calender (6 day + Holiday)-25 | Physical Progress [32770 h]; Testing & Commissioing [2355576 INR]; TATA Projects Ltd-25 | 2,355,576 |  |
| 4S-T&C-6th15 |  | Snagging & Desnagging | 25d | 2029-04-04 | 2029-05-04 | 4S-T&C-6th10 SS, 4S-WMI-6th330, 4S-WMI-6th335, 4S-WMI-6th400, 4S-WMI-6th405, 4S-WMI-6th520, 4S-WMI-6th660, 4S-WMI-6th680 FF, 4S-WMI-6th700 FF, 4S-WMI-6th705 SS |  |  |  |  | CSD-LKO Calender (6 day + Holiday)-25 | Physical Progress [23410 h]; TATA Projects Ltd-25 |  |  |
| 4S-T&C-6th20 |  | Handing Over | 1d | 2029-05-10 | 2029-05-10 | 4S-T&C-6th15 FF+5d |  |  |  |  | CSD-LKO Calender (6 day + Holiday)-25 | Physical Progress [780 h]; TATA Projects Ltd-25 |  |  |
|  | 9 | **Terrace Floor** |  | 2029-02-19 | 2029-05-02 |  |  |  |  |  |  |  |  |  |
| 4S-T&C-7th10 |  | Testing & Commissioning | 30d | 2029-02-19 | 2029-03-26 | 4S-Terrace20, 4S-F-Terrace85, 4S-VT30, 4S-F-Terrace80, 4S-F-Terrace85 FF |  |  |  |  |  | Physical Progress [23410 h]; Testing & Commissioing [1000000 INR]; TATA Projects Ltd-25 | 1,000,000 |  |
| 4S-T&C-7th15 |  | Snagging & Desnagging | 28d | 2029-03-27 | 2029-04-30 | 4S-T&C-7th10 |  |  |  |  |  | Physical Progress [21850 h]; TATA Projects Ltd-25 |  |  |
| 4S-T&C-7th20 |  | Handing Over | 1d | 2029-05-02 | 2029-05-02 | 4S-T&C-7th15 |  |  |  |  |  | Physical Progress [780 h]; TATA Projects Ltd-25 |  |  |
|  | 3 | **Hotel 3 Star** |  | 2026-07-14 | 2029-05-16 |  |  |  |  |  |  |  |  |  |
|  | 6 | **Substructure** |  | 2026-07-14 | 2027-03-25 |  |  |  |  |  |  |  |  |  |
|  | 4 | **Foundation** |  | 2026-07-14 | 2026-10-30 |  |  |  |  |  |  |  |  |  |
|  | 1 | **Pour 3** |  | 2026-07-24 | 2026-10-30 |  |  |  |  |  |  |  |  |  |
|  | 1 | **CF27** |  | 2026-07-24 | 2026-10-13 |  |  |  |  |  |  |  |  |  |
| 3S-SS-FN10 |  | Pocket Excavation | 7d | 2026-07-24 A | 2026-08-05 A | Milestones-80 | 100% |  | 2026-07-25 | 2026-08-05 |  | Physical Progress [8400 h]; Pocket Excavation; TATA Projects Ltd-25 |  |  |
| 3S-SS-FN15 |  | Surface dressing | 5d | 2026-08-01 A | 2026-08-10 A | 3S-SS-FN10 | 100% |  |  |  |  | Helper [30 h]; Physical Progress [1680 h]; Surface Dressing [1522 Sq m]; TATA Projects Ltd-25 | 68,490 | 68,490 |
| 3S-SS-FN20 |  | ATT | 4d | 2026-08-03 A | 2026-08-11 A | 3S-SS-FN15 | 100% |  | 2026-08-03 | 2026-08-10 |  | Physical Progress [1680 h]; ATT [1674 Sq m]; TATA Projects Ltd-25 | 229,338 | 229,338 |
| 3S-SS-FN25 |  | PCC | 5d | 2026-08-03 A | 2026-08-12 A | 3S-SS-FN20 FF, 3S-SS-FN15 | 100% |  |  |  |  | Mason [10 h]; Helper [10 h]; Physical Progress [1680 h]; Concrete M10 [114 m3]; TATA Projects Ltd-25 | 984,846 | 984,846 |
| 3S-SS-FN40 |  | Waterproofing | 0d | 2026-08-12 A | 2026-08-12 A | 3S-SS-FN25, 3S-SS-FN30 SS | 100% |  |  |  |  | Waterproofing (Raft/Grade Slab); Waterprrofing Mason; Helper; Physical Progress; TATA Projects Ltd-25 |  |  |
| 3S-SS-FN65 |  | Reinforcement | 25.9d | 2026-08-27 A | 2026-10-09 | 3S-SS-FN40 | 77% | 7d | 2026-08-28 | 2026-10-09 |  | Barbender [30400 h]; Helper [15200 h]; Physical Progress [5050 h]; Reinforcement Steel [456 MT1]; TATA Projects Ltd-25 | 44,009,700 | 32,115,186.49 |
| 3S-SS-FN30 |  | Shuttering | 6.1d | 2026-09-12 A | 2026-09-25 A | 3S-SS-FN25 | 100% |  | 2026-09-12 | 2026-09-24 |  | Carpenter [4680 h]; Helper [2340 h]; Physical Progress [5050 h]; Formwork [2807 Sq m]; TATA Projects Ltd-25 | 3,270,604.12 | 3,270,604.12 |
| 3S-SS-FN35 |  | Blockwork/Brickwork | 0d | 2026-09-19 A | 2026-09-19 A | 3S-SS-FN10, 3S-SS-FN25 | 100% |  |  |  |  | Brickwork for the footing; Mason; Helper; Physical Progress; TATA Projects Ltd-25 |  |  |
| 3S-SS-FN80 |  | Concrete | 3d | 2026-10-09 | 2026-10-13 | 3S-SS-FN65 |  |  |  |  |  | Mason [50 h]; Helper [50 h]; Physical Progress [1680 h]; Concrete M40 [3804 m3]; TATA Projects Ltd-25 | 37,534,068 |  |

| ID | WBS | Activity | Duration | Start | Finish | Predecessors | Complete | Remaining | Planned start | Planned finish | Resources | Cost | Actual cost |
| --- | --- | --- | --- | --- | --- | --- | --- | --- | --- | --- | --- | --- | --- |
|  | 2 | **CF27A** |  | 2026-09-17 | 2026-10-30 |  |  |  |  |  |  |  |  |
| 3S-SS-FN45 |  | Pocket Excavation | 2d | 2026-09-17 A | 2026-09-21 A | 3S-SS-FN10, 3S-SS-FN35 | 100% |  |  |  | Physical Progress [5050 h]; Pocket Excavation; TATA Projects Ltd-25 |  |  |
| 3S-SS-FN85 |  | Waterproofing | 2d | 2026-09-17 A | 2026-09-21 A | 3S-SS-FN45 SS | 100% |  |  |  | Waterproofing (Raft/Grade Slab); Waterprrofing Mason; Helper; Physical Progress; TATA Projects Ltd-25 |  |  |
| 3S-SS-FN130 |  | Reinforcement | 20d | 2026-09-30 | 2026-10-26 | 3S-SS-FN85 |  |  |  |  | Barbender [21200 h]; Helper [10600 h]; Physical Progress [5050 h]; Reinforcement Steel [318 MT1]; TATA Projects Ltd-25 | 30,690,975 |  |
| 3S-SS-FN50 |  | Surface dressing | 1d | 2026-09-30 | 2026-10-01 | 3S-SS-FN45 |  |  |  |  | Helper [30 h]; Physical Progress [1680 h]; Surface Dressing [1151 Sq m]; TATA Projects Ltd-25 | 51,795 |  |
| 3S-SS-FN55 |  | ATT | 1d | 2026-10-01 | 2026-10-03 | 3S-SS-FN50 |  |  |  |  | Physical Progress [1680 h]; ATT [1266 Sq m]; TATA Projects Ltd-25 | 173,442 |  |
| 3S-SS-FN60 |  | PCC | 1d | 2026-10-01 | 2026-10-03 | 3S-SS-FN55 FF, 3S-SS-FN50 |  |  |  |  | Mason [10 h]; Helper [10 h]; Physical Progress [1680 h]; Concrete M10 [86 m3]; TATA Projects Ltd-25 | 742,954 |  |
| 3S-SS-FN70 |  | Blockwork/Brickwork | 1d | 2026-10-01 | 2026-10-03 | 3S-SS-FN60 FF |  |  |  |  | Brickwork for the footing [64 CuM]; Mason [430 h]; Helper [220 h]; Physical Progress [5050 h]; TATA Projects Ltd-25 | 531,200 |  |
| 3S-SS-FN75 |  | Shuttering | 10d | 2026-10-16 | 2026-10-29 | 3S-SS-FN60, 3S-SS-FN130 FF+3d |  |  |  |  | Carpenter [3260 h]; Helper [1630 h]; Physical Progress [5050 h]; Formwork [1953 Sq m]; TATA Projects Ltd-25 | 2,275,557.48 |  |
| 3S-SS-FN165 |  | Concrete | 1d | 2026-10-29 | 2026-10-30 | 3S-SS-FN75 |  |  |  |  | Mason [50 h]; Helper [50 h]; Physical Progress [1680 h]; Concrete M40 [2646 m3]; TATA Projects Ltd-25 | 26,108,082 |  |
|  | 4 | **CF36** |  | 2026-10-03 | 2026-10-14 |  |  |  |  |  |  |  |  |
| 3S-SS-FN90 |  | Pocket Excavation | 1d | 2026-10-03 | 2026-10-05 | 3S-SS-FN45, 3S-SS-FN70 |  |  |  |  | Physical Progress [1680 h]; Pocket Excavation; TATA Projects Ltd-25 |  |  |
| 3S-SS-FN100 |  | Surface dressing | 1d | 2026-10-05 | 2026-10-06 | 3S-SS-FN90 |  |  |  |  | Helper [30 h]; Physical Progress [1680 h]; Surface Dressing [80 Sq m]; TATA Projects Ltd-25 | 3,600 |  |
| 3S-SS-FN105 |  | ATT | 1d | 2026-10-05 | 2026-10-06 | 3S-SS-FN90, 3S-SS-FN390 |  |  |  |  | Physical Progress [1680 h]; ATT [88 Sq m]; TATA Projects Ltd-25 | 12,056 |  |
| 3S-SS-FN110 |  | PCC | 1d | 2026-10-06 | 2026-10-07 | 3S-SS-FN105 FF, 3S-SS-FN100 |  |  |  |  | Mason [10 h]; Helper [10 h]; Physical Progress [1680 h]; Concrete M10 [6 m3]; TATA Projects Ltd-25 | 51,834 |  |
| 3S-SS-FN115 |  | Shuttering | 1d | 2026-10-07 | 2026-10-08 | 3S-SS-FN110 |  |  |  |  | Carpenter [200 h]; Helper [100 h]; Physical Progress [1680 h]; Formwork [116 Sq m]; TATA Projects Ltd-25 | 135,158.56 |  |
| 3S-SS-FN125 |  | Waterproofing | 0d | 2026-10-08 | 2026-10-08 | 3S-SS-FN110, 3S-SS-FN115 |  |  |  |  | Waterproofing (Raft/Grade Slab); Waterprrofing Mason; Helper; Physical Progress; TATA Projects Ltd-25 |  |  |
| 3S-SS-FN155 |  | Reinforcement | 4d | 2026-10-08 | 2026-10-13 | 3S-SS-FN125 |  |  |  |  | Barbender [1270 h]; Helper [640 h]; Physical Progress [1680 h]; Reinforcement Steel [19 MT1]; TATA Projects Ltd-25 | 1,833,737.5 |  |
| 3S-SS-FN160 |  | Concrete | 1d | 2026-10-13 | 2026-10-14 | 3S-SS-FN155 |  |  |  |  | Mason [50 h]; Helper [50 h]; Physical Progress [1680 h]; Concrete M40 [157 m3]; TATA Projects Ltd-25 | 1,549,119 |  |
|  | 3 | **CF39, F3 -3, F2-4, F1 - 3, CF37, CF38** |  | 2026-08-25 | 2026-10-10 |  |  |  |  |  |  |  |  |
| 3S-SS-FN355 |  | Pocket Excavation | 21.9d | 2026-08-25 A | 2026-10-03 | 3S-SS-FN345 | 50% | 2d | 2026-08-26 | 2026-10-03 | Physical Progress [6730 h]; Pocket Excavation; TATA Projects Ltd-25 |  |  |
| 3S-SS-FN390 |  | Surface dressing | 20.4d | 2026-08-30 A | 2026-10-05 | 3S-SS-FN355 SS, 3S-SS-FN440 SS | 50% | 0.5d | 2026-08-31 | 2026-10-05 | Helper [30 h]; Physical Progress [1680 h]; Surface Dressing [335 Sq m]; TATA Projects Ltd-25 | 15,075 | 14,705.51 |
| 3S-SS-FN395 |  | ATT | 20.9d | 2026-08-31 A | 2026-10-05 | 3S-SS-FN355 FF+1d | 50% | 0.5d |  |  | Physical Progress [1680 h]; ATT [369 Sq m]; TATA Projects Ltd-25 | 50,553 | 49,343.6 |
| 3S-SS-FN400 |  | PCC | 18.9d | 2026-09-02 A | 2026-10-05 | 3S-SS-FN395 FF | 50% | 0.5d | 2026-09-03 | 2026-10-05 | Mason [10 h]; Helper [10 h]; Physical Progress [1680 h]; Concrete M10 [25 m3]; TATA Projects Ltd-25 | 215,975 | 210,261.38 |
| 3S-SS-FN440 |  | Waterproofing | 17.9d | 2026-09-03 A | 2026-10-03 | 3S-SS-FN355 FF |  | 0d |  |  | Waterproofing (Raft/Grade Slab); Waterprrofing Mason; Helper; Physical Progress; TATA Projects Ltd-25 |  |  |
| 3S-SS-FN415 |  | Shuttering | 18.9d | 2026-09-04 A | 2026-10-06 | 3S-SS-FN465 SS | 50% | 1.5d | 2026-09-05 | 2026-10-06 | Carpenter [340 h]; Helper [170 h]; Physical Progress [5050 h]; Formwork [202 Sq m]; TATA Projects Ltd-25 | 235,362.32 | 216,682.77 |
| 3S-SS-FN465 |  | Reinforcement | 22.4d | 2026-09-04 A | 2026-10-10 | 3S-SS-FN400 SS | 50% | 5d | 2026-09-05 | 2026-10-10 | Barbender [2200 h]; Helper [1100 h]; Physical Progress [5050 h]; Reinforcement Steel [33 MT1]; TATA Projects Ltd-25 | 3,184,912.5 | 2,473,994.53 |
| 3S-SS-FN475 |  | Concrete | 14.9d | 2026-09-09 A | 2026-10-05 | 3S-SS-FN415 SS | 50% | 0.5d | 2026-09-10 | 2026-10-05 | Mason [50 h]; Helper [50 h]; Physical Progress [1680 h]; Concrete M40 [274 m3]; TATA Projects Ltd-25 | 2,703,558 | 2,612,834.58 |

| ID | WBS | Activity | Duration | Start | Finish | Predecessors | Complete | Remaining | Planned start | Planned finish | Resources | Cost | Actual cost |
| --- | --- | --- | --- | --- | --- | --- | --- | --- | --- | --- | --- | --- | --- |
|  | 2 | **Pour 1** |  | 2026-07-14 | 2026-10-27 |  |  |  |  |  |  |  |  |
|  | 1 | **CF21, CF21A** |  | 2026-07-14 | 2026-10-27 |  |  |  |  |  |  |  |  |
| 3S-SS-FN95 |  | Pocket Excavation | 0d | 2026-07-14 A | 2026-07-14 A | Milestones-50 SS | 100% |  |  |  | Physical Progress; Pocket Excavation; TATA Projects Ltd-25 |  |  |
| 3S-SS-FN120 |  | Surface dressing | 0d | 2026-07-25 A | 2026-07-25 A | 3S-SS-FN95 | 100% |  |  |  | Helper; Physical Progress; Surface Dressing; TATA Projects Ltd-25 |  |  |
| 3S-SS-FN135 |  | ATT | 0d | 2026-07-27 A | 2026-07-27 A | 3S-SS-FN120 | 100% |  |  |  | Physical Progress; ATT; TATA Projects Ltd-25 |  |  |
| 3S-SS-FN140 |  | PCC | 0d | 2026-07-28 A | 2026-07-28 A | 3S-SS-FN135 FF, 3S-SS-FN120 | 100% |  |  |  | Mason; Helper; Physical Progress; Concrete M10; TATA Projects Ltd-25 |  |  |
| 3S-SS-FN145 |  | Shuttering | 10d | 2026-09-30 | 2026-10-13 | 3S-SS-FN140, 3S-SS-FN150 SS |  |  |  |  | Carpenter [1670 h]; Helper [840 h]; Physical Progress [5050 h]; Formwork [998 Sq m]; TATA Projects Ltd-25 | 1,162,829.68 |  |
| 3S-SS-FN150 |  | Blockwork/Brickwork | 1d | 2026-09-30 | 2026-10-01 | 3S-SS-FN95, 3S-SS-FN140 |  |  |  |  | Brickwork for the footing [64 CuM]; Mason [430 h]; Helper [220 h]; Physical Progress [5050 h]; TATA Projects Ltd-25 | 531,200 |  |
| 3S-SS-FN170 |  | Waterproofing | 0d | 2026-10-13 | 2026-10-13 | 3S-SS-FN140, 3S-SS-FN145 |  |  |  |  | Waterproofing (Raft/Grade Slab); Waterprrofing Mason; Helper; Physical Progress; TATA Projects Ltd-25 |  |  |
| 3S-SS-FN205 |  | Reinforcement | 10d | 2026-10-13 | 2026-10-26 | 3S-SS-FN170 |  |  |  |  | Barbender [10800 h]; Helper [5400 h]; Physical Progress [5050 h]; Reinforcement Steel [162 MT1]; TATA Projects Ltd-25 | 15,635,025 |  |
| 3S-SS-FN220 |  | Concrete | 1d | 2026-10-26 | 2026-10-27 | 3S-SS-FN205 |  |  |  |  | Mason [50 h]; Helper [50 h]; Physical Progress [1680 h]; Concrete M40 [1352 m3]; TATA Projects Ltd-25 | 13,340,184 |  |
|  | 2 | **CF23B, CF22** |  | 2026-07-18 | 2026-08-20 |  |  |  |  |  |  |  |  |
| 3S-SS-FN175 |  | Pocket Excavation | 0d | 2026-07-18 A | 2026-07-18 A | Milestones-50 SS | 100% |  |  |  | Physical Progress; Pocket Excavation; TATA Projects Ltd-25 |  |  |
| 3S-SS-FN180 |  | Surface dressing | 0d | 2026-07-22 A | 2026-07-22 A | 3S-SS-FN175 | 100% |  | 2026-07-23 | 2026-07-23 | Helper; Physical Progress; Surface Dressing; TATA Projects Ltd-25 |  |  |
| 3S-SS-FN185 |  | ATT | 0d | 2026-07-23 A | 2026-07-23 A | 3S-SS-FN180 | 100% |  |  |  | Physical Progress; ATT; TATA Projects Ltd-25 |  |  |
| 3S-SS-FN190 |  | PCC | 0d | 2026-07-24 A | 2026-07-24 A | 3S-SS-FN185 FF, 3S-SS-FN180 | 100% |  | 2026-07-25 | 2026-07-25 | Mason; Helper; Physical Progress; Concrete M10; TATA Projects Ltd-25 |  |  |
| 3S-SS-FN195 |  | Blockwork/Brickwork | 0d | 2026-07-25 A | 2026-07-25 A | 3S-SS-FN175, 3S-SS-FN190 | 100% |  |  |  | Brickwork for the footing; Mason; Helper; Physical Progress; TATA Projects Ltd-25 |  |  |
| 3S-SS-FN215 |  | Waterproofing | 0d | 2026-07-27 A | 2026-07-27 A | 3S-SS-FN190, 3S-SS-FN200 | 100% |  |  |  | Waterproofing (Raft/Grade Slab); Waterprrofing Mason; Helper; Physical Progress; TATA Projects Ltd-25 |  |  |
| 3S-SS-FN265 |  | Reinforcement | 10d | 2026-07-28 A | 2026-08-18 A | 3S-SS-FN215 | 100% |  | 2026-07-28 | 2026-08-17 | Barbender [2740 h]; Helper [1370 h]; Physical Progress [5050 h]; Reinforcement Steel [41 MT1]; TATA Projects Ltd-25 | 3,957,012.5 | 3,957,012.5 |
| 3S-SS-FN200 |  | Shuttering | 7d | 2026-08-05 A | 2026-08-19 A | 3S-SS-FN190 | 100% |  |  |  | Carpenter [420 h]; Helper [210 h]; Physical Progress [5050 h]; Formwork [250 Sq m]; TATA Projects Ltd-25 | 291,290 | 291,290 |
| 3S-SS-FN285 |  | Concrete | 5d | 2026-08-08 A | 2026-08-20 A | 3S-SS-FN265 | 100% |  | 2026-08-10 | 2026-08-19 | Mason [50 h]; Helper [50 h]; Physical Progress [1680 h]; Concrete M40 [339 m3]; TATA Projects Ltd-25 | 3,344,913 | 3,344,913 |
|  | 3 | **F5 - 5, F6 - 5, F3 - 2, F9 - 1** |  | 2026-07-14 | 2026-10-07 |  |  |  |  |  |  |  |  |
| 3S-SS-FN210 |  | Pocket Excavation | 12d | 2026-07-14 A | 2026-08-03 A | 3S-SS-FN195 | 100% |  |  |  | Physical Progress [3360 h]; Pocket Excavation; TATA Projects Ltd-25 |  |  |
| 3S-SS-FN225 |  | Surface dressing | 38.4d | 2026-07-20 A | 2026-10-01 | 3S-SS-FN210 | 50% | 0.5d |  |  | Helper [30 h]; Physical Progress [1680 h]; Surface Dressing [260 Sq m]; TATA Projects Ltd-25 | 11,700 | 11,547.66 |
| 3S-SS-FN230 |  | ATT | 37.4d | 2026-07-21 A | 2026-10-01 | 3S-SS-FN210 | 50% | 0.5d |  |  | Physical Progress [1680 h]; ATT [286 Sq m]; TATA Projects Ltd-25 | 39,182 | 38,658.18 |
| 3S-SS-FN240 |  | PCC | 36.4d | 2026-07-22 A | 2026-10-01 | 3S-SS-FN230 FF, 3S-SS-FN225 SS | 50% | 0.5d | 2026-07-23 | 2026-10-01 | Mason [10 h]; Helper [10 h]; Physical Progress [1680 h]; Concrete M10 [20 m3]; TATA Projects Ltd-25 | 172,780 | 170,406.65 |
| 3S-SS-FN305 |  | Reinforcement | 39.9d | 2026-07-24 A | 2026-10-07 | 3S-SS-FN280 | 50% | 5d | 2026-07-25 | 2026-10-07 | Barbender [2070 h]; Helper [1040 h]; Physical Progress [5050 h]; Reinforcement Steel [31 MT1]; TATA Projects Ltd-25 | 2,991,887.5 | 2,616,964.25 |
| 3S-SS-FN245 |  | Shuttering | 36.4d | 2026-07-25 A | 2026-10-03 | 3S-SS-FN240 SS | 50% | 1.5d |  |  | Carpenter [330 h]; Helper [170 h]; Physical Progress [5050 h]; Formwork [193 Sq m]; TATA Projects Ltd-25 | 224,875.88 | 215,609.02 |
| 3S-SS-FN280 |  | Waterproofing | 0d | 2026-07-27 A | 2026-07-27 A | 3S-SS-FN240 SS, 3S-SS-FN245 SS | 100% |  |  |  | Waterproofing (Raft/Grade Slab); Waterprrofing Mason; Helper; Physical Progress; TATA Projects Ltd-25 |  |  |
| 3S-SS-FN335 |  | Concrete | 32.4d | 2026-07-30 A | 2026-10-01 | 3S-SS-FN305 SS | 50% | 0.5d |  |  | Mason [50 h]; Helper [50 h]; Physical Progress [1680 h]; Concrete M40 [261 m3]; TATA Projects Ltd-25 | 2,575,287 | 2,535,544.92 |

| ID | WBS | Activity | Duration | Start | Finish | Predecessors | Complete | Planned start | Planned finish | Constraint | Resources | Cost | Actual cost |
| --- | --- | --- | --- | --- | --- | --- | --- | --- | --- | --- | --- | --- | --- |
|  | 3 | **Pour 2** |  | 2026-07-15 | 2026-10-03 |  |  |  |  |  |  |  |  |
|  | 1 | **CF31A** |  | 2026-08-01 | 2026-09-09 |  |  |  |  |  |  |  |  |
| 3S-SS-FN235 |  | Pocket Excavation | 5d | 2026-08-01 A | 2026-08-10 A | 3S-SS-FN210 | 100% |  |  | mandatory finish 2026-07-23 | Physical Progress [3360 h]; Pocket Excavation; TATA Projects Ltd-25 |  |  |
| 3S-SS-FN250 |  | Surface dressing | 3d | 2026-08-05 A | 2026-08-10 A | 3S-SS-FN235 | 100% |  |  |  | Helper [30 h]; Physical Progress [1680 h]; Surface Dressing [306 Sq m]; TATA Projects Ltd-25 | 13,770 | 13,770 |
| 3S-SS-FN255 |  | ATT | 2d | 2026-08-07 A | 2026-08-11 A | 3S-SS-FN250 | 100% | 2026-08-07 | 2026-08-10 |  | Physical Progress [1680 h]; ATT [337 Sq m]; TATA Projects Ltd-25 | 46,169 | 46,169 |
| 3S-SS-FN260 |  | PCC | 2d | 2026-08-07 A | 2026-08-11 A | 3S-SS-FN255 FF, 3S-SS-FN250 | 100% | 2026-08-07 | 2026-08-10 |  | Mason [10 h]; Helper [10 h]; Physical Progress [1680 h]; Concrete M10 [23 m3]; TATA Projects Ltd-25 | 198,697 | 198,697 |
| 3S-SS-FN270 |  | Shuttering | 12d | 2026-08-10 A | 2026-09-04 A | 3S-SS-FN260 | 100% | 2026-08-10 | 2026-09-03 |  | Carpenter [760 h]; Helper [380 h]; Physical Progress [5050 h]; Formwork [452 Sq m]; TATA Projects Ltd-25 | 526,652.32 | 526,652.32 |
| 3S-SS-FN275 |  | Blockwork/Brickwork | 12d | 2026-08-10 A | 2026-09-03 A | 3S-SS-FN235, 3S-SS-FN260 | 100% |  |  |  | Brickwork for the footing [64 CuM]; Mason [430 h]; Helper [220 h]; Physical Progress [5050 h]; TATA Projects Ltd-25 | 531,200 | 531,200 |
| 3S-SS-FN290 |  | Waterproofing | 7d | 2026-08-21 A | 2026-09-03 A | 3S-SS-FN260, 3S-SS-FN270 | 100% |  |  |  | Waterproofing (Raft/Grade Slab); Waterprrofing Mason; Helper; Physical Progress; TATA Projects Ltd-25 |  |  |
| 3S-SS-FN330 |  | Reinforcement | 7d | 2026-08-27 A | 2026-09-08 A | 3S-SS-FN290 | 100% | 2026-08-28 | 2026-09-08 |  | Barbender [4870 h]; Helper [2440 h]; Physical Progress [5050 h]; Reinforcement Steel [73 MT1]; TATA Projects Ltd-25 | 7,045,412.5 | 7,045,412.5 |
| 3S-SS-FN350 |  | Concrete | 1d | 2026-09-08 A | 2026-09-09 A | 3S-SS-FN330 | 100% | 2026-09-08 | 2026-09-08 |  | Mason [50 h]; Helper [50 h]; Physical Progress [1680 h]; Concrete M40 [612 m3]; TATA Projects Ltd-25 | 6,038,604 | 6,038,604 |
|  | 2 | **CF31** |  | 2026-08-01 | 2026-09-24 |  |  |  |  |  |  |  |  |
| 3S-SS-FN295 |  | Pocket Excavation | 11d | 2026-08-01 A | 2026-08-25 A | 3S-SS-FN275 | 100% | 2026-08-01 | 2026-08-24 | mandatory finish 2026-07-23 | Physical Progress [3360 h]; Pocket Excavation; TATA Projects Ltd-25 |  |  |
| 3S-SS-FN300 |  | Surface dressing | 11d | 2026-08-05 A | 2026-08-29 A | 3S-SS-FN295 | 100% | 2026-08-05 | 2026-08-28 |  | Helper [30 h]; Physical Progress [1680 h]; Surface Dressing [480 Sq m]; TATA Projects Ltd-25 | 21,600 | 21,600 |
| 3S-SS-FN310 |  | ATT | 10d | 2026-08-07 A | 2026-08-30 A | 3S-SS-FN300 | 100% | 2026-08-07 | 2026-08-28 |  | Physical Progress [1680 h]; ATT [528 Sq m]; TATA Projects Ltd-25 | 72,336 | 72,336 |
| 3S-SS-FN315 |  | PCC | 11d | 2026-08-07 A | 2026-08-31 A | 3S-SS-FN310 FF, 3S-SS-FN300 | 100% |  |  |  | Mason [10 h]; Helper [10 h]; Physical Progress [1680 h]; Concrete M10 [36 m3]; TATA Projects Ltd-25 | 311,004 | 311,004 |
| 3S-SS-FN385 |  | Reinforcement | 10.65d | 2026-09-04 A | 2026-09-24 A | 3S-SS-FN340 | 100% | 2026-09-05 | 2026-09-24 |  | Barbender [7670 h]; Helper [3840 h]; Physical Progress [5050 h]; Reinforcement Steel [115 MT1]; TATA Projects Ltd-25 | 11,098,937.5 | 11,098,937.5 |
| 3S-SS-FN325 |  | Shuttering | 6d | 2026-09-08 A | 2026-09-19 A | 3S-SS-FN315 | 100% |  |  |  | Carpenter [1180 h]; Helper [590 h]; Physical Progress [5050 h]; Formwork [708 Sq m]; TATA Projects Ltd-25 | 824,933.28 | 824,933.28 |
| 3S-SS-FN340 |  | Waterproofing | 5d | 2026-09-08 A | 2026-09-19 A | 3S-SS-FN315, 3S-SS-FN325 | 100% | 2026-09-08 | 2026-09-17 |  | Waterproofing (Raft/Grade Slab); Waterprrofing Mason; Helper; Physical Progress; TATA Projects Ltd-25 |  |  |
| 3S-SS-FN320 |  | Blockwork/Brickwork | 1d | 2026-09-17 A | 2026-09-17 A | 3S-SS-FN295, 3S-SS-FN315 | 100% |  |  |  | Brickwork for the footing [64 CuM]; Mason [430 h]; Helper [220 h]; Physical Progress [5050 h]; TATA Projects Ltd-25 | 531,200 | 531,200 |
| 3S-SS-FN420 |  | Concrete | 0d | 2026-09-24 A | 2026-09-24 A | 3S-SS-FN320, 3S-SS-FN385 | 100% |  |  |  | Mason; Helper; Physical Progress; Concrete M40; TATA Projects Ltd-25 |  |  |
|  | 3 | **CF25, CF25A, CF25B, CF24** |  | 2026-07-15 | 2026-09-12 |  |  |  |  |  |  |  |  |
| 3S-SS-FN345 |  | Pocket Excavation | 13d | 2026-07-15 A | 2026-08-07 A | 3S-SS-FN320 | 100% | 2026-07-16 | 2026-08-07 |  | Physical Progress [3360 h]; Pocket Excavation; TATA Projects Ltd-25 |  |  |
| 3S-SS-FN360 |  | Surface dressing | 18.65d | 2026-07-23 A | 2026-08-31 A | 3S-SS-FN345 | 100% |  |  |  | Helper [30 h]; Physical Progress [1680 h]; Surface Dressing [461 Sq m]; TATA Projects Ltd-25 | 20,745 | 20,745 |
| 3S-SS-FN365 |  | ATT | 17.9d | 2026-07-24 A | 2026-08-31 A | 3S-SS-FN345 | 100% | 2026-07-25 | 2026-08-31 |  | Physical Progress [1680 h]; ATT [507 Sq m]; TATA Projects Ltd-25 | 69,459 | 69,459 |
| 3S-SS-FN370 |  | PCC | 18d | 2026-07-24 A | 2026-08-31 A | 3S-SS-FN365 FF, 3S-SS-FN360 | 100% | 2026-07-25 | 2026-08-31 |  | Mason [10 h]; Helper [10 h]; Physical Progress [1680 h]; Concrete M10 [35 m3]; TATA Projects Ltd-25 | 302,365 | 302,365 |
| 3S-SS-FN375 |  | Blockwork/Brickwork | 0d | 2026-08-01 A | 2026-08-01 A | 3S-SS-FN345, 3S-SS-FN370 | 100% |  |  |  | Brickwork for the footing; Mason; Helper; Physical Progress; TATA Projects Ltd-25 |  |  |
| 3S-SS-FN450 |  | Reinforcement | 18d | 2026-08-04 A | 2026-09-11 A | 3S-SS-FN405 | 100% | 2026-08-05 | 2026-09-10 |  | Barbender [5540 h]; Helper [2770 h]; Physical Progress [5050 h]; Reinforcement Steel [83 MT1]; TATA Projects Ltd-25 | 8,010,537.5 | 8,010,537.5 |
| 3S-SS-FN380 |  | Shuttering | 17.9d | 2026-08-05 A | 2026-09-10 A | 3S-SS-FN370 | 100% |  |  |  | Carpenter [850 h]; Helper [430 h]; Physical Progress [5050 h]; Formwork [510 Sq m]; TATA Projects Ltd-25 | 594,231.6 | 594,231.6 |
| 3S-SS-FN405 |  | Waterproofing | 0d | 2026-08-05 A | 2026-08-05 A | 3S-SS-FN370, 3S-SS-FN380 | 100% |  |  |  | Waterproofing (Raft/Grade Slab); Waterprrofing Mason; Helper; Physical Progress; TATA Projects Ltd-25 |  |  |
| 3S-SS-FN460 |  | Concrete | 12.9d | 2026-08-18 A | 2026-09-12 A | 3S-SS-FN375, 3S-SS-FN450 | 100% | 2026-08-19 | 2026-09-12 |  | Mason [50 h]; Helper [50 h]; Physical Progress [1680 h]; Concrete M40 [691 m3]; TATA Projects Ltd-25 | 6,818,097 | 6,818,097 |

| ID | WBS | Activity | Duration | Start | Finish | Predecessors | Complete | Remaining | Planned start | Planned finish | Resources | Cost | Actual cost |
| --- | --- | --- | --- | --- | --- | --- | --- | --- | --- | --- | --- | --- | --- |
|  | 4 | **CF23, CF23A, CF40, F2, F3, F9, F6** |  | 2026-07-21 | 2026-10-03 |  |  |  |  |  |  |  |  |
| 3S-SS-FN425 |  | Surface dressing | 25d | 2026-07-21 A | 2026-09-08 A | 3S-SS-FN410 | 100% |  |  |  | Helper [30 h]; Physical Progress [1680 h]; Surface Dressing [585 Sq m]; TATA Projects Ltd-25 | 26,325 | 26,325 |
| 3S-SS-FN430 |  | ATT | 24d | 2026-07-22 A | 2026-09-09 A | 3S-SS-FN425 | 100% |  | 2026-07-23 | 2026-09-08 | Physical Progress [1680 h]; ATT [644 Sq m]; TATA Projects Ltd-25 | 88,228 | 88,228 |
| 3S-SS-FN435 |  | PCC | 25d | 2026-07-22 A | 2026-09-10 A | 3S-SS-FN430 FF | 100% |  | 2026-07-23 | 2026-09-10 | Mason [10 h]; Helper [10 h]; Physical Progress [1680 h]; Concrete M10 [44 m3]; TATA Projects Ltd-25 | 380,116 | 380,116 |
| 3S-SS-FN455 |  | Waterproofing | 0d | 2026-07-22 A | 2026-07-22 A | 3S-SS-FN435, 3S-SS-FN445 SS | 100% |  | 2026-07-23 | 2026-07-23 | Waterproofing (Raft/Grade Slab); Waterprrofing Mason; Helper; Physical Progress; TATA Projects Ltd-25 |  |  |
| 3S-SS-FN410 |  | Pocket Excavation | 19d | 2026-07-24 A | 2026-09-01 A | 3S-SS-FN375 | 100% |  | 2026-07-25 | 2026-09-01 | Physical Progress [3360 h]; Pocket Excavation; TATA Projects Ltd-25 |  |  |
| 3S-SS-FN445 |  | Shuttering | 34.5d | 2026-07-26 A | 2026-10-01 | 3S-SS-FN435 | 90% | 0.6d | 2026-07-27 | 2026-10-01 | Carpenter [860 h]; Helper [430 h]; Physical Progress [3360 h]; Formwork [514 Sq m]; TATA Projects Ltd-25 | 598,892.24 | 588,476.72 |
| 3S-SS-FN470 |  | Reinforcement | 35.7d | 2026-07-26 A | 2026-10-03 | 3S-SS-FN455 | 85% | 1.8d | 2026-07-27 | 2026-10-03 | Barbender [5600 h]; Helper [2800 h]; Physical Progress [3360 h]; Reinforcement Steel [84 MT1]; TATA Projects Ltd-25 | 8,107,050 | 7,698,291.18 |
| 3S-SS-FN480 |  | Concrete | 32.05d | 2026-07-30 A | 2026-10-01 | 3S-SS-FN470 SS | 85% | 0.15d |  |  | Mason [50 h]; Helper [50 h]; Physical Progress [1680 h]; Concrete M40 [696 m3]; TATA Projects Ltd-25 | 6,867,432 | 6,835,291.13 |
|  | 5 | **Basement 03(Grade Slab)** |  | 2027-02-11 | 2027-03-25 |  |  |  |  |  |  |  |  |
|  | 1 | **Pour 1** |  | 2027-02-25 | 2027-03-25 |  |  |  |  |  |  |  |  |
| 3S-SS-GS10 |  | Deshuttering | 4d | 2027-02-25 | 2027-03-02 | 3S-SS-B01.405 |  |  |  |  | Physical Progress [6730 h]; TATA Projects Ltd-25 |  |  |
| 3S-SS-GS15 |  | Waterproofing | 5d | 2027-03-02 | 2027-03-08 | 3S-SS-GS10 |  |  |  |  | Waterproofing (Raft/Grade Slab) [1379 Sq m]; Waterprrofing Mason [1149.17 h]; Helper [574.58 h]; Physical Progress [18054.2 h]; TATA Projects Ltd-25 | 860,496 |  |
| 3S-SS-GS20 |  | Reinforcement | 10d | 2027-03-08 | 2027-03-20 | 3S-SS-GS15, 3S-SS-GS10 |  |  |  |  | Barbender [270 h]; Helper [140 h]; Physical Progress [16820 h]; Reinforcement Steel [4 MT1]; TATA Projects Ltd-25 | 386,050 |  |
| 3S-SS-GS25 |  | Shuttering | 2d | 2027-03-20 | 2027-03-24 | 3S-SS-GS20 |  |  |  |  | Carpenter [20 h]; Helper [10 h]; Physical Progress [3360 h]; Formwork [10 Sq m]; TATA Projects Ltd-25 | 11,651.6 |  |
| 3S-SS-GS30 |  | MEP Coordination | 2d | 2027-03-20 | 2027-03-24 | 3S-SS-GS20 |  |  |  |  | Physical Progress [3360 h]; TATA Projects Ltd-25 |  |  |
| 3S-SS-GS35 |  | Concrete | 1d | 2027-03-24 | 2027-03-25 | 3S-SS-GS30, 3S-SS-GS25 |  |  |  |  | Mason [50 h]; Helper [50 h]; Physical Progress [1680 h]; Concrete M40 [209 m3]; TATA Projects Ltd-25 | 2,062,203 |  |
|  | 2 | **Pour 2** |  | 2027-02-11 | 2027-03-09 |  |  |  |  |  |  |  |  |
| 3S-SS-GS40 |  | Deshuttering | 4d | 2027-02-11 | 2027-02-16 | 3S-SS-B01.545 |  |  |  |  | Physical Progress [6730 h]; TATA Projects Ltd-25 |  |  |
| 3S-SS-GS45 |  | Waterproofing | 5d | 2027-02-16 | 2027-02-22 | 3S-SS-GS40 |  |  |  |  | Waterproofing (Raft/Grade Slab) [2585 Sq m]; Waterprrofing Mason [2154.17 h]; Helper [1077.08 h]; Physical Progress [18054.2 h]; TATA Projects Ltd-25 | 1,613,040 |  |
| 3S-SS-GS50 |  | Reinforcement | 10d | 2027-02-22 | 2027-03-05 | 3S-SS-GS45, 3S-SS-GS40 |  |  |  |  | Barbender [470 h]; Helper [240 h]; Physical Progress [16820 h]; Reinforcement Steel [7 MT1]; TATA Projects Ltd-25 | 675,587.5 |  |
| 3S-SS-GS55 |  | Shuttering | 2d | 2027-03-05 | 2027-03-08 | 3S-SS-GS50 |  |  |  |  | Carpenter [20 h]; Helper [10 h]; Physical Progress [3360 h]; Formwork [10 Sq m]; TATA Projects Ltd-25 | 11,651.6 |  |
| 3S-SS-GS60 |  | MEP Coordination | 2d | 2027-03-05 | 2027-03-08 | 3S-SS-GS50 |  |  |  |  | Physical Progress [3360 h]; TATA Projects Ltd-25 |  |  |
| 3S-SS-GS65 |  | Concrete | 1d | 2027-03-08 | 2027-03-09 | 3S-SS-GS60, 3S-SS-GS55 |  |  |  |  | Mason [50 h]; Helper [50 h]; Physical Progress [1680 h]; Concrete M40 [392 m3]; TATA Projects Ltd-25 | 3,867,864 |  |

| ID | WBS | Activity | Duration | Start | Finish | Predecessors | Complete | Remaining | Planned start | Planned finish | Resources | Cost | Actual cost |
| --- | --- | --- | --- | --- | --- | --- | --- | --- | --- | --- | --- | --- | --- |
|  | 3 | **Basement 03** |  | 2026-08-18 | 2026-12-16 |  |  |  |  |  |  |  |  |
|  | 1 | **Pour 1** |  | 2026-08-18 | 2026-12-16 |  |  |  |  |  |  |  |  |
|  | 6 | **Soil Filling & PCC up to Grade Slab** |  | 2026-10-27 | 2026-11-12 |  |  |  |  |  |  |  |  |
| 3S-SS-B03.60 |  | LPS | 5d | 2026-10-27 | 2026-11-02 | 3S-SS-B03.10 |  |  |  |  | LPS [649323 INR]; Physical Progress [8410 h]; TATA Projects Ltd-25 | 649,323 |  |
| 3S-SS-B03.115 |  | Soil Filling/Plum Concrete | 6d | 2026-11-02 | 2026-11-09 | 3S-SS-FN335, 3S-SS-FN220, 3S-SS-FN285, 3S-SS-B03.100, 3S-SS-B03.60 |  |  |  |  | Physical Progress [10090 h]; Plum Concrete [115 m3]; Soil Filling [691 m3]; Sand Filling [512 m3]; TATA Projects Ltd-25 | 2,353,288 |  |
| 3S-SS-B03.130 |  | Surface dressing | 4d | 2026-11-05 | 2026-11-10 | 3S-SS-B03.115 FF+1d |  |  |  |  | Helper [120 h]; Physical Progress [6730 h]; Surface Dressing [494 Sq m]; TATA Projects Ltd-25 | 22,230 |  |
| 3S-SS-B03.150 |  | ATT | 3d | 2026-11-07 | 2026-11-11 | 3S-SS-B03.130 FF+1d |  |  |  |  | Physical Progress [5050 h]; ATT [547 Sq m]; TATA Projects Ltd-25 | 74,939 |  |
| 3S-SS-B03.165 |  | PCC | 3d | 2026-11-09 | 2026-11-12 | 3S-SS-B03.150 FF+1d |  |  |  |  | Mason [30 h]; Helper [30 h]; Physical Progress [5050 h]; Concrete M10 [125 m3]; TATA Projects Ltd-25 | 1,079,875 |  |
|  | 1 | **Column, Core Wall, Shear Wall** |  | 2026-08-18 | 2026-10-28 |  |  |  |  |  |  |  |  |
| 3S-SS-B03.10 |  | Reinforcement | 43.9d | 2026-08-18 A | 2026-10-27 | 3S-SS-FN285, 3S-SS-FN335 SS, 3S-SS-FN220 FF | 35% | 4.55d | 2026-08-19 | 2026-10-27 | Barbender [3000 h]; Helper [1500 h]; Physical Progress [11780 h]; Reinforcement Steel [45 MT1]; TATA Projects Ltd-25 | 4,343,062.5 | 3,892,927.32 |
| 3S-SS-B03.50 |  | LPS | 40.12d | 2026-08-19 A | 2026-10-23 | 3S-SS-B03.10 SS | 23% | 0.77d |  |  | LPS [63943 INR]; Physical Progress [1680 h]; TATA Projects Ltd-25 | 63,943 | 62,715.78 |
| 3S-SS-B03.65 |  | Shuttering | 38.74d | 2026-09-01 A | 2026-10-28 | 3S-SS-B03.10 SS, 3S-SS-B03.50 SS | 23% | 5.39d |  |  | Carpenter [1750 h]; Helper [880 h]; Physical Progress [11780 h]; Formwork [1045 Sq m]; TATA Projects Ltd-25 | 1,217,592.2 | 1,048,185.33 |
| 3S-SS-B03.100 |  | Concrete | 32.12d | 2026-09-04 A | 2026-10-23 | 3S-SS-B03.65 SS | 23% | 0.77d | 2026-09-05 | 2026-10-23 | Mason [50 h]; Helper [50 h]; Physical Progress [1680 h]; Concrete M40 [280 m3]; TATA Projects Ltd-25 | 2,762,760 | 2,696,529.45 |
|  | 4 | **Staircase - 1** |  | 2026-10-01 | 2026-11-05 |  |  |  |  |  |  |  |  |
| 3S-SS-B03.15 |  | Reinforcement of wall upto Flight 1 | 3d | 2026-10-01 | 2026-10-06 | 3S-SS-FN335 |  |  |  |  | Barbender [70 h]; Helper [40 h]; Physical Progress [5050 h]; Reinforcement Steel [1 MT1]; TATA Projects Ltd-25 | 96,512.5 |  |
| 3S-SS-B03.25 |  | Shuttering of wall upto Flight 1 | 3d | 2026-10-06 | 2026-10-09 | 3S-SS-B03.15 |  |  |  |  | Carpenter [20 h]; Helper [10 h]; Physical Progress [5050 h]; Formwork [10 Sq m]; TATA Projects Ltd-25 | 11,651.6 |  |
| 3S-SS-B03.35 |  | Casting of wall upto Flight 1 | 1d | 2026-10-09 | 2026-10-10 | 3S-SS-B03.25 |  |  |  |  | Mason; Helper; Physical Progress [1680 h]; Concrete M40 [3 m3]; TATA Projects Ltd-25 | 29,601 |  |
| 3S-SS-B03.45 |  | Shuttering of Staircase upto Flight 1 | 3d | 2026-10-10 | 2026-10-14 | 3S-SS-B03.35 |  |  |  |  | Carpenter [20 h]; Helper [10 h]; Physical Progress [5050 h]; Formwork [10 Sq m]; TATA Projects Ltd-25 | 11,651.6 |  |
| 3S-SS-B03.70 |  | Reinforcement of Staircase upto Flight 1 | 3d | 2026-10-14 | 2026-10-17 | 3S-SS-B03.45 |  |  |  |  | Barbender [70 h]; Helper [40 h]; Physical Progress [5050 h]; Reinforcement Steel [1 MT1]; TATA Projects Ltd-25 | 96,512.5 |  |
| 3S-SS-B03.80 |  | MEP coordination upto Flight 1 | 1d | 2026-10-17 | 2026-10-19 | 3S-SS-B03.70 |  |  |  |  | Physical Progress [1680 h]; TATA Projects Ltd-25 |  |  |
| 3S-SS-B03.90 |  | Casting of Staircase upto Flight 1 | 1d | 2026-10-19 | 2026-10-21 | 3S-SS-B03.80 |  |  |  |  | Mason; Helper; Physical Progress [1680 h]; Concrete M40 [3 m3]; TATA Projects Ltd-25 | 29,601 |  |
| 3S-SS-B03.105 |  | Reinforcement of wall upto Flight 2 | 3d | 2026-10-21 | 2026-10-24 | 3S-SS-B03.90 |  |  |  |  | Barbender [70 h]; Helper [40 h]; Physical Progress [5050 h]; Reinforcement Steel [1 MT1]; TATA Projects Ltd-25 | 96,512.5 |  |
| 3S-SS-B03.120 |  | Shuttering of wall upto Flight 2 | 3d | 2026-10-24 | 2026-10-28 | 3S-SS-B03.105 |  |  |  |  | Carpenter [20 h]; Helper [10 h]; Physical Progress [5050 h]; Formwork [10 Sq m]; TATA Projects Ltd-25 | 11,651.6 |  |
| 3S-SS-B03.135 |  | Casting of wall upto Flight 2 | 1d | 2026-10-28 | 2026-10-29 | 3S-SS-B03.120 |  |  |  |  | Mason; Helper; Physical Progress [1680 h]; Concrete M40 [3 m3]; TATA Projects Ltd-25 | 29,601 |  |
| 3S-SS-B03.160 |  | Shuttering of Staircase upto Flight 2 | 3d | 2026-10-29 | 2026-11-02 | 3S-SS-B03.135 |  |  |  |  | Carpenter [20 h]; Helper [10 h]; Physical Progress [5050 h]; Formwork [10 Sq m]; TATA Projects Ltd-25 | 11,651.6 |  |
| 3S-SS-B03.185 |  | Reinforcement of Staircase upto Flight 2 | 3d | 2026-11-02 | 2026-11-05 | 3S-SS-B03.160 |  |  |  |  | Barbender [70 h]; Helper [40 h]; Physical Progress [5050 h]; Reinforcement Steel [1 MT1]; TATA Projects Ltd-25 | 96,512.5 |  |

| ID | WBS | Activity | Duration | Start | Finish | Predecessors | Resources | Cost |
| --- | --- | --- | --- | --- | --- | --- | --- | --- |
|  | 2 | **Staircase - 2** |  | 2026-10-01 | 2026-11-05 |  |  |  |
| 3S-SS-B03.20 |  | Reinforcement of wall upto Flight 1 | 3d | 2026-10-01 | 2026-10-06 | 3S-SS-FN335 | Barbender [70 h]; Helper [40 h]; Physical Progress [5050 h]; Reinforcement Steel [1 MT1]; TATA Projects Ltd-25 | 96,512.5 |
| 3S-SS-B03.30 |  | Shuttering of wall upto Flight 1 | 3d | 2026-10-06 | 2026-10-09 | 3S-SS-B03.20 | Carpenter [20 h]; Helper [10 h]; Physical Progress [5050 h]; Formwork [10 Sq m]; TATA Projects Ltd-25 | 11,651.6 |
| 3S-SS-B03.40 |  | Casting of wall upto Flight 1 | 1d | 2026-10-09 | 2026-10-10 | 3S-SS-B03.30 | Mason; Helper; Physical Progress [1680 h]; Concrete M40 [3 m3]; TATA Projects Ltd-25 | 29,601 |
| 3S-SS-B03.55 |  | Shuttering of Staircase upto Flight 1 | 3d | 2026-10-10 | 2026-10-14 | 3S-SS-B03.40 | Carpenter [20 h]; Helper [10 h]; Physical Progress [5050 h]; Formwork [10 Sq m]; TATA Projects Ltd-25 | 11,651.6 |
| 3S-SS-B03.75 |  | Reinforcement of Staircase upto Flight 1 | 3d | 2026-10-14 | 2026-10-17 | 3S-SS-B03.55 | Barbender [70 h]; Helper [40 h]; Physical Progress [5050 h]; Reinforcement Steel [1 MT1]; TATA Projects Ltd-25 | 96,512.5 |
| 3S-SS-B03.85 |  | MEP coordination upto Flight 1 | 1d | 2026-10-17 | 2026-10-19 | 3S-SS-B03.75 | Physical Progress [1680 h]; TATA Projects Ltd-25 |  |
| 3S-SS-B03.95 |  | Casting of Staircase upto Flight 1 | 1d | 2026-10-19 | 2026-10-21 | 3S-SS-B03.85 | Mason; Helper; Physical Progress [1680 h]; Concrete M40 [3 m3]; TATA Projects Ltd-25 | 29,601 |
| 3S-SS-B03.110 |  | Reinforcement of wall upto Flight 2 | 3d | 2026-10-21 | 2026-10-24 | 3S-SS-B03.95 | Barbender [70 h]; Helper [40 h]; Physical Progress [5050 h]; Reinforcement Steel [1 MT1]; TATA Projects Ltd-25 | 96,512.5 |
| 3S-SS-B03.125 |  | Shuttering of wall upto Flight 2 | 3d | 2026-10-24 | 2026-10-28 | 3S-SS-B03.110 | Carpenter [20 h]; Helper [10 h]; Physical Progress [5050 h]; Formwork [10 Sq m]; TATA Projects Ltd-25 | 11,651.6 |
| 3S-SS-B03.155 |  | Casting of wall upto Flight 2 | 1d | 2026-10-28 | 2026-10-29 | 3S-SS-B03.125 | Mason; Helper; Physical Progress [1680 h]; Concrete M40 [3 m3]; TATA Projects Ltd-25 | 29,601 |
| 3S-SS-B03.170 |  | Shuttering of Staircase upto Flight 2 | 3d | 2026-10-29 | 2026-11-02 | 3S-SS-B03.155 | Carpenter [20 h]; Helper [10 h]; Physical Progress [5050 h]; Formwork [10 Sq m]; TATA Projects Ltd-25 | 11,651.6 |
| 3S-SS-B03.190 |  | Reinforcement of Staircase upto Flight 2 | 3d | 2026-11-02 | 2026-11-05 | 3S-SS-B03.170 | Barbender [70 h]; Helper [40 h]; Physical Progress [5050 h]; Reinforcement Steel [1 MT1]; TATA Projects Ltd-25 | 96,512.5 |
|  | 3 | **Slab** |  | 2026-11-12 | 2026-12-16 |  |  |  |
| 3S-SS-B03.180 |  | Shuttering | 5d | 2026-11-12 | 2026-11-18 | 3S-SS-B03.100, 3S-SS-B03.165 | Carpenter [2410 h]; Helper [1210 h]; Physical Progress [8410 h]; Formwork [1443 Sq m]; TATA Projects Ltd-25 | 1,681,325.88 |
| 3S-SS-B03.220 |  | Reinforcement Bottom Net with chairs | 3d | 2026-11-18 | 2026-11-21 | 3S-SS-B03.180 | Barbender [600 h]; Helper [300 h]; Physical Progress [5050 h]; Reinforcement Steel [9 MT1]; TATA Projects Ltd-25 | 868,612.5 |
| 3S-SS-B03.230 |  | Laying of PT Tendon | 4d | 2026-11-21 | 2026-11-26 | 3S-SS-B03.220 | Physical Progress [6730 h]; TATA Projects Ltd-25 |  |
| 3S-SS-B03.255 |  | Reinforcement Top Net | 3d | 2026-11-26 | 2026-11-30 | 3S-SS-B03.230 | Barbender [600 h]; Helper [300 h]; Physical Progress [5050 h]; Reinforcement Steel [9 MT1]; TATA Projects Ltd-25 | 868,612.5 |
| 3S-SS-B03.270 |  | MEP Coordination | 1d | 2026-11-30 | 2026-12-01 | 3S-SS-B03.185, 3S-SS-B03.255, 3S-SS-B03.190 | Physical Progress [1680 h]; TATA Projects Ltd-25 |  |
| 3S-SS-B03.280 |  | Concrete of Slab | 1d | 2026-12-01 | 2026-12-02 | 3S-SS-B03.270 | Mason [50 h]; Helper [50 h]; Physical Progress [1680 h]; Concrete M40 [361 m3]; TATA Projects Ltd-25 | 3,561,987 |
| 3S-SS-B03.285 |  | Wait for Strength Gain | 6d | 2026-12-02 | 2026-12-09 | 3S-SS-B03.280 | Physical Progress [10090 h]; TATA Projects Ltd-25 |  |
| 3S-SS-B03.315 |  | PT Work | 6d | 2026-12-09 | 2026-12-16 | 3S-SS-B03.285 | PT [5 MT1]; Helper [100 h]; PT Fitter [100 h]; Physical Progress [13460 h]; TATA Projects Ltd-25 | 950,000 |
|  | 2 | **Pour 2** |  | 2026-08-18 | 2026-12-02 |  |  |  |
|  | 6 | **Soil Filling & PCC up to Grade Slab** |  | 2026-10-09 | 2026-10-29 |  |  |  |
| 3S-SS-B03.210 |  | LPS | 5d | 2026-10-09 | 2026-10-15 | 3S-SS-B03.140 | LPS [1217481 INR]; Physical Progress [8410 h]; TATA Projects Ltd-25 | 1,217,481 |
| 3S-SS-B03.260 |  | Soil Filling/Plum Concrete | 6d | 2026-10-15 | 2026-10-23 | 3S-SS-FN480, 3S-SS-FN350, 3S-SS-FN420, 3S-SS-FN460, 3S-SS-B03.245, 3S-SS-B03.210 | Physical Progress [10090 h]; Plum Concrete [216 m3]; Soil Filling [1296 m3]; Sand Filling [960 m3]; TATA Projects Ltd-25 | 4,415,040 |
| 3S-SS-B03.275 |  | Surface dressing | 4d | 2026-10-19 | 2026-10-24 | 3S-SS-B03.260 FF+1d | Helper [120 h]; Physical Progress [6730 h]; Surface Dressing [927 Sq m]; TATA Projects Ltd-25 | 41,715 |
| 3S-SS-B03.300 |  | ATT | 3d | 2026-10-24 | 2026-10-28 | 3S-SS-B03.275 | Physical Progress [5050 h]; ATT [1026 Sq m]; TATA Projects Ltd-25 | 140,562 |
| 3S-SS-B03.305 |  | PCC | 3d | 2026-10-26 | 2026-10-29 | 3S-SS-B03.300 FF+1d | Mason [30 h]; Helper [30 h]; Physical Progress [5050 h]; Concrete M10 [234 m3]; TATA Projects Ltd-25 | 2,021,526 |

| ID | WBS | Activity | Duration | Start | Finish | Predecessors | Complete | Remaining | Planned start | Planned finish | Resources | Cost | Actual cost |
| --- | --- | --- | --- | --- | --- | --- | --- | --- | --- | --- | --- | --- | --- |
|  | 1 | **Column, Core Wall, Shear Wall** |  | 2026-08-18 | 2026-10-09 |  |  |  |  |  |  |  |  |
| 3S-SS-B03.140 |  | Reinforcement | 29.2d | 2026-08-18 A | 2026-10-09 | 3S-SS-FN350, 3S-SS-FN420, 3S-SS-FN460, 3S-SS-FN480 SS | 10% | 6.3d | 2026-08-19 | 2026-10-09 | Barbender [3940 h]; Helper [1970 h]; Physical Progress [11780 h]; Reinforcement Steel [59 MT1]; TATA Projects Ltd-25 | 5,694,237.5 | 4,465,686.26 |
| 3S-SS-B03.205 |  | LPS | 23.83d | 2026-08-19 A | 2026-10-01 | 3S-SS-B03.140 SS | 7% | 0.93d |  |  | LPS [63943 INR]; Physical Progress [1680 h]; TATA Projects Ltd-25 | 63,943 | 61,447.53 |
| 3S-SS-B03.215 |  | Shuttering | 25.41d | 2026-08-28 A | 2026-10-09 | 3S-SS-B03.140 SS, 3S-SS-B03.205 SS | 7% | 6.51d |  |  | Carpenter [2290 h]; Helper [1150 h]; Physical Progress [11780 h]; Formwork [1374 Sq m]; TATA Projects Ltd-25 | 1,600,929.84 | 1,190,774.26 |
| 3S-SS-B03.245 |  | Concrete | 15.83d | 2026-09-04 A | 2026-10-01 | 3S-SS-B03.215 SS | 7% | 0.93d | 2026-09-05 | 2026-10-01 | Mason [50 h]; Helper [50 h]; Physical Progress [1680 h]; Concrete M40 [368 m3]; TATA Projects Ltd-25 | 3,631,056 | 3,417,734.33 |
|  | 4 | **Staircase** |  | 2026-10-01 | 2026-11-05 |  |  |  |  |  |  |  |  |
| 3S-SS-B03.145 |  | Reinforcement of wall upto Flight 1 | 3d | 2026-10-01 | 2026-10-06 | 3S-SS-FN480 |  |  |  |  | Barbender [70 h]; Helper [40 h]; Physical Progress [5050 h]; Reinforcement Steel [1 MT1]; TATA Projects Ltd-25 | 96,512.5 |  |
| 3S-SS-B03.175 |  | Shuttering of wall upto Flight 1 | 3d | 2026-10-06 | 2026-10-09 | 3S-SS-B03.145 |  |  |  |  | Carpenter [20 h]; Helper [10 h]; Physical Progress [5050 h]; Formwork [10 Sq m]; TATA Projects Ltd-25 | 11,651.6 |  |
| 3S-SS-B03.195 |  | Casting of wall upto Flight 1 | 1d | 2026-10-09 | 2026-10-10 | 3S-SS-B03.175 |  |  |  |  | Mason; Helper; Physical Progress [1680 h]; Concrete M40 [3 m3]; TATA Projects Ltd-25 | 29,601 |  |
| 3S-SS-B03.200 |  | Shuttering of Staircase upto Flight 1 | 3d | 2026-10-10 | 2026-10-14 | 3S-SS-B03.195 |  |  |  |  | Carpenter [20 h]; Helper [10 h]; Physical Progress [5050 h]; Formwork [10 Sq m]; TATA Projects Ltd-25 | 11,651.6 |  |
| 3S-SS-B03.225 |  | Reinforcement of Staircase upto Flight 1 | 3d | 2026-10-14 | 2026-10-17 | 3S-SS-B03.200 |  |  |  |  | Barbender [70 h]; Helper [40 h]; Physical Progress [5050 h]; Reinforcement Steel [1 MT1]; TATA Projects Ltd-25 | 96,512.5 |  |
| 3S-SS-B03.235 |  | MEP coordination upto Flight 1 | 1d | 2026-10-17 | 2026-10-19 | 3S-SS-B03.225 |  |  |  |  | Physical Progress [1680 h]; TATA Projects Ltd-25 |  |  |
| 3S-SS-B03.240 |  | Casting of Staircase upto Flight 1 | 1d | 2026-10-19 | 2026-10-21 | 3S-SS-B03.235 |  |  |  |  | Mason; Helper; Physical Progress [1680 h]; Concrete M40 [3 m3]; TATA Projects Ltd-25 | 29,601 |  |
| 3S-SS-B03.250 |  | Reinforcement of wall upto Flight 2 | 3d | 2026-10-21 | 2026-10-24 | 3S-SS-B03.240 |  |  |  |  | Barbender [70 h]; Helper [40 h]; Physical Progress [5050 h]; Reinforcement Steel [1 MT1]; TATA Projects Ltd-25 | 96,512.5 |  |
| 3S-SS-B03.265 |  | Shuttering of wall upto Flight 2 | 3d | 2026-10-24 | 2026-10-28 | 3S-SS-B03.250 |  |  |  |  | Carpenter [20 h]; Helper [10 h]; Physical Progress [5050 h]; Formwork [10 Sq m]; TATA Projects Ltd-25 | 11,651.6 |  |
| 3S-SS-B03.290 |  | Casting of wall upto Flight 2 | 1d | 2026-10-28 | 2026-10-29 | 3S-SS-B03.265 |  |  |  |  | Mason; Helper; Physical Progress [1680 h]; Concrete M40 [3 m3]; TATA Projects Ltd-25 | 29,601 |  |
| 3S-SS-B03.295 |  | Shuttering of Staircase upto Flight 2 | 3d | 2026-10-29 | 2026-11-02 | 3S-SS-B03.290 |  |  |  |  | Carpenter [20 h]; Helper [10 h]; Physical Progress [5050 h]; Formwork [10 Sq m]; TATA Projects Ltd-25 | 11,651.6 |  |
| 3S-SS-B03.310 |  | Reinforcement of Staircase upto Flight 2 | 3d | 2026-11-02 | 2026-11-05 | 3S-SS-B03.295 |  |  |  |  | Barbender [70 h]; Helper [40 h]; Physical Progress [5050 h]; Reinforcement Steel [1 MT1]; TATA Projects Ltd-25 | 96,512.5 |  |
|  | 3 | **Slab** |  | 2026-10-29 | 2026-12-02 |  |  |  |  |  |  |  |  |
| 3S-SS-B03.320 |  | Shuttering | 5d | 2026-10-29 | 2026-11-04 | 3S-SS-B03.245, 3S-SS-B03.305 |  |  |  |  | Carpenter [3170 h]; Helper [1590 h]; Physical Progress [8410 h]; Formwork [1897 Sq m]; TATA Projects Ltd-25 | 2,210,308.52 |  |
| 3S-SS-B03.325 |  | Reinforcement Bottom Net with chairs | 3d | 2026-11-04 | 2026-11-07 | 3S-SS-B03.320 |  |  |  |  | Barbender [800 h]; Helper [400 h]; Physical Progress [5050 h]; Reinforcement Steel [12 MT1]; TATA Projects Ltd-25 | 1,158,150 |  |
| 3S-SS-B03.330 |  | Laying of PT Tendon | 4d | 2026-11-07 | 2026-11-12 | 3S-SS-B03.325 |  |  |  |  | Physical Progress [6730 h]; TATA Projects Ltd-25 |  |  |
| 3S-SS-B03.335 |  | Reinforcement Top Net | 3d | 2026-11-12 | 2026-11-16 | 3S-SS-B03.330 |  |  |  |  | Barbender [800 h]; Helper [400 h]; Physical Progress [5050 h]; Reinforcement Steel [12 MT1]; TATA Projects Ltd-25 | 1,158,150 |  |
| 3S-SS-B03.340 |  | MEP Coordination | 1d | 2026-11-16 | 2026-11-17 | 3S-SS-B03.310, 3S-SS-B03.335 |  |  |  |  | Physical Progress [1680 h]; TATA Projects Ltd-25 |  |  |
| 3S-SS-B03.345 |  | Concrete of Slab | 1d | 2026-11-17 | 2026-11-18 | 3S-SS-B03.340 |  |  |  |  | Mason [50 h]; Helper [50 h]; Physical Progress [1680 h]; Concrete M40 [474 m3]; TATA Projects Ltd-25 | 4,676,958 |  |
| 3S-SS-B03.350 |  | Wait for Strength Gain | 6d | 2026-11-18 | 2026-11-25 | 3S-SS-B03.345 |  |  |  |  | Physical Progress [10090 h]; TATA Projects Ltd-25 |  |  |
| 3S-SS-B03.355 |  | PT Work | 6d | 2026-11-25 | 2026-12-02 | 3S-SS-B03.350 |  |  |  |  | PT [6 MT1]; Helper [100 h]; PT Fitter [100 h]; Physical Progress [13460 h]; TATA Projects Ltd-25 | 1,140,000 |  |

| ID | WBS | Activity | Duration | Start | Finish | Predecessors | Resources | Cost |
| --- | --- | --- | --- | --- | --- | --- | --- | --- |
|  | 1 | **Basement 02** |  | 2026-11-18 | 2027-01-27 |  |  |  |
|  | 1 | **Pour 1** |  | 2026-12-02 | 2027-01-27 |  |  |  |
|  | 1 | **Column, Core Wall, Shear Wall** |  | 2026-12-02 | 2026-12-21 |  |  |  |
| 3S-SS-B02.10 |  | Reinforcement | 7d | 2026-12-02 | 2026-12-10 | 3S-SS-B03.280 | Barbender [2940 h]; Helper [1470 h]; Physical Progress [11780 h]; Reinforcement Steel [44 MT1]; TATA Projects Ltd-25 | 4,246,550 |
| 3S-SS-B02.45 |  | LPS | 1d | 2026-12-10 | 2026-12-11 | 3S-SS-B02.10 | LPS [63943 INR]; Physical Progress [1680 h]; TATA Projects Ltd-25 | 63,943 |
| 3S-SS-B02.60 |  | Shuttering | 7d | 2026-12-11 | 2026-12-19 | 3S-SS-B02.10, 3S-SS-B02.45 | Carpenter [1410 h]; Helper [710 h]; Physical Progress [11780 h]; Formwork [843 Sq m]; TATA Projects Ltd-25 | 982,229.88 |
| 3S-SS-B02.95 |  | Concrete | 1d | 2026-12-19 | 2026-12-21 | 3S-SS-B02.60 | Mason [50 h]; Helper [50 h]; Physical Progress [1680 h]; Concrete M40 [211 m3]; TATA Projects Ltd-25 | 2,081,937 |
|  | 3 | **Staircase - 1** |  | 2026-12-02 | 2027-01-08 |  |  |  |
| 3S-SS-B02.15 |  | Reinforcement of wall upto Flight 1 | 3d | 2026-12-02 | 2026-12-05 | 3S-SS-B03.280 | Barbender [70 h]; Helper [40 h]; Physical Progress [5050 h]; Reinforcement Steel [1 MT1]; TATA Projects Ltd-25 | 96,512.5 |
| 3S-SS-B02.25 |  | Shuttering of wall upto Flight 1 | 3d | 2026-12-05 | 2026-12-09 | 3S-SS-B02.15 | Carpenter [20 h]; Helper [10 h]; Physical Progress [5050 h]; Formwork [10 Sq m]; TATA Projects Ltd-25 | 11,651.6 |
| 3S-SS-B02.35 |  | Casting of wall upto Flight 1 | 1d | 2026-12-09 | 2026-12-10 | 3S-SS-B02.25 | Mason; Helper; Physical Progress [1680 h]; Concrete M40 [3 m3]; TATA Projects Ltd-25 | 29,601 |
| 3S-SS-B02.50 |  | Shuttering of Staircase upto Flight 1 | 3d | 2026-12-10 | 2026-12-14 | 3S-SS-B02.35 | Carpenter [20 h]; Helper [10 h]; Physical Progress [5050 h]; Formwork [10 Sq m]; TATA Projects Ltd-25 | 11,651.6 |
| 3S-SS-B02.65 |  | Reinforcement of Staircase upto Flight 1 | 3d | 2026-12-14 | 2026-12-17 | 3S-SS-B02.50 | Barbender [70 h]; Helper [40 h]; Physical Progress [5050 h]; Reinforcement Steel [1 MT1]; TATA Projects Ltd-25 | 96,512.5 |
| 3S-SS-B02.75 |  | MEP coordination upto Flight 1 | 1d | 2026-12-17 | 2026-12-18 | 3S-SS-B02.65 | Physical Progress [1680 h]; TATA Projects Ltd-25 |  |
| 3S-SS-B02.85 |  | Casting of Staircase upto Flight 1 | 1d | 2026-12-18 | 2026-12-19 | 3S-SS-B02.75 | Mason; Helper; Physical Progress [1680 h]; Concrete M40 [3 m3]; TATA Projects Ltd-25 | 29,601 |
| 3S-SS-B02.100 |  | Reinforcement of wall upto Flight 2 | 3d | 2026-12-19 | 2026-12-23 | 3S-SS-B02.85 | Barbender [70 h]; Helper [40 h]; Physical Progress [5050 h]; Reinforcement Steel [1 MT1]; TATA Projects Ltd-25 | 96,512.5 |
| 3S-SS-B02.115 |  | Shuttering of wall upto Flight 2 | 3d | 2026-12-23 | 2026-12-28 | 3S-SS-B02.100 | Carpenter [20 h]; Helper [10 h]; Physical Progress [5050 h]; Formwork [10 Sq m]; TATA Projects Ltd-25 | 11,651.6 |
| 3S-SS-B02.130 |  | Casting of wall upto Flight 2 | 1d | 2026-12-28 | 2026-12-29 | 3S-SS-B02.115 | Mason; Helper; Physical Progress [1680 h]; Concrete M40 [3 m3]; TATA Projects Ltd-25 | 29,601 |
| 3S-SS-B02.140 |  | Shuttering of Staircase upto Flight 2 | 3d | 2026-12-29 | 2027-01-02 | 3S-SS-B02.130 | Carpenter [20 h]; Helper [10 h]; Physical Progress [5050 h]; Formwork [10 Sq m]; TATA Projects Ltd-25 | 11,651.6 |
| 3S-SS-B02.165 |  | Reinforcement of Staircase upto Flight 2 | 5d | 2027-01-02 | 2027-01-08 | 3S-SS-B02.140 | Barbender [70 h]; Helper [40 h]; Physical Progress [8410 h]; Reinforcement Steel [1 MT1]; TATA Projects Ltd-25 | 96,512.5 |
|  | 4 | **Staircase - 2** |  | 2026-12-02 | 2027-01-06 |  |  |  |
| 3S-SS-B02.20 |  | Reinforcement of wall upto Flight 1 | 3d | 2026-12-02 | 2026-12-05 | 3S-SS-B03.280 | Barbender [70 h]; Helper [40 h]; Physical Progress [5050 h]; Reinforcement Steel [1 MT1]; TATA Projects Ltd-25 | 96,512.5 |
| 3S-SS-B02.30 |  | Shuttering of wall upto Flight 1 | 3d | 2026-12-05 | 2026-12-09 | 3S-SS-B02.20 | Carpenter [20 h]; Helper [10 h]; Physical Progress [5050 h]; Formwork [10 Sq m]; TATA Projects Ltd-25 | 11,651.6 |
| 3S-SS-B02.40 |  | Casting of wall upto Flight 1 | 1d | 2026-12-09 | 2026-12-10 | 3S-SS-B02.30 | Mason; Helper; Physical Progress [1680 h]; Concrete M40 [3 m3]; TATA Projects Ltd-25 | 29,601 |
| 3S-SS-B02.55 |  | Shuttering of Staircase upto Flight 1 | 3d | 2026-12-10 | 2026-12-14 | 3S-SS-B02.40 | Carpenter [20 h]; Helper [10 h]; Physical Progress [5050 h]; Formwork [10 Sq m]; TATA Projects Ltd-25 | 11,651.6 |
| 3S-SS-B02.70 |  | Reinforcement of Staircase upto Flight 1 | 3d | 2026-12-14 | 2026-12-17 | 3S-SS-B02.55 | Barbender [70 h]; Helper [40 h]; Physical Progress [5050 h]; Reinforcement Steel [1 MT1]; TATA Projects Ltd-25 | 96,512.5 |
| 3S-SS-B02.80 |  | MEP coordination upto Flight 1 | 1d | 2026-12-17 | 2026-12-18 | 3S-SS-B02.70 | Physical Progress [1680 h]; TATA Projects Ltd-25 |  |
| 3S-SS-B02.90 |  | Casting of Staircase upto Flight 1 | 1d | 2026-12-18 | 2026-12-19 | 3S-SS-B02.80 | Mason; Helper; Physical Progress [1680 h]; Concrete M40 [3 m3]; TATA Projects Ltd-25 | 29,601 |
| 3S-SS-B02.105 |  | Reinforcement of wall upto Flight 2 | 3d | 2026-12-19 | 2026-12-23 | 3S-SS-B02.90 | Barbender [70 h]; Helper [40 h]; Physical Progress [5050 h]; Reinforcement Steel [1 MT1]; TATA Projects Ltd-25 | 96,512.5 |
| 3S-SS-B02.120 |  | Shuttering of wall upto Flight 2 | 3d | 2026-12-23 | 2026-12-28 | 3S-SS-B02.105 | Carpenter [20 h]; Helper [10 h]; Physical Progress [5050 h]; Formwork [10 Sq m]; TATA Projects Ltd-25 | 11,651.6 |
| 3S-SS-B02.135 |  | Casting of wall upto Flight 2 | 1d | 2026-12-28 | 2026-12-29 | 3S-SS-B02.120 | Mason; Helper; Physical Progress [1680 h]; Concrete M40 [3 m3]; TATA Projects Ltd-25 | 29,601 |
| 3S-SS-B02.145 |  | Shuttering of Staircase upto Flight 2 | 3d | 2026-12-29 | 2027-01-02 | 3S-SS-B02.135 | Carpenter [20 h]; Helper [10 h]; Physical Progress [5050 h]; Formwork [10 Sq m]; TATA Projects Ltd-25 | 11,651.6 |
| 3S-SS-B02.170 |  | Reinforcement of Staircase upto Flight 2 | 3d | 2027-01-02 | 2027-01-06 | 3S-SS-B02.145 | Barbender [70 h]; Helper [40 h]; Physical Progress [5050 h]; Reinforcement Steel [1 MT1]; TATA Projects Ltd-25 | 96,512.5 |

| ID | WBS | Activity | Duration | Start | Finish | Predecessors | Resources | Cost |
| --- | --- | --- | --- | --- | --- | --- | --- | --- |
|  | 2 | **Slab** |  | 2026-12-21 | 2027-01-27 |  |  |  |
| 3S-SS-B02.110 |  | Shuttering | 5d | 2026-12-21 | 2026-12-28 | 3S-SS-B02.95 | Carpenter [3620 h]; Helper [1810 h]; Physical Progress [8410 h]; Formwork [2170 Sq m]; TATA Projects Ltd-25 | 2,528,397.2 |
| 3S-SS-B02.125 |  | Reinforcement Bottom Net with chairs | 3d | 2026-12-28 | 2026-12-31 | 3S-SS-B02.110 | Barbender [800 h]; Helper [400 h]; Physical Progress [5050 h]; Reinforcement Steel [12 MT1]; TATA Projects Ltd-25 | 1,158,150 |
| 3S-SS-B02.160 |  | Laying of PT Tendon | 4d | 2026-12-31 | 2027-01-06 | 3S-SS-B02.125 | Physical Progress [6730 h]; TATA Projects Ltd-25 |  |
| 3S-SS-B02.180 |  | Reinforcement Top Net | 3d | 2027-01-06 | 2027-01-09 | 3S-SS-B02.160 | Barbender [800 h]; Helper [400 h]; Physical Progress [5050 h]; Reinforcement Steel [12 MT1]; TATA Projects Ltd-25 | 1,158,150 |
| 3S-SS-B02.200 |  | MEP Coordination | 1d | 2027-01-09 | 2027-01-11 | 3S-SS-B02.125, 3S-SS-B02.165, 3S-SS-B02.180, 3S-SS-B02.170 | Physical Progress [1680 h]; TATA Projects Ltd-25 |  |
| 3S-SS-B02.210 |  | Concrete of Slab | 1d | 2027-01-11 | 2027-01-12 | 3S-SS-B02.200 | Mason [50 h]; Helper [50 h]; Physical Progress [1680 h]; Concrete M40 [542 m3]; TATA Projects Ltd-25 | 5,347,914 |
| 3S-SS-B02.215 |  | Wait for Strength Gain | 6d | 2027-01-12 | 2027-01-19 | 3S-SS-B02.210 | Physical Progress [10090 h]; TATA Projects Ltd-25 |  |
| 3S-SS-B02.245 |  | PT Work | 6d | 2027-01-19 | 2027-01-27 | 3S-SS-B02.215, 3S-SS-B03.315 | PT [6 MT1]; Helper [100 h]; PT Fitter [100 h]; Physical Progress [13460 h]; TATA Projects Ltd-25 | 1,140,000 |
|  | 2 | **Pour 2** |  | 2026-11-18 | 2027-01-12 |  |  |  |
|  | 1 | **Column, Core Wall, Shear Wall** |  | 2026-11-18 | 2026-12-07 |  |  |  |
| 3S-SS-B02.150 |  | Reinforcement | 7d | 2026-11-18 | 2026-11-26 | 3S-SS-B03.345 | Barbender [5540 h]; Helper [2770 h]; Physical Progress [11780 h]; Reinforcement Steel [83 MT1]; TATA Projects Ltd-25 | 8,010,537.5 |
| 3S-SS-B02.190 |  | LPS | 1d | 2026-11-26 | 2026-11-27 | 3S-SS-B02.150 | LPS [63943 INR]; Physical Progress [1680 h]; TATA Projects Ltd-25 | 63,943 |
| 3S-SS-B02.205 |  | Shuttering | 7d | 2026-11-27 | 2026-12-05 | 3S-SS-B02.150, 3S-SS-B02.190 | Carpenter [2640 h]; Helper [1320 h]; Physical Progress [11780 h]; Formwork [1581 Sq m]; TATA Projects Ltd-25 | 1,842,117.96 |
| 3S-SS-B02.235 |  | Concrete | 1d | 2026-12-05 | 2026-12-07 | 3S-SS-B02.205 | Mason [50 h]; Helper [50 h]; Physical Progress [1680 h]; Concrete M40 [395 m3]; TATA Projects Ltd-25 | 3,897,465 |
|  | 3 | **Staircase** |  | 2026-11-18 | 2026-12-21 |  |  |  |
| 3S-SS-B02.155 |  | Reinforcement of wall upto Flight 1 | 3d | 2026-11-18 | 2026-11-21 | 3S-SS-B03.345 | Barbender [70 h]; Helper [40 h]; Physical Progress [5050 h]; Reinforcement Steel [1 MT1]; TATA Projects Ltd-25 | 96,512.5 |
| 3S-SS-B02.175 |  | Shuttering of wall upto Flight 1 | 3d | 2026-11-21 | 2026-11-25 | 3S-SS-B02.155 | Carpenter [20 h]; Helper [10 h]; Physical Progress [5050 h]; Formwork [10 Sq m]; TATA Projects Ltd-25 | 11,651.6 |
| 3S-SS-B02.185 |  | Casting of wall upto Flight 1 | 1d | 2026-11-25 | 2026-11-26 | 3S-SS-B02.175 | Mason; Helper; Physical Progress [1680 h]; Concrete M40 [3 m3]; TATA Projects Ltd-25 | 29,601 |
| 3S-SS-B02.195 |  | Shuttering of Staircase upto Flight 1 | 3d | 2026-11-26 | 2026-11-30 | 3S-SS-B02.185 | Carpenter [20 h]; Helper [10 h]; Physical Progress [5050 h]; Formwork [10 Sq m]; TATA Projects Ltd-25 | 11,651.6 |
| 3S-SS-B02.220 |  | Reinforcement of Staircase upto Flight 1 | 3d | 2026-11-30 | 2026-12-03 | 3S-SS-B02.195 | Barbender [70 h]; Helper [40 h]; Physical Progress [5050 h]; Reinforcement Steel [1 MT1]; TATA Projects Ltd-25 | 96,512.5 |
| 3S-SS-B02.225 |  | MEP coordination upto Flight 1 | 1d | 2026-12-03 | 2026-12-04 | 3S-SS-B02.220 | Physical Progress [1680 h]; TATA Projects Ltd-25 |  |
| 3S-SS-B02.230 |  | Casting of Staircase upto Flight 1 | 1d | 2026-12-04 | 2026-12-05 | 3S-SS-B02.225 | Mason; Helper; Physical Progress [1680 h]; Concrete M40 [3 m3]; TATA Projects Ltd-25 | 29,601 |
| 3S-SS-B02.240 |  | Reinforcement of wall upto Flight 2 | 3d | 2026-12-05 | 2026-12-09 | 3S-SS-B02.230 | Barbender [70 h]; Helper [40 h]; Physical Progress [5050 h]; Reinforcement Steel [1 MT1]; TATA Projects Ltd-25 | 96,512.5 |
| 3S-SS-B02.255 |  | Shuttering of wall upto Flight 2 | 3d | 2026-12-09 | 2026-12-12 | 3S-SS-B02.240 | Carpenter [20 h]; Helper [10 h]; Physical Progress [5050 h]; Formwork [10 Sq m]; TATA Projects Ltd-25 | 11,651.6 |
| 3S-SS-B02.265 |  | Casting of wall upto Flight 2 | 1d | 2026-12-12 | 2026-12-14 | 3S-SS-B02.255 | Mason; Helper; Physical Progress [1680 h]; Concrete M40 [3 m3]; TATA Projects Ltd-25 | 29,601 |
| 3S-SS-B02.270 |  | Shuttering of Staircase upto Flight 2 | 3d | 2026-12-14 | 2026-12-17 | 3S-SS-B02.265 | Carpenter [20 h]; Helper [10 h]; Physical Progress [5050 h]; Formwork [10 Sq m]; TATA Projects Ltd-25 | 11,651.6 |
| 3S-SS-B02.280 |  | Reinforcement of Staircase upto Flight 2 | 3d | 2026-12-17 | 2026-12-21 | 3S-SS-B02.270 | Barbender [70 h]; Helper [40 h]; Physical Progress [5050 h]; Reinforcement Steel [1 MT1]; TATA Projects Ltd-25 | 96,512.5 |

| ID | WBS | Activity | Duration | Start | Finish | Predecessors | Resources | Cost |
| --- | --- | --- | --- | --- | --- | --- | --- | --- |
|  | 2 | **Slab** |  | 2026-12-07 | 2027-01-12 |  |  |  |
| 3S-SS-B02.250 |  | Shuttering | 5d | 2026-12-07 | 2026-12-12 | 3S-SS-B02.235 | Carpenter [6780 h]; Helper [3390 h]; Physical Progress [8410 h]; Formwork [4068 Sq m]; TATA Projects Ltd-25 | 4,739,870.88 |
| 3S-SS-B02.260 |  | Reinforcement Bottom Net with chairs | 3d | 2026-12-12 | 2026-12-16 | 3S-SS-B02.250 | Barbender [1540 h]; Helper [770 h]; Physical Progress [5050 h]; Reinforcement Steel [23 MT1]; TATA Projects Ltd-25 | 2,219,787.5 |
| 3S-SS-B02.275 |  | Laying of PT Tendon | 4d | 2026-12-16 | 2026-12-21 | 3S-SS-B02.260 | Physical Progress [6730 h]; TATA Projects Ltd-25 |  |
| 3S-SS-B02.285 |  | Reinforcement Top Net | 3d | 2026-12-21 | 2026-12-24 | 3S-SS-B02.275 | Barbender [1540 h]; Helper [770 h]; Physical Progress [5050 h]; Reinforcement Steel [23 MT1]; TATA Projects Ltd-25 | 2,219,787.5 |
| 3S-SS-B02.290 |  | MEP Coordination | 1d | 2026-12-24 | 2026-12-26 | 3S-SS-B02.260, 3S-SS-B02.280, 3S-SS-B02.285 | Physical Progress [1680 h]; TATA Projects Ltd-25 |  |
| 3S-SS-B02.295 |  | Concrete of Slab | 1d | 2026-12-26 | 2026-12-28 | 3S-SS-B02.290 | Physical Progress [1680 h]; Concrete M40 [1017 m3]; Additional for scaff above 4.5m Height [10 LP]; TATA Projects Ltd-25 | 11,842,739 |
| 3S-SS-B02.300 |  | Wait for Strength Gain | 6d | 2026-12-28 | 2027-01-05 | 3S-SS-B02.295 | Physical Progress [10090 h]; TATA Projects Ltd-25 |  |
| 3S-SS-B02.305 |  | PT Work | 6d | 2027-01-05 | 2027-01-12 | 3S-SS-B02.300, 3S-SS-B03.355 | PT [11 MT1]; Helper [100 h]; PT Fitter [100 h]; Physical Progress [13460 h]; TATA Projects Ltd-25 | 2,090,000 |
|  | 2 | **Basement 01** |  | 2026-12-28 | 2027-03-12 |  |  |  |
|  | 1 | **Pour 1** |  | 2027-01-12 | 2027-03-12 |  |  |  |
|  | 1 | **Column, Core Wall, Shear Wall - First Lift** |  | 2027-01-12 | 2027-01-23 |  |  |  |
| 3S-SS-B01.10 |  | Reinforcement | 4d | 2027-01-12 | 2027-01-16 | 3S-SS-B02.210 | Barbender [1470 h]; Helper [740 h]; Physical Progress [6730 h]; Reinforcement Steel [22 MT1]; TATA Projects Ltd-25 | 2,123,275 |
| 3S-SS-B01.35 |  | LPS | 1d | 2027-01-16 | 2027-01-18 | 3S-SS-B01.10 | LPS [63943 INR]; Physical Progress [1680 h]; TATA Projects Ltd-25 | 63,943 |
| 3S-SS-B01.50 |  | Shuttering | 4d | 2027-01-18 | 2027-01-22 | 3S-SS-B01.10, 3S-SS-B01.35 | Carpenter [710 h]; Helper [360 h]; Physical Progress [6730 h]; Formwork [422 Sq m]; TATA Projects Ltd-25 | 491,697.52 |
| 3S-SS-B01.95 |  | Concrete | 1d | 2027-01-22 | 2027-01-23 | 3S-SS-B01.50 | Mason [50 h]; Helper [50 h]; Physical Progress [1680 h]; Concrete M40 [105 m3]; TATA Projects Ltd-25 | 1,036,035 |
|  | 4 | **Column, Core Wall, Shear Wall - Second Lift** |  | 2027-01-23 | 2027-02-05 |  |  |  |
| 3S-SS-B01.110 |  | Reinforcement | 4d | 2027-01-23 | 2027-01-29 | 3S-SS-B01.95 | Barbender [1470 h]; Helper [740 h]; Physical Progress [6730 h]; Reinforcement Steel [22 MT1]; TATA Projects Ltd-25 | 2,123,275 |
| 3S-SS-B01.135 |  | LPS | 1d | 2027-01-29 | 2027-01-30 | 3S-SS-B01.110 | LPS [63943 INR]; Physical Progress [1680 h]; TATA Projects Ltd-25 | 63,943 |
| 3S-SS-B01.150 |  | Shuttering | 4d | 2027-01-30 | 2027-02-04 | 3S-SS-B01.110, 3S-SS-B01.135 | Carpenter [710 h]; Helper [360 h]; Physical Progress [6730 h]; Formwork [422 Sq m]; TATA Projects Ltd-25 | 491,697.52 |
| 3S-SS-B01.195 |  | Concrete | 1d | 2027-02-04 | 2027-02-05 | 3S-SS-B01.150 | Mason [50 h]; Helper [50 h]; Physical Progress [1680 h]; Concrete M40 [105 m3]; TATA Projects Ltd-25 | 1,036,035 |
|  | 3 | **Staircase - 1** |  | 2027-01-12 | 2027-02-22 |  |  |  |
| 3S-SS-B01.15 |  | Reinforcement of wall upto Flight 1 | 2d | 2027-01-12 | 2027-01-14 | 3S-SS-B02.210 | Barbender [70 h]; Helper [40 h]; Physical Progress [3360 h]; Reinforcement Steel [1 MT1]; TATA Projects Ltd-25 | 96,512.5 |
| 3S-SS-B01.25 |  | Shuttering of wall upto Flight 1 | 2d | 2027-01-14 | 2027-01-16 | 3S-SS-B01.15 | Carpenter [20 h]; Helper [10 h]; Physical Progress [3360 h]; Formwork [10 Sq m]; TATA Projects Ltd-25 | 11,651.6 |
| 3S-SS-B01.40 |  | Casting of wall upto Flight 1 | 1d | 2027-01-16 | 2027-01-18 | 3S-SS-B01.25 | Mason; Helper; Physical Progress [1680 h]; Concrete M40 [3 m3]; TATA Projects Ltd-25 | 29,601 |
| 3S-SS-B01.55 |  | Shuttering of Staircase upto Flight 1 | 1d | 2027-01-18 | 2027-01-19 | 3S-SS-B01.40 | Carpenter [20 h]; Helper [10 h]; Physical Progress [1680 h]; Formwork [10 Sq m]; TATA Projects Ltd-25 | 11,651.6 |
| 3S-SS-B01.65 |  | Reinforcement of Staircase upto Flight 1 | 1d | 2027-01-19 | 2027-01-20 | 3S-SS-B01.55 | Barbender [70 h]; Helper [40 h]; Physical Progress [1680 h]; Reinforcement Steel [1 MT1]; TATA Projects Ltd-25 | 96,512.5 |
| 3S-SS-B01.75 |  | MEP coordination upto Flight 1 | 1d | 2027-01-20 | 2027-01-21 | 3S-SS-B01.65 | Physical Progress [1680 h]; TATA Projects Ltd-25 |  |
| 3S-SS-B01.85 |  | Casting of Staircase upto Flight 1 | 1d | 2027-01-21 | 2027-01-22 | 3S-SS-B01.75 | Mason; Helper; Physical Progress [1680 h]; Concrete M40 [3 m3]; TATA Projects Ltd-25 | 29,601 |
| 3S-SS-B01.100 |  | Reinforcement of wall upto Flight 2 | 2d | 2027-01-22 | 2027-01-25 | 3S-SS-B01.85 | Barbender [70 h]; Helper [40 h]; Physical Progress [3360 h]; Reinforcement Steel [1 MT1]; TATA Projects Ltd-25 | 96,512.5 |
| 3S-SS-B01.115 |  | Shuttering of wall upto Flight 2 | 2d | 2027-01-25 | 2027-01-28 | 3S-SS-B01.100 | Carpenter [20 h]; Helper [10 h]; Physical Progress [3360 h]; Formwork [10 Sq m]; TATA Projects Ltd-25 | 11,651.6 |
| 3S-SS-B01.125 |  | Casting of wall upto Flight 2 | 1d | 2027-01-28 | 2027-01-29 | 3S-SS-B01.115 | Mason; Helper; Physical Progress [1680 h]; Concrete M40 [3 m3]; TATA Projects Ltd-25 | 29,601 |
| 3S-SS-B01.140 |  | Shuttering of Staircase upto Flight 2 | 1d | 2027-01-29 | 2027-01-30 | 3S-SS-B01.125 | Carpenter [20 h]; Helper [10 h]; Physical Progress [1680 h]; Formwork [10 Sq m]; TATA Projects Ltd-25 | 11,651.6 |
| 3S-SS-B01.155 |  | Reinforcement of Staircase upto Flight 2 | 1d | 2027-01-30 | 2027-02-01 | 3S-SS-B01.140 | Barbender [70 h]; Helper [40 h]; Physical Progress [1680 h]; Reinforcement Steel [1 MT1]; TATA Projects Ltd-25 | 96,512.5 |
| 3S-SS-B01.165 |  | MEP coordination upto Flight 2 | 1d | 2027-02-01 | 2027-02-02 | 3S-SS-B01.155 | Physical Progress [1680 h]; TATA Projects Ltd-25 |  |
| 3S-SS-B01.175 |  | Casting of Staircase upto Flight 2 | 1d | 2027-02-02 | 2027-02-03 | 3S-SS-B01.165 | Mason; Helper; Physical Progress [1680 h]; Concrete M40 [3 m3]; TATA Projects Ltd-25 | 29,601 |
| 3S-SS-B01.185 |  | Reinforcement of wall upto Flight 3 | 2d | 2027-02-03 | 2027-02-05 | 3S-SS-B01.175 | Barbender [70 h]; Helper [40 h]; Physical Progress [3360 h]; Reinforcement Steel [1 MT1]; TATA Projects Ltd-25 | 96,512.5 |
| 3S-SS-B01.205 |  | Shuttering of wall upto Flight 3 | 2d | 2027-02-05 | 2027-02-08 | 3S-SS-B01.185 | Carpenter [20 h]; Helper [10 h]; Physical Progress [3360 h]; Formwork [10 Sq m]; TATA Projects Ltd-25 | 11,651.6 |
| 3S-SS-B01.215 |  | Casting of wall upto Flight 3 | 1d | 2027-02-08 | 2027-02-09 | 3S-SS-B01.205 | Mason; Helper; Physical Progress [1680 h]; Concrete M40 [3 m3]; TATA Projects Ltd-25 | 29,601 |
| 3S-SS-B01.230 |  | Shuttering of Staircase upto Flight 3 | 1d | 2027-02-09 | 2027-02-10 | 3S-SS-B01.215 | Carpenter [20 h]; Helper [10 h]; Physical Progress [1680 h]; Formwork [10 Sq m]; TATA Projects Ltd-25 | 11,651.6 |
| 3S-SS-B01.245 |  | Reinforcement of Staircase upto Flight 3 | 1d | 2027-02-10 | 2027-02-11 | 3S-SS-B01.230 | Barbender [70 h]; Helper [40 h]; Physical Progress [1680 h]; Reinforcement Steel [1 MT1]; TATA Projects Ltd-25 | 96,512.5 |
| 3S-SS-B01.260 |  | MEP coordination upto Flight 3 | 1d | 2027-02-11 | 2027-02-12 | 3S-SS-B01.245 | Physical Progress [1680 h]; TATA Projects Ltd-25 |  |
| 3S-SS-B01.275 |  | Casting of Staircase upto Flight 3 | 1d | 2027-02-12 | 2027-02-13 | 3S-SS-B01.260 | Mason; Helper; Physical Progress [1680 h]; Concrete M40 [3 m3]; TATA Projects Ltd-25 | 29,601 |
| 3S-SS-B01.290 |  | Reinforcement of wall upto Flight 4 | 2d | 2027-02-13 | 2027-02-16 | 3S-SS-B01.275 | Barbender [70 h]; Helper [40 h]; Physical Progress [3360 h]; Reinforcement Steel [1 MT1]; TATA Projects Ltd-25 | 96,512.5 |
| 3S-SS-B01.320 |  | Shuttering of wall upto Flight 4 | 2d | 2027-02-16 | 2027-02-18 | 3S-SS-B01.290 | Carpenter [20 h]; Helper [10 h]; Physical Progress [3360 h]; Formwork [10 Sq m]; TATA Projects Ltd-25 | 11,651.6 |
| 3S-SS-B01.340 |  | Casting of wall upto Flight 4 | 1d | 2027-02-18 | 2027-02-19 | 3S-SS-B01.320 | Mason; Helper; Physical Progress [1680 h]; Concrete M40 [3 m3]; TATA Projects Ltd-25 | 29,601 |
| 3S-SS-B01.365 |  | Shuttering of Staircase upto Flight 4 | 1d | 2027-02-19 | 2027-02-20 | 3S-SS-B01.340 | Carpenter [20 h]; Helper [10 h]; Physical Progress [1680 h]; Formwork [10 Sq m]; TATA Projects Ltd-25 | 11,651.6 |
| 3S-SS-B01.385 |  | Reinforcement of Staircase upto Flight 4 | 1d | 2027-02-20 | 2027-02-22 | 3S-SS-B01.365 | Barbender [70 h]; Helper [40 h]; Physical Progress [1680 h]; Reinforcement Steel [1 MT1]; TATA Projects Ltd-25 | 96,512.5 |

| ID | WBS | Activity | Duration | Start | Finish | Predecessors | Resources | Cost |
| --- | --- | --- | --- | --- | --- | --- | --- | --- |
|  | 5 | **Staircase - 2** |  | 2027-01-12 | 2027-02-22 |  |  |  |
| 3S-SS-B01.20 |  | Reinforcement of wall upto Flight 1 | 2d | 2027-01-12 | 2027-01-14 | 3S-SS-B02.210 | Barbender [70 h]; Helper [40 h]; Physical Progress [3360 h]; Reinforcement Steel [1 MT1]; TATA Projects Ltd-25 | 96,512.5 |
| 3S-SS-B01.30 |  | Shuttering of wall upto Flight 1 | 2d | 2027-01-14 | 2027-01-16 | 3S-SS-B01.20 | Carpenter [20 h]; Helper [10 h]; Physical Progress [3360 h]; Formwork [10 Sq m]; TATA Projects Ltd-25 | 11,651.6 |
| 3S-SS-B01.45 |  | Casting of wall upto Flight 1 | 1d | 2027-01-16 | 2027-01-18 | 3S-SS-B01.30 | Mason; Helper; Physical Progress [1680 h]; Concrete M40 [3 m3]; TATA Projects Ltd-25 | 29,601 |
| 3S-SS-B01.60 |  | Shuttering of Staircase upto Flight 1 | 1d | 2027-01-18 | 2027-01-19 | 3S-SS-B01.45 | Carpenter [20 h]; Helper [10 h]; Physical Progress [1680 h]; Formwork [10 Sq m]; TATA Projects Ltd-25 | 11,651.6 |
| 3S-SS-B01.70 |  | Reinforcement of Staircase upto Flight 1 | 1d | 2027-01-19 | 2027-01-20 | 3S-SS-B01.60 | Barbender [70 h]; Helper [40 h]; Physical Progress [1680 h]; Reinforcement Steel [1 MT1]; TATA Projects Ltd-25 | 96,512.5 |
| 3S-SS-B01.80 |  | MEP coordination upto Flight 1 | 1d | 2027-01-20 | 2027-01-21 | 3S-SS-B01.70 | Physical Progress [1680 h]; TATA Projects Ltd-25 |  |
| 3S-SS-B01.90 |  | Casting of Staircase upto Flight 1 | 1d | 2027-01-21 | 2027-01-22 | 3S-SS-B01.80 | Mason; Helper; Physical Progress [1680 h]; Concrete M40 [3 m3]; TATA Projects Ltd-25 | 29,601 |
| 3S-SS-B01.105 |  | Reinforcement of wall upto Flight 2 | 2d | 2027-01-22 | 2027-01-25 | 3S-SS-B01.90 | Barbender [70 h]; Helper [40 h]; Physical Progress [3360 h]; Reinforcement Steel [1 MT1]; TATA Projects Ltd-25 | 96,512.5 |
| 3S-SS-B01.120 |  | Shuttering of wall upto Flight 2 | 2d | 2027-01-25 | 2027-01-28 | 3S-SS-B01.105 | Carpenter [20 h]; Helper [10 h]; Physical Progress [3360 h]; Formwork [10 Sq m]; TATA Projects Ltd-25 | 11,651.6 |
| 3S-SS-B01.130 |  | Casting of wall upto Flight 2 | 1d | 2027-01-28 | 2027-01-29 | 3S-SS-B01.120 | Mason; Helper; Physical Progress [1680 h]; Concrete M40 [3 m3]; TATA Projects Ltd-25 | 29,601 |
| 3S-SS-B01.145 |  | Shuttering of Staircase upto Flight 2 | 1d | 2027-01-29 | 2027-01-30 | 3S-SS-B01.130 | Carpenter [20 h]; Helper [10 h]; Physical Progress [1680 h]; Formwork [10 Sq m]; TATA Projects Ltd-25 | 11,651.6 |
| 3S-SS-B01.160 |  | Reinforcement of Staircase upto Flight 2 | 1d | 2027-01-30 | 2027-02-01 | 3S-SS-B01.145 | Barbender [70 h]; Helper [40 h]; Physical Progress [1680 h]; Reinforcement Steel [1 MT1]; TATA Projects Ltd-25 | 96,512.5 |
| 3S-SS-B01.170 |  | MEP coordination upto Flight 2 | 1d | 2027-02-01 | 2027-02-02 | 3S-SS-B01.160 | Physical Progress [1680 h]; TATA Projects Ltd-25 |  |
| 3S-SS-B01.180 |  | Casting of Staircase upto Flight 2 | 1d | 2027-02-02 | 2027-02-03 | 3S-SS-B01.170 | Mason; Helper; Physical Progress [1680 h]; Concrete M40 [3 m3]; TATA Projects Ltd-25 | 29,601 |
| 3S-SS-B01.190 |  | Reinforcement of wall upto Flight 3 | 2d | 2027-02-03 | 2027-02-05 | 3S-SS-B01.180 | Barbender [70 h]; Helper [40 h]; Physical Progress [3360 h]; Reinforcement Steel [1 MT1]; TATA Projects Ltd-25 | 96,512.5 |
| 3S-SS-B01.210 |  | Shuttering of wall upto Flight 3 | 2d | 2027-02-05 | 2027-02-08 | 3S-SS-B01.190 | Carpenter [20 h]; Helper [10 h]; Physical Progress [3360 h]; Formwork [10 Sq m]; TATA Projects Ltd-25 | 11,651.6 |
| 3S-SS-B01.220 |  | Casting of wall upto Flight 3 | 1d | 2027-02-08 | 2027-02-09 | 3S-SS-B01.210 | Mason; Helper; Physical Progress [1680 h]; Concrete M40 [3 m3]; TATA Projects Ltd-25 | 29,601 |
| 3S-SS-B01.235 |  | Shuttering of Staircase upto Flight 3 | 1d | 2027-02-09 | 2027-02-10 | 3S-SS-B01.220 | Carpenter [20 h]; Helper [10 h]; Physical Progress [1680 h]; Formwork [10 Sq m]; TATA Projects Ltd-25 | 11,651.6 |
| 3S-SS-B01.250 |  | Reinforcement of Staircase upto Flight 3 | 1d | 2027-02-10 | 2027-02-11 | 3S-SS-B01.235 | Barbender [70 h]; Helper [40 h]; Physical Progress [1680 h]; Reinforcement Steel [1 MT1]; TATA Projects Ltd-25 | 96,512.5 |
| 3S-SS-B01.265 |  | MEP coordination upto Flight 3 | 1d | 2027-02-11 | 2027-02-12 | 3S-SS-B01.250 | Physical Progress [1680 h]; TATA Projects Ltd-25 |  |
| 3S-SS-B01.280 |  | Casting of Staircase upto Flight 3 | 1d | 2027-02-12 | 2027-02-13 | 3S-SS-B01.265 | Mason; Helper; Physical Progress [1680 h]; Concrete M40 [3 m3]; TATA Projects Ltd-25 | 29,601 |
| 3S-SS-B01.295 |  | Reinforcement of wall upto Flight 4 | 2d | 2027-02-13 | 2027-02-16 | 3S-SS-B01.280 | Barbender [70 h]; Helper [40 h]; Physical Progress [3360 h]; Reinforcement Steel [1 MT1]; TATA Projects Ltd-25 | 96,512.5 |
| 3S-SS-B01.325 |  | Shuttering of wall upto Flight 4 | 2d | 2027-02-16 | 2027-02-18 | 3S-SS-B01.295 | Carpenter [20 h]; Helper [10 h]; Physical Progress [3360 h]; Formwork [10 Sq m]; TATA Projects Ltd-25 | 11,651.6 |
| 3S-SS-B01.345 |  | Casting of wall upto Flight 4 | 1d | 2027-02-18 | 2027-02-19 | 3S-SS-B01.325 | Mason; Helper; Physical Progress [1680 h]; Concrete M40 [3 m3]; TATA Projects Ltd-25 | 29,601 |
| 3S-SS-B01.370 |  | Shuttering of Staircase upto Flight 4 | 1d | 2027-02-19 | 2027-02-20 | 3S-SS-B01.345 | Carpenter [20 h]; Helper [10 h]; Physical Progress [1680 h]; Formwork [10 Sq m]; TATA Projects Ltd-25 | 11,651.6 |
| 3S-SS-B01.390 |  | Reinforcement of Staircase upto Flight 4 | 1d | 2027-02-20 | 2027-02-22 | 3S-SS-B01.370 | Barbender [70 h]; Helper [40 h]; Physical Progress [1680 h]; Reinforcement Steel [1 MT1]; TATA Projects Ltd-25 | 96,512.5 |

| ID | WBS | Activity | Duration | Start | Finish | Predecessors | Resources | Cost |
| --- | --- | --- | --- | --- | --- | --- | --- | --- |
|  | 2 | **Slab** |  | 2027-02-05 | 2027-03-12 |  |  |  |
| 3S-SS-B01.200 |  | Shuttering | 5d | 2027-02-05 | 2027-02-11 | 3S-SS-B01.195 | Carpenter [4390 h]; Helper [2200 h]; Physical Progress [8410 h]; Formwork [2633 Sq m]; TATA Projects Ltd-25 | 3,067,866.28 |
| 3S-SS-B01.255 |  | Reinforcement Bottom Net with chairs | 3d | 2027-02-11 | 2027-02-15 | 3S-SS-B01.200 | Barbender [1070 h]; Helper [540 h]; Physical Progress [5050 h]; Reinforcement Steel [16 MT1]; TATA Projects Ltd-25 | 1,544,200 |
| 3S-SS-B01.310 |  | Laying of PT Tendon | 4d | 2027-02-15 | 2027-02-19 | 3S-SS-B01.255 | Physical Progress [6730 h]; TATA Projects Ltd-25 |  |
| 3S-SS-B01.360 |  | Reinforcement Top Net | 3d | 2027-02-19 | 2027-02-23 | 3S-SS-B01.310 | Barbender [1070 h]; Helper [540 h]; Physical Progress [5050 h]; Reinforcement Steel [16 MT1]; TATA Projects Ltd-25 | 1,544,200 |
| 3S-SS-B01.400 |  | MEP Coordination | 1d | 2027-02-23 | 2027-02-24 | 3S-SS-B01.255, 3S-SS-B01.360, 3S-SS-B01.390, 3S-SS-B01.385 | Physical Progress [1680 h]; TATA Projects Ltd-25 |  |
| 3S-SS-B01.405 |  | Concrete of Slab | 1d | 2027-02-24 | 2027-02-25 | 3S-SS-B01.400 | Mason [50 h]; Helper [50 h]; Physical Progress [1680 h]; Concrete M40 [658 m3]; TATA Projects Ltd-25 | 6,492,486 |
| 3S-SS-B01.415 |  | Wait for Strength Gain | 6d | 2027-02-25 | 2027-03-04 | 3S-SS-B01.405 | Physical Progress [10090 h]; TATA Projects Ltd-25 |  |
| 3S-SS-B01.460 |  | PT Work | 6d | 2027-03-04 | 2027-03-12 | 3S-SS-B01.415, 3S-SS-B02.245 | PT [7 MT1]; Helper [100 h]; PT Fitter [100 h]; Physical Progress [13460 h]; TATA Projects Ltd-25 | 1,330,000 |
|  | 2 | **Pour 2** |  | 2026-12-28 | 2027-02-25 |  |  |  |
|  | 1 | **Column, Core Wall, Shear Wall - First Lift** |  | 2026-12-28 | 2027-01-09 |  |  |  |
| 3S-SS-B01.225 |  | Reinforcement | 4d | 2026-12-28 | 2027-01-02 | 3S-SS-B02.295 | Barbender [2800 h]; Helper [1400 h]; Physical Progress [6730 h]; Reinforcement Steel [42 MT1]; TATA Projects Ltd-25 | 4,053,525 |
| 3S-SS-B01.285 |  | LPS | 1d | 2027-01-02 | 2027-01-04 | 3S-SS-B01.225 | LPS [63943 INR]; Physical Progress [1680 h]; TATA Projects Ltd-25 | 63,943 |
| 3S-SS-B01.305 |  | Shuttering | 4d | 2027-01-04 | 2027-01-08 | 3S-SS-B01.225, 3S-SS-B01.285 | Carpenter [1320 h]; Helper [660 h]; Physical Progress [6730 h]; Formwork [791 Sq m]; TATA Projects Ltd-25 | 921,641.56 |
| 3S-SS-B01.355 |  | Concrete | 1d | 2027-01-08 | 2027-01-09 | 3S-SS-B01.305 | Mason [50 h]; Helper [50 h]; Physical Progress [1680 h]; Concrete M40 [198 m3]; TATA Projects Ltd-25 | 1,953,666 |
|  | 4 | **Column, Core Wall, Shear Wall - Second Lift** |  | 2027-01-09 | 2027-01-21 |  |  |  |
| 3S-SS-B01.380 |  | Reinforcement | 4d | 2027-01-09 | 2027-01-14 | 3S-SS-B01.355 | Barbender [2800 h]; Helper [1400 h]; Physical Progress [6730 h]; Reinforcement Steel [42 MT1]; TATA Projects Ltd-25 | 4,053,525 |
| 3S-SS-B01.420 |  | LPS | 1d | 2027-01-14 | 2027-01-15 | 3S-SS-B01.380 | LPS [63943 INR]; Physical Progress [1680 h]; TATA Projects Ltd-25 | 63,943 |
| 3S-SS-B01.430 |  | Shuttering | 4d | 2027-01-15 | 2027-01-20 | 3S-SS-B01.380, 3S-SS-B01.420 | Carpenter [1320 h]; Helper [660 h]; Physical Progress [6730 h]; Formwork [791 Sq m]; TATA Projects Ltd-25 | 921,641.56 |
| 3S-SS-B01.455 |  | Concrete | 1d | 2027-01-20 | 2027-01-21 | 3S-SS-B01.430 | Mason [50 h]; Helper [50 h]; Physical Progress [1680 h]; Concrete M40 [198 m3]; TATA Projects Ltd-25 | 1,953,666 |
|  | 3 | **Staircase** |  | 2026-12-28 | 2027-02-08 |  |  |  |
| 3S-SS-B01.240 |  | Reinforcement of wall upto Flight 1 | 2d | 2026-12-28 | 2026-12-30 | 3S-SS-B02.295 | Barbender [70 h]; Helper [40 h]; Physical Progress [3360 h]; Reinforcement Steel [1 MT1]; TATA Projects Ltd-25 | 96,512.5 |
| 3S-SS-B01.270 |  | Shuttering of wall upto Flight 1 | 2d | 2026-12-30 | 2027-01-02 | 3S-SS-B01.240 | Carpenter [20 h]; Helper [10 h]; Physical Progress [3360 h]; Formwork [10 Sq m]; TATA Projects Ltd-25 | 11,651.6 |
| 3S-SS-B01.300 |  | Casting of wall upto Flight 1 | 1d | 2027-01-02 | 2027-01-04 | 3S-SS-B01.270 | Mason; Helper; Physical Progress [1680 h]; Concrete M40 [3 m3]; TATA Projects Ltd-25 | 29,601 |
| 3S-SS-B01.315 |  | Shuttering of Staircase upto Flight 1 | 1d | 2027-01-04 | 2027-01-05 | 3S-SS-B01.300 | Carpenter [20 h]; Helper [10 h]; Physical Progress [1680 h]; Formwork [10 Sq m]; TATA Projects Ltd-25 | 11,651.6 |
| 3S-SS-B01.330 |  | Reinforcement of Staircase upto Flight 1 | 1d | 2027-01-05 | 2027-01-06 | 3S-SS-B01.315 | Barbender [70 h]; Helper [40 h]; Physical Progress [1680 h]; Reinforcement Steel [1 MT1]; TATA Projects Ltd-25 | 96,512.5 |
| 3S-SS-B01.335 |  | MEP coordination upto Flight 1 | 1d | 2027-01-06 | 2027-01-07 | 3S-SS-B01.330 | Physical Progress [1680 h]; TATA Projects Ltd-25 |  |
| 3S-SS-B01.350 |  | Casting of Staircase upto Flight 1 | 1d | 2027-01-07 | 2027-01-08 | 3S-SS-B01.335 | Mason; Helper; Physical Progress [1680 h]; Concrete M40 [3 m3]; TATA Projects Ltd-25 | 29,601 |
| 3S-SS-B01.375 |  | Reinforcement of wall upto Flight 2 | 2d | 2027-01-08 | 2027-01-11 | 3S-SS-B01.350 | Barbender [70 h]; Helper [40 h]; Physical Progress [3360 h]; Reinforcement Steel [1 MT1]; TATA Projects Ltd-25 | 96,512.5 |
| 3S-SS-B01.395 |  | Shuttering of wall upto Flight 2 | 2d | 2027-01-11 | 2027-01-13 | 3S-SS-B01.375 | Carpenter [20 h]; Helper [10 h]; Physical Progress [3360 h]; Formwork [10 Sq m]; TATA Projects Ltd-25 | 11,651.6 |
| 3S-SS-B01.410 |  | Casting of wall upto Flight 2 | 1d | 2027-01-13 | 2027-01-14 | 3S-SS-B01.395 | Mason; Helper; Physical Progress [1680 h]; Concrete M40 [3 m3]; TATA Projects Ltd-25 | 29,601 |
| 3S-SS-B01.425 |  | Shuttering of Staircase upto Flight 2 | 1d | 2027-01-14 | 2027-01-15 | 3S-SS-B01.410 | Carpenter [20 h]; Helper [10 h]; Physical Progress [1680 h]; Formwork [10 Sq m]; TATA Projects Ltd-25 | 11,651.6 |
| 3S-SS-B01.435 |  | Reinforcement of Staircase upto Flight 2 | 1d | 2027-01-15 | 2027-01-16 | 3S-SS-B01.425 | Barbender [70 h]; Helper [40 h]; Physical Progress [1680 h]; Reinforcement Steel [1 MT1]; TATA Projects Ltd-25 | 96,512.5 |
| 3S-SS-B01.440 |  | MEP coordination upto Flight 2 | 1d | 2027-01-16 | 2027-01-18 | 3S-SS-B01.435 | Physical Progress [1680 h]; TATA Projects Ltd-25 |  |
| 3S-SS-B01.445 |  | Casting of Staircase upto Flight 2 | 1d | 2027-01-18 | 2027-01-19 | 3S-SS-B01.440 | Mason; Helper; Physical Progress [1680 h]; Concrete M40 [3 m3]; TATA Projects Ltd-25 | 29,601 |
| 3S-SS-B01.450 |  | Reinforcement of wall upto Flight 3 | 2d | 2027-01-19 | 2027-01-21 | 3S-SS-B01.445 | Barbender [70 h]; Helper [40 h]; Physical Progress [3360 h]; Reinforcement Steel [1 MT1]; TATA Projects Ltd-25 | 96,512.5 |
| 3S-SS-B01.470 |  | Shuttering of wall upto Flight 3 | 2d | 2027-01-21 | 2027-01-23 | 3S-SS-B01.450 | Carpenter [20 h]; Helper [10 h]; Physical Progress [3360 h]; Formwork [10 Sq m]; TATA Projects Ltd-25 | 11,651.6 |
| 3S-SS-B01.475 |  | Casting of wall upto Flight 3 | 1d | 2027-01-23 | 2027-01-25 | 3S-SS-B01.470 | Mason; Helper; Physical Progress [1680 h]; Concrete M40 [3 m3]; TATA Projects Ltd-25 | 29,601 |
| 3S-SS-B01.480 |  | Shuttering of Staircase upto Flight 3 | 1d | 2027-01-25 | 2027-01-27 | 3S-SS-B01.475 | Carpenter [20 h]; Helper [10 h]; Physical Progress [1680 h]; Formwork [10 Sq m]; TATA Projects Ltd-25 | 11,651.6 |
| 3S-SS-B01.485 |  | Reinforcement of Staircase upto Flight 3 | 1d | 2027-01-27 | 2027-01-28 | 3S-SS-B01.480 | Barbender [70 h]; Helper [40 h]; Physical Progress [1680 h]; Reinforcement Steel [1 MT1]; TATA Projects Ltd-25 | 96,512.5 |
| 3S-SS-B01.495 |  | MEP coordination upto Flight 3 | 1d | 2027-01-28 | 2027-01-29 | 3S-SS-B01.485 | Physical Progress [1680 h]; TATA Projects Ltd-25 |  |
| 3S-SS-B01.500 |  | Casting of Staircase upto Flight 3 | 1d | 2027-01-29 | 2027-01-30 | 3S-SS-B01.495 | Mason; Helper; Physical Progress [1680 h]; Concrete M40 [3 m3]; TATA Projects Ltd-25 | 29,601 |
| 3S-SS-B01.505 |  | Reinforcement of wall upto Flight 4 | 2d | 2027-01-30 | 2027-02-02 | 3S-SS-B01.500 | Barbender [70 h]; Helper [40 h]; Physical Progress [3360 h]; Reinforcement Steel [1 MT1]; TATA Projects Ltd-25 | 96,512.5 |
| 3S-SS-B01.515 |  | Shuttering of wall upto Flight 4 | 2d | 2027-02-02 | 2027-02-04 | 3S-SS-B01.505 | Carpenter [20 h]; Helper [10 h]; Physical Progress [3360 h]; Formwork [10 Sq m]; TATA Projects Ltd-25 | 11,651.6 |
| 3S-SS-B01.520 |  | Casting of wall upto Flight 4 | 1d | 2027-02-04 | 2027-02-05 | 3S-SS-B01.515 | Mason; Helper; Physical Progress [1680 h]; Concrete M40 [3 m3]; TATA Projects Ltd-25 | 29,601 |
| 3S-SS-B01.530 |  | Shuttering of Staircase upto Flight 4 | 1d | 2027-02-05 | 2027-02-06 | 3S-SS-B01.520 | Carpenter [20 h]; Helper [10 h]; Physical Progress [1680 h]; Formwork [10 Sq m]; TATA Projects Ltd-25 | 11,651.6 |
| 3S-SS-B01.535 |  | Reinforcement of Staircase upto Flight 4 | 1d | 2027-02-06 | 2027-02-08 | 3S-SS-B01.530 | Barbender [70 h]; Helper [40 h]; Physical Progress [1680 h]; Reinforcement Steel [1 MT1]; TATA Projects Ltd-25 | 96,512.5 |

| ID | WBS | Activity | Duration | Start | Finish | Predecessors | Resources | Cost |
| --- | --- | --- | --- | --- | --- | --- | --- | --- |
|  | 2 | **Slab** |  | 2027-01-21 | 2027-02-25 |  |  |  |
| 3S-SS-B01.465 |  | Shuttering | 5d | 2027-01-21 | 2027-01-28 | 3S-SS-B01.455 | Carpenter [8230 h]; Helper [4120 h]; Physical Progress [8410 h]; Formwork [4937 Sq m]; TATA Projects Ltd-25 | 5,752,394.92 |
| 3S-SS-B01.490 |  | Reinforcement Bottom Net with chairs | 3d | 2027-01-28 | 2027-02-01 | 3S-SS-B01.465 | Barbender [2000 h]; Helper [1000 h]; Physical Progress [5050 h]; Reinforcement Steel [30 MT1]; TATA Projects Ltd-25 | 2,895,375 |
| 3S-SS-B01.510 |  | Laying of PT Tendon | 4d | 2027-02-01 | 2027-02-05 | 3S-SS-B01.490 | Physical Progress [6730 h]; TATA Projects Ltd-25 |  |
| 3S-SS-B01.525 |  | Reinforcement Top Net | 3d | 2027-02-05 | 2027-02-09 | 3S-SS-B01.510 | Barbender [2000 h]; Helper [1000 h]; Physical Progress [5050 h]; Reinforcement Steel [30 MT1]; TATA Projects Ltd-25 | 2,895,375 |
| 3S-SS-B01.540 |  | MEP Coordination | 1d | 2027-02-09 | 2027-02-10 | 3S-SS-B01.490, 3S-SS-B01.525, 3S-SS-B01.535 | Physical Progress [1680 h]; TATA Projects Ltd-25 |  |
| 3S-SS-B01.545 |  | Concrete of Slab | 1d | 2027-02-10 | 2027-02-11 | 3S-SS-B01.540 | Mason [50 h]; Helper [50 h]; Physical Progress [1680 h]; Concrete M40 [1234 m3]; TATA Projects Ltd-25 | 12,175,878 |
| 3S-SS-B01.550 |  | Wait for Strength Gain | 6d | 2027-02-11 | 2027-02-18 | 3S-SS-B01.545 | Physical Progress [10090 h]; TATA Projects Ltd-25 |  |
| 3S-SS-B01.555 |  | PT Work | 6d | 2027-02-18 | 2027-02-25 | 3S-SS-B01.550, 3S-SS-B02.305 | PT [13 MT1]; Helper [100 h]; PT Fitter [100 h]; Physical Progress [13460 h]; TATA Projects Ltd-25 | 2,470,000 |
|  | 1 | **Superstructure** |  | 2027-02-11 | 2028-01-10 |  |  |  |
|  | 6 | **Ground Floor** |  | 2027-02-11 | 2027-04-19 |  |  |  |
|  | 1 | **Pour 1** |  | 2027-02-25 | 2027-04-19 |  |  |  |
|  | 1 | **Column, Core Wall, Shear Wall - First Lift** |  | 2027-02-25 | 2027-03-06 |  |  |  |
| 3S-SS-GF10 |  | Reinforcement | 3d | 2027-02-25 | 2027-03-01 | 3S-SS-B01.405, E-GFC-ST-3S-100 | Barbender [1070 h]; Helper [540 h]; Physical Progress [6550 h]; Reinforcement Steel [16 MT1]; TATA Projects Ltd-25 | 1,544,200 |
| 3S-SS-GF35 |  | LPS | 1d | 2027-03-01 | 2027-03-02 | 3S-SS-GF10 | LPS [63943 INR]; Physical Progress [2180 h]; TATA Projects Ltd-25 | 63,943 |
| 3S-SS-GF40 |  | Shuttering | 3d | 2027-03-02 | 2027-03-05 | 3S-SS-GF10, 3S-SS-GF35 | Carpenter [730 h]; Helper [370 h]; Physical Progress [6550 h]; Formwork [435 Sq m]; TATA Projects Ltd-25 | 506,844.6 |
| 3S-SS-GF75 |  | Concrete | 1d | 2027-03-05 | 2027-03-06 | 3S-SS-GF40 | Mason [50 h]; Helper [50 h]; Physical Progress [2180 h]; Concrete M40 [109 m3]; TATA Projects Ltd-25 | 1,075,503 |
|  | 5 | **Column, Core Wall, Shear Wall - Second Lift** |  | 2027-03-06 | 2027-03-17 |  |  |  |
| 3S-SS-GF100 |  | Reinforcement | 3d | 2027-03-06 | 2027-03-11 | 3S-SS-GF75 | Barbender [1070 h]; Helper [540 h]; Physical Progress [6550 h]; Reinforcement Steel [16 MT1]; TATA Projects Ltd-25 | 1,544,200 |
| 3S-SS-GF125 |  | LPS | 1d | 2027-03-11 | 2027-03-12 | 3S-SS-GF100 | LPS [63943 INR]; Physical Progress [2180 h]; TATA Projects Ltd-25 | 63,943 |
| 3S-SS-GF130 |  | Shuttering | 3d | 2027-03-12 | 2027-03-16 | 3S-SS-GF100, 3S-SS-GF125 | Carpenter [730 h]; Helper [370 h]; Physical Progress [6550 h]; Formwork [435 Sq m]; TATA Projects Ltd-25 | 506,844.6 |
| 3S-SS-GF165 |  | Concrete | 1d | 2027-03-16 | 2027-03-17 | 3S-SS-GF130 | Mason [50 h]; Helper [50 h]; Physical Progress [2180 h]; Concrete M40 [109 m3]; TATA Projects Ltd-25 | 1,075,503 |
|  | 3 | **Staircase - 1** |  | 2027-02-25 | 2027-03-30 |  |  |  |
| 3S-SS-GF15 |  | Reinforcement of wall upto Flight 1 | 2d | 2027-02-25 | 2027-02-27 | 3S-SS-B01.405 | Barbender [70 h]; Helper [40 h]; Physical Progress [4370 h]; Reinforcement Steel [1 MT1]; TATA Projects Ltd-25 | 96,512.5 |
| 3S-SS-GF25 |  | Shuttering of wall upto Flight 1 | 2d | 2027-02-27 | 2027-03-02 | 3S-SS-GF15 | Carpenter [20 h]; Helper [10 h]; Physical Progress [4370 h]; Formwork [10 Sq m]; TATA Projects Ltd-25 | 11,651.6 |
| 3S-SS-GF45 |  | Casting of wall upto Flight 1 | 1d | 2027-03-02 | 2027-03-03 | 3S-SS-GF25 | Mason; Helper; Physical Progress [2180 h]; Concrete M40 [3 m3]; TATA Projects Ltd-25 | 29,601 |
| 3S-SS-GF55 |  | Shuttering of Staircase upto Flight 1 | 1d | 2027-03-03 | 2027-03-04 | 3S-SS-GF45 | Carpenter [20 h]; Helper [10 h]; Physical Progress [2180 h]; Formwork [10 Sq m]; TATA Projects Ltd-25 | 11,651.6 |
| 3S-SS-GF65 |  | Reinforcement of Staircase upto Flight 1 | 1d | 2027-03-04 | 2027-03-05 | 3S-SS-GF55 | Barbender [70 h]; Helper [40 h]; Physical Progress [2180 h]; Reinforcement Steel [1 MT1]; TATA Projects Ltd-25 | 96,512.5 |
| 3S-SS-GF80 |  | MEP coordination upto Flight 1 | 1d | 2027-03-05 | 2027-03-06 | 3S-SS-GF65 | Physical Progress [2180 h]; TATA Projects Ltd-25 |  |
| 3S-SS-GF90 |  | Casting of Staircase upto Flight 1 | 1d | 2027-03-06 | 2027-03-08 | 3S-SS-GF80 | Mason; Helper; Physical Progress [2180 h]; Concrete M40 [3 m3]; TATA Projects Ltd-25 | 29,601 |
| 3S-SS-GF105 |  | Reinforcement of wall upto Flight 2 | 2d | 2027-03-08 | 2027-03-11 | 3S-SS-GF90 | Barbender [70 h]; Helper [40 h]; Physical Progress [4370 h]; Reinforcement Steel [1 MT1]; TATA Projects Ltd-25 | 96,512.5 |
| 3S-SS-GF115 |  | Shuttering of wall upto Flight 2 | 2d | 2027-03-11 | 2027-03-13 | 3S-SS-GF105 | Carpenter [20 h]; Helper [10 h]; Physical Progress [4370 h]; Formwork [10 Sq m]; TATA Projects Ltd-25 | 11,651.6 |
| 3S-SS-GF135 |  | Casting of wall upto Flight 2 | 1d | 2027-03-13 | 2027-03-15 | 3S-SS-GF115 | Mason; Helper; Physical Progress [2180 h]; Concrete M40 [3 m3]; TATA Projects Ltd-25 | 29,601 |
| 3S-SS-GF145 |  | Shuttering of Staircase upto Flight 2 | 1d | 2027-03-15 | 2027-03-16 | 3S-SS-GF135 | Carpenter [20 h]; Helper [10 h]; Physical Progress [2180 h]; Formwork [10 Sq m]; TATA Projects Ltd-25 | 11,651.6 |
| 3S-SS-GF155 |  | Reinforcement of Staircase upto Flight 2 | 1d | 2027-03-16 | 2027-03-17 | 3S-SS-GF145 | Barbender [70 h]; Helper [40 h]; Physical Progress [2180 h]; Reinforcement Steel [1 MT1]; TATA Projects Ltd-25 | 96,512.5 |
| 3S-SS-GF175 |  | MEP coordination upto Flight 2 | 1d | 2027-03-17 | 2027-03-18 | 3S-SS-GF155 | Physical Progress [2180 h]; TATA Projects Ltd-25 |  |
| 3S-SS-GF185 |  | Casting of Staircase upto Flight 2 | 1d | 2027-03-18 | 2027-03-19 | 3S-SS-GF175 | Mason; Helper; Physical Progress [2180 h]; Concrete M40 [3 m3]; TATA Projects Ltd-25 | 29,601 |
| 3S-SS-GF195 |  | Reinforcement of wall upto Flight 3 | 2d | 2027-03-19 | 2027-03-23 | 3S-SS-GF185 | Barbender [70 h]; Helper [40 h]; Physical Progress [4370 h]; Reinforcement Steel [1 MT1]; TATA Projects Ltd-25 | 96,512.5 |
| 3S-SS-GF205 |  | Shuttering of wall upto Flight 3 | 2d | 2027-03-23 | 2027-03-25 | 3S-SS-GF195 | Carpenter [20 h]; Helper [10 h]; Physical Progress [4370 h]; Formwork [10 Sq m]; TATA Projects Ltd-25 | 11,651.6 |
| 3S-SS-GF220 |  | Casting of wall upto Flight 3 | 1d | 2027-03-25 | 2027-03-27 | 3S-SS-GF205 | Mason; Helper; Physical Progress [2180 h]; Concrete M40 [3 m3]; TATA Projects Ltd-25 | 29,601 |
| 3S-SS-GF240 |  | Shuttering of Staircase upto Flight 3 | 1d | 2027-03-27 | 2027-03-29 | 3S-SS-GF220 | Carpenter [20 h]; Helper [10 h]; Physical Progress [2180 h]; Formwork [10 Sq m]; TATA Projects Ltd-25 | 11,651.6 |
| 3S-SS-GF265 |  | Reinforcement of Staircase upto Flight 3 | 1d | 2027-03-29 | 2027-03-30 | 3S-SS-GF240 | Barbender [70 h]; Helper [40 h]; Physical Progress [2180 h]; Reinforcement Steel [1 MT1]; TATA Projects Ltd-25 | 96,512.5 |

| ID | WBS | Activity | Duration | Start | Finish | Predecessors | Resources | Cost |
| --- | --- | --- | --- | --- | --- | --- | --- | --- |
|  | 4 | **Staircase - 2** |  | 2027-02-25 | 2027-03-30 |  |  |  |
| 3S-SS-GF20 |  | Reinforcement of wall upto Flight 1 | 2d | 2027-02-25 | 2027-02-27 | 3S-SS-B01.405 | Barbender [70 h]; Helper [40 h]; Physical Progress [4370 h]; Reinforcement Steel [1 MT1]; TATA Projects Ltd-25 | 96,512.5 |
| 3S-SS-GF30 |  | Shuttering of wall upto Flight 1 | 2d | 2027-02-27 | 2027-03-02 | 3S-SS-GF20 | Carpenter [20 h]; Helper [10 h]; Physical Progress [4370 h]; Formwork [10 Sq m]; TATA Projects Ltd-25 | 11,651.6 |
| 3S-SS-GF50 |  | Casting of wall upto Flight 1 | 1d | 2027-03-02 | 2027-03-03 | 3S-SS-GF30 | Mason; Helper; Physical Progress [2180 h]; Concrete M40 [3 m3]; TATA Projects Ltd-25 | 29,601 |
| 3S-SS-GF60 |  | Shuttering of Staircase upto Flight 1 | 1d | 2027-03-03 | 2027-03-04 | 3S-SS-GF50 | Carpenter [20 h]; Helper [10 h]; Physical Progress [2180 h]; Formwork [10 Sq m]; TATA Projects Ltd-25 | 11,651.6 |
| 3S-SS-GF70 |  | Reinforcement of Staircase upto Flight 1 | 1d | 2027-03-04 | 2027-03-05 | 3S-SS-GF60 | Barbender [70 h]; Helper [40 h]; Physical Progress [2180 h]; Reinforcement Steel [1 MT1]; TATA Projects Ltd-25 | 96,512.5 |
| 3S-SS-GF85 |  | MEP coordination upto Flight 1 | 1d | 2027-03-05 | 2027-03-06 | 3S-SS-GF70 | Physical Progress [2180 h]; TATA Projects Ltd-25 |  |
| 3S-SS-GF95 |  | Casting of Staircase upto Flight 1 | 1d | 2027-03-06 | 2027-03-08 | 3S-SS-GF85 | Mason; Helper; Physical Progress [2180 h]; Concrete M40 [3 m3]; TATA Projects Ltd-25 | 29,601 |
| 3S-SS-GF110 |  | Reinforcement of wall upto Flight 2 | 2d | 2027-03-08 | 2027-03-11 | 3S-SS-GF95 | Barbender [70 h]; Helper [40 h]; Physical Progress [4370 h]; Reinforcement Steel [1 MT1]; TATA Projects Ltd-25 | 96,512.5 |
| 3S-SS-GF120 |  | Shuttering of wall upto Flight 2 | 2d | 2027-03-11 | 2027-03-13 | 3S-SS-GF110 | Carpenter [20 h]; Helper [10 h]; Physical Progress [4370 h]; Formwork [10 Sq m]; TATA Projects Ltd-25 | 11,651.6 |
| 3S-SS-GF140 |  | Casting of wall upto Flight 2 | 1d | 2027-03-13 | 2027-03-15 | 3S-SS-GF120 | Mason; Helper; Physical Progress [2180 h]; Concrete M40 [3 m3]; TATA Projects Ltd-25 | 29,601 |
| 3S-SS-GF150 |  | Shuttering of Staircase upto Flight 2 | 1d | 2027-03-15 | 2027-03-16 | 3S-SS-GF140 | Carpenter [20 h]; Helper [10 h]; Physical Progress [2180 h]; Formwork [10 Sq m]; TATA Projects Ltd-25 | 11,651.6 |
| 3S-SS-GF160 |  | Reinforcement of Staircase upto Flight 2 | 1d | 2027-03-16 | 2027-03-17 | 3S-SS-GF150 | Barbender [70 h]; Helper [40 h]; Physical Progress [2180 h]; Reinforcement Steel [1 MT1]; TATA Projects Ltd-25 | 96,512.5 |
| 3S-SS-GF180 |  | MEP coordination upto Flight 2 | 1d | 2027-03-17 | 2027-03-18 | 3S-SS-GF160 | Physical Progress [2180 h]; TATA Projects Ltd-25 |  |
| 3S-SS-GF190 |  | Casting of Staircase upto Flight 2 | 1d | 2027-03-18 | 2027-03-19 | 3S-SS-GF180 | Mason; Helper; Physical Progress [2180 h]; Concrete M40 [3 m3]; TATA Projects Ltd-25 | 29,601 |
| 3S-SS-GF200 |  | Reinforcement of wall upto Flight 3 | 2d | 2027-03-19 | 2027-03-23 | 3S-SS-GF190 | Barbender [70 h]; Helper [40 h]; Physical Progress [4370 h]; Reinforcement Steel [1 MT1]; TATA Projects Ltd-25 | 96,512.5 |
| 3S-SS-GF210 |  | Shuttering of wall upto Flight 3 | 2d | 2027-03-23 | 2027-03-25 | 3S-SS-GF200 | Carpenter [20 h]; Helper [10 h]; Physical Progress [4370 h]; Formwork [10 Sq m]; TATA Projects Ltd-25 | 11,651.6 |
| 3S-SS-GF225 |  | Casting of wall upto Flight 3 | 1d | 2027-03-25 | 2027-03-27 | 3S-SS-GF210 | Mason; Helper; Physical Progress [2180 h]; Concrete M40 [3 m3]; TATA Projects Ltd-25 | 29,601 |
| 3S-SS-GF245 |  | Shuttering of Staircase upto Flight 3 | 1d | 2027-03-27 | 2027-03-29 | 3S-SS-GF225 | Carpenter [20 h]; Helper [10 h]; Physical Progress [2180 h]; Formwork [10 Sq m]; TATA Projects Ltd-25 | 11,651.6 |
| 3S-SS-GF270 |  | Reinforcement of Staircase upto Flight 3 | 1d | 2027-03-29 | 2027-03-30 | 3S-SS-GF245 | Barbender [70 h]; Helper [40 h]; Physical Progress [2180 h]; Reinforcement Steel [1 MT1]; TATA Projects Ltd-25 | 96,512.5 |
|  | 2 | **Slab** |  | 2027-03-17 | 2027-04-19 |  |  |  |
| 3S-SS-GF170 |  | Shuttering | 5d | 2027-03-17 | 2027-03-24 | 3S-SS-GF165 | Carpenter [1810 h]; Helper [910 h]; Physical Progress [10920 h]; Formwork [1086 Sq m]; TATA Projects Ltd-25 | 1,265,363.76 |
| 3S-SS-GF215 |  | Reinforcement Bottom Net with chairs | 3d | 2027-03-24 | 2027-03-29 | 3S-SS-GF170 | Barbender [670 h]; Helper [340 h]; Physical Progress [6550 h]; Reinforcement Steel [10 MT1]; TATA Projects Ltd-25 | 965,125 |
| 3S-SS-GF260 |  | Laying of PT Tendon | 3d | 2027-03-29 | 2027-04-01 | 3S-SS-GF215 | Physical Progress [8730 h]; TATA Projects Ltd-25 |  |
| 3S-SS-GF315 |  | Reinforcement Top Net | 2d | 2027-04-01 | 2027-04-03 | 3S-SS-GF260 | Barbender [670 h]; Helper [340 h]; Physical Progress [4370 h]; Reinforcement Steel [10 MT1]; TATA Projects Ltd-25 | 965,125 |
| 3S-SS-GF350 |  | MEP Coordination | 1d | 2027-04-03 | 2027-04-05 | 3S-SS-GF215, 3S-SS-GF315, 3S-SS-GF270, 3S-SS-GF265 | Physical Progress [2180 h]; TATA Projects Ltd-25 |  |
| 3S-SS-GF370 |  | Concrete of Slab | 1d | 2027-04-05 | 2027-04-06 | 3S-SS-GF350 | Mason [50 h]; Helper [50 h]; Physical Progress [2180 h]; Concrete M40 [271 m3]; TATA Projects Ltd-25 | 2,673,957 |
| 3S-SS-GF395 |  | Wait for Strength Gain | 6d | 2027-04-06 | 2027-04-13 | 3S-SS-GF370 | Physical Progress [13100 h]; TATA Projects Ltd-25 |  |
| 3S-SS-GF465 |  | PT Work | 5d | 2027-04-13 | 2027-04-19 | 3S-SS-GF395, 3S-SS-B01.460 | PT [4 MT1]; Helper [100 h]; PT Fitter [100 h]; Physical Progress [17470 h]; TATA Projects Ltd-25 | 760,000 |

| ID | WBS | Activity | Duration | Start | Finish | Predecessors | Resources | Cost |
| --- | --- | --- | --- | --- | --- | --- | --- | --- |
|  | 2 | **Pour 2** |  | 2027-02-11 | 2027-04-01 |  |  |  |
|  | 1 | **Column, Core Wall, Shear Wall - First Lift** |  | 2027-02-11 | 2027-02-20 |  |  |  |
| 3S-SS-GF230 |  | Reinforcement | 3d | 2027-02-11 | 2027-02-15 | 3S-SS-B01.545 | Barbender [600 h]; Helper [300 h]; Physical Progress [6550 h]; Reinforcement Steel [9 MT1]; TATA Projects Ltd-25 | 868,612.5 |
| 3S-SS-GF290 |  | LPS | 1d | 2027-02-15 | 2027-02-16 | 3S-SS-GF230 | LPS [63943 INR]; Physical Progress [2180 h]; TATA Projects Ltd-25 | 63,943 |
| 3S-SS-GF300 |  | Shuttering | 3d | 2027-02-16 | 2027-02-19 | 3S-SS-GF230, 3S-SS-GF290 | Carpenter [440 h]; Helper [220 h]; Physical Progress [6550 h]; Formwork [260 Sq m]; TATA Projects Ltd-25 | 302,941.6 |
| 3S-SS-GF355 |  | Concrete | 1d | 2027-02-19 | 2027-02-20 | 3S-SS-GF300 | Mason [50 h]; Helper [50 h]; Physical Progress [2180 h]; Concrete M40 [65 m3]; TATA Projects Ltd-25 | 641,355 |
|  | 5 | **Column, Core Wall, Shear Wall - Second Lift** |  | 2027-02-20 | 2027-03-02 |  |  |  |
| 3S-SS-GF385 |  | Reinforcement | 3d | 2027-02-20 | 2027-02-24 | 3S-SS-GF355 | Barbender [600 h]; Helper [300 h]; Physical Progress [6550 h]; Reinforcement Steel [9 MT1]; TATA Projects Ltd-25 | 868,612.5 |
| 3S-SS-GF425 |  | LPS | 1d | 2027-02-24 | 2027-02-25 | 3S-SS-GF385 | LPS [63943 INR]; Physical Progress [2180 h]; TATA Projects Ltd-25 | 63,943 |
| 3S-SS-GF440 |  | Shuttering | 3d | 2027-02-25 | 2027-03-01 | 3S-SS-GF385, 3S-SS-GF425 | Carpenter [440 h]; Helper [220 h]; Physical Progress [6550 h]; Formwork [260 Sq m]; TATA Projects Ltd-25 | 302,941.6 |
| 3S-SS-GF480 |  | Concrete | 1d | 2027-03-01 | 2027-03-02 | 3S-SS-GF440 | Mason [50 h]; Helper [50 h]; Physical Progress [2180 h]; Concrete M40 [65 m3]; TATA Projects Ltd-25 | 641,355 |
|  | 3 | **Staircase - 1** |  | 2027-02-11 | 2027-03-13 |  |  |  |
| 3S-SS-GF250 |  | Reinforcement of wall upto Flight 1 | 2d | 2027-02-11 | 2027-02-13 | 3S-SS-B01.545 | Barbender [70 h]; Helper [40 h]; Physical Progress [4370 h]; Reinforcement Steel [1 MT1]; TATA Projects Ltd-25 | 96,512.5 |
| 3S-SS-GF280 |  | Shuttering of wall upto Flight 1 | 2d | 2027-02-13 | 2027-02-16 | 3S-SS-GF250 | Carpenter [20 h]; Helper [10 h]; Physical Progress [4370 h]; Formwork [10 Sq m]; TATA Projects Ltd-25 | 11,651.6 |
| 3S-SS-GF305 |  | Casting of wall upto Flight 1 | 1d | 2027-02-16 | 2027-02-17 | 3S-SS-GF280 | Mason; Helper; Physical Progress [2180 h]; Concrete M40 [3 m3]; TATA Projects Ltd-25 | 29,601 |
| 3S-SS-GF325 |  | Shuttering of Staircase upto Flight 1 | 1d | 2027-02-17 | 2027-02-18 | 3S-SS-GF305 | Carpenter [20 h]; Helper [10 h]; Physical Progress [2180 h]; Formwork [10 Sq m]; TATA Projects Ltd-25 | 11,651.6 |
| 3S-SS-GF335 |  | Reinforcement of Staircase upto Flight 1 | 1d | 2027-02-18 | 2027-02-19 | 3S-SS-GF325 | Barbender [70 h]; Helper [40 h]; Physical Progress [2180 h]; Reinforcement Steel [1 MT1]; TATA Projects Ltd-25 | 96,512.5 |
| 3S-SS-GF360 |  | MEP coordination upto Flight 1 | 1d | 2027-02-19 | 2027-02-20 | 3S-SS-GF335 | Physical Progress [2180 h]; TATA Projects Ltd-25 |  |
| 3S-SS-GF375 |  | Casting of Staircase upto Flight 1 | 1d | 2027-02-20 | 2027-02-22 | 3S-SS-GF360 | Mason; Helper; Physical Progress [2180 h]; Concrete M40 [3 m3]; TATA Projects Ltd-25 | 29,601 |
| 3S-SS-GF400 |  | Reinforcement of wall upto Flight 2 | 2d | 2027-02-22 | 2027-02-24 | 3S-SS-GF375 | Barbender [70 h]; Helper [40 h]; Physical Progress [4370 h]; Reinforcement Steel [1 MT1]; TATA Projects Ltd-25 | 96,512.5 |
| 3S-SS-GF415 |  | Shuttering of wall upto Flight 2 | 2d | 2027-02-24 | 2027-02-26 | 3S-SS-GF400 | Carpenter [20 h]; Helper [10 h]; Physical Progress [4370 h]; Formwork [10 Sq m]; TATA Projects Ltd-25 | 11,651.6 |
| 3S-SS-GF445 |  | Casting of wall upto Flight 2 | 1d | 2027-02-26 | 2027-02-27 | 3S-SS-GF415 | Mason; Helper; Physical Progress [2180 h]; Concrete M40 [3 m3]; TATA Projects Ltd-25 | 29,601 |
| 3S-SS-GF455 |  | Shuttering of Staircase upto Flight 2 | 1d | 2027-02-27 | 2027-03-01 | 3S-SS-GF445 | Carpenter [20 h]; Helper [10 h]; Physical Progress [2180 h]; Formwork [10 Sq m]; TATA Projects Ltd-25 | 11,651.6 |
| 3S-SS-GF470 |  | Reinforcement of Staircase upto Flight 2 | 1d | 2027-03-01 | 2027-03-02 | 3S-SS-GF455 | Barbender [70 h]; Helper [40 h]; Physical Progress [2180 h]; Reinforcement Steel [1 MT1]; TATA Projects Ltd-25 | 96,512.5 |
| 3S-SS-GF490 |  | MEP coordination upto Flight 2 | 1d | 2027-03-02 | 2027-03-03 | 3S-SS-GF470 | Physical Progress [2180 h]; TATA Projects Ltd-25 |  |
| 3S-SS-GF505 |  | Casting of Staircase upto Flight 2 | 1d | 2027-03-03 | 2027-03-04 | 3S-SS-GF490 | Mason; Helper; Physical Progress [2180 h]; Concrete M40 [3 m3]; TATA Projects Ltd-25 | 29,601 |
| 3S-SS-GF515 |  | Reinforcement of wall upto Flight 3 | 2d | 2027-03-04 | 2027-03-06 | 3S-SS-GF505 | Barbender [70 h]; Helper [40 h]; Physical Progress [4370 h]; Reinforcement Steel [1 MT1]; TATA Projects Ltd-25 | 96,512.5 |
| 3S-SS-GF530 |  | Shuttering of wall upto Flight 3 | 2d | 2027-03-06 | 2027-03-09 | 3S-SS-GF515 | Carpenter [20 h]; Helper [10 h]; Physical Progress [4370 h]; Formwork [10 Sq m]; TATA Projects Ltd-25 | 11,651.6 |
| 3S-SS-GF545 |  | Casting of wall upto Flight 3 | 1d | 2027-03-09 | 2027-03-11 | 3S-SS-GF530 | Mason; Helper; Physical Progress [2180 h]; Concrete M40 [3 m3]; TATA Projects Ltd-25 | 29,601 |
| 3S-SS-GF555 |  | Shuttering of Staircase upto Flight 3 | 1d | 2027-03-11 | 2027-03-12 | 3S-SS-GF545 | Carpenter [20 h]; Helper [10 h]; Physical Progress [2180 h]; Formwork [10 Sq m]; TATA Projects Ltd-25 | 11,651.6 |
| 3S-SS-GF575 |  | Reinforcement of Staircase upto Flight 3 | 1d | 2027-03-12 | 2027-03-13 | 3S-SS-GF555 | Barbender [70 h]; Helper [40 h]; Physical Progress [2180 h]; Reinforcement Steel [1 MT1]; TATA Projects Ltd-25 | 96,512.5 |

| ID | WBS | Activity | Duration | Start | Finish | Predecessors | Resources | Cost |
| --- | --- | --- | --- | --- | --- | --- | --- | --- |
|  | 4 | **Staircase - 2** |  | 2027-02-11 | 2027-03-13 |  |  |  |
| 3S-SS-GF255 |  | Reinforcement of wall upto Flight 1 | 2d | 2027-02-11 | 2027-02-13 | 3S-SS-B01.545 | Barbender [70 h]; Helper [40 h]; Physical Progress [4370 h]; Reinforcement Steel [1 MT1]; TATA Projects Ltd-25 | 96,512.5 |
| 3S-SS-GF285 |  | Shuttering of wall upto Flight 1 | 2d | 2027-02-13 | 2027-02-16 | 3S-SS-GF255 | Carpenter [20 h]; Helper [10 h]; Physical Progress [4370 h]; Formwork [10 Sq m]; TATA Projects Ltd-25 | 11,651.6 |
| 3S-SS-GF310 |  | Casting of wall upto Flight 1 | 1d | 2027-02-16 | 2027-02-17 | 3S-SS-GF285 | Mason; Helper; Physical Progress [2180 h]; Concrete M40 [3 m3]; TATA Projects Ltd-25 | 29,601 |
| 3S-SS-GF330 |  | Shuttering of Staircase upto Flight 1 | 1d | 2027-02-17 | 2027-02-18 | 3S-SS-GF310 | Carpenter [20 h]; Helper [10 h]; Physical Progress [2180 h]; Formwork [10 Sq m]; TATA Projects Ltd-25 | 11,651.6 |
| 3S-SS-GF340 |  | Reinforcement of Staircase upto Flight 1 | 1d | 2027-02-18 | 2027-02-19 | 3S-SS-GF330 | Barbender [70 h]; Helper [40 h]; Physical Progress [2180 h]; Reinforcement Steel [1 MT1]; TATA Projects Ltd-25 | 96,512.5 |
| 3S-SS-GF365 |  | MEP coordination upto Flight 1 | 1d | 2027-02-19 | 2027-02-20 | 3S-SS-GF340 | Physical Progress [2180 h]; TATA Projects Ltd-25 |  |
| 3S-SS-GF380 |  | Casting of Staircase upto Flight 1 | 1d | 2027-02-20 | 2027-02-22 | 3S-SS-GF365 | Mason; Helper; Physical Progress [2180 h]; Concrete M40 [3 m3]; TATA Projects Ltd-25 | 29,601 |
| 3S-SS-GF405 |  | Reinforcement of wall upto Flight 2 | 2d | 2027-02-22 | 2027-02-24 | 3S-SS-GF380 | Barbender [70 h]; Helper [40 h]; Physical Progress [4370 h]; Reinforcement Steel [1 MT1]; TATA Projects Ltd-25 | 96,512.5 |
| 3S-SS-GF420 |  | Shuttering of wall upto Flight 2 | 2d | 2027-02-24 | 2027-02-26 | 3S-SS-GF405 | Carpenter [20 h]; Helper [10 h]; Physical Progress [4370 h]; Formwork [10 Sq m]; TATA Projects Ltd-25 | 11,651.6 |
| 3S-SS-GF450 |  | Casting of wall upto Flight 2 | 1d | 2027-02-26 | 2027-02-27 | 3S-SS-GF420 | Mason; Helper; Physical Progress [2180 h]; Concrete M40 [3 m3]; TATA Projects Ltd-25 | 29,601 |
| 3S-SS-GF460 |  | Shuttering of Staircase upto Flight 2 | 1d | 2027-02-27 | 2027-03-01 | 3S-SS-GF450 | Carpenter [20 h]; Helper [10 h]; Physical Progress [2180 h]; Formwork [10 Sq m]; TATA Projects Ltd-25 | 11,651.6 |
| 3S-SS-GF475 |  | Reinforcement of Staircase upto Flight 2 | 1d | 2027-03-01 | 2027-03-02 | 3S-SS-GF460 | Barbender [70 h]; Helper [40 h]; Physical Progress [2180 h]; Reinforcement Steel [1 MT1]; TATA Projects Ltd-25 | 96,512.5 |
| 3S-SS-GF495 |  | MEP coordination upto Flight 2 | 1d | 2027-03-02 | 2027-03-03 | 3S-SS-GF475 | Physical Progress [2180 h]; TATA Projects Ltd-25 |  |
| 3S-SS-GF510 |  | Casting of Staircase upto Flight 2 | 1d | 2027-03-03 | 2027-03-04 | 3S-SS-GF495 | Mason; Helper; Physical Progress [2180 h]; Concrete M40 [3 m3]; TATA Projects Ltd-25 | 29,601 |
| 3S-SS-GF520 |  | Reinforcement of wall upto Flight 3 | 2d | 2027-03-04 | 2027-03-06 | 3S-SS-GF510 | Barbender [70 h]; Helper [40 h]; Physical Progress [4370 h]; Reinforcement Steel [1 MT1]; TATA Projects Ltd-25 | 96,512.5 |
| 3S-SS-GF535 |  | Shuttering of wall upto Flight 3 | 2d | 2027-03-06 | 2027-03-09 | 3S-SS-GF520 | Carpenter [20 h]; Helper [10 h]; Physical Progress [4370 h]; Formwork [10 Sq m]; TATA Projects Ltd-25 | 11,651.6 |
| 3S-SS-GF550 |  | Casting of wall upto Flight 3 | 1d | 2027-03-09 | 2027-03-11 | 3S-SS-GF535 | Mason; Helper; Physical Progress [2180 h]; Concrete M40 [3 m3]; TATA Projects Ltd-25 | 29,601 |
| 3S-SS-GF560 |  | Shuttering of Staircase upto Flight 3 | 1d | 2027-03-11 | 2027-03-12 | 3S-SS-GF550 | Carpenter [20 h]; Helper [10 h]; Physical Progress [2180 h]; Formwork [10 Sq m]; TATA Projects Ltd-25 | 11,651.6 |
| 3S-SS-GF580 |  | Reinforcement of Staircase upto Flight 3 | 1d | 2027-03-12 | 2027-03-13 | 3S-SS-GF560 | Barbender [70 h]; Helper [40 h]; Physical Progress [2180 h]; Reinforcement Steel [1 MT1]; TATA Projects Ltd-25 | 96,512.5 |
|  | 2 | **Slab** |  | 2027-03-02 | 2027-04-01 |  |  |  |
| 3S-SS-GF485 |  | Shuttering | 5d | 2027-03-02 | 2027-03-08 | 3S-SS-GF480 | Carpenter [1090 h]; Helper [550 h]; Physical Progress [10920 h]; Formwork [649 Sq m]; TATA Projects Ltd-25 | 756,188.84 |
| 3S-SS-GF540 |  | Reinforcement Bottom Net with chairs | 2d | 2027-03-08 | 2027-03-11 | 3S-SS-GF485 | Barbender [400 h]; Helper [200 h]; Physical Progress [6550 h]; Reinforcement Steel [6 MT1]; TATA Projects Ltd-25 | 579,075 |
| 3S-SS-GF565 |  | Laying of PT Tendon | 2d | 2027-03-11 | 2027-03-13 | 3S-SS-GF540 | Physical Progress [8730 h]; TATA Projects Ltd-25 |  |
| 3S-SS-GF595 |  | Reinforcement Top Net | 2d | 2027-03-13 | 2027-03-16 | 3S-SS-GF565 | Barbender [400 h]; Helper [200 h]; Physical Progress [4370 h]; Reinforcement Steel [6 MT1]; TATA Projects Ltd-25 | 579,075 |
| 3S-SS-GF605 |  | MEP Coordination | 1d | 2027-03-16 | 2027-03-17 | 3S-SS-GF540, 3S-SS-GF595, 3S-SS-GF575, 3S-SS-GF580 | Physical Progress [2180 h]; TATA Projects Ltd-25 |  |
| 3S-SS-GF610 |  | Concrete of Slab | 1d | 2027-03-17 | 2027-03-18 | 3S-SS-GF605 | Mason [50 h]; Helper [50 h]; Physical Progress [2180 h]; Concrete M40 [162 m3]; TATA Projects Ltd-25 | 1,598,454 |
| 3S-SS-GF615 |  | Wait for Strength Gain | 6d | 2027-03-18 | 2027-03-27 | 3S-SS-GF610 | Physical Progress [13100 h]; TATA Projects Ltd-25 |  |
| 3S-SS-GF625 |  | PT Work | 4d | 2027-03-27 | 2027-04-01 | 3S-SS-GF615, 3S-SS-B01.555 | PT [2 MT1]; Helper [100 h]; PT Fitter [100 h]; Physical Progress [17470 h]; TATA Projects Ltd-25 | 380,000 |

| ID | WBS | Activity | Duration | Start | Finish | Predecessors | Resources | Cost |
| --- | --- | --- | --- | --- | --- | --- | --- | --- |
|  | 4 | **Pour 3** |  | 2027-02-11 | 2027-03-31 |  |  |  |
|  | 1 | **Column - First Lift** |  | 2027-02-11 | 2027-02-18 |  |  |  |
| 3S-SS-GF235 |  | Reinforcement | 2d | 2027-02-11 | 2027-02-13 | 3S-SS-B01.545 | Barbender [870 h]; Helper [440 h]; Physical Progress [4370 h]; Reinforcement Steel [13 MT1]; TATA Projects Ltd-25 | 1,254,662.5 |
| 3S-SS-GF275 |  | LPS | 1d | 2027-02-13 | 2027-02-15 | 3S-SS-GF235 | LPS [63943 INR]; Physical Progress [2180 h]; TATA Projects Ltd-25 | 63,943 |
| 3S-SS-GF295 |  | Shuttering | 2d | 2027-02-15 | 2027-02-17 | 3S-SS-GF235, 3S-SS-GF275 | Carpenter [620 h]; Helper [310 h]; Physical Progress [4370 h]; Formwork [372 Sq m]; TATA Projects Ltd-25 | 433,439.52 |
| 3S-SS-GF320 |  | Concrete | 1d | 2027-02-17 | 2027-02-18 | 3S-SS-GF295 | Mason [50 h]; Helper [50 h]; Physical Progress [2180 h]; Concrete M40 [93 m3]; TATA Projects Ltd-25 | 917,631 |
|  | 3 | **Column - Second Lift** |  | 2027-02-18 | 2027-02-25 |  |  |  |
| 3S-SS-GF345 |  | Reinforcement | 2d | 2027-02-18 | 2027-02-20 | 3S-SS-GF320 | Barbender [870 h]; Helper [440 h]; Physical Progress [4370 h]; Reinforcement Steel [13 MT1]; TATA Projects Ltd-25 | 1,254,662.5 |
| 3S-SS-GF390 |  | LPS | 1d | 2027-02-20 | 2027-02-22 | 3S-SS-GF345 | LPS [63943 INR]; Physical Progress [2180 h]; TATA Projects Ltd-25 | 63,943 |
| 3S-SS-GF410 |  | Shuttering | 2d | 2027-02-22 | 2027-02-24 | 3S-SS-GF345, 3S-SS-GF390 | Carpenter [620 h]; Helper [310 h]; Physical Progress [4370 h]; Formwork [372 Sq m]; TATA Projects Ltd-25 | 433,439.52 |
| 3S-SS-GF430 |  | Concrete | 1d | 2027-02-24 | 2027-02-25 | 3S-SS-GF410 | Mason [50 h]; Helper [50 h]; Physical Progress [2180 h]; Concrete M40 [93 m3]; TATA Projects Ltd-25 | 917,631 |
|  | 2 | **Slab** |  | 2027-02-25 | 2027-03-31 |  |  |  |
| 3S-SS-GF435 |  | Shuttering | 5d | 2027-02-25 | 2027-03-03 | 3S-SS-GF430 | Carpenter [1550 h]; Helper [780 h]; Physical Progress [10920 h]; Formwork [929 Sq m]; TATA Projects Ltd-25 | 1,082,433.64 |
| 3S-SS-GF500 |  | Reinforcement Bottom Net with chairs | 3d | 2027-03-03 | 2027-03-06 | 3S-SS-GF435 | Barbender [540 h]; Helper [270 h]; Physical Progress [6550 h]; Reinforcement Steel [8 MT1]; TATA Projects Ltd-25 | 772,100 |
| 3S-SS-GF525 |  | Laying of PT Tendon | 3d | 2027-03-06 | 2027-03-11 | 3S-SS-GF500 | Physical Progress [8730 h]; TATA Projects Ltd-25 |  |
| 3S-SS-GF570 |  | Reinforcement Top Net | 2d | 2027-03-11 | 2027-03-13 | 3S-SS-GF525 | Barbender [540 h]; Helper [270 h]; Physical Progress [4370 h]; Reinforcement Steel [8 MT1]; TATA Projects Ltd-25 | 772,100 |
| 3S-SS-GF585 |  | MEP Coordination | 1d | 2027-03-13 | 2027-03-15 | 3S-SS-GF500, 3S-SS-GF570 | Physical Progress [2180 h]; TATA Projects Ltd-25 |  |
| 3S-SS-GF590 |  | Concrete of Slab | 1d | 2027-03-15 | 2027-03-16 | 3S-SS-GF585 | Mason [50 h]; Helper [50 h]; Physical Progress [2180 h]; Concrete M40 [232 m3]; TATA Projects Ltd-25 | 2,289,144 |
| 3S-SS-GF600 |  | Wait for Strength Gain | 6d | 2027-03-16 | 2027-03-24 | 3S-SS-GF590 | Physical Progress [13100 h]; TATA Projects Ltd-25 |  |
| 3S-SS-GF620 |  | PT Work | 5d | 2027-03-24 | 2027-03-31 | 3S-SS-GF600 | PT [3 MT1]; Helper [100 h]; PT Fitter [100 h]; Physical Progress [17470 h]; TATA Projects Ltd-25 | 570,000 |
|  | 7 | **First Floor** |  | 2027-03-16 | 2027-05-26 |  |  |  |
|  | 1 | **Pour 1** |  | 2027-04-06 | 2027-05-26 |  |  |  |
|  | 1 | **Column, Core Wall, Shear Wall - First Lift** |  | 2027-04-06 | 2027-04-15 |  |  |  |
| 3S-SS-1st.10 |  | Reinforcement | 3d | 2027-04-06 | 2027-04-09 | 3S-SS-GF370, E-GFC-ST-3S-105 | Barbender [800 h]; Helper [400 h]; Physical Progress [6550 h]; Reinforcement Steel [12 MT1]; TATA Projects Ltd-25 | 1,158,150 |
| 3S-SS-1st.25 |  | LPS | 1d | 2027-04-09 | 2027-04-10 | 3S-SS-1st.10 | LPS [63943 INR]; Physical Progress [2180 h]; TATA Projects Ltd-25 | 63,943 |
| 3S-SS-1st.30 |  | Shuttering | 3d | 2027-04-10 | 2027-04-14 | 3S-SS-1st.10, 3S-SS-1st.25 | Carpenter [500 h]; Helper [250 h]; Physical Progress [6550 h]; Formwork [299 Sq m]; TATA Projects Ltd-25 | 348,382.84 |
| 3S-SS-1st.50 |  | Concrete | 1d | 2027-04-14 | 2027-04-15 | 3S-SS-1st.30 | Mason [50 h]; Helper [50 h]; Physical Progress [2180 h]; Concrete M40 [75 m3]; TATA Projects Ltd-25 | 740,025 |

| ID | WBS | Activity | Duration | Start | Finish | Predecessors | Resources | Cost |
| --- | --- | --- | --- | --- | --- | --- | --- | --- |
|  | 4 | **Column, Core Wall, Shear Wall - Second Lift** |  | 2027-04-15 | 2027-04-24 |  |  |  |
| 3S-SS-1st.65 |  | Reinforcement | 3d | 2027-04-15 | 2027-04-19 | 3S-SS-1st.50 | Barbender [800 h]; Helper [400 h]; Physical Progress [6550 h]; Reinforcement Steel [12 MT1]; TATA Projects Ltd-25 | 1,158,150 |
| 3S-SS-1st.80 |  | LPS | 1d | 2027-04-19 | 2027-04-20 | 3S-SS-1st.65 | LPS [63943 INR]; Physical Progress [2180 h]; TATA Projects Ltd-25 | 63,943 |
| 3S-SS-1st.85 |  | Shuttering | 3d | 2027-04-20 | 2027-04-23 | 3S-SS-1st.65, 3S-SS-1st.80 | Carpenter [500 h]; Helper [250 h]; Physical Progress [6550 h]; Formwork [299 Sq m]; TATA Projects Ltd-25 | 348,382.84 |
| 3S-SS-1st.105 |  | Concrete | 1d | 2027-04-23 | 2027-04-24 | 3S-SS-1st.85 | Mason [50 h]; Helper [50 h]; Physical Progress [2180 h]; Concrete M40 [75 m3]; TATA Projects Ltd-25 | 740,025 |
|  | 3 | **Staircase** |  | 2027-04-06 | 2027-05-06 |  |  |  |
| 3S-SS-1st.15 |  | Reinforcement of wall upto Flight 1 | 2d | 2027-04-06 | 2027-04-08 | 3S-SS-GF370 | Barbender [70 h]; Helper [40 h]; Physical Progress [4370 h]; Reinforcement Steel [1 MT1]; TATA Projects Ltd-25 | 96,512.5 |
| 3S-SS-1st.20 |  | Shuttering of wall upto Flight 1 | 2d | 2027-04-08 | 2027-04-10 | 3S-SS-1st.15 | Carpenter [20 h]; Helper [10 h]; Physical Progress [4370 h]; Formwork [10 Sq m]; TATA Projects Ltd-25 | 11,651.6 |
| 3S-SS-1st.35 |  | Casting of wall upto Flight 1 | 1d | 2027-04-10 | 2027-04-12 | 3S-SS-1st.20 | Mason; Helper; Physical Progress [2180 h]; Concrete M40 [3 m3]; TATA Projects Ltd-25 | 29,601 |
| 3S-SS-1st.40 |  | Shuttering of Staircase upto Flight 1 | 1d | 2027-04-12 | 2027-04-13 | 3S-SS-1st.35 | Carpenter [20 h]; Helper [10 h]; Physical Progress [2180 h]; Formwork [10 Sq m]; TATA Projects Ltd-25 | 11,651.6 |
| 3S-SS-1st.45 |  | Reinforcement of Staircase upto Flight 1 | 1d | 2027-04-13 | 2027-04-14 | 3S-SS-1st.40 | Barbender [70 h]; Helper [40 h]; Physical Progress [2180 h]; Reinforcement Steel [1 MT1]; TATA Projects Ltd-25 | 96,512.5 |
| 3S-SS-1st.55 |  | MEP coordination upto Flight 1 | 1d | 2027-04-14 | 2027-04-15 | 3S-SS-1st.45 | Physical Progress [2180 h]; TATA Projects Ltd-25 |  |
| 3S-SS-1st.60 |  | Casting of Staircase upto Flight 1 | 1d | 2027-04-15 | 2027-04-16 | 3S-SS-1st.55 | Mason; Helper; Physical Progress [2180 h]; Concrete M40 [3 m3]; TATA Projects Ltd-25 | 29,601 |
| 3S-SS-1st.70 |  | Reinforcement of wall upto Flight 2 | 2d | 2027-04-16 | 2027-04-19 | 3S-SS-1st.60 | Barbender [70 h]; Helper [40 h]; Physical Progress [4370 h]; Reinforcement Steel [1 MT1]; TATA Projects Ltd-25 | 96,512.5 |
| 3S-SS-1st.75 |  | Shuttering of wall upto Flight 2 | 2d | 2027-04-19 | 2027-04-21 | 3S-SS-1st.70 | Carpenter [20 h]; Helper [10 h]; Physical Progress [4370 h]; Formwork [10 Sq m]; TATA Projects Ltd-25 | 11,651.6 |
| 3S-SS-1st.90 |  | Casting of wall upto Flight 2 | 1d | 2027-04-21 | 2027-04-22 | 3S-SS-1st.75 | Mason; Helper; Physical Progress [2180 h]; Concrete M40 [3 m3]; TATA Projects Ltd-25 | 29,601 |
| 3S-SS-1st.95 |  | Shuttering of Staircase upto Flight 2 | 1d | 2027-04-22 | 2027-04-23 | 3S-SS-1st.90 | Carpenter [20 h]; Helper [10 h]; Physical Progress [2180 h]; Formwork [10 Sq m]; TATA Projects Ltd-25 | 11,651.6 |
| 3S-SS-1st.100 |  | Reinforcement of Staircase upto Flight 2 | 1d | 2027-04-23 | 2027-04-24 | 3S-SS-1st.95 | Barbender [70 h]; Helper [40 h]; Physical Progress [2180 h]; Reinforcement Steel [1 MT1]; TATA Projects Ltd-25 | 96,512.5 |
| 3S-SS-1st.115 |  | MEP coordination upto Flight 2 | 1d | 2027-04-24 | 2027-04-26 | 3S-SS-1st.100 | Physical Progress [2180 h]; TATA Projects Ltd-25 |  |
| 3S-SS-1st.120 |  | Casting of Staircase upto Flight 2 | 1d | 2027-04-26 | 2027-04-27 | 3S-SS-1st.115 | Mason; Helper; Physical Progress [2180 h]; Concrete M40 [3 m3]; TATA Projects Ltd-25 | 29,601 |
| 3S-SS-1st.125 |  | Reinforcement of wall upto Flight 3 | 2d | 2027-04-27 | 2027-04-29 | 3S-SS-1st.120 | Barbender [70 h]; Helper [40 h]; Physical Progress [4370 h]; Reinforcement Steel [1 MT1]; TATA Projects Ltd-25 | 96,512.5 |
| 3S-SS-1st.135 |  | Shuttering of wall upto Flight 3 | 2d | 2027-04-29 | 2027-05-03 | 3S-SS-1st.125 | Carpenter [20 h]; Helper [10 h]; Physical Progress [4370 h]; Formwork [10 Sq m]; TATA Projects Ltd-25 | 11,651.6 |
| 3S-SS-1st.155 |  | Casting of wall upto Flight 3 | 1d | 2027-05-03 | 2027-05-04 | 3S-SS-1st.135 | Mason; Helper; Physical Progress [2180 h]; Concrete M40 [3 m3]; TATA Projects Ltd-25 | 29,601 |
| 3S-SS-1st.175 |  | Shuttering of Staircase upto Flight 3 | 1d | 2027-05-04 | 2027-05-05 | 3S-SS-1st.155 | Carpenter [20 h]; Helper [10 h]; Physical Progress [2180 h]; Formwork [10 Sq m]; TATA Projects Ltd-25 | 11,651.6 |
| 3S-SS-1st.190 |  | Reinforcement of Staircase upto Flight 3 | 1d | 2027-05-05 | 2027-05-06 | 3S-SS-1st.175 | Barbender [70 h]; Helper [40 h]; Physical Progress [2180 h]; Reinforcement Steel [1 MT1]; TATA Projects Ltd-25 | 96,512.5 |

| ID | WBS | Activity | Duration | Start | Finish | Predecessors | Resources | Cost |
| --- | --- | --- | --- | --- | --- | --- | --- | --- |
|  | 2 | **Slab** |  | 2027-04-24 | 2027-05-26 |  |  |  |
| 3S-SS-1st.110 |  | Shuttering | 5d | 2027-04-24 | 2027-04-30 | 3S-SS-1st.105 | Carpenter [2980 h]; Helper [1490 h]; Physical Progress [10920 h]; Formwork [1784 Sq m]; TATA Projects Ltd-25 | 2,078,645.44 |
| 3S-SS-1st.140 |  | Reinforcement Bottom Net with chairs | 3d | 2027-04-30 | 2027-05-05 | 3S-SS-1st.110 | Barbender [1200 h]; Helper [600 h]; Physical Progress [6550 h]; Reinforcement Steel [18 MT1]; TATA Projects Ltd-25 | 1,737,225 |
| 3S-SS-1st.180 |  | Laying of PT Tendon | 3d | 2027-05-05 | 2027-05-08 | 3S-SS-1st.140, E-ShopD-Civil-PT-3S-15 | Physical Progress [8730 h]; TATA Projects Ltd-25 |  |
| 3S-SS-1st.235 |  | Reinforcement Top Net | 2d | 2027-05-08 | 2027-05-11 | 3S-SS-1st.180 | Barbender [1200 h]; Helper [600 h]; Physical Progress [4370 h]; Reinforcement Steel [18 MT1]; TATA Projects Ltd-25 | 1,737,225 |
| 3S-SS-1st.265 |  | MEP Coordination | 1d | 2027-05-11 | 2027-05-12 | 3S-SS-1st.140, 3S-SS-1st.235, 3S-SS-1st.190 | Physical Progress [2180 h]; TATA Projects Ltd-25 |  |
| 3S-SS-1st.290 |  | Concrete of Slab | 1d | 2027-05-12 | 2027-05-13 | 3S-SS-1st.265 | Mason [50 h]; Helper [50 h]; Physical Progress [2180 h]; Concrete M40 [446 m3]; TATA Projects Ltd-25 | 4,400,682 |
| 3S-SS-1st.315 |  | Wait for Strength Gain | 6d | 2027-05-13 | 2027-05-20 | 3S-SS-1st.290 | Physical Progress [13100 h]; TATA Projects Ltd-25 |  |
| 3S-SS-1st.375 |  | PT Work | 5d | 2027-05-20 | 2027-05-26 | 3S-SS-1st.315, 3S-SS-GF465 | PT [9 MT1]; Helper [100 h]; PT Fitter [100 h]; Physical Progress [17470 h]; TATA Projects Ltd-25 | 1,710,000 |
|  | 2 | **Pour 2** |  | 2027-03-18 | 2027-05-06 |  |  |  |
|  | 1 | **Column, Core Wall, Shear Wall - First Lift** |  | 2027-03-18 | 2027-03-30 |  |  |  |
| 3S-SS-1st.160 |  | Reinforcement | 3d | 2027-03-18 | 2027-03-23 | 3S-SS-GF610 | Barbender [540 h]; Helper [270 h]; Physical Progress [6550 h]; Reinforcement Steel [8 MT1]; TATA Projects Ltd-25 | 772,100 |
| 3S-SS-1st.210 |  | LPS | 1d | 2027-03-23 | 2027-03-24 | 3S-SS-1st.160 | LPS [63943 INR]; Physical Progress [2180 h]; TATA Projects Ltd-25 | 63,943 |
| 3S-SS-1st.215 |  | Shuttering | 3d | 2027-03-24 | 2027-03-29 | 3S-SS-1st.160, 3S-SS-1st.210 | Carpenter [330 h]; Helper [170 h]; Physical Progress [6550 h]; Formwork [194 Sq m]; TATA Projects Ltd-25 | 226,041.04 |
| 3S-SS-1st.270 |  | Concrete | 1d | 2027-03-29 | 2027-03-30 | 3S-SS-1st.215 | Mason [50 h]; Helper [50 h]; Physical Progress [2180 h]; Concrete M40 [49 m3]; TATA Projects Ltd-25 | 483,483 |
|  | 5 | **Column, Core Wall, Shear Wall - Second Lift** |  | 2027-03-30 | 2027-04-08 |  |  |  |
| 3S-SS-1st.310 |  | Reinforcement | 3d | 2027-03-30 | 2027-04-02 | 3S-SS-1st.270 | Barbender [540 h]; Helper [270 h]; Physical Progress [6550 h]; Reinforcement Steel [8 MT1]; TATA Projects Ltd-25 | 772,100 |
| 3S-SS-1st.340 |  | LPS | 1d | 2027-04-02 | 2027-04-03 | 3S-SS-1st.310 | LPS [63943 INR]; Physical Progress [2180 h]; TATA Projects Ltd-25 | 63,943 |
| 3S-SS-1st.345 |  | Shuttering | 3d | 2027-04-03 | 2027-04-07 | 3S-SS-1st.310, 3S-SS-1st.340 | Carpenter [330 h]; Helper [170 h]; Physical Progress [6550 h]; Formwork [194 Sq m]; TATA Projects Ltd-25 | 226,041.04 |
| 3S-SS-1st.390 |  | Concrete | 1d | 2027-04-07 | 2027-04-08 | 3S-SS-1st.345 | Mason [50 h]; Helper [50 h]; Physical Progress [2180 h]; Concrete M40 [49 m3]; TATA Projects Ltd-25 | 483,483 |
|  | 3 | **Staircase - 1** |  | 2027-03-18 | 2027-04-19 |  |  |  |
| 3S-SS-1st.165 |  | Reinforcement of wall upto Flight 1 | 2d | 2027-03-18 | 2027-03-20 | 3S-SS-GF610 | Barbender [70 h]; Helper [40 h]; Physical Progress [4370 h]; Reinforcement Steel [1 MT1]; TATA Projects Ltd-25 | 96,512.5 |
| 3S-SS-1st.195 |  | Shuttering of wall upto Flight 1 | 2d | 2027-03-20 | 2027-03-24 | 3S-SS-1st.165 | Carpenter [20 h]; Helper [10 h]; Physical Progress [4370 h]; Formwork [10 Sq m]; TATA Projects Ltd-25 | 11,651.6 |
| 3S-SS-1st.220 |  | Casting of wall upto Flight 1 | 1d | 2027-03-24 | 2027-03-25 | 3S-SS-1st.195 | Mason; Helper; Physical Progress [2180 h]; Concrete M40 [3 m3]; TATA Projects Ltd-25 | 29,601 |
| 3S-SS-1st.240 |  | Shuttering of Staircase upto Flight 1 | 1d | 2027-03-25 | 2027-03-27 | 3S-SS-1st.220 | Carpenter [20 h]; Helper [10 h]; Physical Progress [2180 h]; Formwork [10 Sq m]; TATA Projects Ltd-25 | 11,651.6 |
| 3S-SS-1st.255 |  | Reinforcement of Staircase upto Flight 1 | 1d | 2027-03-27 | 2027-03-29 | 3S-SS-1st.240 | Barbender [70 h]; Helper [40 h]; Physical Progress [2180 h]; Reinforcement Steel [1 MT1]; TATA Projects Ltd-25 | 96,512.5 |
| 3S-SS-1st.275 |  | MEP coordination upto Flight 1 | 1d | 2027-03-29 | 2027-03-30 | 3S-SS-1st.255 | Physical Progress [2180 h]; TATA Projects Ltd-25 |  |
| 3S-SS-1st.300 |  | Casting of Staircase upto Flight 1 | 1d | 2027-03-30 | 2027-03-31 | 3S-SS-1st.275 | Mason; Helper; Physical Progress [2180 h]; Concrete M40 [3 m3]; TATA Projects Ltd-25 | 29,601 |
| 3S-SS-1st.320 |  | Reinforcement of wall upto Flight 2 | 2d | 2027-03-31 | 2027-04-02 | 3S-SS-1st.300 | Barbender [70 h]; Helper [40 h]; Physical Progress [4370 h]; Reinforcement Steel [1 MT1]; TATA Projects Ltd-25 | 96,512.5 |
| 3S-SS-1st.330 |  | Shuttering of wall upto Flight 2 | 2d | 2027-04-02 | 2027-04-05 | 3S-SS-1st.320 | Carpenter [20 h]; Helper [10 h]; Physical Progress [4370 h]; Formwork [10 Sq m]; TATA Projects Ltd-25 | 11,651.6 |
| 3S-SS-1st.355 |  | Casting of wall upto Flight 2 | 1d | 2027-04-05 | 2027-04-06 | 3S-SS-1st.330 | Mason; Helper; Physical Progress [2180 h]; Concrete M40 [3 m3]; TATA Projects Ltd-25 | 29,601 |
| 3S-SS-1st.365 |  | Shuttering of Staircase upto Flight 2 | 1d | 2027-04-06 | 2027-04-07 | 3S-SS-1st.355 | Carpenter [20 h]; Helper [10 h]; Physical Progress [2180 h]; Formwork [10 Sq m]; TATA Projects Ltd-25 | 11,651.6 |
| 3S-SS-1st.380 |  | Reinforcement of Staircase upto Flight 2 | 1d | 2027-04-07 | 2027-04-08 | 3S-SS-1st.365 | Barbender [70 h]; Helper [40 h]; Physical Progress [2180 h]; Reinforcement Steel [1 MT1]; TATA Projects Ltd-25 | 96,512.5 |
| 3S-SS-1st.405 |  | MEP coordination upto Flight 2 | 1d | 2027-04-08 | 2027-04-09 | 3S-SS-1st.380 | Physical Progress [2180 h]; TATA Projects Ltd-25 |  |
| 3S-SS-1st.415 |  | Casting of Staircase upto Flight 2 | 1d | 2027-04-09 | 2027-04-10 | 3S-SS-1st.405 | Mason; Helper; Physical Progress [2180 h]; Concrete M40 [3 m3]; TATA Projects Ltd-25 | 29,601 |
| 3S-SS-1st.425 |  | Reinforcement of wall upto Flight 3 | 2d | 2027-04-10 | 2027-04-13 | 3S-SS-1st.415 | Barbender [70 h]; Helper [40 h]; Physical Progress [4370 h]; Reinforcement Steel [1 MT1]; TATA Projects Ltd-25 | 96,512.5 |
| 3S-SS-1st.440 |  | Shuttering of wall upto Flight 3 | 2d | 2027-04-13 | 2027-04-15 | 3S-SS-1st.425 | Carpenter [20 h]; Helper [10 h]; Physical Progress [4370 h]; Formwork [10 Sq m]; TATA Projects Ltd-25 | 11,651.6 |
| 3S-SS-1st.460 |  | Casting of wall upto Flight 3 | 1d | 2027-04-15 | 2027-04-16 | 3S-SS-1st.440 | Mason; Helper; Physical Progress [2180 h]; Concrete M40 [3 m3]; TATA Projects Ltd-25 | 29,601 |
| 3S-SS-1st.475 |  | Shuttering of Staircase upto Flight 3 | 1d | 2027-04-16 | 2027-04-17 | 3S-SS-1st.460 | Carpenter [20 h]; Helper [10 h]; Physical Progress [2180 h]; Formwork [10 Sq m]; TATA Projects Ltd-25 | 11,651.6 |
| 3S-SS-1st.495 |  | Reinforcement of Staircase upto Flight 3 | 1d | 2027-04-17 | 2027-04-19 | 3S-SS-1st.475 | Barbender [70 h]; Helper [40 h]; Physical Progress [2180 h]; Reinforcement Steel [1 MT1]; TATA Projects Ltd-25 | 96,512.5 |

| ID | WBS | Activity | Duration | Start | Finish | Predecessors | Resources | Cost |
| --- | --- | --- | --- | --- | --- | --- | --- | --- |
|  | 4 | **Staircase - 2** |  | 2027-03-18 | 2027-04-19 |  |  |  |
| 3S-SS-1st.170 |  | Reinforcement of wall upto Flight 1 | 2d | 2027-03-18 | 2027-03-20 | 3S-SS-GF610 | Barbender [70 h]; Helper [40 h]; Physical Progress [4370 h]; Reinforcement Steel [1 MT1]; TATA Projects Ltd-25 | 96,512.5 |
| 3S-SS-1st.200 |  | Shuttering of wall upto Flight 1 | 2d | 2027-03-20 | 2027-03-24 | 3S-SS-1st.170 | Carpenter [20 h]; Helper [10 h]; Physical Progress [4370 h]; Formwork [10 Sq m]; TATA Projects Ltd-25 | 11,651.6 |
| 3S-SS-1st.225 |  | Casting of wall upto Flight 1 | 1d | 2027-03-24 | 2027-03-25 | 3S-SS-1st.200 | Mason; Helper; Physical Progress [2180 h]; Concrete M40 [3 m3]; TATA Projects Ltd-25 | 29,601 |
| 3S-SS-1st.245 |  | Shuttering of Staircase upto Flight 1 | 1d | 2027-03-25 | 2027-03-27 | 3S-SS-1st.225 | Carpenter [20 h]; Helper [10 h]; Physical Progress [2180 h]; Formwork [10 Sq m]; TATA Projects Ltd-25 | 11,651.6 |
| 3S-SS-1st.260 |  | Reinforcement of Staircase upto Flight 1 | 1d | 2027-03-27 | 2027-03-29 | 3S-SS-1st.245 | Barbender [70 h]; Helper [40 h]; Physical Progress [2180 h]; Reinforcement Steel [1 MT1]; TATA Projects Ltd-25 | 96,512.5 |
| 3S-SS-1st.280 |  | MEP coordination upto Flight 1 | 1d | 2027-03-29 | 2027-03-30 | 3S-SS-1st.260 | Physical Progress [2180 h]; TATA Projects Ltd-25 |  |
| 3S-SS-1st.305 |  | Casting of Staircase upto Flight 1 | 1d | 2027-03-30 | 2027-03-31 | 3S-SS-1st.280 | Mason; Helper; Physical Progress [2180 h]; Concrete M40 [3 m3]; TATA Projects Ltd-25 | 29,601 |
| 3S-SS-1st.325 |  | Reinforcement of wall upto Flight 2 | 2d | 2027-03-31 | 2027-04-02 | 3S-SS-1st.305 | Barbender [70 h]; Helper [40 h]; Physical Progress [4370 h]; Reinforcement Steel [1 MT1]; TATA Projects Ltd-25 | 96,512.5 |
| 3S-SS-1st.335 |  | Shuttering of wall upto Flight 2 | 2d | 2027-04-02 | 2027-04-05 | 3S-SS-1st.325 | Carpenter [20 h]; Helper [10 h]; Physical Progress [4370 h]; Formwork [10 Sq m]; TATA Projects Ltd-25 | 11,651.6 |
| 3S-SS-1st.360 |  | Casting of wall upto Flight 2 | 1d | 2027-04-05 | 2027-04-06 | 3S-SS-1st.335 | Mason; Helper; Physical Progress [2180 h]; Concrete M40 [3 m3]; TATA Projects Ltd-25 | 29,601 |
| 3S-SS-1st.370 |  | Shuttering of Staircase upto Flight 2 | 1d | 2027-04-06 | 2027-04-07 | 3S-SS-1st.360 | Carpenter [20 h]; Helper [10 h]; Physical Progress [2180 h]; Formwork [10 Sq m]; TATA Projects Ltd-25 | 11,651.6 |
| 3S-SS-1st.385 |  | Reinforcement of Staircase upto Flight 2 | 1d | 2027-04-07 | 2027-04-08 | 3S-SS-1st.370 | Barbender [70 h]; Helper [40 h]; Physical Progress [2180 h]; Reinforcement Steel [1 MT1]; TATA Projects Ltd-25 | 96,512.5 |
| 3S-SS-1st.410 |  | MEP coordination upto Flight 2 | 1d | 2027-04-08 | 2027-04-09 | 3S-SS-1st.385 | Physical Progress [2180 h]; TATA Projects Ltd-25 |  |
| 3S-SS-1st.420 |  | Casting of Staircase upto Flight 2 | 1d | 2027-04-09 | 2027-04-10 | 3S-SS-1st.410 | Mason; Helper; Physical Progress [2180 h]; Concrete M40 [3 m3]; TATA Projects Ltd-25 | 29,601 |
| 3S-SS-1st.430 |  | Reinforcement of wall upto Flight 3 | 2d | 2027-04-10 | 2027-04-13 | 3S-SS-1st.420 | Barbender [70 h]; Helper [40 h]; Physical Progress [4370 h]; Reinforcement Steel [1 MT1]; TATA Projects Ltd-25 | 96,512.5 |
| 3S-SS-1st.445 |  | Shuttering of wall upto Flight 3 | 2d | 2027-04-13 | 2027-04-15 | 3S-SS-1st.430 | Carpenter [20 h]; Helper [10 h]; Physical Progress [4370 h]; Formwork [10 Sq m]; TATA Projects Ltd-25 | 11,651.6 |
| 3S-SS-1st.465 |  | Casting of wall upto Flight 3 | 1d | 2027-04-15 | 2027-04-16 | 3S-SS-1st.445 | Mason; Helper; Physical Progress [2180 h]; Concrete M40 [3 m3]; TATA Projects Ltd-25 | 29,601 |
| 3S-SS-1st.480 |  | Shuttering of Staircase upto Flight 3 | 1d | 2027-04-16 | 2027-04-17 | 3S-SS-1st.465 | Carpenter [20 h]; Helper [10 h]; Physical Progress [2180 h]; Formwork [10 Sq m]; TATA Projects Ltd-25 | 11,651.6 |
| 3S-SS-1st.500 |  | Reinforcement of Staircase upto Flight 3 | 1d | 2027-04-17 | 2027-04-19 | 3S-SS-1st.480 | Barbender [70 h]; Helper [40 h]; Physical Progress [2180 h]; Reinforcement Steel [1 MT1]; TATA Projects Ltd-25 | 96,512.5 |
|  | 2 | **Slab** |  | 2027-04-08 | 2027-05-06 |  |  |  |
| 3S-SS-1st.395 |  | Shuttering | 5d | 2027-04-08 | 2027-04-14 | 3S-SS-1st.390 | Carpenter [1940 h]; Helper [970 h]; Physical Progress [10920 h]; Formwork [1160 Sq m]; TATA Projects Ltd-25 | 1,351,585.6 |
| 3S-SS-1st.450 |  | Reinforcement Bottom Net with chairs | 2d | 2027-04-14 | 2027-04-16 | 3S-SS-1st.395 | Barbender [800 h]; Helper [400 h]; Physical Progress [6550 h]; Reinforcement Steel [12 MT1]; TATA Projects Ltd-25 | 1,158,150 |
| 3S-SS-1st.485 |  | Laying of PT Tendon | 2d | 2027-04-16 | 2027-04-19 | 3S-SS-1st.450 | Physical Progress [8730 h]; TATA Projects Ltd-25 |  |
| 3S-SS-1st.505 |  | Reinforcement Top Net | 2d | 2027-04-19 | 2027-04-21 | 3S-SS-1st.485 | Barbender [800 h]; Helper [400 h]; Physical Progress [4370 h]; Reinforcement Steel [12 MT1]; TATA Projects Ltd-25 | 1,158,150 |
| 3S-SS-1st.510 |  | MEP Coordination | 1d | 2027-04-21 | 2027-04-22 | 3S-SS-1st.450, 3S-SS-1st.505, 3S-SS-1st.495, 3S-SS-1st.500 | Physical Progress [2180 h]; TATA Projects Ltd-25 |  |
| 3S-SS-1st.520 |  | Concrete of Slab | 1d | 2027-04-22 | 2027-04-23 | 3S-SS-1st.510 | Mason [50 h]; Helper [50 h]; Physical Progress [2180 h]; Concrete M40 [290 m3]; TATA Projects Ltd-25 | 2,861,430 |
| 3S-SS-1st.525 |  | Wait for Strength Gain | 6d | 2027-04-23 | 2027-04-30 | 3S-SS-1st.520 | Physical Progress [13100 h]; TATA Projects Ltd-25 |  |
| 3S-SS-1st.530 |  | PT Work | 4d | 2027-04-30 | 2027-05-06 | 3S-SS-1st.525, 3S-SS-GF620 | PT [6 MT1]; Helper [100 h]; PT Fitter [100 h]; Physical Progress [17470 h]; TATA Projects Ltd-25 | 1,140,000 |

| ID | WBS | Activity | Duration | Start | Finish | Predecessors | Resources | Cost |
| --- | --- | --- | --- | --- | --- | --- | --- | --- |
|  | 4 | **Pour 3** |  | 2027-03-16 | 2027-05-03 |  |  |  |
|  | 1 | **Column - First Lift** |  | 2027-03-16 | 2027-03-24 |  |  |  |
| 3S-SS-1st.130 |  | Reinforcement | 2d | 2027-03-16 | 2027-03-18 | 3S-SS-GF590 | Barbender [1000 h]; Helper [500 h]; Physical Progress [4370 h]; Reinforcement Steel [15 MT1]; TATA Projects Ltd-25 | 1,447,687.5 |
| 3S-SS-1st.145 |  | LPS | 1d | 2027-03-18 | 2027-03-19 | 3S-SS-1st.130 | LPS [63943 INR]; Physical Progress [2180 h]; TATA Projects Ltd-25 | 63,943 |
| 3S-SS-1st.150 |  | Shuttering | 2d | 2027-03-19 | 2027-03-23 | 3S-SS-1st.130, 3S-SS-1st.145 | Carpenter [620 h]; Helper [310 h]; Physical Progress [4370 h]; Formwork [370 Sq m]; TATA Projects Ltd-25 | 431,109.2 |
| 3S-SS-1st.185 |  | Concrete | 1d | 2027-03-23 | 2027-03-24 | 3S-SS-1st.150 | Mason [50 h]; Helper [50 h]; Physical Progress [2180 h]; Concrete M40 [92 m3]; TATA Projects Ltd-25 | 907,764 |
|  | 3 | **Column - Second Lift** |  | 2027-03-24 | 2027-04-01 |  |  |  |
| 3S-SS-1st.205 |  | Reinforcement | 2d | 2027-03-24 | 2027-03-27 | 3S-SS-1st.185 | Barbender [1000 h]; Helper [500 h]; Physical Progress [4370 h]; Reinforcement Steel [15 MT1]; TATA Projects Ltd-25 | 1,447,687.5 |
| 3S-SS-1st.230 |  | LPS | 1d | 2027-03-27 | 2027-03-29 | 3S-SS-1st.205 | LPS [63943 INR]; Physical Progress [2180 h]; TATA Projects Ltd-25 | 63,943 |
| 3S-SS-1st.250 |  | Shuttering | 2d | 2027-03-29 | 2027-03-31 | 3S-SS-1st.205, 3S-SS-1st.230 | Carpenter [620 h]; Helper [310 h]; Physical Progress [4370 h]; Formwork [370 Sq m]; TATA Projects Ltd-25 | 431,109.2 |
| 3S-SS-1st.285 |  | Concrete | 1d | 2027-03-31 | 2027-04-01 | 3S-SS-1st.250 | Mason [50 h]; Helper [50 h]; Physical Progress [2180 h]; Concrete M40 [92 m3]; TATA Projects Ltd-25 | 907,764 |
|  | 2 | **Slab** |  | 2027-04-01 | 2027-05-03 |  |  |  |
| 3S-SS-1st.295 |  | Shuttering | 5d | 2027-04-01 | 2027-04-07 | 3S-SS-1st.285 | Carpenter [3680 h]; Helper [1840 h]; Physical Progress [10920 h]; Formwork [2208 Sq m]; TATA Projects Ltd-25 | 2,572,673.28 |
| 3S-SS-1st.350 |  | Reinforcement Bottom Net with chairs | 3d | 2027-04-07 | 2027-04-10 | 3S-SS-1st.295 | Barbender [1470 h]; Helper [740 h]; Physical Progress [6550 h]; Reinforcement Steel [22 MT1]; TATA Projects Ltd-25 | 2,123,275 |
| 3S-SS-1st.400 |  | Laying of PT Tendon | 3d | 2027-04-10 | 2027-04-14 | 3S-SS-1st.350 | Physical Progress [8730 h]; TATA Projects Ltd-25 |  |
| 3S-SS-1st.435 |  | Reinforcement Top Net | 2d | 2027-04-14 | 2027-04-16 | 3S-SS-1st.400 | Barbender [1470 h]; Helper [740 h]; Physical Progress [4370 h]; Reinforcement Steel [22 MT1]; TATA Projects Ltd-25 | 2,123,275 |
| 3S-SS-1st.455 |  | MEP Coordination | 1d | 2027-04-16 | 2027-04-17 | 3S-SS-1st.350, 3S-SS-1st.435 | Physical Progress [2180 h]; TATA Projects Ltd-25 |  |
| 3S-SS-1st.470 |  | Concrete of Slab | 1d | 2027-04-17 | 2027-04-19 | 3S-SS-1st.455 | Mason [50 h]; Helper [50 h]; Physical Progress [2180 h]; Concrete M40 [552 m3]; TATA Projects Ltd-25 | 5,446,584 |
| 3S-SS-1st.490 |  | Wait for Strength Gain | 6d | 2027-04-19 | 2027-04-26 | 3S-SS-1st.470 | Physical Progress [13100 h]; TATA Projects Ltd-25 |  |
| 3S-SS-1st.515 |  | PT Work | 5d | 2027-04-26 | 2027-05-03 | 3S-SS-1st.490 | PT [11 MT1]; Helper [100 h]; PT Fitter [100 h]; Physical Progress [17470 h]; TATA Projects Ltd-25 | 2,090,000 |
|  | 8 | **Service Floor** |  | 2027-04-23 | 2027-06-23 |  |  |  |
|  | 1 | **Pour 1** |  | 2027-05-13 | 2027-06-23 |  |  |  |
|  | 1 | **Column, Core Wall, Shear Wall** |  | 2027-05-13 | 2027-05-25 |  |  |  |
| 3S-SS-Serv.F10 |  | Reinforcement | 4d | 2027-05-13 | 2027-05-18 | 3S-SS-1st.290, E-GFC-ST-3S-275 | Barbender [2870 h]; Helper [1440 h]; Physical Progress [8730 h]; Reinforcement Steel [43 MT1]; TATA Projects Ltd-25 | 4,150,037.5 |
| 3S-SS-Serv.F25 |  | LPS | 1d | 2027-05-18 | 2027-05-19 | 3S-SS-Serv.F10 | LPS [63943 INR]; Physical Progress [2180 h]; TATA Projects Ltd-25 | 63,943 |
| 3S-SS-Serv.F35 |  | Shuttering | 4d | 2027-05-19 | 2027-05-24 | 3S-SS-Serv.F10, 3S-SS-Serv.F25 | Carpenter [1750 h]; Helper [880 h]; Physical Progress [8730 h]; Formwork [1045 Sq m]; TATA Projects Ltd-25 | 1,217,592.2 |
| 3S-SS-Serv.F60 |  | Concrete | 1d | 2027-05-24 | 2027-05-25 | 3S-SS-Serv.F35 | Mason [50 h]; Helper [50 h]; Physical Progress [2180 h]; Concrete M40 [261 m3]; TATA Projects Ltd-25 | 2,575,287 |

| ID | WBS | Activity | Duration | Start | Finish | Predecessors | Resources | Cost |
| --- | --- | --- | --- | --- | --- | --- | --- | --- |
|  | 3 | **Staircase** |  | 2027-05-13 | 2027-06-01 |  |  |  |
| 3S-SS-Serv.F15 |  | Reinforcement of wall upto Flight 1 | 2d | 2027-05-13 | 2027-05-15 | 3S-SS-1st.290 | Barbender [70 h]; Helper [40 h]; Physical Progress [4370 h]; Reinforcement Steel [1 MT1]; TATA Projects Ltd-25 | 96,512.5 |
| 3S-SS-Serv.F20 |  | Shuttering of wall upto Flight 1 | 2d | 2027-05-15 | 2027-05-18 | 3S-SS-Serv.F15 | Carpenter [20 h]; Helper [10 h]; Physical Progress [4370 h]; Formwork [10 Sq m]; TATA Projects Ltd-25 | 11,651.6 |
| 3S-SS-Serv.F30 |  | Casting of wall upto Flight 1 | 1d | 2027-05-18 | 2027-05-19 | 3S-SS-Serv.F20 | Mason; Helper; Physical Progress [2180 h]; Concrete M40 [3 m3]; TATA Projects Ltd-25 | 29,601 |
| 3S-SS-Serv.F40 |  | Shuttering of Staircase upto Flight 1 | 1d | 2027-05-19 | 2027-05-20 | 3S-SS-Serv.F30 | Carpenter [20 h]; Helper [10 h]; Physical Progress [2180 h]; Formwork [10 Sq m]; TATA Projects Ltd-25 | 11,651.6 |
| 3S-SS-Serv.F45 |  | Reinforcement of Staircase upto Flight 1 | 1d | 2027-05-20 | 2027-05-21 | 3S-SS-Serv.F40 | Barbender [70 h]; Helper [40 h]; Physical Progress [2180 h]; Reinforcement Steel [1 MT1]; TATA Projects Ltd-25 | 96,512.5 |
| 3S-SS-Serv.F50 |  | MEP coordination upto Flight 1 | 1d | 2027-05-21 | 2027-05-22 | 3S-SS-Serv.F45 | Physical Progress [2180 h]; TATA Projects Ltd-25 |  |
| 3S-SS-Serv.F55 |  | Casting of Staircase upto Flight 1 | 1d | 2027-05-22 | 2027-05-24 | 3S-SS-Serv.F50 | Mason; Helper; Physical Progress [2180 h]; Concrete M40 [3 m3]; TATA Projects Ltd-25 | 29,601 |
| 3S-SS-Serv.F65 |  | Reinforcement of wall upto Flight 2 | 2d | 2027-05-24 | 2027-05-26 | 3S-SS-Serv.F55 | Barbender [70 h]; Helper [40 h]; Physical Progress [4370 h]; Reinforcement Steel [1 MT1]; TATA Projects Ltd-25 | 96,512.5 |
| 3S-SS-Serv.F75 |  | Shuttering of wall upto Flight 2 | 2d | 2027-05-26 | 2027-05-28 | 3S-SS-Serv.F65 | Carpenter [20 h]; Helper [10 h]; Physical Progress [4370 h]; Formwork [10 Sq m]; TATA Projects Ltd-25 | 11,651.6 |
| 3S-SS-Serv.F80 |  | Casting of wall upto Flight 2 | 1d | 2027-05-28 | 2027-05-29 | 3S-SS-Serv.F75 | Mason; Helper; Physical Progress [2180 h]; Concrete M40 [3 m3]; TATA Projects Ltd-25 | 29,601 |
| 3S-SS-Serv.F90 |  | Shuttering of Staircase upto Flight 2 | 1d | 2027-05-29 | 2027-05-31 | 3S-SS-Serv.F80 | Carpenter [20 h]; Helper [10 h]; Physical Progress [2180 h]; Formwork [10 Sq m]; TATA Projects Ltd-25 | 11,651.6 |
| 3S-SS-Serv.F95 |  | Reinforcement of Staircase upto Flight 2 | 1d | 2027-05-31 | 2027-06-01 | 3S-SS-Serv.F90 | Barbender [70 h]; Helper [40 h]; Physical Progress [2180 h]; Reinforcement Steel [1 MT1]; TATA Projects Ltd-25 | 96,512.5 |
|  | 2 | **Slab** |  | 2027-05-25 | 2027-06-23 |  |  |  |
| 3S-SS-Serv.F70 |  | Shuttering | 4d | 2027-05-25 | 2027-05-29 | 3S-SS-Serv.F60 | Carpenter [1810 h]; Helper [910 h]; Physical Progress [8730 h]; Formwork [1085 Sq m]; TATA Projects Ltd-25 | 1,264,198.6 |
| 3S-SS-Serv.F85 |  | Reinforcement Bottom Net with chairs | 3d | 2027-05-29 | 2027-06-02 | 3S-SS-Serv.F70 | Barbender [540 h]; Helper [270 h]; Physical Progress [6550 h]; Reinforcement Steel [8 MT1]; TATA Projects Ltd-25 | 772,100 |
| 3S-SS-Serv.F100 |  | Laying of PT Tendon | 3d | 2027-06-02 | 2027-06-05 | 3S-SS-Serv.F85 | Physical Progress [8730 h]; TATA Projects Ltd-25 |  |
| 3S-SS-Serv.F105 |  | Reinforcement Top Net | 2d | 2027-06-05 | 2027-06-08 | 3S-SS-Serv.F100 | Barbender [540 h]; Helper [270 h]; Physical Progress [4370 h]; Reinforcement Steel [8 MT1]; TATA Projects Ltd-25 | 772,100 |
| 3S-SS-Serv.F110 |  | MEP Coordination | 1d | 2027-06-08 | 2027-06-09 | 3S-SS-Serv.F85, 3S-SS-Serv.F95, 3S-SS-Serv.F105 | Physical Progress [2180 h]; TATA Projects Ltd-25 |  |
| 3S-SS-Serv.F130 |  | Concrete of Slab | 1d | 2027-06-09 | 2027-06-10 | 3S-SS-Serv.F110 | Mason [50 h]; Helper [50 h]; Physical Progress [2180 h]; Concrete M40 [271 m3]; TATA Projects Ltd-25 | 2,673,957 |
| 3S-SS-Serv.F135 |  | Wait for Strength Gain | 6d | 2027-06-10 | 2027-06-17 | 3S-SS-Serv.F130 | Physical Progress [13100 h]; TATA Projects Ltd-25 |  |
| 3S-SS-Serv.F200 |  | PT Work | 5d | 2027-06-17 | 2027-06-23 | 3S-SS-Serv.F135, 3S-SS-1st.375 | PT [13 MT1]; Helper [100 h]; PT Fitter [100 h]; Physical Progress [10920 h]; TATA Projects Ltd-25 | 2,470,000 |
|  | 2 | **Pour 2** |  | 2027-04-23 | 2027-06-01 |  |  |  |
|  | 1 | **Column, Core Wall, Shear Wall** |  | 2027-04-23 | 2027-05-06 |  |  |  |
| 3S-SS-Serv.F115 |  | Reinforcement | 4d | 2027-04-23 | 2027-04-28 | 3S-SS-1st.520 | Barbender [1870 h]; Helper [940 h]; Physical Progress [8730 h]; Reinforcement Steel [28 MT1]; TATA Projects Ltd-25 | 2,702,350 |
| 3S-SS-Serv.F150 |  | LPS | 1d | 2027-04-28 | 2027-04-29 | 3S-SS-Serv.F115 | LPS [63943 INR]; Physical Progress [2180 h]; TATA Projects Ltd-25 | 63,943 |
| 3S-SS-Serv.F165 |  | Shuttering | 4d | 2027-04-29 | 2027-05-05 | 3S-SS-Serv.F115, 3S-SS-Serv.F150 | Carpenter [1140 h]; Helper [570 h]; Physical Progress [8730 h]; Formwork [680 Sq m]; TATA Projects Ltd-25 | 792,308.8 |
| 3S-SS-Serv.F215 |  | Concrete | 1d | 2027-05-05 | 2027-05-06 | 3S-SS-Serv.F165 | Mason [50 h]; Helper [50 h]; Physical Progress [2180 h]; Concrete M40 [170 m3]; TATA Projects Ltd-25 | 1,677,390 |

| ID | WBS | Activity | Duration | Start | Finish | Predecessors | Resources | Cost |
| --- | --- | --- | --- | --- | --- | --- | --- | --- |
|  | 3 | **Staircase - 1** |  | 2027-04-23 | 2027-05-13 |  |  |  |
| 3S-SS-Serv.F120 |  | Reinforcement of wall upto Flight 1 | 2d | 2027-04-23 | 2027-04-26 | 3S-SS-1st.520 | Barbender [70 h]; Helper [40 h]; Physical Progress [4370 h]; Reinforcement Steel [1 MT1]; TATA Projects Ltd-25 | 96,512.5 |
| 3S-SS-Serv.F140 |  | Shuttering of wall upto Flight 1 | 2d | 2027-04-26 | 2027-04-28 | 3S-SS-Serv.F120 | Carpenter [20 h]; Helper [10 h]; Physical Progress [4370 h]; Formwork [10 Sq m]; TATA Projects Ltd-25 | 11,651.6 |
| 3S-SS-Serv.F155 |  | Casting of wall upto Flight 1 | 1d | 2027-04-28 | 2027-04-29 | 3S-SS-Serv.F140 | Mason; Helper; Physical Progress [2180 h]; Concrete M40 [3 m3]; TATA Projects Ltd-25 | 29,601 |
| 3S-SS-Serv.F170 |  | Shuttering of Staircase upto Flight 1 | 1d | 2027-04-29 | 2027-04-30 | 3S-SS-Serv.F155 | Carpenter [20 h]; Helper [10 h]; Physical Progress [2180 h]; Formwork [10 Sq m]; TATA Projects Ltd-25 | 11,651.6 |
| 3S-SS-Serv.F180 |  | Reinforcement of Staircase upto Flight 1 | 1d | 2027-04-30 | 2027-05-03 | 3S-SS-Serv.F170 | Barbender [70 h]; Helper [40 h]; Physical Progress [2180 h]; Reinforcement Steel [1 MT1]; TATA Projects Ltd-25 | 96,512.5 |
| 3S-SS-Serv.F190 |  | MEP coordination upto Flight 1 | 1d | 2027-05-03 | 2027-05-04 | 3S-SS-Serv.F180 | Physical Progress [2180 h]; TATA Projects Ltd-25 |  |
| 3S-SS-Serv.F205 |  | Casting of Staircase upto Flight 1 | 1d | 2027-05-04 | 2027-05-05 | 3S-SS-Serv.F190 | Mason; Helper; Physical Progress [2180 h]; Concrete M40 [3 m3]; TATA Projects Ltd-25 | 29,601 |
| 3S-SS-Serv.F220 |  | Reinforcement of wall upto Flight 2 | 2d | 2027-05-05 | 2027-05-07 | 3S-SS-Serv.F205 | Barbender [70 h]; Helper [40 h]; Physical Progress [4370 h]; Reinforcement Steel [1 MT1]; TATA Projects Ltd-25 | 96,512.5 |
| 3S-SS-Serv.F235 |  | Shuttering of wall upto Flight 2 | 2d | 2027-05-07 | 2027-05-10 | 3S-SS-Serv.F220 | Carpenter [20 h]; Helper [10 h]; Physical Progress [4370 h]; Formwork [10 Sq m]; TATA Projects Ltd-25 | 11,651.6 |
| 3S-SS-Serv.F245 |  | Casting of wall upto Flight 2 | 1d | 2027-05-10 | 2027-05-11 | 3S-SS-Serv.F235 | Mason; Helper; Physical Progress [2180 h]; Concrete M40 [3 m3]; TATA Projects Ltd-25 | 29,601 |
| 3S-SS-Serv.F260 |  | Shuttering of Staircase upto Flight 2 | 1d | 2027-05-11 | 2027-05-12 | 3S-SS-Serv.F245 | Carpenter [20 h]; Helper [10 h]; Physical Progress [2180 h]; Formwork [10 Sq m]; TATA Projects Ltd-25 | 11,651.6 |
| 3S-SS-Serv.F270 |  | Reinforcement of Staircase upto Flight 2 | 1d | 2027-05-12 | 2027-05-13 | 3S-SS-Serv.F260 | Barbender [70 h]; Helper [40 h]; Physical Progress [2180 h]; Reinforcement Steel [1 MT1]; TATA Projects Ltd-25 | 96,512.5 |
|  | 4 | **Staircase - 2** |  | 2027-04-23 | 2027-05-13 |  |  |  |
| 3S-SS-Serv.F125 |  | Reinforcement of wall upto Flight 1 | 2d | 2027-04-23 | 2027-04-26 | 3S-SS-1st.520 | Barbender [70 h]; Helper [40 h]; Physical Progress [4370 h]; Reinforcement Steel [1 MT1]; TATA Projects Ltd-25 | 96,512.5 |
| 3S-SS-Serv.F145 |  | Shuttering of wall upto Flight 1 | 2d | 2027-04-26 | 2027-04-28 | 3S-SS-Serv.F125 | Carpenter [20 h]; Helper [10 h]; Physical Progress [4370 h]; Formwork [10 Sq m]; TATA Projects Ltd-25 | 11,651.6 |
| 3S-SS-Serv.F160 |  | Casting of wall upto Flight 1 | 1d | 2027-04-28 | 2027-04-29 | 3S-SS-Serv.F145 | Mason; Helper; Physical Progress [2180 h]; Concrete M40 [3 m3]; TATA Projects Ltd-25 | 29,601 |
| 3S-SS-Serv.F175 |  | Shuttering of Staircase upto Flight 1 | 1d | 2027-04-29 | 2027-04-30 | 3S-SS-Serv.F160 | Carpenter [20 h]; Helper [10 h]; Physical Progress [2180 h]; Formwork [10 Sq m]; TATA Projects Ltd-25 | 11,651.6 |
| 3S-SS-Serv.F185 |  | Reinforcement of Staircase upto Flight 1 | 1d | 2027-04-30 | 2027-05-03 | 3S-SS-Serv.F175 | Barbender [70 h]; Helper [40 h]; Physical Progress [2180 h]; Reinforcement Steel [1 MT1]; TATA Projects Ltd-25 | 96,512.5 |
| 3S-SS-Serv.F195 |  | MEP coordination upto Flight 1 | 1d | 2027-05-03 | 2027-05-04 | 3S-SS-Serv.F185 | Physical Progress [2180 h]; TATA Projects Ltd-25 |  |
| 3S-SS-Serv.F210 |  | Casting of Staircase upto Flight 1 | 1d | 2027-05-04 | 2027-05-05 | 3S-SS-Serv.F195 | Mason; Helper; Physical Progress [2180 h]; Concrete M40 [3 m3]; TATA Projects Ltd-25 | 29,601 |
| 3S-SS-Serv.F225 |  | Reinforcement of wall upto Flight 2 | 2d | 2027-05-05 | 2027-05-07 | 3S-SS-Serv.F210 | Barbender [70 h]; Helper [40 h]; Physical Progress [4370 h]; Reinforcement Steel [1 MT1]; TATA Projects Ltd-25 | 96,512.5 |
| 3S-SS-Serv.F240 |  | Shuttering of wall upto Flight 2 | 2d | 2027-05-07 | 2027-05-10 | 3S-SS-Serv.F225 | Carpenter [20 h]; Helper [10 h]; Physical Progress [4370 h]; Formwork [10 Sq m]; TATA Projects Ltd-25 | 11,651.6 |
| 3S-SS-Serv.F250 |  | Casting of wall upto Flight 2 | 1d | 2027-05-10 | 2027-05-11 | 3S-SS-Serv.F240 | Mason; Helper; Physical Progress [2180 h]; Concrete M40 [3 m3]; TATA Projects Ltd-25 | 29,601 |
| 3S-SS-Serv.F265 |  | Shuttering of Staircase upto Flight 2 | 1d | 2027-05-11 | 2027-05-12 | 3S-SS-Serv.F250 | Carpenter [20 h]; Helper [10 h]; Physical Progress [2180 h]; Formwork [10 Sq m]; TATA Projects Ltd-25 | 11,651.6 |
| 3S-SS-Serv.F275 |  | Reinforcement of Staircase upto Flight 2 | 1d | 2027-05-12 | 2027-05-13 | 3S-SS-Serv.F265 | Barbender [70 h]; Helper [40 h]; Physical Progress [2180 h]; Reinforcement Steel [1 MT1]; TATA Projects Ltd-25 | 96,512.5 |

| ID | WBS | Activity | Duration | Start | Finish | Predecessors | Resources | Cost |
| --- | --- | --- | --- | --- | --- | --- | --- | --- |
|  | 2 | **Slab** |  | 2027-05-06 | 2027-06-01 |  |  |  |
| 3S-SS-Serv.F230 |  | Shuttering | 4d | 2027-05-06 | 2027-05-11 | 3S-SS-Serv.F215 | Carpenter [1180 h]; Helper [590 h]; Physical Progress [8730 h]; Formwork [706 Sq m]; TATA Projects Ltd-25 | 822,602.96 |
| 3S-SS-Serv.F255 |  | Reinforcement Bottom Net with chairs | 2d | 2027-05-11 | 2027-05-13 | 3S-SS-Serv.F230 | Barbender [400 h]; Helper [200 h]; Physical Progress [6550 h]; Reinforcement Steel [6 MT1]; TATA Projects Ltd-25 | 579,075 |
| 3S-SS-Serv.F280 |  | Laying of PT Tendon | 2d | 2027-05-13 | 2027-05-15 | 3S-SS-Serv.F255 | Physical Progress [8730 h]; TATA Projects Ltd-25 |  |
| 3S-SS-Serv.F285 |  | Reinforcement Top Net | 2d | 2027-05-15 | 2027-05-18 | 3S-SS-Serv.F280 | Barbender [400 h]; Helper [200 h]; Physical Progress [4370 h]; Reinforcement Steel [6 MT1]; TATA Projects Ltd-25 | 579,075 |
| 3S-SS-Serv.F290 |  | MEP Coordination | 1d | 2027-05-18 | 2027-05-19 | 3S-SS-Serv.F255, 3S-SS-Serv.F270, 3S-SS-Serv.F285, 3S-SS-Serv.F275 | Physical Progress [2180 h]; TATA Projects Ltd-25 |  |
| 3S-SS-Serv.F295 |  | Concrete of Slab | 1d | 2027-05-19 | 2027-05-20 | 3S-SS-Serv.F290 | Mason [50 h]; Helper [50 h]; Physical Progress [2180 h]; Concrete M40 [176 m3]; TATA Projects Ltd-25 | 1,736,592 |
| 3S-SS-Serv.F300 |  | Wait for Strength Gain | 6d | 2027-05-20 | 2027-05-27 | 3S-SS-Serv.F295 | Physical Progress [13100 h]; TATA Projects Ltd-25 |  |
| 3S-SS-Serv.F305 |  | PT Work | 4d | 2027-05-27 | 2027-06-01 | 3S-SS-Serv.F300, 3S-SS-1st.515 | PT [9 MT1]; Helper [100 h]; PT Fitter [100 h]; Physical Progress [10920 h]; TATA Projects Ltd-25 | 1,710,000 |
|  | 1 | **Second Floor** |  | 2027-05-20 | 2027-07-30 |  |  |  |
|  | 1 | **Pour 1** |  | 2027-06-10 | 2027-07-30 |  |  |  |
|  | 1 | **Column, Core Wall, Shear Wall** |  | 2027-06-10 | 2027-06-22 |  |  |  |
| 3S-SS-2nd10 |  | Reinforcement | 4d | 2027-06-10 | 2027-06-15 | 3S-SS-Serv.F130, E-GFC-ST-3S-280 | Barbender [2870 h]; Helper [1440 h]; Physical Progress [8730 h]; Reinforcement Steel [43 MT1]; TATA Projects Ltd-25 | 4,150,037.5 |
| 3S-SS-2nd25 |  | LPS | 1d | 2027-06-15 | 2027-06-16 | 3S-SS-2nd10 | LPS [63943 INR]; Physical Progress [2180 h]; TATA Projects Ltd-25 | 63,943 |
| 3S-SS-2nd35 |  | Shuttering | 4d | 2027-06-16 | 2027-06-21 | 3S-SS-2nd10, 3S-SS-2nd25 | Carpenter [1750 h]; Helper [880 h]; Physical Progress [8730 h]; Formwork [1045 Sq m]; TATA Projects Ltd-25 | 1,217,592.2 |
| 3S-SS-2nd60 |  | Concrete | 1d | 2027-06-21 | 2027-06-22 | 3S-SS-2nd35 | Mason [50 h]; Helper [50 h]; Physical Progress [2180 h]; Concrete M40 [261 m3]; TATA Projects Ltd-25 | 2,575,287 |
|  | 3 | **Staircase** |  | 2027-06-10 | 2027-06-29 |  |  |  |
| 3S-SS-2nd15 |  | Reinforcement of wall upto Flight 1 | 2d | 2027-06-10 | 2027-06-12 | 3S-SS-Serv.F130 | Barbender [70 h]; Helper [40 h]; Physical Progress [4370 h]; Reinforcement Steel [1 MT1]; TATA Projects Ltd-25 | 96,512.5 |
| 3S-SS-2nd20 |  | Shuttering of wall upto Flight 1 | 2d | 2027-06-12 | 2027-06-15 | 3S-SS-2nd15 | Carpenter [20 h]; Helper [10 h]; Physical Progress [4370 h]; Formwork [10 Sq m]; TATA Projects Ltd-25 | 11,651.6 |
| 3S-SS-2nd30 |  | Casting of wall upto Flight 1 | 1d | 2027-06-15 | 2027-06-16 | 3S-SS-2nd20 | Mason; Helper; Physical Progress [2180 h]; Concrete M40 [3 m3]; TATA Projects Ltd-25 | 29,601 |
| 3S-SS-2nd40 |  | Shuttering of Staircase upto Flight 1 | 1d | 2027-06-16 | 2027-06-17 | 3S-SS-2nd30 | Carpenter [20 h]; Helper [10 h]; Physical Progress [2180 h]; Formwork [10 Sq m]; TATA Projects Ltd-25 | 11,651.6 |
| 3S-SS-2nd45 |  | Reinforcement of Staircase upto Flight 1 | 1d | 2027-06-17 | 2027-06-18 | 3S-SS-2nd40 | Barbender [70 h]; Helper [40 h]; Physical Progress [2180 h]; Reinforcement Steel [1 MT1]; TATA Projects Ltd-25 | 96,512.5 |
| 3S-SS-2nd50 |  | MEP coordination upto Flight 1 | 1d | 2027-06-18 | 2027-06-19 | 3S-SS-2nd45 | Physical Progress [2180 h]; TATA Projects Ltd-25 |  |
| 3S-SS-2nd55 |  | Casting of Staircase upto Flight 1 | 1d | 2027-06-19 | 2027-06-21 | 3S-SS-2nd50 | Mason; Helper; Physical Progress [2180 h]; Concrete M40 [3 m3]; TATA Projects Ltd-25 | 29,601 |
| 3S-SS-2nd65 |  | Reinforcement of wall upto Flight 2 | 2d | 2027-06-21 | 2027-06-23 | 3S-SS-2nd55 | Barbender [70 h]; Helper [40 h]; Physical Progress [4370 h]; Reinforcement Steel [1 MT1]; TATA Projects Ltd-25 | 96,512.5 |
| 3S-SS-2nd75 |  | Shuttering of wall upto Flight 2 | 2d | 2027-06-23 | 2027-06-25 | 3S-SS-2nd65 | Carpenter [20 h]; Helper [10 h]; Physical Progress [4370 h]; Formwork [10 Sq m]; TATA Projects Ltd-25 | 11,651.6 |
| 3S-SS-2nd80 |  | Casting of wall upto Flight 2 | 1d | 2027-06-25 | 2027-06-26 | 3S-SS-2nd75 | Mason; Helper; Physical Progress [2180 h]; Concrete M40 [3 m3]; TATA Projects Ltd-25 | 29,601 |
| 3S-SS-2nd90 |  | Shuttering of Staircase upto Flight 2 | 1d | 2027-06-26 | 2027-06-28 | 3S-SS-2nd80 | Carpenter [20 h]; Helper [10 h]; Physical Progress [2180 h]; Formwork [10 Sq m]; TATA Projects Ltd-25 | 11,651.6 |
| 3S-SS-2nd95 |  | Reinforcement of Staircase upto Flight 2 | 1d | 2027-06-28 | 2027-06-29 | 3S-SS-2nd90 | Barbender [70 h]; Helper [40 h]; Physical Progress [2180 h]; Reinforcement Steel [1 MT1]; TATA Projects Ltd-25 | 96,512.5 |

| ID | WBS | Activity | Duration | Start | Finish | Predecessors | Resources | Cost |
| --- | --- | --- | --- | --- | --- | --- | --- | --- |
|  | 2 | **Slab** |  | 2027-06-22 | 2027-07-30 |  |  |  |
| 3S-SS-2nd70 |  | Shuttering | 4d | 2027-06-22 | 2027-06-26 | 3S-SS-2nd60 | Carpenter [1810 h]; Helper [910 h]; Physical Progress [8730 h]; Formwork [1086 Sq m]; TATA Projects Ltd-25 | 1,265,363.76 |
| 3S-SS-2nd85 |  | Reinforcement Bottom Net with chairs | 3d | 2027-06-26 | 2027-06-30 | 3S-SS-2nd70 | Barbender [540 h]; Helper [270 h]; Physical Progress [6550 h]; Reinforcement Steel [8 MT1]; TATA Projects Ltd-25 | 772,100 |
| 3S-SS-2nd100 |  | Laying of PT Tendon | 3d | 2027-06-30 | 2027-07-03 | 3S-SS-2nd85, E-ShopD-Civil-PT-3S-25 | Physical Progress [8730 h]; TATA Projects Ltd-25 |  |
| 3S-SS-2nd105 |  | Reinforcement Top Net | 2d | 2027-07-03 | 2027-07-07 | 3S-SS-2nd100 | Barbender [540 h]; Helper [270 h]; Physical Progress [4370 h]; Reinforcement Steel [8 MT1]; TATA Projects Ltd-25 | 772,100 |
| 3S-SS-2nd110 |  | MEP Coordination | 1d | 2027-07-07 | 2027-07-09 | 3S-SS-2nd85, 3S-SS-2nd95, 3S-SS-2nd105 | Physical Progress [2180 h]; TATA Projects Ltd-25 |  |
| 3S-SS-2nd130 |  | Concrete of Slab | 1d | 2027-07-09 | 2027-07-10 | 3S-SS-2nd110 | Mason [50 h]; Helper [50 h]; Physical Progress [2180 h]; Concrete M40 [271 m3]; TATA Projects Ltd-25 | 2,673,957 |
| 3S-SS-2nd135 |  | Wait for Strength Gain | 6d | 2027-07-10 | 2027-07-21 | 3S-SS-2nd130 | Physical Progress [13100 h]; TATA Projects Ltd-25 |  |
| 3S-SS-2nd200 |  | PT Work | 5d | 2027-07-21 | 2027-07-30 | 3S-SS-2nd135, 3S-SS-Serv.F200 | PT [3 MT1]; Helper [100 h]; PT Fitter [100 h]; Physical Progress [10920 h]; TATA Projects Ltd-25 | 570,000 |
|  | 2 | **Pour 2** |  | 2027-05-20 | 2027-06-26 |  |  |  |
|  | 1 | **Column, Core Wall, Shear Wall** |  | 2027-05-20 | 2027-06-01 |  |  |  |
| 3S-SS-2nd115 |  | Reinforcement | 4d | 2027-05-20 | 2027-05-25 | 3S-SS-Serv.F295 | Barbender [1870 h]; Helper [940 h]; Physical Progress [8730 h]; Reinforcement Steel [28 MT1]; TATA Projects Ltd-25 | 2,702,350 |
| 3S-SS-2nd150 |  | LPS | 1d | 2027-05-25 | 2027-05-26 | 3S-SS-2nd115 | LPS [63943 INR]; Physical Progress [2180 h]; TATA Projects Ltd-25 | 63,943 |
| 3S-SS-2nd165 |  | Shuttering | 4d | 2027-05-26 | 2027-05-31 | 3S-SS-2nd115, 3S-SS-2nd150 | Carpenter [1140 h]; Helper [570 h]; Physical Progress [8730 h]; Formwork [680 Sq m]; TATA Projects Ltd-25 | 792,308.8 |
| 3S-SS-2nd215 |  | Concrete | 1d | 2027-05-31 | 2027-06-01 | 3S-SS-2nd165 | Mason [50 h]; Helper [50 h]; Physical Progress [2180 h]; Concrete M40 [170 m3]; TATA Projects Ltd-25 | 1,677,390 |
|  | 3 | **Staircase - 1** |  | 2027-05-20 | 2027-06-08 |  |  |  |
| 3S-SS-2nd120 |  | Reinforcement of wall upto Flight 1 | 2d | 2027-05-20 | 2027-05-22 | 3S-SS-Serv.F295 | Barbender [70 h]; Helper [40 h]; Physical Progress [4370 h]; Reinforcement Steel [1 MT1]; TATA Projects Ltd-25 | 96,512.5 |
| 3S-SS-2nd140 |  | Shuttering of wall upto Flight 1 | 2d | 2027-05-22 | 2027-05-25 | 3S-SS-2nd120 | Carpenter [20 h]; Helper [10 h]; Physical Progress [4370 h]; Formwork [10 Sq m]; TATA Projects Ltd-25 | 11,651.6 |
| 3S-SS-2nd155 |  | Casting of wall upto Flight 1 | 1d | 2027-05-25 | 2027-05-26 | 3S-SS-2nd140 | Mason; Helper; Physical Progress [2180 h]; Concrete M40 [3 m3]; TATA Projects Ltd-25 | 29,601 |
| 3S-SS-2nd170 |  | Shuttering of Staircase upto Flight 1 | 1d | 2027-05-26 | 2027-05-27 | 3S-SS-2nd155 | Carpenter [20 h]; Helper [10 h]; Physical Progress [2180 h]; Formwork [10 Sq m]; TATA Projects Ltd-25 | 11,651.6 |
| 3S-SS-2nd180 |  | Reinforcement of Staircase upto Flight 1 | 1d | 2027-05-27 | 2027-05-28 | 3S-SS-2nd170 | Barbender [70 h]; Helper [40 h]; Physical Progress [2180 h]; Reinforcement Steel [1 MT1]; TATA Projects Ltd-25 | 96,512.5 |
| 3S-SS-2nd190 |  | MEP coordination upto Flight 1 | 1d | 2027-05-28 | 2027-05-29 | 3S-SS-2nd180 | Physical Progress [2180 h]; TATA Projects Ltd-25 |  |
| 3S-SS-2nd205 |  | Casting of Staircase upto Flight 1 | 1d | 2027-05-29 | 2027-05-31 | 3S-SS-2nd190 | Mason; Helper; Physical Progress [2180 h]; Concrete M40 [3 m3]; TATA Projects Ltd-25 | 29,601 |
| 3S-SS-2nd220 |  | Reinforcement of wall upto Flight 2 | 2d | 2027-05-31 | 2027-06-02 | 3S-SS-2nd205 | Barbender [70 h]; Helper [40 h]; Physical Progress [4370 h]; Reinforcement Steel [1 MT1]; TATA Projects Ltd-25 | 96,512.5 |
| 3S-SS-2nd235 |  | Shuttering of wall upto Flight 2 | 2d | 2027-06-02 | 2027-06-04 | 3S-SS-2nd220 | Carpenter [20 h]; Helper [10 h]; Physical Progress [4370 h]; Formwork [10 Sq m]; TATA Projects Ltd-25 | 11,651.6 |
| 3S-SS-2nd245 |  | Casting of wall upto Flight 2 | 1d | 2027-06-04 | 2027-06-05 | 3S-SS-2nd235 | Mason; Helper; Physical Progress [2180 h]; Concrete M40 [3 m3]; TATA Projects Ltd-25 | 29,601 |
| 3S-SS-2nd260 |  | Shuttering of Staircase upto Flight 2 | 1d | 2027-06-05 | 2027-06-07 | 3S-SS-2nd245 | Carpenter [20 h]; Helper [10 h]; Physical Progress [2180 h]; Formwork [10 Sq m]; TATA Projects Ltd-25 | 11,651.6 |
| 3S-SS-2nd270 |  | Reinforcement of Staircase upto Flight 2 | 1d | 2027-06-07 | 2027-06-08 | 3S-SS-2nd260 | Barbender [70 h]; Helper [40 h]; Physical Progress [2180 h]; Reinforcement Steel [1 MT1]; TATA Projects Ltd-25 | 96,512.5 |

| ID | WBS | Activity | Duration | Start | Finish | Predecessors | Resources | Cost |
| --- | --- | --- | --- | --- | --- | --- | --- | --- |
|  | 4 | **Staircase - 2** |  | 2027-05-20 | 2027-06-08 |  |  |  |
| 3S-SS-2nd125 |  | Reinforcement of wall upto Flight 1 | 2d | 2027-05-20 | 2027-05-22 | 3S-SS-Serv.F295 | Barbender [70 h]; Helper [40 h]; Physical Progress [4370 h]; Reinforcement Steel [1 MT1]; TATA Projects Ltd-25 | 96,512.5 |
| 3S-SS-2nd145 |  | Shuttering of wall upto Flight 1 | 2d | 2027-05-22 | 2027-05-25 | 3S-SS-2nd125 | Carpenter [20 h]; Helper [10 h]; Physical Progress [4370 h]; Formwork [10 Sq m]; TATA Projects Ltd-25 | 11,651.6 |
| 3S-SS-2nd160 |  | Casting of wall upto Flight 1 | 1d | 2027-05-25 | 2027-05-26 | 3S-SS-2nd145 | Mason; Helper; Physical Progress [2180 h]; Concrete M40 [3 m3]; TATA Projects Ltd-25 | 29,601 |
| 3S-SS-2nd175 |  | Shuttering of Staircase upto Flight 1 | 1d | 2027-05-26 | 2027-05-27 | 3S-SS-2nd160 | Carpenter [20 h]; Helper [10 h]; Physical Progress [2180 h]; Formwork [10 Sq m]; TATA Projects Ltd-25 | 11,651.6 |
| 3S-SS-2nd185 |  | Reinforcement of Staircase upto Flight 1 | 1d | 2027-05-27 | 2027-05-28 | 3S-SS-2nd175 | Barbender [70 h]; Helper [40 h]; Physical Progress [2180 h]; Reinforcement Steel [1 MT1]; TATA Projects Ltd-25 | 96,512.5 |
| 3S-SS-2nd195 |  | MEP coordination upto Flight 1 | 1d | 2027-05-28 | 2027-05-29 | 3S-SS-2nd185 | Physical Progress [2180 h]; TATA Projects Ltd-25 |  |
| 3S-SS-2nd210 |  | Casting of Staircase upto Flight 1 | 1d | 2027-05-29 | 2027-05-31 | 3S-SS-2nd195 | Mason; Helper; Physical Progress [2180 h]; Concrete M40 [3 m3]; TATA Projects Ltd-25 | 29,601 |
| 3S-SS-2nd225 |  | Reinforcement of wall upto Flight 2 | 2d | 2027-05-31 | 2027-06-02 | 3S-SS-2nd210 | Barbender [70 h]; Helper [40 h]; Physical Progress [4370 h]; Reinforcement Steel [1 MT1]; TATA Projects Ltd-25 | 96,512.5 |
| 3S-SS-2nd240 |  | Shuttering of wall upto Flight 2 | 2d | 2027-06-02 | 2027-06-04 | 3S-SS-2nd225 | Carpenter [20 h]; Helper [10 h]; Physical Progress [4370 h]; Formwork [10 Sq m]; TATA Projects Ltd-25 | 11,651.6 |
| 3S-SS-2nd250 |  | Casting of wall upto Flight 2 | 1d | 2027-06-04 | 2027-06-05 | 3S-SS-2nd240 | Mason; Helper; Physical Progress [2180 h]; Concrete M40 [3 m3]; TATA Projects Ltd-25 | 29,601 |
| 3S-SS-2nd265 |  | Shuttering of Staircase upto Flight 2 | 1d | 2027-06-05 | 2027-06-07 | 3S-SS-2nd250 | Carpenter [20 h]; Helper [10 h]; Physical Progress [2180 h]; Formwork [10 Sq m]; TATA Projects Ltd-25 | 11,651.6 |
| 3S-SS-2nd275 |  | Reinforcement of Staircase upto Flight 2 | 1d | 2027-06-07 | 2027-06-08 | 3S-SS-2nd265 | Barbender [70 h]; Helper [40 h]; Physical Progress [2180 h]; Reinforcement Steel [1 MT1]; TATA Projects Ltd-25 | 96,512.5 |
|  | 2 | **Slab** |  | 2027-06-01 | 2027-06-26 |  |  |  |
| 3S-SS-2nd230 |  | Shuttering | 4d | 2027-06-01 | 2027-06-05 | 3S-SS-2nd215 | Carpenter [1180 h]; Helper [590 h]; Physical Progress [8730 h]; Formwork [706 Sq m]; TATA Projects Ltd-25 | 822,602.96 |
| 3S-SS-2nd255 |  | Reinforcement Bottom Net with chairs | 2d | 2027-06-05 | 2027-06-08 | 3S-SS-2nd230 | Barbender [400 h]; Helper [200 h]; Physical Progress [6550 h]; Reinforcement Steel [6 MT1]; TATA Projects Ltd-25 | 579,075 |
| 3S-SS-2nd280 |  | Laying of PT Tendon | 2d | 2027-06-08 | 2027-06-10 | 3S-SS-2nd255 | Physical Progress [8730 h]; TATA Projects Ltd-25 |  |
| 3S-SS-2nd285 |  | Reinforcement Top Net | 2d | 2027-06-10 | 2027-06-12 | 3S-SS-2nd280 | Barbender [400 h]; Helper [200 h]; Physical Progress [4370 h]; Reinforcement Steel [6 MT1]; TATA Projects Ltd-25 | 579,075 |
| 3S-SS-2nd290 |  | MEP Coordination | 1d | 2027-06-12 | 2027-06-14 | 3S-SS-2nd255, 3S-SS-2nd270, 3S-SS-2nd285, 3S-SS-2nd275 | Physical Progress [2180 h]; TATA Projects Ltd-25 |  |
| 3S-SS-2nd295 |  | Concrete of Slab | 1d | 2027-06-14 | 2027-06-15 | 3S-SS-2nd290 | Mason [50 h]; Helper [50 h]; Physical Progress [2180 h]; Concrete M40 [177 m3]; TATA Projects Ltd-25 | 1,746,459 |
| 3S-SS-2nd300 |  | Wait for Strength Gain | 6d | 2027-06-15 | 2027-06-22 | 3S-SS-2nd295 | Physical Progress [13100 h]; TATA Projects Ltd-25 |  |
| 3S-SS-2nd305 |  | PT Work | 4d | 2027-06-22 | 2027-06-26 | 3S-SS-2nd300, 3S-SS-Serv.F305 | PT [2 MT1]; Helper [100 h]; PT Fitter [100 h]; Physical Progress [10920 h]; TATA Projects Ltd-25 | 380,000 |
|  | 2 | **Third Floor** |  | 2027-06-15 | 2027-09-09 |  |  |  |
|  | 1 | **Pour 1** |  | 2027-07-10 | 2027-09-09 |  |  |  |
|  | 1 | **Column, Core Wall, Shear Wall** |  | 2027-07-10 | 2027-07-28 |  |  |  |
| 3S-SS-3rd10 |  | Reinforcement | 4d | 2027-07-10 | 2027-07-17 | 3S-SS-2nd130, E-GFC-ST-3S-285 | Barbender [2870 h]; Helper [1440 h]; Physical Progress [8730 h]; Reinforcement Steel [43 MT1]; TATA Projects Ltd-25 | 4,150,037.5 |
| 3S-SS-3rd25 |  | LPS | 1d | 2027-07-17 | 2027-07-19 | 3S-SS-3rd10 | LPS [63943 INR]; Physical Progress [2180 h]; TATA Projects Ltd-25 | 63,943 |
| 3S-SS-3rd35 |  | Shuttering | 4d | 2027-07-19 | 2027-07-26 | 3S-SS-3rd10, 3S-SS-3rd25 | Carpenter [1750 h]; Helper [880 h]; Physical Progress [8730 h]; Formwork [1045 Sq m]; TATA Projects Ltd-25 | 1,217,592.2 |
| 3S-SS-3rd60 |  | Concrete | 1d | 2027-07-26 | 2027-07-28 | 3S-SS-3rd35 | Mason [50 h]; Helper [50 h]; Physical Progress [2180 h]; Concrete M40 [261 m3]; TATA Projects Ltd-25 | 2,575,287 |

| ID | WBS | Activity | Duration | Start | Finish | Predecessors | Resources | Cost |
| --- | --- | --- | --- | --- | --- | --- | --- | --- |
|  | 3 | **Staircase** |  | 2027-07-10 | 2027-08-07 |  |  |  |
| 3S-SS-3rd15 |  | Reinforcement of wall upto Flight 1 | 2d | 2027-07-10 | 2027-07-14 | 3S-SS-2nd130 | Barbender [70 h]; Helper [40 h]; Physical Progress [4370 h]; Reinforcement Steel [1 MT1]; TATA Projects Ltd-25 | 96,512.5 |
| 3S-SS-3rd20 |  | Shuttering of wall upto Flight 1 | 2d | 2027-07-14 | 2027-07-17 | 3S-SS-3rd15 | Carpenter [20 h]; Helper [10 h]; Physical Progress [4370 h]; Formwork [10 Sq m]; TATA Projects Ltd-25 | 11,651.6 |
| 3S-SS-3rd30 |  | Casting of wall upto Flight 1 | 1d | 2027-07-17 | 2027-07-19 | 3S-SS-3rd20 | Mason; Helper; Physical Progress [2180 h]; Concrete M40 [3 m3]; TATA Projects Ltd-25 | 29,601 |
| 3S-SS-3rd40 |  | Shuttering of Staircase upto Flight 1 | 1d | 2027-07-19 | 2027-07-21 | 3S-SS-3rd30 | Carpenter [20 h]; Helper [10 h]; Physical Progress [2180 h]; Formwork [10 Sq m]; TATA Projects Ltd-25 | 11,651.6 |
| 3S-SS-3rd45 |  | Reinforcement of Staircase upto Flight 1 | 1d | 2027-07-21 | 2027-07-23 | 3S-SS-3rd40 | Barbender [70 h]; Helper [40 h]; Physical Progress [2180 h]; Reinforcement Steel [1 MT1]; TATA Projects Ltd-25 | 96,512.5 |
| 3S-SS-3rd50 |  | MEP coordination upto Flight 1 | 1d | 2027-07-23 | 2027-07-24 | 3S-SS-3rd45 | Physical Progress [2180 h]; TATA Projects Ltd-25 |  |
| 3S-SS-3rd55 |  | Casting of Staircase upto Flight 1 | 1d | 2027-07-24 | 2027-07-26 | 3S-SS-3rd50 | Mason; Helper; Physical Progress [2180 h]; Concrete M40 [3 m3]; TATA Projects Ltd-25 | 29,601 |
| 3S-SS-3rd65 |  | Reinforcement of wall upto Flight 2 | 2d | 2027-07-26 | 2027-07-30 | 3S-SS-3rd55 | Barbender [70 h]; Helper [40 h]; Physical Progress [4370 h]; Reinforcement Steel [1 MT1]; TATA Projects Ltd-25 | 96,512.5 |
| 3S-SS-3rd75 |  | Shuttering of wall upto Flight 2 | 2d | 2027-07-30 | 2027-08-02 | 3S-SS-3rd65 | Carpenter [20 h]; Helper [10 h]; Physical Progress [4370 h]; Formwork [10 Sq m]; TATA Projects Ltd-25 | 11,651.6 |
| 3S-SS-3rd80 |  | Casting of wall upto Flight 2 | 1d | 2027-08-02 | 2027-08-04 | 3S-SS-3rd75 | Mason; Helper; Physical Progress [2180 h]; Concrete M40 [3 m3]; TATA Projects Ltd-25 | 29,601 |
| 3S-SS-3rd90 |  | Shuttering of Staircase upto Flight 2 | 1d | 2027-08-04 | 2027-08-06 | 3S-SS-3rd80 | Carpenter [20 h]; Helper [10 h]; Physical Progress [2180 h]; Formwork [10 Sq m]; TATA Projects Ltd-25 | 11,651.6 |
| 3S-SS-3rd95 |  | Reinforcement of Staircase upto Flight 2 | 1d | 2027-08-06 | 2027-08-07 | 3S-SS-3rd90 | Barbender [70 h]; Helper [40 h]; Physical Progress [2180 h]; Reinforcement Steel [1 MT1]; TATA Projects Ltd-25 | 96,512.5 |
|  | 2 | **Slab** |  | 2027-07-28 | 2027-09-09 |  |  |  |
| 3S-SS-3rd70 |  | Shuttering | 4d | 2027-07-28 | 2027-08-04 | 3S-SS-3rd60 | Carpenter [1810 h]; Helper [910 h]; Physical Progress [8730 h]; Formwork [1086 Sq m]; TATA Projects Ltd-25 | 1,265,363.76 |
| 3S-SS-3rd85 |  | Reinforcement Bottom Net with chairs | 3d | 2027-08-04 | 2027-08-09 | 3S-SS-3rd70 | Barbender [540 h]; Helper [270 h]; Physical Progress [6550 h]; Reinforcement Steel [8 MT1]; TATA Projects Ltd-25 | 772,100 |
| 3S-SS-3rd100 |  | Laying of PT Tendon | 3d | 2027-08-09 | 2027-08-14 | 3S-SS-3rd85 | Physical Progress [8730 h]; TATA Projects Ltd-25 |  |
| 3S-SS-3rd105 |  | Reinforcement Top Net | 2d | 2027-08-14 | 2027-08-18 | 3S-SS-3rd100 | Barbender [540 h]; Helper [270 h]; Physical Progress [4370 h]; Reinforcement Steel [8 MT1]; TATA Projects Ltd-25 | 772,100 |
| 3S-SS-3rd110 |  | MEP Coordination | 1d | 2027-08-18 | 2027-08-20 | 3S-SS-3rd85, 3S-SS-3rd95, 3S-SS-3rd105 | Physical Progress [2180 h]; TATA Projects Ltd-25 |  |
| 3S-SS-3rd130 |  | Concrete of Slab | 1d | 2027-08-20 | 2027-08-21 | 3S-SS-3rd110 | Mason [50 h]; Helper [50 h]; Physical Progress [2180 h]; Concrete M40 [271 m3]; TATA Projects Ltd-25 | 2,673,957 |
| 3S-SS-3rd135 |  | Wait for Strength Gain | 6d | 2027-08-21 | 2027-09-02 | 3S-SS-3rd130 | Physical Progress [13100 h]; TATA Projects Ltd-25 |  |
| 3S-SS-3rd200 |  | PT Work | 5d | 2027-09-02 | 2027-09-09 | 3S-SS-3rd135, 3S-SS-2nd200 | PT [3 MT1]; Helper [100 h]; PT Fitter [100 h]; Physical Progress [10920 h]; TATA Projects Ltd-25 | 570,000 |
|  | 2 | **Pour 2** |  | 2027-06-15 | 2027-07-31 |  |  |  |
|  | 1 | **Column, Core Wall, Shear Wall** |  | 2027-06-15 | 2027-06-26 |  |  |  |
| 3S-SS-3rd115 |  | Reinforcement | 4d | 2027-06-15 | 2027-06-19 | 3S-SS-2nd295 | Barbender [1870 h]; Helper [940 h]; Physical Progress [8730 h]; Reinforcement Steel [28 MT1]; TATA Projects Ltd-25 | 2,702,350 |
| 3S-SS-3rd150 |  | LPS | 1d | 2027-06-19 | 2027-06-21 | 3S-SS-3rd115 | LPS [63943 INR]; Physical Progress [2180 h]; TATA Projects Ltd-25 | 63,943 |
| 3S-SS-3rd165 |  | Shuttering | 4d | 2027-06-21 | 2027-06-25 | 3S-SS-3rd115, 3S-SS-3rd150 | Carpenter [1140 h]; Helper [570 h]; Physical Progress [8730 h]; Formwork [680 Sq m]; TATA Projects Ltd-25 | 792,308.8 |
| 3S-SS-3rd215 |  | Concrete | 1d | 2027-06-25 | 2027-06-26 | 3S-SS-3rd165 | Mason [50 h]; Helper [50 h]; Physical Progress [2180 h]; Concrete M40 [170 m3]; TATA Projects Ltd-25 | 1,677,390 |

| ID | WBS | Activity | Duration | Start | Finish | Predecessors | Resources | Cost |
| --- | --- | --- | --- | --- | --- | --- | --- | --- |
|  | 3 | **Staircase - 1** |  | 2027-06-15 | 2027-07-03 |  |  |  |
| 3S-SS-3rd120 |  | Reinforcement of wall upto Flight 1 | 2d | 2027-06-15 | 2027-06-17 | 3S-SS-2nd295 | Barbender [70 h]; Helper [40 h]; Physical Progress [4370 h]; Reinforcement Steel [1 MT1]; TATA Projects Ltd-25 | 96,512.5 |
| 3S-SS-3rd140 |  | Shuttering of wall upto Flight 1 | 2d | 2027-06-17 | 2027-06-19 | 3S-SS-3rd120 | Carpenter [20 h]; Helper [10 h]; Physical Progress [4370 h]; Formwork [10 Sq m]; TATA Projects Ltd-25 | 11,651.6 |
| 3S-SS-3rd155 |  | Casting of wall upto Flight 1 | 1d | 2027-06-19 | 2027-06-21 | 3S-SS-3rd140 | Mason; Helper; Physical Progress [2180 h]; Concrete M40 [3 m3]; TATA Projects Ltd-25 | 29,601 |
| 3S-SS-3rd170 |  | Shuttering of Staircase upto Flight 1 | 1d | 2027-06-21 | 2027-06-22 | 3S-SS-3rd155 | Carpenter [20 h]; Helper [10 h]; Physical Progress [2180 h]; Formwork [10 Sq m]; TATA Projects Ltd-25 | 11,651.6 |
| 3S-SS-3rd180 |  | Reinforcement of Staircase upto Flight 1 | 1d | 2027-06-22 | 2027-06-23 | 3S-SS-3rd170 | Barbender [70 h]; Helper [40 h]; Physical Progress [2180 h]; Reinforcement Steel [1 MT1]; TATA Projects Ltd-25 | 96,512.5 |
| 3S-SS-3rd190 |  | MEP coordination upto Flight 1 | 1d | 2027-06-23 | 2027-06-24 | 3S-SS-3rd180 | Physical Progress [2180 h]; TATA Projects Ltd-25 |  |
| 3S-SS-3rd205 |  | Casting of Staircase upto Flight 1 | 1d | 2027-06-24 | 2027-06-25 | 3S-SS-3rd190 | Mason; Helper; Physical Progress [2180 h]; Concrete M40 [3 m3]; TATA Projects Ltd-25 | 29,601 |
| 3S-SS-3rd220 |  | Reinforcement of wall upto Flight 2 | 2d | 2027-06-25 | 2027-06-28 | 3S-SS-3rd205 | Barbender [70 h]; Helper [40 h]; Physical Progress [4370 h]; Reinforcement Steel [1 MT1]; TATA Projects Ltd-25 | 96,512.5 |
| 3S-SS-3rd235 |  | Shuttering of wall upto Flight 2 | 2d | 2027-06-28 | 2027-06-30 | 3S-SS-3rd220 | Carpenter [20 h]; Helper [10 h]; Physical Progress [4370 h]; Formwork [10 Sq m]; TATA Projects Ltd-25 | 11,651.6 |
| 3S-SS-3rd245 |  | Casting of wall upto Flight 2 | 1d | 2027-06-30 | 2027-07-01 | 3S-SS-3rd235 | Mason; Helper; Physical Progress [2180 h]; Concrete M40 [3 m3]; TATA Projects Ltd-25 | 29,601 |
| 3S-SS-3rd260 |  | Shuttering of Staircase upto Flight 2 | 1d | 2027-07-01 | 2027-07-02 | 3S-SS-3rd245 | Carpenter [20 h]; Helper [10 h]; Physical Progress [2180 h]; Formwork [10 Sq m]; TATA Projects Ltd-25 | 11,651.6 |
| 3S-SS-3rd270 |  | Reinforcement of Staircase upto Flight 2 | 1d | 2027-07-02 | 2027-07-03 | 3S-SS-3rd260 | Barbender [70 h]; Helper [40 h]; Physical Progress [2180 h]; Reinforcement Steel [1 MT1]; TATA Projects Ltd-25 | 96,512.5 |
|  | 4 | **Staircase - 2** |  | 2027-06-15 | 2027-07-03 |  |  |  |
| 3S-SS-3rd125 |  | Reinforcement of wall upto Flight 1 | 2d | 2027-06-15 | 2027-06-17 | 3S-SS-2nd295 | Barbender [70 h]; Helper [40 h]; Physical Progress [4370 h]; Reinforcement Steel [1 MT1]; TATA Projects Ltd-25 | 96,512.5 |
| 3S-SS-3rd145 |  | Shuttering of wall upto Flight 1 | 2d | 2027-06-17 | 2027-06-19 | 3S-SS-3rd125 | Carpenter [20 h]; Helper [10 h]; Physical Progress [4370 h]; Formwork [10 Sq m]; TATA Projects Ltd-25 | 11,651.6 |
| 3S-SS-3rd160 |  | Casting of wall upto Flight 1 | 1d | 2027-06-19 | 2027-06-21 | 3S-SS-3rd145 | Mason; Helper; Physical Progress [2180 h]; Concrete M40 [3 m3]; TATA Projects Ltd-25 | 29,601 |
| 3S-SS-3rd175 |  | Shuttering of Staircase upto Flight 1 | 1d | 2027-06-21 | 2027-06-22 | 3S-SS-3rd160 | Carpenter [20 h]; Helper [10 h]; Physical Progress [2180 h]; Formwork [10 Sq m]; TATA Projects Ltd-25 | 11,651.6 |
| 3S-SS-3rd185 |  | Reinforcement of Staircase upto Flight 1 | 1d | 2027-06-22 | 2027-06-23 | 3S-SS-3rd175 | Barbender [70 h]; Helper [40 h]; Physical Progress [2180 h]; Reinforcement Steel [1 MT1]; TATA Projects Ltd-25 | 96,512.5 |
| 3S-SS-3rd195 |  | MEP coordination upto Flight 1 | 1d | 2027-06-23 | 2027-06-24 | 3S-SS-3rd185 | Physical Progress [2180 h]; TATA Projects Ltd-25 |  |
| 3S-SS-3rd210 |  | Casting of Staircase upto Flight 1 | 1d | 2027-06-24 | 2027-06-25 | 3S-SS-3rd195 | Mason; Helper; Physical Progress [2180 h]; Concrete M40 [3 m3]; TATA Projects Ltd-25 | 29,601 |
| 3S-SS-3rd225 |  | Reinforcement of wall upto Flight 2 | 2d | 2027-06-25 | 2027-06-28 | 3S-SS-3rd210 | Barbender [70 h]; Helper [40 h]; Physical Progress [4370 h]; Reinforcement Steel [1 MT1]; TATA Projects Ltd-25 | 96,512.5 |
| 3S-SS-3rd240 |  | Shuttering of wall upto Flight 2 | 2d | 2027-06-28 | 2027-06-30 | 3S-SS-3rd225 | Carpenter [20 h]; Helper [10 h]; Physical Progress [4370 h]; Formwork [10 Sq m]; TATA Projects Ltd-25 | 11,651.6 |
| 3S-SS-3rd250 |  | Casting of wall upto Flight 2 | 1d | 2027-06-30 | 2027-07-01 | 3S-SS-3rd240 | Mason; Helper; Physical Progress [2180 h]; Concrete M40 [3 m3]; TATA Projects Ltd-25 | 29,601 |
| 3S-SS-3rd265 |  | Shuttering of Staircase upto Flight 2 | 1d | 2027-07-01 | 2027-07-02 | 3S-SS-3rd250 | Carpenter [20 h]; Helper [10 h]; Physical Progress [2180 h]; Formwork [10 Sq m]; TATA Projects Ltd-25 | 11,651.6 |
| 3S-SS-3rd275 |  | Reinforcement of Staircase upto Flight 2 | 1d | 2027-07-02 | 2027-07-03 | 3S-SS-3rd265 | Barbender [70 h]; Helper [40 h]; Physical Progress [2180 h]; Reinforcement Steel [1 MT1]; TATA Projects Ltd-25 | 96,512.5 |

| ID | WBS | Activity | Duration | Start | Finish | Predecessors | Resources | Cost |
| --- | --- | --- | --- | --- | --- | --- | --- | --- |
|  | 2 | **Slab** |  | 2027-06-26 | 2027-07-31 |  |  |  |
| 3S-SS-3rd230 |  | Shuttering | 4d | 2027-06-26 | 2027-07-01 | 3S-SS-3rd215 | Carpenter [1180 h]; Helper [590 h]; Physical Progress [8730 h]; Formwork [706 Sq m]; TATA Projects Ltd-25 | 822,602.96 |
| 3S-SS-3rd255 |  | Reinforcement Bottom Net with chairs | 2d | 2027-07-01 | 2027-07-03 | 3S-SS-3rd230 | Barbender [400 h]; Helper [200 h]; Physical Progress [6550 h]; Reinforcement Steel [6 MT1]; TATA Projects Ltd-25 | 579,075 |
| 3S-SS-3rd280 |  | Laying of PT Tendon | 2d | 2027-07-03 | 2027-07-07 | 3S-SS-3rd255 | Physical Progress [8730 h]; TATA Projects Ltd-25 |  |
| 3S-SS-3rd285 |  | Reinforcement Top Net | 2d | 2027-07-07 | 2027-07-10 | 3S-SS-3rd280 | Barbender [400 h]; Helper [200 h]; Physical Progress [4370 h]; Reinforcement Steel [6 MT1]; TATA Projects Ltd-25 | 579,075 |
| 3S-SS-3rd290 |  | MEP Coordination | 1d | 2027-07-10 | 2027-07-12 | 3S-SS-3rd255, 3S-SS-3rd270, 3S-SS-3rd285, 3S-SS-3rd275 | Physical Progress [2180 h]; TATA Projects Ltd-25 |  |
| 3S-SS-3rd295 |  | Concrete of Slab | 1d | 2027-07-12 | 2027-07-14 | 3S-SS-3rd290 | Mason [50 h]; Helper [50 h]; Physical Progress [2180 h]; Concrete M40 [177 m3]; TATA Projects Ltd-25 | 1,746,459 |
| 3S-SS-3rd300 |  | Wait for Strength Gain | 6d | 2027-07-14 | 2027-07-24 | 3S-SS-3rd295 | Physical Progress [13100 h]; TATA Projects Ltd-25 |  |
| 3S-SS-3rd305 |  | PT Work | 4d | 2027-07-24 | 2027-07-31 | 3S-SS-3rd300, 3S-SS-2nd305 | PT [2 MT1]; Helper [100 h]; PT Fitter [100 h]; Physical Progress [10920 h]; TATA Projects Ltd-25 | 380,000 |
|  | 3 | **Fourth Floor** |  | 2027-07-14 | 2027-10-13 |  |  |  |
|  | 1 | **Pour 1** |  | 2027-08-21 | 2027-10-13 |  |  |  |
|  | 1 | **Column, Core Wall, Shear Wall** |  | 2027-08-21 | 2027-09-07 |  |  |  |
| 3S-SS-4th10 |  | Reinforcement | 4d | 2027-08-21 | 2027-08-28 | 3S-SS-3rd130, E-GFC-ST-3S-290 | Barbender [2870 h]; Helper [1440 h]; Physical Progress [8730 h]; Reinforcement Steel [43 MT1]; TATA Projects Ltd-25 | 4,150,037.5 |
| 3S-SS-4th25 |  | LPS | 1d | 2027-08-28 | 2027-08-30 | 3S-SS-4th10 | LPS [63943 INR]; Physical Progress [2180 h]; TATA Projects Ltd-25 | 63,943 |
| 3S-SS-4th35 |  | Shuttering | 4d | 2027-08-30 | 2027-09-06 | 3S-SS-4th10, 3S-SS-4th25 | Carpenter [1750 h]; Helper [880 h]; Physical Progress [8730 h]; Formwork [1045 Sq m]; TATA Projects Ltd-25 | 1,217,592.2 |
| 3S-SS-4th60 |  | Concrete | 1d | 2027-09-06 | 2027-09-07 | 3S-SS-4th35 | Mason [50 h]; Helper [50 h]; Physical Progress [2180 h]; Concrete M40 [261 m3]; TATA Projects Ltd-25 | 2,575,287 |
|  | 3 | **Staircase** |  | 2027-08-21 | 2027-09-16 |  |  |  |
| 3S-SS-4th15 |  | Reinforcement of wall upto Flight 1 | 2d | 2027-08-21 | 2027-08-25 | 3S-SS-3rd130 | Barbender [70 h]; Helper [40 h]; Physical Progress [4370 h]; Reinforcement Steel [1 MT1]; TATA Projects Ltd-25 | 96,512.5 |
| 3S-SS-4th20 |  | Shuttering of wall upto Flight 1 | 2d | 2027-08-25 | 2027-08-28 | 3S-SS-4th15 | Carpenter [20 h]; Helper [10 h]; Physical Progress [4370 h]; Formwork [10 Sq m]; TATA Projects Ltd-25 | 11,651.6 |
| 3S-SS-4th30 |  | Casting of wall upto Flight 1 | 1d | 2027-08-28 | 2027-08-30 | 3S-SS-4th20 | Mason; Helper; Physical Progress [2180 h]; Concrete M40 [3 m3]; TATA Projects Ltd-25 | 29,601 |
| 3S-SS-4th40 |  | Shuttering of Staircase upto Flight 1 | 1d | 2027-08-30 | 2027-09-02 | 3S-SS-4th30 | Carpenter [20 h]; Helper [10 h]; Physical Progress [2180 h]; Formwork [10 Sq m]; TATA Projects Ltd-25 | 11,651.6 |
| 3S-SS-4th45 |  | Reinforcement of Staircase upto Flight 1 | 1d | 2027-09-02 | 2027-09-03 | 3S-SS-4th40 | Barbender [70 h]; Helper [40 h]; Physical Progress [2180 h]; Reinforcement Steel [1 MT1]; TATA Projects Ltd-25 | 96,512.5 |
| 3S-SS-4th50 |  | MEP coordination upto Flight 1 | 1d | 2027-09-03 | 2027-09-04 | 3S-SS-4th45 | Physical Progress [2180 h]; TATA Projects Ltd-25 |  |
| 3S-SS-4th55 |  | Casting of Staircase upto Flight 1 | 1d | 2027-09-04 | 2027-09-06 | 3S-SS-4th50 | Mason; Helper; Physical Progress [2180 h]; Concrete M40 [3 m3]; TATA Projects Ltd-25 | 29,601 |
| 3S-SS-4th65 |  | Reinforcement of wall upto Flight 2 | 2d | 2027-09-06 | 2027-09-09 | 3S-SS-4th55 | Barbender [70 h]; Helper [40 h]; Physical Progress [4370 h]; Reinforcement Steel [1 MT1]; TATA Projects Ltd-25 | 96,512.5 |
| 3S-SS-4th75 |  | Shuttering of wall upto Flight 2 | 2d | 2027-09-09 | 2027-09-11 | 3S-SS-4th65 | Carpenter [20 h]; Helper [10 h]; Physical Progress [4370 h]; Formwork [10 Sq m]; TATA Projects Ltd-25 | 11,651.6 |
| 3S-SS-4th80 |  | Casting of wall upto Flight 2 | 1d | 2027-09-11 | 2027-09-13 | 3S-SS-4th75 | Mason; Helper; Physical Progress [2180 h]; Concrete M40 [3 m3]; TATA Projects Ltd-25 | 29,601 |
| 3S-SS-4th90 |  | Shuttering of Staircase upto Flight 2 | 1d | 2027-09-13 | 2027-09-14 | 3S-SS-4th80 | Carpenter [20 h]; Helper [10 h]; Physical Progress [2180 h]; Formwork [10 Sq m]; TATA Projects Ltd-25 | 11,651.6 |
| 3S-SS-4th95 |  | Reinforcement of Staircase upto Flight 2 | 1d | 2027-09-14 | 2027-09-16 | 3S-SS-4th90 | Barbender [70 h]; Helper [40 h]; Physical Progress [2180 h]; Reinforcement Steel [1 MT1]; TATA Projects Ltd-25 | 96,512.5 |

| ID | WBS | Activity | Duration | Start | Finish | Predecessors | Resources | Cost |
| --- | --- | --- | --- | --- | --- | --- | --- | --- |
|  | 2 | **Slab** |  | 2027-09-07 | 2027-10-13 |  |  |  |
| 3S-SS-4th70 |  | Shuttering | 4d | 2027-09-07 | 2027-09-13 | 3S-SS-4th60 | Carpenter [1810 h]; Helper [910 h]; Physical Progress [8730 h]; Formwork [1086 Sq m]; TATA Projects Ltd-25 | 1,265,363.76 |
| 3S-SS-4th85 |  | Reinforcement Bottom Net with chairs | 3d | 2027-09-13 | 2027-09-17 | 3S-SS-4th70 | Barbender [540 h]; Helper [270 h]; Physical Progress [6550 h]; Reinforcement Steel [8 MT1]; TATA Projects Ltd-25 | 772,100 |
| 3S-SS-4th100 |  | Laying of PT Tendon | 3d | 2027-09-17 | 2027-09-21 | 3S-SS-4th85 | Physical Progress [8730 h]; TATA Projects Ltd-25 |  |
| 3S-SS-4th105 |  | Reinforcement Top Net | 2d | 2027-09-21 | 2027-09-24 | 3S-SS-4th100 | Barbender [540 h]; Helper [270 h]; Physical Progress [4370 h]; Reinforcement Steel [8 MT1]; TATA Projects Ltd-25 | 772,100 |
| 3S-SS-4th110 |  | MEP Coordination | 1d | 2027-09-24 | 2027-09-25 | 3S-SS-4th85, 3S-SS-4th95, 3S-SS-4th105 | Physical Progress [2180 h]; TATA Projects Ltd-25 |  |
| 3S-SS-4th130 |  | Concrete of Slab | 1d | 2027-09-25 | 2027-09-27 | 3S-SS-4th110 | Mason [50 h]; Helper [50 h]; Physical Progress [2180 h]; Concrete M40 [271 m3]; TATA Projects Ltd-25 | 2,673,957 |
| 3S-SS-4th135 |  | Wait for Strength Gain | 6d | 2027-09-27 | 2027-10-06 | 3S-SS-4th130 | Physical Progress [13100 h]; TATA Projects Ltd-25 |  |
| 3S-SS-4th200 |  | PT Work | 5d | 2027-10-06 | 2027-10-13 | 3S-SS-4th135, 3S-SS-3rd200 | PT [3 MT1]; Helper [100 h]; PT Fitter [100 h]; Physical Progress [10920 h]; TATA Projects Ltd-25 | 570,000 |
|  | 2 | **Pour 2** |  | 2027-07-14 | 2027-09-07 |  |  |  |
|  | 1 | **Column, Core Wall, Shear Wall** |  | 2027-07-14 | 2027-07-31 |  |  |  |
| 3S-SS-4th115 |  | Reinforcement | 4d | 2027-07-14 | 2027-07-21 | 3S-SS-3rd295 | Barbender [1870 h]; Helper [940 h]; Physical Progress [8730 h]; Reinforcement Steel [28 MT1]; TATA Projects Ltd-25 | 2,702,350 |
| 3S-SS-4th150 |  | LPS | 1d | 2027-07-21 | 2027-07-23 | 3S-SS-4th115 | LPS [63943 INR]; Physical Progress [2180 h]; TATA Projects Ltd-25 | 63,943 |
| 3S-SS-4th165 |  | Shuttering | 4d | 2027-07-23 | 2027-07-30 | 3S-SS-4th115, 3S-SS-4th150 | Carpenter [1140 h]; Helper [570 h]; Physical Progress [8730 h]; Formwork [680 Sq m]; TATA Projects Ltd-25 | 792,308.8 |
| 3S-SS-4th215 |  | Concrete | 1d | 2027-07-30 | 2027-07-31 | 3S-SS-4th165 | Mason [50 h]; Helper [50 h]; Physical Progress [2180 h]; Concrete M40 [170 m3]; TATA Projects Ltd-25 | 1,677,390 |
|  | 3 | **Staircase - 1** |  | 2027-07-14 | 2027-08-11 |  |  |  |
| 3S-SS-4th120 |  | Reinforcement of wall upto Flight 1 | 2d | 2027-07-14 | 2027-07-17 | 3S-SS-3rd295 | Barbender [70 h]; Helper [40 h]; Physical Progress [4370 h]; Reinforcement Steel [1 MT1]; TATA Projects Ltd-25 | 96,512.5 |
| 3S-SS-4th140 |  | Shuttering of wall upto Flight 1 | 2d | 2027-07-17 | 2027-07-21 | 3S-SS-4th120 | Carpenter [20 h]; Helper [10 h]; Physical Progress [4370 h]; Formwork [10 Sq m]; TATA Projects Ltd-25 | 11,651.6 |
| 3S-SS-4th155 |  | Casting of wall upto Flight 1 | 1d | 2027-07-21 | 2027-07-23 | 3S-SS-4th140 | Mason; Helper; Physical Progress [2180 h]; Concrete M40 [3 m3]; TATA Projects Ltd-25 | 29,601 |
| 3S-SS-4th170 |  | Shuttering of Staircase upto Flight 1 | 1d | 2027-07-23 | 2027-07-24 | 3S-SS-4th155 | Carpenter [20 h]; Helper [10 h]; Physical Progress [2180 h]; Formwork [10 Sq m]; TATA Projects Ltd-25 | 11,651.6 |
| 3S-SS-4th180 |  | Reinforcement of Staircase upto Flight 1 | 1d | 2027-07-24 | 2027-07-26 | 3S-SS-4th170 | Barbender [70 h]; Helper [40 h]; Physical Progress [2180 h]; Reinforcement Steel [1 MT1]; TATA Projects Ltd-25 | 96,512.5 |
| 3S-SS-4th190 |  | MEP coordination upto Flight 1 | 1d | 2027-07-26 | 2027-07-28 | 3S-SS-4th180 | Physical Progress [2180 h]; TATA Projects Ltd-25 |  |
| 3S-SS-4th205 |  | Casting of Staircase upto Flight 1 | 1d | 2027-07-28 | 2027-07-30 | 3S-SS-4th190 | Mason; Helper; Physical Progress [2180 h]; Concrete M40 [3 m3]; TATA Projects Ltd-25 | 29,601 |
| 3S-SS-4th220 |  | Reinforcement of wall upto Flight 2 | 2d | 2027-07-30 | 2027-08-02 | 3S-SS-4th205 | Barbender [70 h]; Helper [40 h]; Physical Progress [4370 h]; Reinforcement Steel [1 MT1]; TATA Projects Ltd-25 | 96,512.5 |
| 3S-SS-4th235 |  | Shuttering of wall upto Flight 2 | 2d | 2027-08-02 | 2027-08-06 | 3S-SS-4th220 | Carpenter [20 h]; Helper [10 h]; Physical Progress [4370 h]; Formwork [10 Sq m]; TATA Projects Ltd-25 | 11,651.6 |
| 3S-SS-4th245 |  | Casting of wall upto Flight 2 | 1d | 2027-08-06 | 2027-08-07 | 3S-SS-4th235 | Mason; Helper; Physical Progress [2180 h]; Concrete M40 [3 m3]; TATA Projects Ltd-25 | 29,601 |
| 3S-SS-4th260 |  | Shuttering of Staircase upto Flight 2 | 1d | 2027-08-07 | 2027-08-09 | 3S-SS-4th245 | Carpenter [20 h]; Helper [10 h]; Physical Progress [2180 h]; Formwork [10 Sq m]; TATA Projects Ltd-25 | 11,651.6 |
| 3S-SS-4th270 |  | Reinforcement of Staircase upto Flight 2 | 1d | 2027-08-09 | 2027-08-11 | 3S-SS-4th260 | Barbender [70 h]; Helper [40 h]; Physical Progress [2180 h]; Reinforcement Steel [1 MT1]; TATA Projects Ltd-25 | 96,512.5 |

| ID | WBS | Activity | Duration | Start | Finish | Predecessors | Resources | Cost |
| --- | --- | --- | --- | --- | --- | --- | --- | --- |
|  | 4 | **Staircase - 2** |  | 2027-07-14 | 2027-08-11 |  |  |  |
| 3S-SS-4th125 |  | Reinforcement of wall upto Flight 1 | 2d | 2027-07-14 | 2027-07-17 | 3S-SS-3rd295 | Barbender [70 h]; Helper [40 h]; Physical Progress [4370 h]; Reinforcement Steel [1 MT1]; TATA Projects Ltd-25 | 96,512.5 |
| 3S-SS-4th145 |  | Shuttering of wall upto Flight 1 | 2d | 2027-07-17 | 2027-07-21 | 3S-SS-4th125 | Carpenter [20 h]; Helper [10 h]; Physical Progress [4370 h]; Formwork [10 Sq m]; TATA Projects Ltd-25 | 11,651.6 |
| 3S-SS-4th160 |  | Casting of wall upto Flight 1 | 1d | 2027-07-21 | 2027-07-23 | 3S-SS-4th145 | Mason; Helper; Physical Progress [2180 h]; Concrete M40 [3 m3]; TATA Projects Ltd-25 | 29,601 |
| 3S-SS-4th175 |  | Shuttering of Staircase upto Flight 1 | 1d | 2027-07-23 | 2027-07-24 | 3S-SS-4th160 | Carpenter [20 h]; Helper [10 h]; Physical Progress [2180 h]; Formwork [10 Sq m]; TATA Projects Ltd-25 | 11,651.6 |
| 3S-SS-4th185 |  | Reinforcement of Staircase upto Flight 1 | 1d | 2027-07-24 | 2027-07-26 | 3S-SS-4th175 | Barbender [70 h]; Helper [40 h]; Physical Progress [2180 h]; Reinforcement Steel [1 MT1]; TATA Projects Ltd-25 | 96,512.5 |
| 3S-SS-4th195 |  | MEP coordination upto Flight 1 | 1d | 2027-07-26 | 2027-07-28 | 3S-SS-4th185 | Physical Progress [2180 h]; TATA Projects Ltd-25 |  |
| 3S-SS-4th210 |  | Casting of Staircase upto Flight 1 | 1d | 2027-07-28 | 2027-07-30 | 3S-SS-4th195 | Mason; Helper; Physical Progress [2180 h]; Concrete M40 [3 m3]; TATA Projects Ltd-25 | 29,601 |
| 3S-SS-4th225 |  | Reinforcement of wall upto Flight 2 | 2d | 2027-07-30 | 2027-08-02 | 3S-SS-4th210 | Barbender [70 h]; Helper [40 h]; Physical Progress [4370 h]; Reinforcement Steel [1 MT1]; TATA Projects Ltd-25 | 96,512.5 |
| 3S-SS-4th240 |  | Shuttering of wall upto Flight 2 | 2d | 2027-08-02 | 2027-08-06 | 3S-SS-4th225 | Carpenter [20 h]; Helper [10 h]; Physical Progress [4370 h]; Formwork [10 Sq m]; TATA Projects Ltd-25 | 11,651.6 |
| 3S-SS-4th250 |  | Casting of wall upto Flight 2 | 1d | 2027-08-06 | 2027-08-07 | 3S-SS-4th240 | Mason; Helper; Physical Progress [2180 h]; Concrete M40 [3 m3]; TATA Projects Ltd-25 | 29,601 |
| 3S-SS-4th265 |  | Shuttering of Staircase upto Flight 2 | 1d | 2027-08-07 | 2027-08-09 | 3S-SS-4th250 | Carpenter [20 h]; Helper [10 h]; Physical Progress [2180 h]; Formwork [10 Sq m]; TATA Projects Ltd-25 | 11,651.6 |
| 3S-SS-4th275 |  | Reinforcement of Staircase upto Flight 2 | 1d | 2027-08-09 | 2027-08-11 | 3S-SS-4th265 | Barbender [70 h]; Helper [40 h]; Physical Progress [2180 h]; Reinforcement Steel [1 MT1]; TATA Projects Ltd-25 | 96,512.5 |
|  | 2 | **Slab** |  | 2027-07-31 | 2027-09-07 |  |  |  |
| 3S-SS-4th230 |  | Shuttering | 4d | 2027-07-31 | 2027-08-07 | 3S-SS-4th215 | Carpenter [1180 h]; Helper [590 h]; Physical Progress [8730 h]; Formwork [706 Sq m]; TATA Projects Ltd-25 | 822,602.96 |
| 3S-SS-4th255 |  | Reinforcement Bottom Net with chairs | 2d | 2027-08-07 | 2027-08-11 | 3S-SS-4th230 | Barbender [400 h]; Helper [200 h]; Physical Progress [6550 h]; Reinforcement Steel [6 MT1]; TATA Projects Ltd-25 | 579,075 |
| 3S-SS-4th280 |  | Laying of PT Tendon | 2d | 2027-08-11 | 2027-08-14 | 3S-SS-4th255 | Physical Progress [8730 h]; TATA Projects Ltd-25 |  |
| 3S-SS-4th285 |  | Reinforcement Top Net | 2d | 2027-08-14 | 2027-08-18 | 3S-SS-4th280 | Barbender [400 h]; Helper [200 h]; Physical Progress [4370 h]; Reinforcement Steel [6 MT1]; TATA Projects Ltd-25 | 579,075 |
| 3S-SS-4th290 |  | MEP Coordination | 1d | 2027-08-18 | 2027-08-20 | 3S-SS-4th255, 3S-SS-4th270, 3S-SS-4th285, 3S-SS-4th275 | Physical Progress [2180 h]; TATA Projects Ltd-25 |  |
| 3S-SS-4th295 |  | Concrete of Slab | 1d | 2027-08-20 | 2027-08-21 | 3S-SS-4th290 | Mason [50 h]; Helper [50 h]; Physical Progress [2180 h]; Concrete M40 [177 m3]; TATA Projects Ltd-25 | 1,746,459 |
| 3S-SS-4th300 |  | Wait for Strength Gain | 6d | 2027-08-21 | 2027-09-02 | 3S-SS-4th295 | Physical Progress [13100 h]; TATA Projects Ltd-25 |  |
| 3S-SS-4th305 |  | PT Work | 4d | 2027-09-02 | 2027-09-07 | 3S-SS-4th300, 3S-SS-3rd305 | PT [2 MT1]; Helper [100 h]; PT Fitter [100 h]; Physical Progress [10920 h]; TATA Projects Ltd-25 | 380,000 |
|  | 4 | **Fifth Floor** |  | 2027-08-21 | 2027-11-11 |  |  |  |
|  | 1 | **Pour 1** |  | 2027-09-27 | 2027-11-11 |  |  |  |
|  | 1 | **Column, Core Wall, Shear Wall** |  | 2027-09-27 | 2027-10-12 |  |  |  |
| 3S-SS-5th10 |  | Reinforcement | 4d | 2027-09-27 | 2027-10-04 | 3S-SS-4th130, E-GFC-ST-3S-295 | Barbender [2870 h]; Helper [1440 h]; Physical Progress [8730 h]; Reinforcement Steel [43 MT1]; TATA Projects Ltd-25 | 4,150,037.5 |
| 3S-SS-5th25 |  | LPS | 1d | 2027-10-04 | 2027-10-05 | 3S-SS-5th10 | LPS [63943 INR]; Physical Progress [2180 h]; TATA Projects Ltd-25 | 63,943 |
| 3S-SS-5th35 |  | Shuttering | 4d | 2027-10-05 | 2027-10-11 | 3S-SS-5th10, 3S-SS-5th25 | Carpenter [1750 h]; Helper [880 h]; Physical Progress [8730 h]; Formwork [1045 Sq m]; TATA Projects Ltd-25 | 1,217,592.2 |
| 3S-SS-5th60 |  | Concrete | 1d | 2027-10-11 | 2027-10-12 | 3S-SS-5th35 | Mason [50 h]; Helper [50 h]; Physical Progress [2180 h]; Concrete M40 [261 m3]; TATA Projects Ltd-25 | 2,575,287 |

| ID | WBS | Activity | Duration | Start | Finish | Predecessors | Resources | Cost |
| --- | --- | --- | --- | --- | --- | --- | --- | --- |
|  | 3 | **Staircase** |  | 2027-09-27 | 2027-10-19 |  |  |  |
| 3S-SS-5th15 |  | Reinforcement of wall upto Flight 1 | 2d | 2027-09-27 | 2027-09-30 | 3S-SS-4th130 | Barbender [70 h]; Helper [40 h]; Physical Progress [4370 h]; Reinforcement Steel [1 MT1]; TATA Projects Ltd-25 | 96,512.5 |
| 3S-SS-5th20 |  | Shuttering of wall upto Flight 1 | 2d | 2027-09-30 | 2027-10-04 | 3S-SS-5th15 | Carpenter [20 h]; Helper [10 h]; Physical Progress [4370 h]; Formwork [10 Sq m]; TATA Projects Ltd-25 | 11,651.6 |
| 3S-SS-5th30 |  | Casting of wall upto Flight 1 | 1d | 2027-10-04 | 2027-10-05 | 3S-SS-5th20 | Mason; Helper; Physical Progress [2180 h]; Concrete M40 [3 m3]; TATA Projects Ltd-25 | 29,601 |
| 3S-SS-5th40 |  | Shuttering of Staircase upto Flight 1 | 1d | 2027-10-05 | 2027-10-06 | 3S-SS-5th30 | Carpenter [20 h]; Helper [10 h]; Physical Progress [2180 h]; Formwork [10 Sq m]; TATA Projects Ltd-25 | 11,651.6 |
| 3S-SS-5th45 |  | Reinforcement of Staircase upto Flight 1 | 1d | 2027-10-06 | 2027-10-07 | 3S-SS-5th40 | Barbender [70 h]; Helper [40 h]; Physical Progress [2180 h]; Reinforcement Steel [1 MT1]; TATA Projects Ltd-25 | 96,512.5 |
| 3S-SS-5th50 |  | MEP coordination upto Flight 1 | 1d | 2027-10-07 | 2027-10-08 | 3S-SS-5th45 | Physical Progress [2180 h]; TATA Projects Ltd-25 |  |
| 3S-SS-5th55 |  | Casting of Staircase upto Flight 1 | 1d | 2027-10-08 | 2027-10-11 | 3S-SS-5th50 | Mason; Helper; Physical Progress [2180 h]; Concrete M40 [3 m3]; TATA Projects Ltd-25 | 29,601 |
| 3S-SS-5th65 |  | Reinforcement of wall upto Flight 2 | 2d | 2027-10-11 | 2027-10-13 | 3S-SS-5th55 | Barbender [70 h]; Helper [40 h]; Physical Progress [4370 h]; Reinforcement Steel [1 MT1]; TATA Projects Ltd-25 | 96,512.5 |
| 3S-SS-5th75 |  | Shuttering of wall upto Flight 2 | 2d | 2027-10-13 | 2027-10-15 | 3S-SS-5th65 | Carpenter [20 h]; Helper [10 h]; Physical Progress [4370 h]; Formwork [10 Sq m]; TATA Projects Ltd-25 | 11,651.6 |
| 3S-SS-5th80 |  | Casting of wall upto Flight 2 | 1d | 2027-10-15 | 2027-10-16 | 3S-SS-5th75 | Mason; Helper; Physical Progress [2180 h]; Concrete M40 [3 m3]; TATA Projects Ltd-25 | 29,601 |
| 3S-SS-5th90 |  | Shuttering of Staircase upto Flight 2 | 1d | 2027-10-16 | 2027-10-18 | 3S-SS-5th80 | Carpenter [20 h]; Helper [10 h]; Physical Progress [2180 h]; Formwork [10 Sq m]; TATA Projects Ltd-25 | 11,651.6 |
| 3S-SS-5th95 |  | Reinforcement of Staircase upto Flight 2 | 1d | 2027-10-18 | 2027-10-19 | 3S-SS-5th90 | Barbender [70 h]; Helper [40 h]; Physical Progress [2180 h]; Reinforcement Steel [1 MT1]; TATA Projects Ltd-25 | 96,512.5 |
|  | 2 | **Slab** |  | 2027-10-12 | 2027-11-11 |  |  |  |
| 3S-SS-5th70 |  | Shuttering | 4d | 2027-10-12 | 2027-10-16 | 3S-SS-5th60 | Carpenter [1810 h]; Helper [910 h]; Physical Progress [8730 h]; Formwork [1086 Sq m]; TATA Projects Ltd-25 | 1,265,363.76 |
| 3S-SS-5th85 |  | Reinforcement Bottom Net with chairs | 3d | 2027-10-16 | 2027-10-20 | 3S-SS-5th70 | Barbender [540 h]; Helper [270 h]; Physical Progress [6550 h]; Reinforcement Steel [8 MT1]; TATA Projects Ltd-25 | 772,100 |
| 3S-SS-5th100 |  | Laying of PT Tendon | 3d | 2027-10-20 | 2027-10-23 | 3S-SS-5th85 | Physical Progress [8730 h]; TATA Projects Ltd-25 |  |
| 3S-SS-5th105 |  | Reinforcement Top Net | 2d | 2027-10-23 | 2027-10-26 | 3S-SS-5th100 | Barbender [540 h]; Helper [270 h]; Physical Progress [4370 h]; Reinforcement Steel [8 MT1]; TATA Projects Ltd-25 | 772,100 |
| 3S-SS-5th110 |  | MEP Coordination | 1d | 2027-10-26 | 2027-10-27 | 3S-SS-5th85, 3S-SS-5th95, 3S-SS-5th105 | Physical Progress [2180 h]; TATA Projects Ltd-25 |  |
| 3S-SS-5th130 |  | Concrete of Slab | 1d | 2027-10-27 | 2027-10-28 | 3S-SS-5th110 | Mason [50 h]; Helper [50 h]; Physical Progress [2180 h]; Concrete M40 [271 m3]; TATA Projects Ltd-25 | 2,673,957 |
| 3S-SS-5th135 |  | Wait for Strength Gain | 6d | 2027-10-28 | 2027-11-05 | 3S-SS-5th130 | Physical Progress [13100 h]; TATA Projects Ltd-25 |  |
| 3S-SS-5th200 |  | PT Work | 5d | 2027-11-05 | 2027-11-11 | 3S-SS-5th135, 3S-SS-4th200 | PT [3 MT1]; Helper [100 h]; PT Fitter [100 h]; Physical Progress [10920 h]; TATA Projects Ltd-25 | 570,000 |
|  | 2 | **Pour 2** |  | 2027-08-21 | 2027-10-08 |  |  |  |
|  | 1 | **Column, Core Wall, Shear Wall** |  | 2027-08-21 | 2027-09-07 |  |  |  |
| 3S-SS-5th115 |  | Reinforcement | 4d | 2027-08-21 | 2027-08-28 | 3S-SS-4th295 | Barbender [1870 h]; Helper [940 h]; Physical Progress [8730 h]; Reinforcement Steel [28 MT1]; TATA Projects Ltd-25 | 2,702,350 |
| 3S-SS-5th150 |  | LPS | 1d | 2027-08-28 | 2027-08-30 | 3S-SS-5th115 | LPS [63943 INR]; Physical Progress [2180 h]; TATA Projects Ltd-25 | 63,943 |
| 3S-SS-5th165 |  | Shuttering | 4d | 2027-08-30 | 2027-09-06 | 3S-SS-5th115, 3S-SS-5th150 | Carpenter [1140 h]; Helper [570 h]; Physical Progress [8730 h]; Formwork [680 Sq m]; TATA Projects Ltd-25 | 792,308.8 |
| 3S-SS-5th215 |  | Concrete | 1d | 2027-09-06 | 2027-09-07 | 3S-SS-5th165 | Mason [50 h]; Helper [50 h]; Physical Progress [2180 h]; Concrete M40 [170 m3]; TATA Projects Ltd-25 | 1,677,390 |

| ID | WBS | Activity | Duration | Start | Finish | Predecessors | Resources | Cost |
| --- | --- | --- | --- | --- | --- | --- | --- | --- |
|  | 3 | **Staircase - 1** |  | 2027-08-21 | 2027-09-16 |  |  |  |
| 3S-SS-5th120 |  | Reinforcement of wall upto Flight 1 | 2d | 2027-08-21 | 2027-08-25 | 3S-SS-4th295 | Barbender [70 h]; Helper [40 h]; Physical Progress [4370 h]; Reinforcement Steel [1 MT1]; TATA Projects Ltd-25 | 96,512.5 |
| 3S-SS-5th140 |  | Shuttering of wall upto Flight 1 | 2d | 2027-08-25 | 2027-08-28 | 3S-SS-5th120 | Carpenter [20 h]; Helper [10 h]; Physical Progress [4370 h]; Formwork [10 Sq m]; TATA Projects Ltd-25 | 11,651.6 |
| 3S-SS-5th155 |  | Casting of wall upto Flight 1 | 1d | 2027-08-28 | 2027-08-30 | 3S-SS-5th140 | Mason; Helper; Physical Progress [2180 h]; Concrete M40 [3 m3]; TATA Projects Ltd-25 | 29,601 |
| 3S-SS-5th170 |  | Shuttering of Staircase upto Flight 1 | 1d | 2027-08-30 | 2027-09-02 | 3S-SS-5th155 | Carpenter [20 h]; Helper [10 h]; Physical Progress [2180 h]; Formwork [10 Sq m]; TATA Projects Ltd-25 | 11,651.6 |
| 3S-SS-5th180 |  | Reinforcement of Staircase upto Flight 1 | 1d | 2027-09-02 | 2027-09-03 | 3S-SS-5th170 | Barbender [70 h]; Helper [40 h]; Physical Progress [2180 h]; Reinforcement Steel [1 MT1]; TATA Projects Ltd-25 | 96,512.5 |
| 3S-SS-5th190 |  | MEP coordination upto Flight 1 | 1d | 2027-09-03 | 2027-09-04 | 3S-SS-5th180 | Physical Progress [2180 h]; TATA Projects Ltd-25 |  |
| 3S-SS-5th205 |  | Casting of Staircase upto Flight 1 | 1d | 2027-09-04 | 2027-09-06 | 3S-SS-5th190 | Mason; Helper; Physical Progress [2180 h]; Concrete M40 [3 m3]; TATA Projects Ltd-25 | 29,601 |
| 3S-SS-5th220 |  | Reinforcement of wall upto Flight 2 | 2d | 2027-09-06 | 2027-09-09 | 3S-SS-5th205 | Barbender [70 h]; Helper [40 h]; Physical Progress [4370 h]; Reinforcement Steel [1 MT1]; TATA Projects Ltd-25 | 96,512.5 |
| 3S-SS-5th235 |  | Shuttering of wall upto Flight 2 | 2d | 2027-09-09 | 2027-09-11 | 3S-SS-5th220 | Carpenter [20 h]; Helper [10 h]; Physical Progress [4370 h]; Formwork [10 Sq m]; TATA Projects Ltd-25 | 11,651.6 |
| 3S-SS-5th245 |  | Casting of wall upto Flight 2 | 1d | 2027-09-11 | 2027-09-13 | 3S-SS-5th235 | Mason; Helper; Physical Progress [2180 h]; Concrete M40 [3 m3]; TATA Projects Ltd-25 | 29,601 |
| 3S-SS-5th260 |  | Shuttering of Staircase upto Flight 2 | 1d | 2027-09-13 | 2027-09-14 | 3S-SS-5th245 | Carpenter [20 h]; Helper [10 h]; Physical Progress [2180 h]; Formwork [10 Sq m]; TATA Projects Ltd-25 | 11,651.6 |
| 3S-SS-5th270 |  | Reinforcement of Staircase upto Flight 2 | 1d | 2027-09-14 | 2027-09-16 | 3S-SS-5th260 | Barbender [70 h]; Helper [40 h]; Physical Progress [2180 h]; Reinforcement Steel [1 MT1]; TATA Projects Ltd-25 | 96,512.5 |
|  | 4 | **Staircase - 2** |  | 2027-08-21 | 2027-09-16 |  |  |  |
| 3S-SS-5th125 |  | Reinforcement of wall upto Flight 1 | 2d | 2027-08-21 | 2027-08-25 | 3S-SS-4th295 | Barbender [70 h]; Helper [40 h]; Physical Progress [4370 h]; Reinforcement Steel [1 MT1]; TATA Projects Ltd-25 | 96,512.5 |
| 3S-SS-5th145 |  | Shuttering of wall upto Flight 1 | 2d | 2027-08-25 | 2027-08-28 | 3S-SS-5th125 | Carpenter [20 h]; Helper [10 h]; Physical Progress [4370 h]; Formwork [10 Sq m]; TATA Projects Ltd-25 | 11,651.6 |
| 3S-SS-5th160 |  | Casting of wall upto Flight 1 | 1d | 2027-08-28 | 2027-08-30 | 3S-SS-5th145 | Mason; Helper; Physical Progress [2180 h]; Concrete M40 [3 m3]; TATA Projects Ltd-25 | 29,601 |
| 3S-SS-5th175 |  | Shuttering of Staircase upto Flight 1 | 1d | 2027-08-30 | 2027-09-02 | 3S-SS-5th160 | Carpenter [20 h]; Helper [10 h]; Physical Progress [2180 h]; Formwork [10 Sq m]; TATA Projects Ltd-25 | 11,651.6 |
| 3S-SS-5th185 |  | Reinforcement of Staircase upto Flight 1 | 1d | 2027-09-02 | 2027-09-03 | 3S-SS-5th175 | Barbender [70 h]; Helper [40 h]; Physical Progress [2180 h]; Reinforcement Steel [1 MT1]; TATA Projects Ltd-25 | 96,512.5 |
| 3S-SS-5th195 |  | MEP coordination upto Flight 1 | 1d | 2027-09-03 | 2027-09-04 | 3S-SS-5th185 | Physical Progress [2180 h]; TATA Projects Ltd-25 |  |
| 3S-SS-5th210 |  | Casting of Staircase upto Flight 1 | 1d | 2027-09-04 | 2027-09-06 | 3S-SS-5th195 | Mason; Helper; Physical Progress [2180 h]; Concrete M40 [3 m3]; TATA Projects Ltd-25 | 29,601 |
| 3S-SS-5th225 |  | Reinforcement of wall upto Flight 2 | 2d | 2027-09-06 | 2027-09-09 | 3S-SS-5th210 | Barbender [70 h]; Helper [40 h]; Physical Progress [4370 h]; Reinforcement Steel [1 MT1]; TATA Projects Ltd-25 | 96,512.5 |
| 3S-SS-5th240 |  | Shuttering of wall upto Flight 2 | 2d | 2027-09-09 | 2027-09-11 | 3S-SS-5th225 | Carpenter [20 h]; Helper [10 h]; Physical Progress [4370 h]; Formwork [10 Sq m]; TATA Projects Ltd-25 | 11,651.6 |
| 3S-SS-5th250 |  | Casting of wall upto Flight 2 | 1d | 2027-09-11 | 2027-09-13 | 3S-SS-5th240 | Mason; Helper; Physical Progress [2180 h]; Concrete M40 [3 m3]; TATA Projects Ltd-25 | 29,601 |
| 3S-SS-5th265 |  | Shuttering of Staircase upto Flight 2 | 1d | 2027-09-13 | 2027-09-14 | 3S-SS-5th250 | Carpenter [20 h]; Helper [10 h]; Physical Progress [2180 h]; Formwork [10 Sq m]; TATA Projects Ltd-25 | 11,651.6 |
| 3S-SS-5th275 |  | Reinforcement of Staircase upto Flight 2 | 1d | 2027-09-14 | 2027-09-16 | 3S-SS-5th265 | Barbender [70 h]; Helper [40 h]; Physical Progress [2180 h]; Reinforcement Steel [1 MT1]; TATA Projects Ltd-25 | 96,512.5 |

| ID | WBS | Activity | Duration | Start | Finish | Predecessors | Resources | Cost |
| --- | --- | --- | --- | --- | --- | --- | --- | --- |
|  | 2 | **Slab** |  | 2027-09-07 | 2027-10-08 |  |  |  |
| 3S-SS-5th230 |  | Shuttering | 4d | 2027-09-07 | 2027-09-13 | 3S-SS-5th215 | Carpenter [1180 h]; Helper [590 h]; Physical Progress [8730 h]; Formwork [706 Sq m]; TATA Projects Ltd-25 | 822,602.96 |
| 3S-SS-5th255 |  | Reinforcement Bottom Net with chairs | 2d | 2027-09-13 | 2027-09-16 | 3S-SS-5th230 | Barbender [400 h]; Helper [200 h]; Physical Progress [6550 h]; Reinforcement Steel [6 MT1]; TATA Projects Ltd-25 | 579,075 |
| 3S-SS-5th280 |  | Laying of PT Tendon | 2d | 2027-09-16 | 2027-09-18 | 3S-SS-5th255 | Physical Progress [8730 h]; TATA Projects Ltd-25 |  |
| 3S-SS-5th285 |  | Reinforcement Top Net | 2d | 2027-09-18 | 2027-09-21 | 3S-SS-5th280 | Barbender [400 h]; Helper [200 h]; Physical Progress [4370 h]; Reinforcement Steel [6 MT1]; TATA Projects Ltd-25 | 579,075 |
| 3S-SS-5th290 |  | MEP Coordination | 1d | 2027-09-21 | 2027-09-23 | 3S-SS-5th255, 3S-SS-5th270, 3S-SS-5th285, 3S-SS-5th275 | Physical Progress [2180 h]; TATA Projects Ltd-25 |  |
| 3S-SS-5th295 |  | Concrete of Slab | 1d | 2027-09-23 | 2027-09-24 | 3S-SS-5th290 | Mason [50 h]; Helper [50 h]; Physical Progress [2180 h]; Concrete M40 [177 m3]; TATA Projects Ltd-25 | 1,746,459 |
| 3S-SS-5th300 |  | Wait for Strength Gain | 6d | 2027-09-24 | 2027-10-04 | 3S-SS-5th295 | Physical Progress [13100 h]; TATA Projects Ltd-25 |  |
| 3S-SS-5th305 |  | PT Work | 4d | 2027-10-04 | 2027-10-08 | 3S-SS-5th300, 3S-SS-4th305 | PT [2 MT1]; Helper [100 h]; PT Fitter [100 h]; Physical Progress [10920 h]; TATA Projects Ltd-25 | 380,000 |
|  | 5 | **Sixth Floor** |  | 2027-09-24 | 2027-12-09 |  |  |  |
|  | 1 | **Pour 1** |  | 2027-10-28 | 2027-12-09 |  |  |  |
|  | 1 | **Column, Core Wall, Shear Wall** |  | 2027-10-28 | 2027-11-10 |  |  |  |
| 3S-SS-6th10 |  | Reinforcement | 4d | 2027-10-28 | 2027-11-03 | 3S-SS-5th130, E-GFC-ST-3S-305 | Barbender [2870 h]; Helper [1440 h]; Physical Progress [8730 h]; Reinforcement Steel [43 MT1]; TATA Projects Ltd-25 | 4,150,037.5 |
| 3S-SS-6th25 |  | LPS | 1d | 2027-11-03 | 2027-11-04 | 3S-SS-6th10 | LPS [63943 INR]; Physical Progress [2180 h]; TATA Projects Ltd-25 | 63,943 |
| 3S-SS-6th35 |  | Shuttering | 4d | 2027-11-04 | 2027-11-09 | 3S-SS-6th10, 3S-SS-6th25 | Carpenter [1750 h]; Helper [880 h]; Physical Progress [8730 h]; Formwork [1045 Sq m]; TATA Projects Ltd-25 | 1,217,592.2 |
| 3S-SS-6th60 |  | Concrete | 1d | 2027-11-09 | 2027-11-10 | 3S-SS-6th35 | Mason [50 h]; Helper [50 h]; Physical Progress [2180 h]; Concrete M40 [261 m3]; TATA Projects Ltd-25 | 2,575,287 |
|  | 3 | **Staircase** |  | 2027-10-28 | 2027-11-17 |  |  |  |
| 3S-SS-6th15 |  | Reinforcement of wall upto Flight 1 | 2d | 2027-10-28 | 2027-11-01 | 3S-SS-5th130 | Barbender [70 h]; Helper [40 h]; Physical Progress [4370 h]; Reinforcement Steel [1 MT1]; TATA Projects Ltd-25 | 96,512.5 |
| 3S-SS-6th20 |  | Shuttering of wall upto Flight 1 | 2d | 2027-11-01 | 2027-11-03 | 3S-SS-6th15 | Carpenter [20 h]; Helper [10 h]; Physical Progress [4370 h]; Formwork [10 Sq m]; TATA Projects Ltd-25 | 11,651.6 |
| 3S-SS-6th30 |  | Casting of wall upto Flight 1 | 1d | 2027-11-03 | 2027-11-04 | 3S-SS-6th20 | Mason; Helper; Physical Progress [2180 h]; Concrete M40 [3 m3]; TATA Projects Ltd-25 | 29,601 |
| 3S-SS-6th40 |  | Shuttering of Staircase upto Flight 1 | 1d | 2027-11-04 | 2027-11-05 | 3S-SS-6th30 | Carpenter [20 h]; Helper [10 h]; Physical Progress [2180 h]; Formwork [10 Sq m]; TATA Projects Ltd-25 | 11,651.6 |
| 3S-SS-6th45 |  | Reinforcement of Staircase upto Flight 1 | 1d | 2027-11-05 | 2027-11-06 | 3S-SS-6th40 | Barbender [70 h]; Helper [40 h]; Physical Progress [2180 h]; Reinforcement Steel [1 MT1]; TATA Projects Ltd-25 | 96,512.5 |
| 3S-SS-6th50 |  | MEP coordination upto Flight 1 | 1d | 2027-11-06 | 2027-11-08 | 3S-SS-6th45 | Physical Progress [2180 h]; TATA Projects Ltd-25 |  |
| 3S-SS-6th55 |  | Casting of Staircase upto Flight 1 | 1d | 2027-11-08 | 2027-11-09 | 3S-SS-6th50 | Mason; Helper; Physical Progress [2180 h]; Concrete M40 [3 m3]; TATA Projects Ltd-25 | 29,601 |
| 3S-SS-6th65 |  | Reinforcement of wall upto Flight 2 | 2d | 2027-11-09 | 2027-11-11 | 3S-SS-6th55 | Barbender [70 h]; Helper [40 h]; Physical Progress [4370 h]; Reinforcement Steel [1 MT1]; TATA Projects Ltd-25 | 96,512.5 |
| 3S-SS-6th75 |  | Shuttering of wall upto Flight 2 | 2d | 2027-11-11 | 2027-11-13 | 3S-SS-6th65 | Carpenter [20 h]; Helper [10 h]; Physical Progress [4370 h]; Formwork [10 Sq m]; TATA Projects Ltd-25 | 11,651.6 |
| 3S-SS-6th80 |  | Casting of wall upto Flight 2 | 1d | 2027-11-13 | 2027-11-15 | 3S-SS-6th75 | Mason; Helper; Physical Progress [2180 h]; Concrete M40 [3 m3]; TATA Projects Ltd-25 | 29,601 |
| 3S-SS-6th90 |  | Shuttering of Staircase upto Flight 2 | 1d | 2027-11-15 | 2027-11-16 | 3S-SS-6th80 | Carpenter [20 h]; Helper [10 h]; Physical Progress [2180 h]; Formwork [10 Sq m]; TATA Projects Ltd-25 | 11,651.6 |
| 3S-SS-6th95 |  | Reinforcement of Staircase upto Flight 2 | 1d | 2027-11-16 | 2027-11-17 | 3S-SS-6th90 | Barbender [70 h]; Helper [40 h]; Physical Progress [2180 h]; Reinforcement Steel [1 MT1]; TATA Projects Ltd-25 | 96,512.5 |

| ID | WBS | Activity | Duration | Start | Finish | Predecessors | Resources | Cost |
| --- | --- | --- | --- | --- | --- | --- | --- | --- |
|  | 2 | **Slab** |  | 2027-11-10 | 2027-12-09 |  |  |  |
| 3S-SS-6th70 |  | Shuttering | 4d | 2027-11-10 | 2027-11-15 | 3S-SS-6th60 | Carpenter [1810 h]; Helper [910 h]; Physical Progress [8730 h]; Formwork [1085 Sq m]; TATA Projects Ltd-25 | 1,264,198.6 |
| 3S-SS-6th85 |  | Reinforcement Bottom Net with chairs | 3d | 2027-11-15 | 2027-11-18 | 3S-SS-6th70 | Barbender [540 h]; Helper [270 h]; Physical Progress [6550 h]; Reinforcement Steel [8 MT1]; TATA Projects Ltd-25 | 772,100 |
| 3S-SS-6th100 |  | Laying of PT Tendon | 3d | 2027-11-18 | 2027-11-22 | 3S-SS-6th85 | Physical Progress [8730 h]; TATA Projects Ltd-25 |  |
| 3S-SS-6th105 |  | Reinforcement Top Net | 2d | 2027-11-22 | 2027-11-24 | 3S-SS-6th100 | Barbender [540 h]; Helper [270 h]; Physical Progress [4370 h]; Reinforcement Steel [8 MT1]; TATA Projects Ltd-25 | 772,100 |
| 3S-SS-6th110 |  | MEP Coordination | 1d | 2027-11-24 | 2027-11-25 | 3S-SS-6th85, 3S-SS-6th95, 3S-SS-6th105 | Physical Progress [2180 h]; TATA Projects Ltd-25 |  |
| 3S-SS-6th130 |  | Concrete of Slab | 1d | 2027-11-25 | 2027-11-26 | 3S-SS-6th110 | Mason [50 h]; Helper [50 h]; Physical Progress [2180 h]; Concrete M40 [271 m3]; TATA Projects Ltd-25 | 2,673,957 |
| 3S-SS-6th135 |  | Wait for Strength Gain | 6d | 2027-11-26 | 2027-12-03 | 3S-SS-6th130 | Physical Progress [13100 h]; TATA Projects Ltd-25 |  |
| 3S-SS-6th200 |  | PT Work | 5d | 2027-12-03 | 2027-12-09 | 3S-SS-6th135, 3S-SS-5th200 | PT [3 MT1]; Helper [100 h]; PT Fitter [100 h]; Physical Progress [10920 h]; TATA Projects Ltd-25 | 570,000 |
|  | 2 | **Pour 2** |  | 2027-09-24 | 2027-11-05 |  |  |  |
|  | 1 | **Column, Core Wall, Shear Wall** |  | 2027-09-24 | 2027-10-08 |  |  |  |
| 3S-SS-6th115 |  | Reinforcement | 4d | 2027-09-24 | 2027-09-30 | 3S-SS-5th295 | Barbender [1870 h]; Helper [940 h]; Physical Progress [8730 h]; Reinforcement Steel [28 MT1]; TATA Projects Ltd-25 | 2,702,350 |
| 3S-SS-6th150 |  | LPS | 1d | 2027-09-30 | 2027-10-01 | 3S-SS-6th115 | LPS [63943 INR]; Physical Progress [2180 h]; TATA Projects Ltd-25 | 63,943 |
| 3S-SS-6th165 |  | Shuttering | 4d | 2027-10-01 | 2027-10-07 | 3S-SS-6th115, 3S-SS-6th150 | Carpenter [1140 h]; Helper [570 h]; Physical Progress [8730 h]; Formwork [680 Sq m]; TATA Projects Ltd-25 | 792,308.8 |
| 3S-SS-6th215 |  | Concrete | 1d | 2027-10-07 | 2027-10-08 | 3S-SS-6th165 | Mason [50 h]; Helper [50 h]; Physical Progress [2180 h]; Concrete M40 [170 m3]; TATA Projects Ltd-25 | 1,677,390 |
|  | 3 | **Staircase - 1** |  | 2027-09-24 | 2027-10-16 |  |  |  |
| 3S-SS-6th120 |  | Reinforcement of wall upto Flight 1 | 2d | 2027-09-24 | 2027-09-27 | 3S-SS-5th295 | Barbender [70 h]; Helper [40 h]; Physical Progress [4370 h]; Reinforcement Steel [1 MT1]; TATA Projects Ltd-25 | 96,512.5 |
| 3S-SS-6th140 |  | Shuttering of wall upto Flight 1 | 2d | 2027-09-27 | 2027-09-30 | 3S-SS-6th120 | Carpenter [20 h]; Helper [10 h]; Physical Progress [4370 h]; Formwork [10 Sq m]; TATA Projects Ltd-25 | 11,651.6 |
| 3S-SS-6th155 |  | Casting of wall upto Flight 1 | 1d | 2027-09-30 | 2027-10-01 | 3S-SS-6th140 | Mason; Helper; Physical Progress [2180 h]; Concrete M40 [3 m3]; TATA Projects Ltd-25 | 29,601 |
| 3S-SS-6th170 |  | Shuttering of Staircase upto Flight 1 | 1d | 2027-10-01 | 2027-10-04 | 3S-SS-6th155 | Carpenter [20 h]; Helper [10 h]; Physical Progress [2180 h]; Formwork [10 Sq m]; TATA Projects Ltd-25 | 11,651.6 |
| 3S-SS-6th180 |  | Reinforcement of Staircase upto Flight 1 | 1d | 2027-10-04 | 2027-10-05 | 3S-SS-6th170 | Barbender [70 h]; Helper [40 h]; Physical Progress [2180 h]; Reinforcement Steel [1 MT1]; TATA Projects Ltd-25 | 96,512.5 |
| 3S-SS-6th190 |  | MEP coordination upto Flight 1 | 1d | 2027-10-05 | 2027-10-06 | 3S-SS-6th180 | Physical Progress [2180 h]; TATA Projects Ltd-25 |  |
| 3S-SS-6th205 |  | Casting of Staircase upto Flight 1 | 1d | 2027-10-06 | 2027-10-07 | 3S-SS-6th190 | Mason; Helper; Physical Progress [2180 h]; Concrete M40 [3 m3]; TATA Projects Ltd-25 | 29,601 |
| 3S-SS-6th220 |  | Reinforcement of wall upto Flight 2 | 2d | 2027-10-07 | 2027-10-11 | 3S-SS-6th205 | Barbender [70 h]; Helper [40 h]; Physical Progress [4370 h]; Reinforcement Steel [1 MT1]; TATA Projects Ltd-25 | 96,512.5 |
| 3S-SS-6th235 |  | Shuttering of wall upto Flight 2 | 2d | 2027-10-11 | 2027-10-13 | 3S-SS-6th220 | Carpenter [20 h]; Helper [10 h]; Physical Progress [4370 h]; Formwork [10 Sq m]; TATA Projects Ltd-25 | 11,651.6 |
| 3S-SS-6th245 |  | Casting of wall upto Flight 2 | 1d | 2027-10-13 | 2027-10-14 | 3S-SS-6th235 | Mason; Helper; Physical Progress [2180 h]; Concrete M40 [3 m3]; TATA Projects Ltd-25 | 29,601 |
| 3S-SS-6th260 |  | Shuttering of Staircase upto Flight 2 | 1d | 2027-10-14 | 2027-10-15 | 3S-SS-6th245 | Carpenter [20 h]; Helper [10 h]; Physical Progress [2180 h]; Formwork [10 Sq m]; TATA Projects Ltd-25 | 11,651.6 |
| 3S-SS-6th270 |  | Reinforcement of Staircase upto Flight 2 | 1d | 2027-10-15 | 2027-10-16 | 3S-SS-6th260 | Barbender [70 h]; Helper [40 h]; Physical Progress [2180 h]; Reinforcement Steel [1 MT1]; TATA Projects Ltd-25 | 96,512.5 |

| ID | WBS | Activity | Duration | Start | Finish | Predecessors | Resources | Cost |
| --- | --- | --- | --- | --- | --- | --- | --- | --- |
|  | 4 | **Staircase - 2** |  | 2027-09-24 | 2027-10-16 |  |  |  |
| 3S-SS-6th125 |  | Reinforcement of wall upto Flight 1 | 2d | 2027-09-24 | 2027-09-27 | 3S-SS-5th295 | Barbender [70 h]; Helper [40 h]; Physical Progress [4370 h]; Reinforcement Steel [1 MT1]; TATA Projects Ltd-25 | 96,512.5 |
| 3S-SS-6th145 |  | Shuttering of wall upto Flight 1 | 2d | 2027-09-27 | 2027-09-30 | 3S-SS-6th125 | Carpenter [20 h]; Helper [10 h]; Physical Progress [4370 h]; Formwork [10 Sq m]; TATA Projects Ltd-25 | 11,651.6 |
| 3S-SS-6th160 |  | Casting of wall upto Flight 1 | 1d | 2027-09-30 | 2027-10-01 | 3S-SS-6th145 | Mason; Helper; Physical Progress [2180 h]; Concrete M40 [3 m3]; TATA Projects Ltd-25 | 29,601 |
| 3S-SS-6th175 |  | Shuttering of Staircase upto Flight 1 | 1d | 2027-10-01 | 2027-10-04 | 3S-SS-6th160 | Carpenter [20 h]; Helper [10 h]; Physical Progress [2180 h]; Formwork [10 Sq m]; TATA Projects Ltd-25 | 11,651.6 |
| 3S-SS-6th185 |  | Reinforcement of Staircase upto Flight 1 | 1d | 2027-10-04 | 2027-10-05 | 3S-SS-6th175 | Barbender [70 h]; Helper [40 h]; Physical Progress [2180 h]; Reinforcement Steel [1 MT1]; TATA Projects Ltd-25 | 96,512.5 |
| 3S-SS-6th195 |  | MEP coordination upto Flight 1 | 1d | 2027-10-05 | 2027-10-06 | 3S-SS-6th185 | Physical Progress [2180 h]; TATA Projects Ltd-25 |  |
| 3S-SS-6th210 |  | Casting of Staircase upto Flight 1 | 1d | 2027-10-06 | 2027-10-07 | 3S-SS-6th195 | Mason; Helper; Physical Progress [2180 h]; Concrete M40 [3 m3]; TATA Projects Ltd-25 | 29,601 |
| 3S-SS-6th225 |  | Reinforcement of wall upto Flight 2 | 2d | 2027-10-07 | 2027-10-11 | 3S-SS-6th210 | Barbender [70 h]; Helper [40 h]; Physical Progress [4370 h]; Reinforcement Steel [1 MT1]; TATA Projects Ltd-25 | 96,512.5 |
| 3S-SS-6th240 |  | Shuttering of wall upto Flight 2 | 2d | 2027-10-11 | 2027-10-13 | 3S-SS-6th225 | Carpenter [20 h]; Helper [10 h]; Physical Progress [4370 h]; Formwork [10 Sq m]; TATA Projects Ltd-25 | 11,651.6 |
| 3S-SS-6th250 |  | Casting of wall upto Flight 2 | 1d | 2027-10-13 | 2027-10-14 | 3S-SS-6th240 | Mason; Helper; Physical Progress [2180 h]; Concrete M40 [3 m3]; TATA Projects Ltd-25 | 29,601 |
| 3S-SS-6th265 |  | Shuttering of Staircase upto Flight 2 | 1d | 2027-10-14 | 2027-10-15 | 3S-SS-6th250 | Carpenter [20 h]; Helper [10 h]; Physical Progress [2180 h]; Formwork [10 Sq m]; TATA Projects Ltd-25 | 11,651.6 |
| 3S-SS-6th275 |  | Reinforcement of Staircase upto Flight 2 | 1d | 2027-10-15 | 2027-10-16 | 3S-SS-6th265 | Barbender [70 h]; Helper [40 h]; Physical Progress [2180 h]; Reinforcement Steel [1 MT1]; TATA Projects Ltd-25 | 96,512.5 |
|  | 2 | **Slab** |  | 2027-10-08 | 2027-11-05 |  |  |  |
| 3S-SS-6th230 |  | Shuttering | 4d | 2027-10-08 | 2027-10-14 | 3S-SS-6th215 | Carpenter [1180 h]; Helper [590 h]; Physical Progress [8730 h]; Formwork [706 Sq m]; TATA Projects Ltd-25 | 822,602.96 |
| 3S-SS-6th255 |  | Reinforcement Bottom Net with chairs | 2d | 2027-10-14 | 2027-10-16 | 3S-SS-6th230 | Barbender [400 h]; Helper [200 h]; Physical Progress [6550 h]; Reinforcement Steel [6 MT1]; TATA Projects Ltd-25 | 579,075 |
| 3S-SS-6th280 |  | Laying of PT Tendon | 2d | 2027-10-16 | 2027-10-19 | 3S-SS-6th255 | Physical Progress [8730 h]; TATA Projects Ltd-25 |  |
| 3S-SS-6th285 |  | Reinforcement Top Net | 2d | 2027-10-19 | 2027-10-21 | 3S-SS-6th280 | Barbender [400 h]; Helper [200 h]; Physical Progress [4370 h]; Reinforcement Steel [6 MT1]; TATA Projects Ltd-25 | 579,075 |
| 3S-SS-6th290 |  | MEP Coordination | 1d | 2027-10-21 | 2027-10-22 | 3S-SS-6th255, 3S-SS-6th270, 3S-SS-6th285, 3S-SS-6th275 | Physical Progress [2180 h]; TATA Projects Ltd-25 |  |
| 3S-SS-6th295 |  | Concrete of Slab | 1d | 2027-10-22 | 2027-10-23 | 3S-SS-6th290 | Mason [50 h]; Helper [50 h]; Physical Progress [2180 h]; Concrete M40 [176 m3]; TATA Projects Ltd-25 | 1,736,592 |
| 3S-SS-6th300 |  | Wait for Strength Gain | 6d | 2027-10-23 | 2027-11-01 | 3S-SS-6th295 | Physical Progress [13100 h]; TATA Projects Ltd-25 |  |
| 3S-SS-6th305 |  | PT Work | 4d | 2027-11-01 | 2027-11-05 | 3S-SS-6th300, 3S-SS-5th305 | PT [2 MT1]; Helper [100 h]; PT Fitter [100 h]; Physical Progress [10920 h]; TATA Projects Ltd-25 | 380,000 |
|  | 9 | **Seventh Floor** |  | 2027-10-23 | 2028-01-08 |  |  |  |
|  | 1 | **Pour 1** |  | 2027-11-26 | 2028-01-08 |  |  |  |
|  | 1 | **Column, Core Wall, Shear Wall** |  | 2027-11-26 | 2027-12-08 |  |  |  |
| 3S-SS-7th10 |  | Reinforcement | 4d | 2027-11-26 | 2027-12-01 | 3S-SS-6th130, E-GFC-ST-3S-300 | Barbender [2870 h]; Helper [1440 h]; Physical Progress [8730 h]; Reinforcement Steel [43 MT1]; TATA Projects Ltd-25 | 4,150,037.5 |
| 3S-SS-7th25 |  | LPS | 1d | 2027-12-01 | 2027-12-02 | 3S-SS-7th10 | LPS [63943 INR]; Physical Progress [2180 h]; TATA Projects Ltd-25 | 63,943 |
| 3S-SS-7th35 |  | Shuttering | 4d | 2027-12-02 | 2027-12-07 | 3S-SS-7th10, 3S-SS-7th25 | Carpenter [1750 h]; Helper [880 h]; Physical Progress [8730 h]; Formwork [1045 Sq m]; TATA Projects Ltd-25 | 1,217,592.2 |
| 3S-SS-7th60 |  | Concrete | 1d | 2027-12-07 | 2027-12-08 | 3S-SS-7th35 | Mason [50 h]; Helper [50 h]; Physical Progress [2180 h]; Concrete M40 [261 m3]; TATA Projects Ltd-25 | 2,575,287 |

| ID | WBS | Activity | Duration | Start | Finish | Predecessors | Resources | Cost |
| --- | --- | --- | --- | --- | --- | --- | --- | --- |
|  | 3 | **Staircase** |  | 2027-11-26 | 2027-12-15 |  |  |  |
| 3S-SS-7th15 |  | Reinforcement of wall upto Flight 1 | 2d | 2027-11-26 | 2027-11-29 | 3S-SS-6th130 | Barbender [70 h]; Helper [40 h]; Physical Progress [4370 h]; Reinforcement Steel [1 MT1]; TATA Projects Ltd-25 | 96,512.5 |
| 3S-SS-7th20 |  | Shuttering of wall upto Flight 1 | 2d | 2027-11-29 | 2027-12-01 | 3S-SS-7th15 | Carpenter [20 h]; Helper [10 h]; Physical Progress [4370 h]; Formwork [10 Sq m]; TATA Projects Ltd-25 | 11,651.6 |
| 3S-SS-7th30 |  | Casting of wall upto Flight 1 | 1d | 2027-12-01 | 2027-12-02 | 3S-SS-7th20 | Mason; Helper; Physical Progress [2180 h]; Concrete M40 [3 m3]; TATA Projects Ltd-25 | 29,601 |
| 3S-SS-7th40 |  | Shuttering of Staircase upto Flight 1 | 1d | 2027-12-02 | 2027-12-03 | 3S-SS-7th30 | Carpenter [20 h]; Helper [10 h]; Physical Progress [2180 h]; Formwork [10 Sq m]; TATA Projects Ltd-25 | 11,651.6 |
| 3S-SS-7th45 |  | Reinforcement of Staircase upto Flight 1 | 1d | 2027-12-03 | 2027-12-04 | 3S-SS-7th40 | Barbender [70 h]; Helper [40 h]; Physical Progress [2180 h]; Reinforcement Steel [1 MT1]; TATA Projects Ltd-25 | 96,512.5 |
| 3S-SS-7th50 |  | MEP coordination upto Flight 1 | 1d | 2027-12-04 | 2027-12-06 | 3S-SS-7th45 | Physical Progress [2180 h]; TATA Projects Ltd-25 |  |
| 3S-SS-7th55 |  | Casting of Staircase upto Flight 1 | 1d | 2027-12-06 | 2027-12-07 | 3S-SS-7th50 | Mason; Helper; Physical Progress [2180 h]; Concrete M40 [3 m3]; TATA Projects Ltd-25 | 29,601 |
| 3S-SS-7th65 |  | Reinforcement of wall upto Flight 2 | 2d | 2027-12-07 | 2027-12-09 | 3S-SS-7th55 | Barbender [70 h]; Helper [40 h]; Physical Progress [4370 h]; Reinforcement Steel [1 MT1]; TATA Projects Ltd-25 | 96,512.5 |
| 3S-SS-7th75 |  | Shuttering of wall upto Flight 2 | 2d | 2027-12-09 | 2027-12-11 | 3S-SS-7th65 | Carpenter [20 h]; Helper [10 h]; Physical Progress [4370 h]; Formwork [10 Sq m]; TATA Projects Ltd-25 | 11,651.6 |
| 3S-SS-7th80 |  | Casting of wall upto Flight 2 | 1d | 2027-12-11 | 2027-12-13 | 3S-SS-7th75 | Mason; Helper; Physical Progress [2180 h]; Concrete M40 [3 m3]; TATA Projects Ltd-25 | 29,601 |
| 3S-SS-7th90 |  | Shuttering of Staircase upto Flight 2 | 1d | 2027-12-13 | 2027-12-14 | 3S-SS-7th80 | Carpenter [20 h]; Helper [10 h]; Physical Progress [2180 h]; Formwork [10 Sq m]; TATA Projects Ltd-25 | 11,651.6 |
| 3S-SS-7th95 |  | Reinforcement of Staircase upto Flight 2 | 1d | 2027-12-14 | 2027-12-15 | 3S-SS-7th90 | Barbender [70 h]; Helper [40 h]; Physical Progress [2180 h]; Reinforcement Steel [1 MT1]; TATA Projects Ltd-25 | 96,512.5 |
|  | 2 | **Slab** |  | 2027-12-08 | 2028-01-08 |  |  |  |
| 3S-SS-7th70 |  | Shuttering | 4d | 2027-12-08 | 2027-12-13 | 3S-SS-7th60 | Carpenter [1590 h]; Helper [800 h]; Physical Progress [8730 h]; Formwork [954 Sq m]; TATA Projects Ltd-25 | 1,111,562.64 |
| 3S-SS-7th85 |  | Reinforcement Bottom Net with chairs | 3d | 2027-12-13 | 2027-12-16 | 3S-SS-7th70 | Barbender [470 h]; Helper [240 h]; Physical Progress [6550 h]; Reinforcement Steel [7 MT1]; TATA Projects Ltd-25 | 675,587.5 |
| 3S-SS-7th100 |  | Laying of PT Tendon | 3d | 2027-12-16 | 2027-12-20 | 3S-SS-7th85 | Physical Progress [8730 h]; TATA Projects Ltd-25 |  |
| 3S-SS-7th105 |  | Reinforcement Top Net | 2d | 2027-12-20 | 2027-12-22 | 3S-SS-7th100 | Barbender [470 h]; Helper [240 h]; Physical Progress [4370 h]; Reinforcement Steel [7 MT1]; TATA Projects Ltd-25 | 675,587.5 |
| 3S-SS-7th110 |  | MEP Coordination | 1d | 2027-12-22 | 2027-12-23 | 3S-SS-7th85, 3S-SS-7th95, 3S-SS-7th105 | Physical Progress [2180 h]; TATA Projects Ltd-25 |  |
| 3S-SS-7th130 |  | Concrete of Slab | 1d | 2027-12-23 | 2027-12-24 | 3S-SS-7th110 | Mason [50 h]; Helper [50 h]; Physical Progress [2180 h]; Concrete M40 [238 m3]; TATA Projects Ltd-25 | 2,348,346 |
| 3S-SS-7th135 |  | Wait for Strength Gain | 6d | 2027-12-24 | 2028-01-03 | 3S-SS-7th130 | Physical Progress [13100 h]; TATA Projects Ltd-25 |  |
| 3S-SS-7th200 |  | PT Work | 5d | 2028-01-03 | 2028-01-08 | 3S-SS-7th135, 3S-SS-6th200 | PT [3 MT1]; Helper [100 h]; PT Fitter [100 h]; Physical Progress [10920 h]; TATA Projects Ltd-25 | 570,000 |
|  | 2 | **Pour 2** |  | 2027-10-23 | 2027-12-01 |  |  |  |
|  | 1 | **Column, Core Wall, Shear Wall** |  | 2027-10-23 | 2027-11-05 |  |  |  |
| 3S-SS-7th115 |  | Reinforcement | 4d | 2027-10-23 | 2027-10-28 | 3S-SS-6th295 | Barbender [1870 h]; Helper [940 h]; Physical Progress [8730 h]; Reinforcement Steel [28 MT1]; TATA Projects Ltd-25 | 2,702,350 |
| 3S-SS-7th150 |  | LPS | 1d | 2027-10-28 | 2027-10-30 | 3S-SS-7th115 | LPS [63943 INR]; Physical Progress [2180 h]; TATA Projects Ltd-25 | 63,943 |
| 3S-SS-7th165 |  | Shuttering | 4d | 2027-10-30 | 2027-11-04 | 3S-SS-7th115, 3S-SS-7th150 | Carpenter [1140 h]; Helper [570 h]; Physical Progress [8730 h]; Formwork [680 Sq m]; TATA Projects Ltd-25 | 792,308.8 |
| 3S-SS-7th215 |  | Concrete | 1d | 2027-11-04 | 2027-11-05 | 3S-SS-7th165 | Mason [50 h]; Helper [50 h]; Physical Progress [2180 h]; Concrete M40 [170 m3]; TATA Projects Ltd-25 | 1,677,390 |

| ID | WBS | Activity | Duration | Start | Finish | Predecessors | Resources | Cost |
| --- | --- | --- | --- | --- | --- | --- | --- | --- |
|  | 3 | **Staircase - 1** |  | 2027-10-23 | 2027-11-12 |  |  |  |
| 3S-SS-7th120 |  | Reinforcement of wall upto Flight 1 | 2d | 2027-10-23 | 2027-10-26 | 3S-SS-6th295 | Barbender [70 h]; Helper [40 h]; Physical Progress [4370 h]; Reinforcement Steel [1 MT1]; TATA Projects Ltd-25 | 96,512.5 |
| 3S-SS-7th140 |  | Shuttering of wall upto Flight 1 | 2d | 2027-10-26 | 2027-10-28 | 3S-SS-7th120 | Carpenter [20 h]; Helper [10 h]; Physical Progress [4370 h]; Formwork [10 Sq m]; TATA Projects Ltd-25 | 11,651.6 |
| 3S-SS-7th155 |  | Casting of wall upto Flight 1 | 1d | 2027-10-28 | 2027-10-30 | 3S-SS-7th140 | Mason; Helper; Physical Progress [2180 h]; Concrete M40 [3 m3]; TATA Projects Ltd-25 | 29,601 |
| 3S-SS-7th170 |  | Shuttering of Staircase upto Flight 1 | 1d | 2027-10-30 | 2027-11-01 | 3S-SS-7th155 | Carpenter [20 h]; Helper [10 h]; Physical Progress [2180 h]; Formwork [10 Sq m]; TATA Projects Ltd-25 | 11,651.6 |
| 3S-SS-7th180 |  | Reinforcement of Staircase upto Flight 1 | 1d | 2027-11-01 | 2027-11-02 | 3S-SS-7th170 | Barbender [70 h]; Helper [40 h]; Physical Progress [2180 h]; Reinforcement Steel [1 MT1]; TATA Projects Ltd-25 | 96,512.5 |
| 3S-SS-7th190 |  | MEP coordination upto Flight 1 | 1d | 2027-11-02 | 2027-11-03 | 3S-SS-7th180 | Physical Progress [2180 h]; TATA Projects Ltd-25 |  |
| 3S-SS-7th205 |  | Casting of Staircase upto Flight 1 | 1d | 2027-11-03 | 2027-11-04 | 3S-SS-7th190 | Mason; Helper; Physical Progress [2180 h]; Concrete M40 [3 m3]; TATA Projects Ltd-25 | 29,601 |
| 3S-SS-7th220 |  | Reinforcement of wall upto Flight 2 | 2d | 2027-11-04 | 2027-11-06 | 3S-SS-7th205 | Barbender [70 h]; Helper [40 h]; Physical Progress [4370 h]; Reinforcement Steel [1 MT1]; TATA Projects Ltd-25 | 96,512.5 |
| 3S-SS-7th235 |  | Shuttering of wall upto Flight 2 | 2d | 2027-11-06 | 2027-11-09 | 3S-SS-7th220 | Carpenter [20 h]; Helper [10 h]; Physical Progress [4370 h]; Formwork [10 Sq m]; TATA Projects Ltd-25 | 11,651.6 |
| 3S-SS-7th245 |  | Casting of wall upto Flight 2 | 1d | 2027-11-09 | 2027-11-10 | 3S-SS-7th235 | Mason; Helper; Physical Progress [2180 h]; Concrete M40 [3 m3]; TATA Projects Ltd-25 | 29,601 |
| 3S-SS-7th260 |  | Shuttering of Staircase upto Flight 2 | 1d | 2027-11-10 | 2027-11-11 | 3S-SS-7th245 | Carpenter [20 h]; Helper [10 h]; Physical Progress [2180 h]; Formwork [10 Sq m]; TATA Projects Ltd-25 | 11,651.6 |
| 3S-SS-7th270 |  | Reinforcement of Staircase upto Flight 2 | 1d | 2027-11-11 | 2027-11-12 | 3S-SS-7th260 | Barbender [70 h]; Helper [40 h]; Physical Progress [2180 h]; Reinforcement Steel [1 MT1]; TATA Projects Ltd-25 | 96,512.5 |
|  | 4 | **Staircase - 2** |  | 2027-10-23 | 2027-11-12 |  |  |  |
| 3S-SS-7th125 |  | Reinforcement of wall upto Flight 1 | 2d | 2027-10-23 | 2027-10-26 | 3S-SS-6th295 | Barbender [70 h]; Helper [40 h]; Physical Progress [4370 h]; Reinforcement Steel [1 MT1]; TATA Projects Ltd-25 | 96,512.5 |
| 3S-SS-7th145 |  | Shuttering of wall upto Flight 1 | 2d | 2027-10-26 | 2027-10-28 | 3S-SS-7th125 | Carpenter [20 h]; Helper [10 h]; Physical Progress [4370 h]; Formwork [10 Sq m]; TATA Projects Ltd-25 | 11,651.6 |
| 3S-SS-7th160 |  | Casting of wall upto Flight 1 | 1d | 2027-10-28 | 2027-10-30 | 3S-SS-7th145 | Mason; Helper; Physical Progress [2180 h]; Concrete M40 [3 m3]; TATA Projects Ltd-25 | 29,601 |
| 3S-SS-7th175 |  | Shuttering of Staircase upto Flight 1 | 1d | 2027-10-30 | 2027-11-01 | 3S-SS-7th160 | Carpenter [20 h]; Helper [10 h]; Physical Progress [2180 h]; Formwork [10 Sq m]; TATA Projects Ltd-25 | 11,651.6 |
| 3S-SS-7th185 |  | Reinforcement of Staircase upto Flight 1 | 1d | 2027-11-01 | 2027-11-02 | 3S-SS-7th175 | Barbender [70 h]; Helper [40 h]; Physical Progress [2180 h]; Reinforcement Steel [1 MT1]; TATA Projects Ltd-25 | 96,512.5 |
| 3S-SS-7th195 |  | MEP coordination upto Flight 1 | 1d | 2027-11-02 | 2027-11-03 | 3S-SS-7th185 | Physical Progress [2180 h]; TATA Projects Ltd-25 |  |
| 3S-SS-7th210 |  | Casting of Staircase upto Flight 1 | 1d | 2027-11-03 | 2027-11-04 | 3S-SS-7th195 | Mason; Helper; Physical Progress [2180 h]; Concrete M40 [3 m3]; TATA Projects Ltd-25 | 29,601 |
| 3S-SS-7th225 |  | Reinforcement of wall upto Flight 2 | 2d | 2027-11-04 | 2027-11-06 | 3S-SS-7th210 | Barbender [70 h]; Helper [40 h]; Physical Progress [4370 h]; Reinforcement Steel [1 MT1]; TATA Projects Ltd-25 | 96,512.5 |
| 3S-SS-7th240 |  | Shuttering of wall upto Flight 2 | 2d | 2027-11-06 | 2027-11-09 | 3S-SS-7th225 | Carpenter [20 h]; Helper [10 h]; Physical Progress [4370 h]; Formwork [10 Sq m]; TATA Projects Ltd-25 | 11,651.6 |
| 3S-SS-7th250 |  | Casting of wall upto Flight 2 | 1d | 2027-11-09 | 2027-11-10 | 3S-SS-7th240 | Mason; Helper; Physical Progress [2180 h]; Concrete M40 [3 m3]; TATA Projects Ltd-25 | 29,601 |
| 3S-SS-7th265 |  | Shuttering of Staircase upto Flight 2 | 1d | 2027-11-10 | 2027-11-11 | 3S-SS-7th250 | Carpenter [20 h]; Helper [10 h]; Physical Progress [2180 h]; Formwork [10 Sq m]; TATA Projects Ltd-25 | 11,651.6 |
| 3S-SS-7th275 |  | Reinforcement of Staircase upto Flight 2 | 1d | 2027-11-11 | 2027-11-12 | 3S-SS-7th265 | Barbender [70 h]; Helper [40 h]; Physical Progress [2180 h]; Reinforcement Steel [1 MT1]; TATA Projects Ltd-25 | 96,512.5 |

| ID | WBS | Activity | Duration | Start | Finish | Predecessors | Calendar | Resources | Cost |
| --- | --- | --- | --- | --- | --- | --- | --- | --- | --- |
|  | 2 | **Slab** |  | 2027-11-05 | 2027-12-01 |  |  |  |  |
| 3S-SS-7th230 |  | Shuttering | 4d | 2027-11-05 | 2027-11-10 | 3S-SS-7th215 |  | Carpenter [1040 h]; Helper [520 h]; Physical Progress [8730 h]; Formwork [620 Sq m]; TATA Projects Ltd-25 | 722,399.2 |
| 3S-SS-7th255 |  | Reinforcement Bottom Net with chairs | 2d | 2027-11-10 | 2027-11-12 | 3S-SS-7th230 |  | Barbender [340 h]; Helper [170 h]; Physical Progress [6550 h]; Reinforcement Steel [5 MT1]; TATA Projects Ltd-25 | 482,562.5 |
| 3S-SS-7th280 |  | Laying of PT Tendon | 2d | 2027-11-12 | 2027-11-15 | 3S-SS-7th255 |  | Physical Progress [8730 h]; TATA Projects Ltd-25 |  |
| 3S-SS-7th285 |  | Reinforcement Top Net | 2d | 2027-11-15 | 2027-11-17 | 3S-SS-7th280 |  | Barbender [340 h]; Helper [170 h]; Physical Progress [4370 h]; Reinforcement Steel [5 MT1]; TATA Projects Ltd-25 | 482,562.5 |
| 3S-SS-7th290 |  | MEP Coordination | 1d | 2027-11-17 | 2027-11-18 | 3S-SS-7th255, 3S-SS-7th270, 3S-SS-7th285, 3S-SS-7th275 |  | Physical Progress [2180 h]; TATA Projects Ltd-25 |  |
| 3S-SS-7th295 |  | Concrete of Slab | 1d | 2027-11-18 | 2027-11-19 | 3S-SS-7th290 |  | Mason [50 h]; Helper [50 h]; Physical Progress [2180 h]; Concrete M40 [155 m3]; TATA Projects Ltd-25 | 1,529,385 |
| 3S-SS-7th300 |  | Wait for Strength Gain | 6d | 2027-11-19 | 2027-11-26 | 3S-SS-7th295 |  | Physical Progress [13100 h]; TATA Projects Ltd-25 |  |
| 3S-SS-7th305 |  | PT Work | 4d | 2027-11-26 | 2027-12-01 | 3S-SS-7th300, 3S-SS-6th305 |  | PT [2 MT1]; Helper [100 h]; PT Fitter [100 h]; Physical Progress [10920 h]; TATA Projects Ltd-25 | 380,000 |
|  | 14 | **Roof Top** |  | 2027-11-19 | 2028-01-10 |  |  |  |  |
|  | 1 | **Column, Shear Wall** |  | 2027-11-19 | 2027-12-02 |  |  |  |  |
| 3S-SS-Roof10 |  | Reinforcement | 5d | 2027-11-19 | 2027-11-25 | 3S-SS-7th295, E-GFC-ST-3S-270 |  | Barbender [140 h]; Helper [70 h]; Physical Progress [15280 h]; Reinforcement Steel [2 MT1]; TATA Projects Ltd-25 | 193,025 |
| 3S-SS-Roof15 |  | Shuttering | 5d | 2027-11-25 | 2027-12-01 | 3S-SS-Roof10 |  | Carpenter [30 h]; Helper [20 h]; Physical Progress [15280 h]; Formwork [15 Sq m]; TATA Projects Ltd-25 | 17,477.4 |
| 3S-SS-Roof20 |  | Concrete | 1d | 2027-12-01 | 2027-12-02 | 3S-SS-Roof15 |  | Mason [50 h]; Helper [50 h]; Physical Progress [2180 h]; Concrete M40 [20 m3]; TATA Projects Ltd-25 | 197,340 |
|  | 2 | **Slab** |  | 2027-12-02 | 2028-01-10 |  |  |  |  |
| 3S-SS-Roof25 |  | Shuttering | 7d | 2027-12-02 | 2027-12-10 | 3S-SS-Roof20 |  | Carpenter [10 h]; Helper [10 h]; Physical Progress [21840 h]; Formwork [5 Sq m]; TATA Projects Ltd-25 | 5,825.8 |
| 3S-SS-Roof30 |  | Reinforcement | 7d | 2027-12-10 | 2027-12-18 | 3S-SS-Roof25 |  | Barbender [340 h]; Helper [170 h]; Physical Progress [19650 h]; Reinforcement Steel [5 MT1]; TATA Projects Ltd-25 | 482,562.5 |
| 3S-SS-Roof35 |  | MEP Coordination | 1d | 2027-12-18 | 2027-12-20 | 3S-SS-Roof30 |  | Physical Progress [2180 h]; TATA Projects Ltd-25 |  |
| 3S-SS-Roof40 |  | Concrete of Slab | 1d | 2028-01-08 | 2028-01-10 | 3S-SS-Roof35, 3S-SS-7th200 |  | Mason [50 h]; Helper [50 h]; Physical Progress [2180 h]; Concrete M40 [10 m3]; TATA Projects Ltd-25 | 98,670 |
|  | 4 | **Wet finishes, MEP, ID** |  | 2027-04-23 | 2029-04-19 |  |  |  |  |
|  | 1 | **Ground Floor** |  | 2027-04-23 | 2029-02-15 |  |  |  |  |
|  | 1 | **Wet Finishes** |  | 2027-04-23 | 2027-08-24 |  |  |  |  |
| 3S-WMI-GF10 |  | Deshuttering | 4d | 2027-04-23 | 2027-04-28 | 3S-SS-1st.520 | CSD-LKO Calender (6 day + Holiday)-25 | Physical Progress [1020 h]; TATA Projects Ltd-25 |  |
| 3S-WMI-GF15 |  | Brickwork/Blockwork | 30d | 2027-04-28 | 2027-06-03 | 3S-WMI-GF10, E-GFC-AR-3S-45 | CSD-LKO Calender (6 day + Holiday)-25 | Masonry [446 CuM]; Mason [2980 h]; Helper [1490 h]; Physical Progress [7590 h]; TATA Projects Ltd-25 | 4,252,770.56 |
| 3S-WMI-GF55 |  | Waterproofing of Toilets, Balcony & Kitchen | 35d | 2027-06-03 | 2027-07-14 | 3S-WMI-GF15 | CSD-LKO Calender (6 day + Holiday)-25 | Waterproofing [8564838 INR]; Waterprrofing Mason [8160 h]; Helper [4080 h]; Physical Progress [3790 h]; TATA Projects Ltd-25 | 8,564,838 |
| 3S-WMI-GF95 |  | Plaster | 35d | 2027-07-14 | 2027-08-24 | 3S-WMI-GF30, 3S-WMI-GF75, 3S-WMI-GF80, 3S-WMI-GF55 | CSD-LKO Calender (6 day + Holiday)-25 | Plaster [7060 Sqr Mtr]; Mason [4710 h]; Helper [2360 h]; Physical Progress [3790 h]; TATA Projects Ltd-25 | 3,910,604.6 |

| ID | WBS | Activity | Duration | Start | Finish | Predecessors | Calendar | Resources | Cost |
| --- | --- | --- | --- | --- | --- | --- | --- | --- | --- |
|  | 5 | **MEP** |  | 2027-04-28 | 2029-02-08 |  |  |  |  |
|  | 2 | **HVAC** |  | 2027-06-03 | 2028-11-15 |  |  |  |  |
|  | 1 | **1st Fix** |  | 2027-06-03 | 2027-09-23 |  |  |  |  |
| 3S-WMI-GF50 |  | Duct Support Fabrication | 35d | 2027-06-03 | 2027-07-14 | 3S-WMI-GF15, E-GFC-MEP-3S-260 | CSD-LKO Calender (6 day + Holiday)-25 | Physical Progress [3790 h]; HVAC [222862 INR]; TATA Projects Ltd-25 | 222,862 |
| 3S-WMI-GF100 |  | Installing duct hangers and supports | 30d | 2027-07-14 | 2027-08-18 | 3S-WMI-GF50, E-GFC-MEP-3S-260 | CSD-LKO Calender (6 day + Holiday)-25 | Physical Progress [2530 h]; HVAC [445725 INR]; TATA Projects Ltd-25 | 445,725 |
| 3S-WMI-GF130 |  | Laying concealed/exposed refrigerant piping | 30d | 2027-08-18 | 2027-09-23 | 3S-WMI-GF100, E-GFC-MEP-3S-260 | CSD-LKO Calender (6 day + Holiday)-25 | Physical Progress [3790 h]; HVAC [111431 INR]; TATA Projects Ltd-25 | 111,431 |
| 3S-WMI-GF135 |  | Laying concealed/exposed drain piping | 30d | 2027-08-18 | 2027-09-23 | 3S-WMI-GF100, E-GFC-MEP-3S-260 | CSD-LKO Calender (6 day + Holiday)-25 | Physical Progress [2530 h]; HVAC [668587 INR]; TATA Projects Ltd-25 | 668,587 |
|  | 2 | **2nd Fix** |  | 2027-08-18 | 2028-01-24 |  |  |  |  |
| 3S-WMI-GF140 |  | Duct installation | 20d | 2027-08-18 | 2027-09-11 | 3S-WMI-GF100 | CSD-LKO Calender (6 day + Holiday)-25 | Physical Progress [3790 h]; HVAC [1671468 INR]; TATA Projects Ltd-25 | 1,671,468 |
| 3S-WMI-GF170 |  | Insulation of ducts (thermal/acoustic) | 10d | 2027-09-11 | 2027-09-23 | 3S-WMI-GF140 | CSD-LKO Calender (6 day + Holiday)-25 | Physical Progress [1530 h]; HVAC [1002881 INR]; TATA Projects Ltd-25 | 1,002,881 |
| 3S-WMI-GF185 |  | Installation of chilled water piping / VRF piping | 20d | 2027-09-23 | 2027-10-19 | 3S-WMI-GF170 | CSD-LKO Calender (6 day + Holiday)-25 | Physical Progress [1530 h]; HVAC [2228625 INR]; TATA Projects Ltd-25 | 2,228,625 |
| 3S-WMI-GF220 |  | Installation of indoor units including AHU, FCU | 60d | 2027-10-19 | 2027-12-30 | 3S-WMI-GF185, 3S-WMI-GF130, 3S-WMI-GF135 | CSD-LKO Calender (6 day + Holiday)-25 | Physical Progress [11380 h]; HVAC [2005762 INR]; TATA Projects Ltd-25 | 2,005,762 |
| 3S-WMI-GF240 |  | Connecting refrigerant and drain piping to indoor units | 20d | 2027-12-30 | 2028-01-24 | 3S-WMI-GF220 | CSD-LKO Calender (6 day + Holiday)-25 | Physical Progress [1530 h]; HVAC [557156 INR]; TATA Projects Ltd-25 | 557,156 |
|  | 3 | **Final Fix** |  | 2028-09-04 | 2028-11-15 |  |  |  |  |
| 3S-WMI-GF260 |  | Installing grills, diffusers, dampers | 30d | 2028-09-04 | 2028-10-10 | 3S-WMI-GF255 | CSD-LKO Calender (6 day + Holiday)-25 | Physical Progress [1530 h]; HVAC [1114312 INR]; TATA Projects Ltd-25 | 1,114,312 |
| 3S-WMI-GF285 |  | Installation of thermostats and control panels | 30d | 2028-10-11 | 2028-11-15 | 3S-WMI-GF260, 3S-WMI-GF275, 3S-WMI-GF240 | CSD-LKO Calender (6 day + Holiday)-25 | Physical Progress [1530 h]; HVAC [557156 INR]; TATA Projects Ltd-25 | 557,156 |
|  | 1 | **Electrical** |  | 2027-04-28 | 2028-12-20 |  |  |  |  |
|  | 1 | **1st Fix** |  | 2027-04-28 | 2027-07-14 |  |  |  |  |
| 3S-WMI-GF20 |  | Slab Conduiting | 35d | 2027-04-28 | 2027-06-09 | 3S-WMI-GF10, E-GFC-MEP-3S-260 | CSD-LKO Calender (6 day + Holiday)-25 | Physical Progress [6320 h]; Electrical [1247377 INR]; TATA Projects Ltd-25 | 1,247,377 |
| 3S-WMI-GF30 |  | Wall Conduiting | 30d | 2027-06-03 | 2027-07-08 | 3S-WMI-GF15, E-GFC-MEP-3S-260 | CSD-LKO Calender (6 day + Holiday)-25 | Physical Progress [2530 h]; Electrical [623688 INR]; TATA Projects Ltd-25 | 623,688 |
| 3S-WMI-GF75 |  | Installing back boxes for switches, sockets | 5d | 2027-07-08 | 2027-07-14 | 3S-WMI-GF30, 3S-WMI-GF20, E-GFC-MEP-3S-260 | CSD-LKO Calender (6 day + Holiday)-25 | Physical Progress [1280 h]; Electrical [374213 INR]; TATA Projects Ltd-25 | 374,213 |
|  | 2 | **2nd Fix** |  | 2027-08-24 | 2028-03-06 |  |  |  |  |
| 3S-WMI-GF115 |  | Cable tray laying | 25d | 2027-08-24 | 2027-09-23 | 3S-WMI-GF95 | CSD-LKO Calender (6 day + Holiday)-25 | Physical Progress [6320 h]; Electrical [498951 INR]; TATA Projects Ltd-25 | 498,951 |
| 3S-WMI-GF155 |  | Cabling & Wire Pulling | 60d | 2027-09-23 | 2027-12-06 | 3S-WMI-GF115 | CSD-LKO Calender (6 day + Holiday)-25 | Physical Progress [11380 h]; Electrical [2494753 INR]; TATA Projects Ltd-25 | 2,494,753 |
| 3S-WMI-GF205 |  | DB fixing and connecting | 35d | 2027-12-06 | 2028-01-18 | 3S-WMI-GF155 | CSD-LKO Calender (6 day + Holiday)-25 | Physical Progress [3790 h]; Electrical [374213 INR]; TATA Projects Ltd-25 | 374,213 |
| 3S-WMI-GF210 |  | Floor Rising Main Installation | 20d | 2027-12-06 | 2027-12-30 | 3S-WMI-GF155 | CSD-LKO Calender (6 day + Holiday)-25 | Physical Progress [1280 h]; Electrical [1746327 INR]; TATA Projects Ltd-25 | 1,746,327 |
| 3S-WMI-GF225 |  | Floor/Distribution Panel Installation | 20d | 2028-01-18 | 2028-02-11 | 3S-WMI-GF205 | CSD-LKO Calender (6 day + Holiday)-25 | Physical Progress [1280 h]; Electrical [997901 INR]; TATA Projects Ltd-25 | 997,901 |
| 3S-WMI-GF235 |  | Equipment Earthing | 20d | 2028-02-11 | 2028-03-06 | 3S-WMI-GF225, 3S-WMI-GF210 | CSD-LKO Calender (6 day + Holiday)-25 | Physical Progress [2530 h]; Electrical [374213 INR]; TATA Projects Ltd-25 | 374,213 |

| ID | WBS | Activity | Duration | Start | Finish | Predecessors | Calendar | Resources | Cost |
| --- | --- | --- | --- | --- | --- | --- | --- | --- | --- |
|  | 3 | **Final Fix** |  | 2028-10-11 | 2028-12-20 |  |  |  |  |
| 3S-WMI-GF280 |  | Switches & Socket | 30d | 2028-10-11 | 2028-11-15 | 3S-WMI-GF275 | CSD-LKO Calender (6 day + Holiday)-25 | Physical Progress [5060 h]; Electrical [1247377 INR]; TATA Projects Ltd-25 | 1,247,377 |
| 3S-WMI-GF335 |  | Light Fixtures | 30d | 2028-11-16 | 2028-12-20 | 3S-WMI-GF280, 3S-WMI-GF235 | CSD-LKO Calender (6 day + Holiday)-25 | Physical Progress [3790 h]; Electrical [1871065 INR]; TATA Projects Ltd-25 | 1,871,065 |
|  | 3 | **Plumbing** |  | 2027-06-03 | 2028-12-02 |  |  |  |  |
|  | 1 | **1st Fix** |  | 2027-06-03 | 2027-11-06 |  |  |  |  |
| 3S-WMI-GF35 |  | Fixing pipe supports and clamps | 35d | 2027-06-03 | 2027-07-14 | 3S-WMI-GF15, E-GFC-MEP-3S-260 | CSD-LKO Calender (6 day + Holiday)-25 | Physical Progress [2530 h]; Plumbing [400934 INR]; TATA Projects Ltd-25 | 400,934 |
| 3S-WMI-GF60 |  | Laying water supply pipes (hot & cold) | 35d | 2027-07-14 | 2027-08-24 | 3S-WMI-GF35, E-GFC-MEP-3S-260 | CSD-LKO Calender (6 day + Holiday)-25 | Physical Progress [3790 h]; Plumbing [801867 INR]; TATA Projects Ltd-25 | 801,867 |
| 3S-WMI-GF65 |  | Laying drainage pipes (soil, waste, vent) | 35d | 2027-07-14 | 2027-08-24 | 3S-WMI-GF35, E-GFC-MEP-3S-260 | CSD-LKO Calender (6 day + Holiday)-25 | Physical Progress [3790 h]; Plumbing [801867 INR]; TATA Projects Ltd-25 | 801,867 |
| 3S-WMI-GF70 |  | Installation of plumbing fixture base supports (WC frames, sink brackets) | 30d | 2027-08-24 | 2027-09-29 | 3S-WMI-GF65, E-GFC-MEP-3S-260 | CSD-LKO Calender (6 day + Holiday)-25 | Physical Progress [1530 h]; Plumbing [400934 INR]; TATA Projects Ltd-25 | 400,934 |
| 3S-WMI-GF85 |  | Pressure testing of water supply lines | 25d | 2027-09-29 | 2027-11-01 | 3S-WMI-GF60, 3S-WMI-GF65, 3S-WMI-GF70, E-GFC-MEP-3S-260 | CSD-LKO Calender (6 day + Holiday)-25 | Physical Progress [1770 h]; Plumbing [80187 INR]; TATA Projects Ltd-25 | 80,187 |
| 3S-WMI-GF90 |  | Installation of concealed parts of toilet fixtures | 30d | 2027-09-29 | 2027-11-06 | 3S-WMI-GF70, E-GFC-MEP-3S-260 | CSD-LKO Calender (6 day + Holiday)-25 | Physical Progress [2530 h]; Plumbing [400934 INR]; TATA Projects Ltd-25 | 400,934 |
|  | 2 | **2nd FIx** |  | 2027-11-01 | 2028-01-24 |  |  |  |  |
| 3S-WMI-GF110 |  | Insulation of hot water pipes (if applicable) | 30d | 2027-11-01 | 2027-12-06 | 3S-WMI-GF85 | CSD-LKO Calender (6 day + Holiday)-25 | Physical Progress [1530 h]; Plumbing [400934 INR]; TATA Projects Ltd-25 | 400,934 |
| 3S-WMI-GF120 |  | Installation of vertical risers and main distribution lines | 35d | 2027-11-06 | 2027-12-17 | 3S-WMI-GF95, 3S-WMI-GF85, 3S-WMI-GF90 | CSD-LKO Calender (6 day + Holiday)-25 | Physical Progress [5060 h]; Plumbing [801867 INR]; TATA Projects Ltd-25 | 801,867 |
| 3S-WMI-GF145 |  | Testing drainage lines for leakage/blockage | 30d | 2027-12-06 | 2028-01-12 | 3S-WMI-GF70, 3S-WMI-GF110 | CSD-LKO Calender (6 day + Holiday)-25 | Physical Progress [1530 h]; Plumbing [80187 INR]; TATA Projects Ltd-25 | 80,187 |
| 3S-WMI-GF160 |  | Fixing floor traps and gully traps | 30d | 2027-12-17 | 2028-01-24 | 3S-WMI-GF120 | CSD-LKO Calender (6 day + Holiday)-25 | Physical Progress [1530 h]; Plumbing [240560 INR]; TATA Projects Ltd-25 | 240,560 |
|  | 3 | **Final FIx** |  | 2028-10-11 | 2028-12-02 |  |  |  |  |
| 3S-WMI-GF290 |  | Installation of sanitary fixtures (WC, washbasins, urinals, sinks) | 10d | 2028-10-11 | 2028-10-23 | 3S-WMI-GF275, 3S-WMI-GF145, 3S-WMI-GF160 | CSD-LKO Calender (6 day + Holiday)-25 | Physical Progress [2530 h]; Plumbing [1603734 INR]; TATA Projects Ltd-25 | 1,603,734 |
| 3S-WMI-GF320 |  | Installation of CP fittings (taps, mixers, showers, health faucets) | 10d | 2028-10-24 | 2028-11-03 | 3S-WMI-GF290, 3S-WMI-GF275 | CSD-LKO Calender (6 day + Holiday)-25 | Physical Progress [2530 h]; Plumbing [801867 INR]; TATA Projects Ltd-25 | 801,867 |
| 3S-WMI-GF325 |  | Connection of appliances | 25d | 2028-11-04 | 2028-12-02 | 3S-WMI-GF320 | CSD-LKO Calender (6 day + Holiday)-25 | Physical Progress [1770 h]; Plumbing [400934 INR]; TATA Projects Ltd-25 | 400,934 |
|  | 4 | **Firefighting** |  | 2027-06-03 | 2028-12-27 |  |  |  |  |
|  | 1 | **1st Fix** |  | 2027-06-03 | 2027-09-29 |  |  |  |  |
| 3S-WMI-GF40 |  | Fixing pipe supports and hangers | 35d | 2027-06-03 | 2027-07-14 | 3S-WMI-GF15, E-GFC-MEP-3S-260 | CSD-LKO Calender (6 day + Holiday)-25 | Physical Progress [2530 h]; Firefighting [292135 INR]; TATA Projects Ltd-25 | 292,135 |
| 3S-WMI-GF105 |  | Laying branch piping | 35d | 2027-07-14 | 2027-08-24 | 3S-WMI-GF40, E-GFC-MEP-3S-260 | CSD-LKO Calender (6 day + Holiday)-25 | Physical Progress [3790 h]; Firefighting [626004 INR]; TATA Projects Ltd-25 | 626,004 |
| 3S-WMI-GF150 |  | Hydrostatic pressure testing of piping | 30d | 2027-08-24 | 2027-09-29 | 3S-WMI-GF105, E-GFC-MEP-3S-260 | CSD-LKO Calender (6 day + Holiday)-25 | Physical Progress [1530 h]; Firefighting [83467 INR]; TATA Projects Ltd-25 | 83,467 |

| ID | WBS | Activity | Duration | Start | Finish | Predecessors | Calendar | Resources | Cost |
| --- | --- | --- | --- | --- | --- | --- | --- | --- | --- |
|  | 2 | **2nd Fix** |  | 2027-09-29 | 2027-12-23 |  |  |  |  |
| 3S-WMI-GF175 |  | Installation of vertical risers and distribution piping in shafts | 35d | 2027-09-29 | 2027-11-12 | 3S-WMI-GF95, 3S-WMI-GF150 | CSD-LKO Calender (6 day + Holiday)-25 | Physical Progress [6320 h]; Firefighting [834672 INR]; TATA Projects Ltd-25 | 834,672 |
| 3S-WMI-GF180 |  | Painting/insulation of exposed fire pipes | 30d | 2027-09-29 | 2027-11-06 | 3S-WMI-GF150 | CSD-LKO Calender (6 day + Holiday)-25 | Physical Progress [2530 h]; Firefighting [41734 INR]; TATA Projects Ltd-25 | 41,734 |
| 3S-WMI-GF190 |  | Testing risers and branch lines for leakage | 30d | 2027-11-06 | 2027-12-11 | 3S-WMI-GF180 | CSD-LKO Calender (6 day + Holiday)-25 | Physical Progress [1530 h]; Firefighting [83467 INR]; TATA Projects Ltd-25 | 83,467 |
| 3S-WMI-GF200 |  | Installation of sprinkler branch lines in ceilings | 35d | 2027-11-12 | 2027-12-23 | 3S-WMI-GF175 | CSD-LKO Calender (6 day + Holiday)-25 | Physical Progress [6320 h]; Firefighting [626004 INR]; TATA Projects Ltd-25 | 626,004 |
|  | 3 | **Final FIx** |  | 2028-10-11 | 2028-12-27 |  |  |  |  |
| 3S-WMI-GF295 |  | Installation of hydrant accessories (valves, hose reels, cabinets) | 25d | 2028-10-11 | 2028-11-09 | 3S-WMI-GF275 | CSD-LKO Calender (6 day + Holiday)-25 | Physical Progress [2530 h]; Firefighting [417336 INR]; TATA Projects Ltd-25 | 417,336 |
| 3S-WMI-GF300 |  | Installation of portable fire extinguishers | 30d | 2028-10-11 | 2028-11-15 | 3S-WMI-GF275 | CSD-LKO Calender (6 day + Holiday)-25 | Physical Progress [1530 h]; Firefighting [41734 INR]; TATA Projects Ltd-25 | 41,734 |
| 3S-WMI-GF340 |  | Installation of sprinkler heads, nozzles, and final alignment | 35d | 2028-11-16 | 2028-12-27 | 3S-WMI-GF275, 3S-WMI-GF305, 3S-WMI-GF200 | CSD-LKO Calender (6 day + Holiday)-25 | Physical Progress [11380 h]; Firefighting [626004 INR]; TATA Projects Ltd-25 | 626,004 |
| 3S-WMI-GF345 |  | Integration with fire alarm system | 20d | 2028-11-16 | 2028-12-08 | 3S-WMI-GF300 | CSD-LKO Calender (6 day + Holiday)-25 | Physical Progress [5060 h]; Firefighting [208668 INR]; TATA Projects Ltd-25 | 208,668 |
|  | 5 | **ELV** |  | 2027-04-28 | 2029-01-09 |  |  |  |  |
|  | 1 | **1st Fix** |  | 2027-04-28 | 2027-07-14 |  |  |  |  |
| 3S-WMI-GF25 |  | Slab Conduiting | 35d | 2027-04-28 | 2027-06-09 | 3S-WMI-GF10, E-GFC-MEP-3S-260 | CSD-LKO Calender (6 day + Holiday)-25 | Physical Progress [6320 h]; ELV [234433 INR]; TATA Projects Ltd-25 | 234,433 |
| 3S-WMI-GF45 |  | Wall Conduiting | 30d | 2027-06-03 | 2027-07-08 | 3S-WMI-GF15, E-GFC-MEP-3S-260 | CSD-LKO Calender (6 day + Holiday)-25 | Physical Progress [2530 h]; ELV [100471 INR]; TATA Projects Ltd-25 | 100,471 |
| 3S-WMI-GF80 |  | Installing back boxes for switches, sockets | 5d | 2027-07-08 | 2027-07-14 | 3S-WMI-GF45, 3S-WMI-GF25, E-GFC-MEP-3S-260 | CSD-LKO Calender (6 day + Holiday)-25 | Physical Progress [1280 h]; ELV [167452 INR]; TATA Projects Ltd-25 | 167,452 |
|  | 2 | **2nd Fix** |  | 2027-08-24 | 2028-03-18 |  |  |  |  |
| 3S-WMI-GF125 |  | Cable tray installation | 35d | 2027-08-24 | 2027-10-06 | 3S-WMI-GF95 | CSD-LKO Calender (6 day + Holiday)-25 | Physical Progress [6320 h]; ELV [167452 INR]; TATA Projects Ltd-25 | 167,452 |
| 3S-WMI-GF165 |  | Cabeling of ELV cable - IT/Fire Alarm/Public Address | 45d | 2027-10-06 | 2027-11-30 | 3S-WMI-GF125 | CSD-LKO Calender (6 day + Holiday)-25 | Physical Progress [11380 h]; ELV [401885 INR]; TATA Projects Ltd-25 | 401,885 |
| 3S-WMI-GF195 |  | ELV Rack Installation | 30d | 2027-11-30 | 2028-01-06 | 3S-WMI-GF165 | CSD-LKO Calender (6 day + Holiday)-25 | Physical Progress [2530 h]; ELV [167452 INR]; TATA Projects Ltd-25 | 167,452 |
| 3S-WMI-GF215 |  | Termination of cables at junction boxes, patch panels, and control panels | 35d | 2028-01-06 | 2028-02-17 | 3S-WMI-GF195 | CSD-LKO Calender (6 day + Holiday)-25 | Physical Progress [7590 h]; ELV [167452 INR]; TATA Projects Ltd-25 | 167,452 |
| 3S-WMI-GF230 |  | Fixing devices like CCTV camera bases, card reader bases, smoke detector bases, PA Bases, Wifi Bases | 25d | 2028-02-17 | 2028-03-18 | 3S-WMI-GF215 | CSD-LKO Calender (6 day + Holiday)-25 | Physical Progress [1020 h]; ELV [334904 INR]; TATA Projects Ltd-25 | 334,904 |
|  | 3 | **Final Fix** |  | 2028-11-16 | 2029-01-09 |  |  |  |  |
| 3S-WMI-GF350 |  | Installation of data and Voice Faceplate | 25d | 2028-11-16 | 2028-12-14 | 3S-WMI-GF275, 3S-WMI-GF305, 3S-WMI-GF230 | CSD-LKO Calender (6 day + Holiday)-25 | Physical Progress [3790 h]; ELV [167452 INR]; TATA Projects Ltd-25 | 167,452 |
| 3S-WMI-GF355 |  | Installation of Camera & Wifi | 30d | 2028-11-16 | 2028-12-20 | 3S-WMI-GF275, 3S-WMI-GF305 | CSD-LKO Calender (6 day + Holiday)-25 | Physical Progress [3790 h]; ELV [167452 INR]; TATA Projects Ltd-25 | 167,452 |
| 3S-WMI-GF360 |  | Installation of fire alarm devices + Public Address | 15d | 2028-11-16 | 2028-12-02 | 3S-WMI-GF275, 3S-WMI-GF305 | CSD-LKO Calender (6 day + Holiday)-25 | Physical Progress [3790 h]; ELV [200942 INR]; TATA Projects Ltd-25 | 200,942 |
| 3S-WMI-GF380 |  | Installation of Active System | 15d | 2028-12-04 | 2028-12-20 | 3S-WMI-GF360 | CSD-LKO Calender (6 day + Holiday)-25 | Physical Progress [3790 h]; ELV [334904 INR]; TATA Projects Ltd-25 | 334,904 |
| 3S-WMI-GF385 |  | Fire Panel Intallation & Integration | 25d | 2028-12-04 | 2029-01-03 | 3S-WMI-GF360 | CSD-LKO Calender (6 day + Holiday)-25 | Physical Progress [6320 h]; ELV [167452 INR]; TATA Projects Ltd-25 | 167,452 |
| 3S-WMI-GF390 |  | Installation & Integration of Audio Visual System | 25d | 2028-12-04 | 2029-01-03 | 3S-WMI-GF360 | CSD-LKO Calender (6 day + Holiday)-25 | Physical Progress [6320 h]; ELV [167452 INR]; TATA Projects Ltd-25 | 167,452 |
| 3S-WMI-GF395 |  | Installation & Integration of Access Control | 25d | 2028-12-04 | 2029-01-03 | 3S-WMI-GF360 | CSD-LKO Calender (6 day + Holiday)-25 | Physical Progress [6320 h]; ELV [167452 INR]; TATA Projects Ltd-25 | 167,452 |
| 3S-WMI-GF400 |  | Integration of Active components | 15d | 2028-12-21 | 2029-01-09 | 3S-WMI-GF380 | CSD-LKO Calender (6 day + Holiday)-25 | Physical Progress [3790 h]; ELV [66981 INR]; TATA Projects Ltd-25 | 66,981 |

| ID | WBS | Activity | Duration | Start | Finish | Predecessors | Calendar | Resources | Cost |
| --- | --- | --- | --- | --- | --- | --- | --- | --- | --- |
|  | 6 | **Kitchen** |  | 2028-10-11 | 2029-02-08 |  |  |  |  |
| 3S-WMI-GF315 |  | Counters & Cabinet | 20d | 2028-10-11 | 2028-11-03 | 3S-WMI-GF275, E-GFC-Misc-Kitchen-35 | CSD-LKO Calender (6 day + Holiday)-25 | Physical Progress [5060 h]; Kitchen [1657850 INR]; TATA Projects Ltd-25 | 1,657,850 |
| 3S-WMI-GF330 |  | MEP Services including LNG, Chimney, Exhaust | 20d | 2028-11-04 | 2028-11-27 | 3S-WMI-GF315 | CSD-LKO Calender (6 day + Holiday)-25 | Physical Progress [5060 h]; Kitchen [2486774 INR]; TATA Projects Ltd-25 | 2,486,774 |
| 3S-WMI-GF375 |  | Installation of Kitchen Equipments | 20d | 2028-11-28 | 2028-12-20 | 3S-WMI-GF330 | CSD-LKO Calender (6 day + Holiday)-25 | Physical Progress [5060 h]; Kitchen [11604947 INR]; TATA Projects Ltd-25 | 11,604,947 |
| 3S-WMI-GF405 |  | Testing & Commissioning of Kitchen | 40d | 2028-12-21 | 2029-02-08 | 3S-WMI-GF375 | CSD-LKO Calender (6 day + Holiday)-25 | Physical Progress [10120 h]; Kitchen [828925 INR]; TATA Projects Ltd-25 | 828,925 |
|  | 2 | **Dry Finishes/ID Works** |  | 2028-04-27 | 2029-02-15 |  |  |  |  |
| 3S-WMI-GF245 |  | Running of Wild Air | 1d | 2028-04-27 | 2028-04-28 | 3S-F-GF35, 3S-WMI-GF140, 3S-WMI-GF170, 3S-WMI-GF185, 3S-WMI-GF220, 3S-WMI-GF240 | CSD-LKO Calender (6 day + Holiday)-25 | Physical Progress [250 h]; TATA Projects Ltd-25 |  |
| 3S-WMI-GF250 |  | Wall finish ID Works | 35d | 2028-06-12 | 2028-07-21 | 3S-WMI-GF245, P-H&CC_ID-Fur-20, P-H&CC_ID-Wall-20, P-H&CC_ID-Floor-20, P-H&CC_ID-SF-20, P-H&CC_ID-FC-20, P-H&CC_ID-Doors-20, 3S-WMI-GF115, 3S-WMI-GF155, 3S-WMI-GF205, 3S-WMI-GF210, 3S-WMI-GF225, 3S-WMI-GF235, 3S-WMI-GF110, 3S-WMI-GF120, 3S-WMI-GF145, 3S-WMI-GF160, 3S-WMI-GF175, 3S-WMI-GF180, 3S-WMI-GF190, 3S-WMI-GF200, 3S-WMI-GF125, 3S-WMI-GF165, 3S-WMI-GF195, 3S-WMI-GF215, 3S-WMI-GF230 | CSD-LKO Calender (6 day + Holiday)-25 | ID Work [7587428 INR]; Physical Progress [7590 h]; TATA Projects Ltd-25 | 7,587,428 |
| 3S-WMI-GF255 |  | False Ceiling Installation | 35d | 2028-07-22 | 2028-09-02 | 3S-WMI-GF250 | CSD-LKO Calender (6 day + Holiday)-25 | ID Work [9104914 INR]; Physical Progress [11380 h]; TATA Projects Ltd-25 | 9,104,914 |
| 3S-WMI-GF265 |  | Flooring of toilets/kitchen/Balcony | 15d | 2028-09-04 | 2028-09-20 | 3S-WMI-GF55, 3S-WMI-GF255 | CSD-LKO Calender (6 day + Holiday)-25 | ID Work [6069943 INR]; Physical Progress [3790 h]; TATA Projects Ltd-25 | 6,069,943 |
| 3S-WMI-GF270 |  | Doors & Windows/Fire Doors/Shaft Doors | 35d | 2028-09-21 | 2028-11-03 | 3S-WMI-GF250, 3S-WMI-GF265 | CSD-LKO Calender (6 day + Holiday)-25 | ID Work [7587428 INR]; Physical Progress [3790 h]; TATA Projects Ltd-25 | 7,587,428 |
| 3S-WMI-GF275 |  | Putty & First Coat of Paint | 15d | 2028-09-21 | 2028-10-10 | 3S-WMI-GF250, 3S-WMI-GF265 | CSD-LKO Calender (6 day + Holiday)-25 | Painting [2172 Sq m]; Painter [2180 h]; Helper [2180 h]; Physical Progress [3790 h]; TATA Projects Ltd-25 | 496,562.64 |
| 3S-WMI-GF305 |  | Wooden Flooring/Flooring | 30d | 2028-10-11 | 2028-11-15 | 3S-WMI-GF275 | CSD-LKO Calender (6 day + Holiday)-25 | ID Work [7587428 INR]; Physical Progress [7590 h]; TATA Projects Ltd-25 | 7,587,428 |
| 3S-WMI-GF310 |  | Railing for staircase | 35d | 2028-10-11 | 2028-11-21 | 3S-WMI-GF250, 3S-WMI-GF275 | CSD-LKO Calender (6 day + Holiday)-25 | ID Work [2276229 INR]; Physical Progress [3790 h]; TATA Projects Ltd-25 | 2,276,229 |
| 3S-WMI-GF365 |  | Fixed Furniture | 10d | 2028-11-16 | 2028-11-27 | 3S-WMI-GF305 | CSD-LKO Calender (6 day + Holiday)-25 | ID Work [6828686 INR]; Physical Progress [2530 h]; TATA Projects Ltd-25 | 6,828,686 |
| 3S-WMI-GF370 |  | False ceiling final finishes | 15d | 2028-11-16 | 2028-12-02 | 3S-WMI-GF285 | CSD-LKO Calender (6 day + Holiday)-25 | ID Work [2276229 INR]; Physical Progress [3790 h]; TATA Projects Ltd-25 | 2,276,229 |
| 3S-WMI-GF410 |  | Final coat of paint | 15d | 2029-01-10 | 2029-01-27 | 3S-WMI-GF370, 3S-WMI-GF310, 3S-WMI-GF365, 3S-WMI-GF335, 3S-WMI-GF325, 3S-WMI-GF345, 3S-WMI-GF340, 3S-WMI-GF400, 3S-WMI-GF395, 3S-WMI-GF390, 3S-WMI-GF385, 3S-WMI-GF355, 3S-WMI-GF350, 3S-WMI-GF270 | CSD-LKO Calender (6 day + Holiday)-25 | Painting [2172 Sq m]; Painter [2180 h]; Helper [2180 h]; Physical Progress [3790 h]; TATA Projects Ltd-25 | 496,562.64 |
| 3S-WMI-GF415 |  | Soft Furnishing & Signage | 15d | 2029-01-29 | 2029-02-15 | 3S-WMI-GF410 | CSD-LKO Calender (6 day + Holiday)-25 | ID Work [11381143 INR]; Physical Progress [1280 h]; TATA Projects Ltd-25 | 11,381,143 |
| 3S-WMI-GF420 |  | Loose Furniture | 15d | 2029-01-29 | 2029-02-15 | 3S-WMI-GF410 | CSD-LKO Calender (6 day + Holiday)-25 | ID Work [15174857 INR]; Physical Progress [1280 h]; TATA Projects Ltd-25 | 15,174,857 |
|  | 2 | **First Floor** |  | 2027-05-20 | 2029-01-03 |  |  |  |  |
|  | 1 | **Wet Finishes** |  | 2027-05-20 | 2027-09-20 |  |  |  |  |
| 3S-WMI-1st10 |  | Deshuttering | 4d | 2027-05-20 | 2027-05-25 | 3S-SS-Serv.F295 | CSD-LKO Calender (6 day + Holiday)-25 | Physical Progress [1020 h]; TATA Projects Ltd-25 |  |
| 3S-WMI-1st15 |  | Brickwork/Blockwork | 30d | 2027-05-25 | 2027-06-29 | 3S-WMI-1st10, E-GFC-AR-3S-125 | CSD-LKO Calender (6 day + Holiday)-25 | Masonry [446 CuM]; Mason [2980 h]; Helper [1490 h]; Physical Progress [7590 h]; TATA Projects Ltd-25 | 4,252,770.56 |
| 3S-WMI-1st55 |  | Waterproofing of Toilets, Balcony & Kitchen | 35d | 2027-06-29 | 2027-08-09 | 3S-WMI-1st15 | CSD-LKO Calender (6 day + Holiday)-25 | Waterproofing [8564838 INR]; Waterprrofing Mason [8160 h]; Helper [4080 h]; Physical Progress [3790 h]; TATA Projects Ltd-25 | 8,564,838 |
| 3S-WMI-1st95 |  | Plaster | 35d | 2027-08-09 | 2027-09-20 | 3S-WMI-1st30, 3S-WMI-1st75, 3S-WMI-1st80, 3S-WMI-1st55 | CSD-LKO Calender (6 day + Holiday)-25 | Plaster [7060 Sqr Mtr]; Mason [4710 h]; Helper [2360 h]; Physical Progress [3790 h]; TATA Projects Ltd-25 | 3,910,604.6 |

| ID | WBS | Activity | Duration | Start | Finish | Predecessors | Calendar | Resources | Cost |
| --- | --- | --- | --- | --- | --- | --- | --- | --- | --- |
|  | 5 | **MEP** |  | 2027-05-25 | 2028-11-27 |  |  |  |  |
|  | 2 | **HVAC** |  | 2027-06-29 | 2028-10-04 |  |  |  |  |
|  | 1 | **1st Fix** |  | 2027-06-29 | 2027-10-21 |  |  |  |  |
| 3S-WMI-1st50 |  | Duct Support Fabrication | 35d | 2027-06-29 | 2027-08-09 | 3S-WMI-1st15, E-GFC-MEP-3S-265 | CSD-LKO Calender (6 day + Holiday)-25 | Physical Progress [3790 h]; HVAC [222862 INR]; TATA Projects Ltd-25 | 222,862 |
| 3S-WMI-1st100 |  | Installing duct hangers and supports | 30d | 2027-08-09 | 2027-09-14 | 3S-WMI-1st50, E-GFC-MEP-3S-265 | CSD-LKO Calender (6 day + Holiday)-25 | Physical Progress [2530 h]; HVAC [445725 INR]; TATA Projects Ltd-25 | 445,725 |
| 3S-WMI-1st130 |  | Laying concealed/exposed refrigerant piping | 30d | 2027-09-14 | 2027-10-21 | 3S-WMI-1st100, E-GFC-MEP-3S-265 | CSD-LKO Calender (6 day + Holiday)-25 | Physical Progress [3790 h]; HVAC [111431 INR]; TATA Projects Ltd-25 | 111,431 |
| 3S-WMI-1st135 |  | Laying concealed/exposed drain piping | 30d | 2027-09-14 | 2027-10-21 | 3S-WMI-1st100, E-GFC-MEP-3S-265 | CSD-LKO Calender (6 day + Holiday)-25 | Physical Progress [2530 h]; HVAC [668587 INR]; TATA Projects Ltd-25 | 668,587 |
|  | 2 | **2nd Fix** |  | 2027-09-14 | 2028-02-02 |  |  |  |  |
| 3S-WMI-1st140 |  | Duct installation | 20d | 2027-09-14 | 2027-10-08 | 3S-WMI-1st100 | CSD-LKO Calender (6 day + Holiday)-25 | Physical Progress [3790 h]; HVAC [1671468 INR]; TATA Projects Ltd-25 | 1,671,468 |
| 3S-WMI-1st170 |  | Insulation of ducts (thermal/acoustic) | 10d | 2027-10-08 | 2027-10-21 | 3S-WMI-1st140 | CSD-LKO Calender (6 day + Holiday)-25 | Physical Progress [1530 h]; HVAC [1002881 INR]; TATA Projects Ltd-25 | 1,002,881 |
| 3S-WMI-1st185 |  | Installation of chilled water piping / VRF piping | 20d | 2027-10-21 | 2027-11-15 | 3S-WMI-1st170 | CSD-LKO Calender (6 day + Holiday)-25 | Physical Progress [1530 h]; HVAC [2228625 INR]; TATA Projects Ltd-25 | 2,228,625 |
| 3S-WMI-1st220 |  | Installation of indoor units including AHU, FCU | 45d | 2027-11-15 | 2028-01-08 | 3S-WMI-1st185, 3S-WMI-1st130, 3S-WMI-1st135 | CSD-LKO Calender (6 day + Holiday)-25 | Physical Progress [11380 h]; HVAC [2005762 INR]; TATA Projects Ltd-25 | 2,005,762 |
| 3S-WMI-1st240 |  | Connecting refrigerant and drain piping to indoor units | 20d | 2028-01-08 | 2028-02-02 | 3S-WMI-1st220 | CSD-LKO Calender (6 day + Holiday)-25 | Physical Progress [1530 h]; HVAC [557156 INR]; TATA Projects Ltd-25 | 557,156 |
|  | 3 | **Final Fix** |  | 2028-07-21 | 2028-10-04 |  |  |  |  |
| 3S-WMI-1st260 |  | Installing grills, diffusers, dampers | 30d | 2028-07-21 | 2028-08-28 | 3S-WMI-1st255 | CSD-LKO Calender (6 day + Holiday)-25 | Physical Progress [1530 h]; HVAC [1114312 INR]; TATA Projects Ltd-25 | 1,114,312 |
| 3S-WMI-1st285 |  | Installation of thermostats and control panels | 30d | 2028-08-28 | 2028-10-04 | 3S-WMI-1st260, 3S-WMI-1st275, 3S-WMI-1st240 | CSD-LKO Calender (6 day + Holiday)-25 | Physical Progress [1530 h]; HVAC [557156 INR]; TATA Projects Ltd-25 | 557,156 |
|  | 1 | **Electrical** |  | 2027-05-25 | 2028-11-09 |  |  |  |  |
|  | 1 | **1st Fix** |  | 2027-05-25 | 2027-08-09 |  |  |  |  |
| 3S-WMI-1st20 |  | Slab Conduiting | 35d | 2027-05-25 | 2027-07-05 | 3S-WMI-1st10, E-GFC-MEP-3S-265 | CSD-LKO Calender (6 day + Holiday)-25 | Physical Progress [6320 h]; Electrical [1247377 INR]; TATA Projects Ltd-25 | 1,247,377 |
| 3S-WMI-1st30 |  | Wall Conduiting | 30d | 2027-06-29 | 2027-08-03 | 3S-WMI-1st15, E-GFC-MEP-3S-265 | CSD-LKO Calender (6 day + Holiday)-25 | Physical Progress [2530 h]; Electrical [623688 INR]; TATA Projects Ltd-25 | 623,688 |
| 3S-WMI-1st75 |  | Installing back boxes for switches, sockets | 5d | 2027-08-03 | 2027-08-09 | 3S-WMI-1st30, 3S-WMI-1st20, E-GFC-MEP-3S-265 | CSD-LKO Calender (6 day + Holiday)-25 | Physical Progress [1280 h]; Electrical [374213 INR]; TATA Projects Ltd-25 | 374,213 |
|  | 2 | **2nd Fix** |  | 2027-09-20 | 2028-04-01 |  |  |  |  |
| 3S-WMI-1st115 |  | Cable tray laying | 25d | 2027-09-20 | 2027-10-21 | 3S-WMI-1st95 | CSD-LKO Calender (6 day + Holiday)-25 | Physical Progress [6320 h]; Electrical [498951 INR]; TATA Projects Ltd-25 | 498,951 |
| 3S-WMI-1st155 |  | Cabling & Wire Pulling | 60d | 2027-10-21 | 2028-01-03 | 3S-WMI-1st115 | CSD-LKO Calender (6 day + Holiday)-25 | Physical Progress [11380 h]; Electrical [2494753 INR]; TATA Projects Ltd-25 | 2,494,753 |
| 3S-WMI-1st205 |  | DB fixing and connecting | 35d | 2028-01-03 | 2028-02-14 | 3S-WMI-1st155 | CSD-LKO Calender (6 day + Holiday)-25 | Physical Progress [3790 h]; Electrical [374213 INR]; TATA Projects Ltd-25 | 374,213 |
| 3S-WMI-1st210 |  | Floor Rising Main Installation | 20d | 2028-01-03 | 2028-01-27 | 3S-WMI-1st155 | CSD-LKO Calender (6 day + Holiday)-25 | Physical Progress [1280 h]; Electrical [1746327 INR]; TATA Projects Ltd-25 | 1,746,327 |
| 3S-WMI-1st225 |  | Floor/Distribution Panel Installation | 20d | 2028-02-14 | 2028-03-08 | 3S-WMI-1st205 | CSD-LKO Calender (6 day + Holiday)-25 | Physical Progress [1280 h]; Electrical [997901 INR]; TATA Projects Ltd-25 | 997,901 |
| 3S-WMI-1st235 |  | Equipment Earthing | 20d | 2028-03-08 | 2028-04-01 | 3S-WMI-1st225, 3S-WMI-1st210 | CSD-LKO Calender (6 day + Holiday)-25 | Physical Progress [2530 h]; Electrical [374213 INR]; TATA Projects Ltd-25 | 374,213 |

| ID | WBS | Activity | Duration | Start | Finish | Predecessors | Calendar | Resources | Cost |
| --- | --- | --- | --- | --- | --- | --- | --- | --- | --- |
|  | 3 | **Final Fix** |  | 2028-08-28 | 2028-11-09 |  |  |  |  |
| 3S-WMI-1st280 |  | Switches & Socket | 30d | 2028-08-28 | 2028-10-04 | 3S-WMI-1st275 | CSD-LKO Calender (6 day + Holiday)-25 | Physical Progress [5060 h]; Electrical [1247377 INR]; TATA Projects Ltd-25 | 1,247,377 |
| 3S-WMI-1st325 |  | Light Fixtures | 30d | 2028-10-04 | 2028-11-09 | 3S-WMI-1st280, 3S-WMI-1st235 | CSD-LKO Calender (6 day + Holiday)-25 | Physical Progress [3790 h]; Electrical [1871065 INR]; TATA Projects Ltd-25 | 1,871,065 |
|  | 3 | **Plumbing** |  | 2027-06-29 | 2028-10-23 |  |  |  |  |
|  | 1 | **1st Fix** |  | 2027-06-29 | 2027-12-02 |  |  |  |  |
| 3S-WMI-1st35 |  | Fixing pipe supports and clamps | 35d | 2027-06-29 | 2027-08-09 | 3S-WMI-1st15, E-GFC-MEP-3S-265 | CSD-LKO Calender (6 day + Holiday)-25 | Physical Progress [2530 h]; Plumbing [400934 INR]; TATA Projects Ltd-25 | 400,934 |
| 3S-WMI-1st60 |  | Laying water supply pipes (hot & cold) | 35d | 2027-08-09 | 2027-09-20 | 3S-WMI-1st35, E-GFC-MEP-3S-265 | CSD-LKO Calender (6 day + Holiday)-25 | Physical Progress [3790 h]; Plumbing [801867 INR]; TATA Projects Ltd-25 | 801,867 |
| 3S-WMI-1st65 |  | Laying drainage pipes (soil, waste, vent) | 35d | 2027-08-09 | 2027-09-20 | 3S-WMI-1st35, E-GFC-MEP-3S-265 | CSD-LKO Calender (6 day + Holiday)-25 | Physical Progress [3790 h]; Plumbing [801867 INR]; TATA Projects Ltd-25 | 801,867 |
| 3S-WMI-1st70 |  | Installation of plumbing fixture base supports (WC frames, sink brackets) | 30d | 2027-09-20 | 2027-10-27 | 3S-WMI-1st65, E-GFC-MEP-3S-265 | CSD-LKO Calender (6 day + Holiday)-25 | Physical Progress [1530 h]; Plumbing [400934 INR]; TATA Projects Ltd-25 | 400,934 |
| 3S-WMI-1st85 |  | Pressure testing of water supply lines | 25d | 2027-10-27 | 2027-11-26 | 3S-WMI-1st60, 3S-WMI-1st65, 3S-WMI-1st70, E-GFC-MEP-3S-265 | CSD-LKO Calender (6 day + Holiday)-25 | Physical Progress [1770 h]; Plumbing [80187 INR]; TATA Projects Ltd-25 | 80,187 |
| 3S-WMI-1st90 |  | Installation of concealed parts of toilet fixtures | 30d | 2027-10-27 | 2027-12-02 | 3S-WMI-1st70, E-GFC-MEP-3S-265 | CSD-LKO Calender (6 day + Holiday)-25 | Physical Progress [2530 h]; Plumbing [400934 INR]; TATA Projects Ltd-25 | 400,934 |
|  | 2 | **2nd FIx** |  | 2027-11-26 | 2028-02-19 |  |  |  |  |
| 3S-WMI-1st110 |  | Insulation of hot water pipes (if applicable) | 30d | 2027-11-26 | 2028-01-03 | 3S-WMI-1st85 | CSD-LKO Calender (6 day + Holiday)-25 | Physical Progress [1530 h]; Plumbing [400934 INR]; TATA Projects Ltd-25 | 400,934 |
| 3S-WMI-1st120 |  | Installation of vertical risers and main distribution lines | 35d | 2027-12-02 | 2028-01-14 | 3S-WMI-1st95, 3S-WMI-1st85, 3S-WMI-1st90 | CSD-LKO Calender (6 day + Holiday)-25 | Physical Progress [5060 h]; Plumbing [801867 INR]; TATA Projects Ltd-25 | 801,867 |
| 3S-WMI-1st145 |  | Testing drainage lines for leakage/blockage | 30d | 2028-01-03 | 2028-02-08 | 3S-WMI-1st70, 3S-WMI-1st110 | CSD-LKO Calender (6 day + Holiday)-25 | Physical Progress [1530 h]; Plumbing [80187 INR]; TATA Projects Ltd-25 | 80,187 |
| 3S-WMI-1st160 |  | Fixing floor traps and gully traps | 30d | 2028-01-14 | 2028-02-19 | 3S-WMI-1st120 | CSD-LKO Calender (6 day + Holiday)-25 | Physical Progress [1530 h]; Plumbing [240560 INR]; TATA Projects Ltd-25 | 240,560 |
|  | 3 | **Final FIx** |  | 2028-08-28 | 2028-10-23 |  |  |  |  |
| 3S-WMI-1st290 |  | Installation of sanitary fixtures (WC, washbasins, urinals, sinks) | 10d | 2028-08-28 | 2028-09-08 | 3S-WMI-1st275, 3S-WMI-1st145, 3S-WMI-1st160 | CSD-LKO Calender (6 day + Holiday)-25 | Physical Progress [2530 h]; Plumbing [1603734 INR]; TATA Projects Ltd-25 | 1,603,734 |
| 3S-WMI-1st315 |  | Installation of CP fittings (taps, mixers, showers, health faucets) | 10d | 2028-09-08 | 2028-09-20 | 3S-WMI-1st290, 3S-WMI-1st275 | CSD-LKO Calender (6 day + Holiday)-25 | Physical Progress [2530 h]; Plumbing [801867 INR]; TATA Projects Ltd-25 | 801,867 |
| 3S-WMI-1st320 |  | Connection of appliances | 25d | 2028-09-20 | 2028-10-23 | 3S-WMI-1st315 | CSD-LKO Calender (6 day + Holiday)-25 | Physical Progress [1770 h]; Plumbing [400934 INR]; TATA Projects Ltd-25 | 400,934 |
|  | 4 | **Firefighting** |  | 2027-06-29 | 2028-11-15 |  |  |  |  |
|  | 1 | **1st Fix** |  | 2027-06-29 | 2027-10-27 |  |  |  |  |
| 3S-WMI-1st40 |  | Fixing pipe supports and hangers | 35d | 2027-06-29 | 2027-08-09 | 3S-WMI-1st15, E-GFC-MEP-3S-265 | CSD-LKO Calender (6 day + Holiday)-25 | Physical Progress [2530 h]; Firefighting [292135 INR]; TATA Projects Ltd-25 | 292,135 |
| 3S-WMI-1st105 |  | Laying branch piping | 35d | 2027-08-09 | 2027-09-20 | 3S-WMI-1st40, E-GFC-MEP-3S-265 | CSD-LKO Calender (6 day + Holiday)-25 | Physical Progress [3790 h]; Firefighting [626004 INR]; TATA Projects Ltd-25 | 626,004 |
| 3S-WMI-1st150 |  | Hydrostatic pressure testing of piping | 30d | 2027-09-20 | 2027-10-27 | 3S-WMI-1st105, E-GFC-MEP-3S-265 | CSD-LKO Calender (6 day + Holiday)-25 | Physical Progress [1530 h]; Firefighting [83467 INR]; TATA Projects Ltd-25 | 83,467 |

| ID | WBS | Activity | Duration | Start | Finish | Predecessors | Calendar | Resources | Cost |
| --- | --- | --- | --- | --- | --- | --- | --- | --- | --- |
|  | 2 | **2nd Fix** |  | 2027-10-27 | 2028-01-20 |  |  |  |  |
| 3S-WMI-1st175 |  | Installation of vertical risers and distribution piping in shafts | 35d | 2027-10-27 | 2027-12-08 | 3S-WMI-1st95, 3S-WMI-1st150 | CSD-LKO Calender (6 day + Holiday)-25 | Physical Progress [6320 h]; Firefighting [834672 INR]; TATA Projects Ltd-25 | 834,672 |
| 3S-WMI-1st180 |  | Painting/insulation of exposed fire pipes | 30d | 2027-10-27 | 2027-12-02 | 3S-WMI-1st150 | CSD-LKO Calender (6 day + Holiday)-25 | Physical Progress [2530 h]; Firefighting [41734 INR]; TATA Projects Ltd-25 | 41,734 |
| 3S-WMI-1st190 |  | Testing risers and branch lines for leakage | 30d | 2027-12-02 | 2028-01-08 | 3S-WMI-1st180 | CSD-LKO Calender (6 day + Holiday)-25 | Physical Progress [1530 h]; Firefighting [83467 INR]; TATA Projects Ltd-25 | 83,467 |
| 3S-WMI-1st200 |  | Installation of sprinkler branch lines in ceilings | 35d | 2027-12-08 | 2028-01-20 | 3S-WMI-1st175 | CSD-LKO Calender (6 day + Holiday)-25 | Physical Progress [6320 h]; Firefighting [626004 INR]; TATA Projects Ltd-25 | 626,004 |
|  | 3 | **Final FIx** |  | 2028-08-28 | 2028-11-15 |  |  |  |  |
| 3S-WMI-1st295 |  | Installation of hydrant accessories (valves, hose reels, cabinets) | 25d | 2028-08-28 | 2028-09-26 | 3S-WMI-1st275 | CSD-LKO Calender (6 day + Holiday)-25 | Physical Progress [2530 h]; Firefighting [417336 INR]; TATA Projects Ltd-25 | 417,336 |
| 3S-WMI-1st300 |  | Installation of portable fire extinguishers | 30d | 2028-08-28 | 2028-10-04 | 3S-WMI-1st275 | CSD-LKO Calender (6 day + Holiday)-25 | Physical Progress [1530 h]; Firefighting [41734 INR]; TATA Projects Ltd-25 | 41,734 |
| 3S-WMI-1st330 |  | Installation of sprinkler heads, nozzles, and final alignment | 35d | 2028-10-04 | 2028-11-15 | 3S-WMI-1st275, 3S-WMI-1st305, 3S-WMI-1st200 | CSD-LKO Calender (6 day + Holiday)-25 | Physical Progress [11380 h]; Firefighting [626004 INR]; TATA Projects Ltd-25 | 626,004 |
| 3S-WMI-1st335 |  | Integration with fire alarm system | 20d | 2028-10-04 | 2028-10-28 | 3S-WMI-1st300 | CSD-LKO Calender (6 day + Holiday)-25 | Physical Progress [5060 h]; Firefighting [208668 INR]; TATA Projects Ltd-25 | 208,668 |
|  | 5 | **ELV** |  | 2027-05-25 | 2028-11-27 |  |  |  |  |
|  | 1 | **1st Fix** |  | 2027-05-25 | 2027-08-09 |  |  |  |  |
| 3S-WMI-1st25 |  | Slab Conduiting | 35d | 2027-05-25 | 2027-07-05 | 3S-WMI-1st10 | CSD-LKO Calender (6 day + Holiday)-25 | Physical Progress [6320 h]; ELV [234433 INR]; TATA Projects Ltd-25 | 234,433 |
| 3S-WMI-1st45 |  | Wall Conduiting | 30d | 2027-06-29 | 2027-08-03 | 3S-WMI-1st15 | CSD-LKO Calender (6 day + Holiday)-25 | Physical Progress [2530 h]; ELV [100471 INR]; TATA Projects Ltd-25 | 100,471 |
| 3S-WMI-1st80 |  | Installing back boxes for switches, sockets | 5d | 2027-08-03 | 2027-08-09 | 3S-WMI-1st45, 3S-WMI-1st25 | CSD-LKO Calender (6 day + Holiday)-25 | Physical Progress [1280 h]; ELV [167452 INR]; TATA Projects Ltd-25 | 167,452 |
|  | 2 | **2nd Fix** |  | 2027-09-20 | 2028-04-13 |  |  |  |  |
| 3S-WMI-1st125 |  | Cable tray installation | 35d | 2027-09-20 | 2027-11-03 | 3S-WMI-1st95 | CSD-LKO Calender (6 day + Holiday)-25 | Physical Progress [6320 h]; ELV [167452 INR]; TATA Projects Ltd-25 | 167,452 |
| 3S-WMI-1st165 |  | Cabeling of ELV cable - IT/Fire Alarm/Public Address | 45d | 2027-11-03 | 2027-12-27 | 3S-WMI-1st125 | CSD-LKO Calender (6 day + Holiday)-25 | Physical Progress [11380 h]; ELV [401885 INR]; TATA Projects Ltd-25 | 401,885 |
| 3S-WMI-1st195 |  | ELV Rack Installation | 30d | 2027-12-27 | 2028-02-02 | 3S-WMI-1st165 | CSD-LKO Calender (6 day + Holiday)-25 | Physical Progress [2530 h]; ELV [167452 INR]; TATA Projects Ltd-25 | 167,452 |
| 3S-WMI-1st215 |  | Termination of cables at junction boxes, patch panels, and control panels | 35d | 2028-02-02 | 2028-03-15 | 3S-WMI-1st195 | CSD-LKO Calender (6 day + Holiday)-25 | Physical Progress [7590 h]; ELV [167452 INR]; TATA Projects Ltd-25 | 167,452 |
| 3S-WMI-1st230 |  | Fixing devices like CCTV camera bases, card reader bases, smoke detector bases, PA Bases, Wifi Bases | 25d | 2028-03-15 | 2028-04-13 | 3S-WMI-1st215 | CSD-LKO Calender (6 day + Holiday)-25 | Physical Progress [1020 h]; ELV [334904 INR]; TATA Projects Ltd-25 | 334,904 |
|  | 3 | **FInal Fix** |  | 2028-10-04 | 2028-11-27 |  |  |  |  |
| 3S-WMI-1st340 |  | Installation of data and Voice Faceplate | 25d | 2028-10-04 | 2028-11-03 | 3S-WMI-1st275, 3S-WMI-1st305, 3S-WMI-1st230 | CSD-LKO Calender (6 day + Holiday)-25 | Physical Progress [3790 h]; ELV [167452 INR]; TATA Projects Ltd-25 | 167,452 |
| 3S-WMI-1st345 |  | Installation of Camera & Wifi | 30d | 2028-10-04 | 2028-11-09 | 3S-WMI-1st275, 3S-WMI-1st305 | CSD-LKO Calender (6 day + Holiday)-25 | Physical Progress [3790 h]; ELV [167452 INR]; TATA Projects Ltd-25 | 167,452 |
| 3S-WMI-1st350 |  | Installation of fire alarm devices + Public Address | 15d | 2028-10-04 | 2028-10-23 | 3S-WMI-1st275, 3S-WMI-1st305 | CSD-LKO Calender (6 day + Holiday)-25 | Physical Progress [3790 h]; ELV [200942 INR]; TATA Projects Ltd-25 | 200,942 |
| 3S-WMI-1st365 |  | Installation of Active System | 15d | 2028-10-23 | 2028-11-09 | 3S-WMI-1st350 | CSD-LKO Calender (6 day + Holiday)-25 | Physical Progress [3790 h]; ELV [334904 INR]; TATA Projects Ltd-25 | 334,904 |
| 3S-WMI-1st370 |  | Fire Panel Intallation & Integration | 25d | 2028-10-23 | 2028-11-21 | 3S-WMI-1st350 | CSD-LKO Calender (6 day + Holiday)-25 | Physical Progress [6320 h]; ELV [167452 INR]; TATA Projects Ltd-25 | 167,452 |
| 3S-WMI-1st375 |  | Installation & Integration of Audio Visual System | 25d | 2028-10-23 | 2028-11-21 | 3S-WMI-1st350 | CSD-LKO Calender (6 day + Holiday)-25 | Physical Progress [6320 h]; ELV [167452 INR]; TATA Projects Ltd-25 | 167,452 |
| 3S-WMI-1st380 |  | Installation & Integration of Access Control | 25d | 2028-10-23 | 2028-11-21 | 3S-WMI-1st350 | CSD-LKO Calender (6 day + Holiday)-25 | Physical Progress [6320 h]; ELV [167452 INR]; TATA Projects Ltd-25 | 167,452 |
| 3S-WMI-1st385 |  | Integration of Active components | 15d | 2028-11-09 | 2028-11-27 | 3S-WMI-1st365 | CSD-LKO Calender (6 day + Holiday)-25 | Physical Progress [3790 h]; ELV [66981 INR]; TATA Projects Ltd-25 | 66,981 |

| ID | WBS | Activity | Duration | Start | Finish | Predecessors | Calendar | Resources | Cost |
| --- | --- | --- | --- | --- | --- | --- | --- | --- | --- |
|  | 2 | **Dry Finishes/ID Works** |  | 2028-04-27 | 2029-01-03 |  |  |  |  |
| 3S-WMI-1st245 |  | Running of Wild Air | 1d | 2028-04-27 | 2028-04-28 | 3S-F-GF35, 3S-WMI-1st140, 3S-WMI-1st170, 3S-WMI-1st185, 3S-WMI-1st220, 3S-WMI-1st240 | CSD-LKO Calender (6 day + Holiday)-25 | Physical Progress [250 h]; TATA Projects Ltd-25 |  |
| 3S-WMI-1st250 |  | Wall finish ID Works | 35d | 2028-04-28 | 2028-06-10 | 3S-WMI-1st245, 3S-WMI-1st140, 3S-WMI-1st170, 3S-WMI-1st185, 3S-WMI-1st220, 3S-WMI-1st240, 3S-WMI-1st115, 3S-WMI-1st155, 3S-WMI-1st205, 3S-WMI-1st210, 3S-WMI-1st225, 3S-WMI-1st235, 3S-WMI-1st110, 3S-WMI-1st120, 3S-WMI-1st145, 3S-WMI-1st160, 3S-WMI-1st175, 3S-WMI-1st180, 3S-WMI-1st190, 3S-WMI-1st200, 3S-WMI-1st125, 3S-WMI-1st165, 3S-WMI-1st195, 3S-WMI-1st215, 3S-WMI-1st230 | CSD-LKO Calender (6 day + Holiday)-25 | ID Work [7587428 INR]; Physical Progress [7590 h]; TATA Projects Ltd-25 | 7,587,428 |
| 3S-WMI-1st255 |  | False Ceiling Installation | 35d | 2028-06-10 | 2028-07-21 | 3S-WMI-1st250 | CSD-LKO Calender (6 day + Holiday)-25 | ID Work [9104914 INR]; Physical Progress [11380 h]; TATA Projects Ltd-25 | 9,104,914 |
| 3S-WMI-1st265 |  | Flooring of toilets/kitchen/Balcony | 15d | 2028-07-21 | 2028-08-08 | 3S-WMI-1st55, 3S-WMI-1st255 | CSD-LKO Calender (6 day + Holiday)-25 | ID Work [6069943 INR]; Physical Progress [3790 h]; TATA Projects Ltd-25 | 6,069,943 |
| 3S-WMI-1st270 |  | Doors & Windows/Fire Doors/Shaft Doors | 35d | 2028-08-08 | 2028-09-20 | 3S-WMI-1st250, 3S-WMI-1st265 | CSD-LKO Calender (6 day + Holiday)-25 | ID Work [7587428 INR]; Physical Progress [3790 h]; TATA Projects Ltd-25 | 7,587,428 |
| 3S-WMI-1st275 |  | Putty & First Coat of Paint | 15d | 2028-08-08 | 2028-08-28 | 3S-WMI-1st250, 3S-WMI-1st265 | CSD-LKO Calender (6 day + Holiday)-25 | Painting [2172 Sq m]; Painter [2180 h]; Helper [2180 h]; Physical Progress [3790 h]; TATA Projects Ltd-25 | 496,562.64 |
| 3S-WMI-1st305 |  | Wooden Flooring/Flooring | 30d | 2028-08-28 | 2028-10-04 | 3S-WMI-1st275 | CSD-LKO Calender (6 day + Holiday)-25 | ID Work [7587428 INR]; Physical Progress [7590 h]; TATA Projects Ltd-25 | 7,587,428 |
| 3S-WMI-1st310 |  | Railing for staircase | 35d | 2028-08-28 | 2028-10-10 | 3S-WMI-1st250, 3S-WMI-1st275 | CSD-LKO Calender (6 day + Holiday)-25 | ID Work [2276229 INR]; Physical Progress [3790 h]; TATA Projects Ltd-25 | 2,276,229 |
| 3S-WMI-1st355 |  | Fixed Furniture | 10d | 2028-10-04 | 2028-10-16 | 3S-WMI-1st305 | CSD-LKO Calender (6 day + Holiday)-25 | ID Work [6828686 INR]; Physical Progress [2530 h]; TATA Projects Ltd-25 | 6,828,686 |
| 3S-WMI-1st360 |  | False ceiling final finishes | 15d | 2028-10-04 | 2028-10-23 | 3S-WMI-1st285 | CSD-LKO Calender (6 day + Holiday)-25 | ID Work [2276229 INR]; Physical Progress [3790 h]; TATA Projects Ltd-25 | 2,276,229 |
| 3S-WMI-1st390 |  | Final coat of paint | 15d | 2028-11-27 | 2028-12-14 | 3S-WMI-1st360, 3S-WMI-1st310, 3S-WMI-1st355, 3S-WMI-1st325, 3S-WMI-1st320, 3S-WMI-1st335, 3S-WMI-1st330, 3S-WMI-1st385, 3S-WMI-1st380, 3S-WMI-1st375, 3S-WMI-1st370, 3S-WMI-1st345, 3S-WMI-1st340, 3S-WMI-1st270 | CSD-LKO Calender (6 day + Holiday)-25 | Painting [2172 Sq m]; Painter [2180 h]; Helper [2180 h]; Physical Progress [3790 h]; TATA Projects Ltd-25 | 496,562.64 |
| 3S-WMI-1st395 |  | Soft Furnishing & Signage | 15d | 2028-12-14 | 2029-01-03 | 3S-WMI-1st390 | CSD-LKO Calender (6 day + Holiday)-25 | ID Work [11381143 INR]; Physical Progress [1280 h]; TATA Projects Ltd-25 | 11,381,143 |
| 3S-WMI-1st400 |  | Loose Furniture | 15d | 2028-12-14 | 2029-01-03 | 3S-WMI-1st390 | CSD-LKO Calender (6 day + Holiday)-25 | ID Work [15174857 INR]; Physical Progress [1280 h]; TATA Projects Ltd-25 | 15,174,857 |
|  | 8 | **Service Floor** |  | 2027-06-15 | 2028-12-20 |  |  |  |  |
|  | 1 | **Wet Finishes** |  | 2027-06-15 | 2027-10-18 |  |  |  |  |
| 3S-WMI-Serv.F.10 |  | Deshuttering | 4d | 2027-06-15 | 2027-06-19 | 3S-SS-2nd295 | CSD-LKO Calender (6 day + Holiday)-25 | Physical Progress [1020 h]; TATA Projects Ltd-25 |  |
| 3S-WMI-Serv.F.15 |  | Brickwork/Blockwork | 30d | 2027-06-19 | 2027-07-24 | 3S-WMI-Serv.F.10, E-GFC-AR-3S-130 | CSD-LKO Calender (6 day + Holiday)-25 | Masonry [446 CuM]; Mason [2980 h]; Helper [1490 h]; Physical Progress [7590 h]; TATA Projects Ltd-25 | 4,252,770.56 |
| 3S-WMI-Serv.F.55 |  | Waterproofing of Toilets, Balcony & Kitchen | 35d | 2027-07-24 | 2027-09-03 | 3S-WMI-Serv.F.15 | CSD-LKO Calender (6 day + Holiday)-25 | Waterproofing [8564838 INR]; Waterprrofing Mason [8160 h]; Helper [4080 h]; Physical Progress [3790 h]; TATA Projects Ltd-25 | 8,564,838 |
| 3S-WMI-Serv.F.100 |  | Plaster | 35d | 2027-09-03 | 2027-10-18 | 3S-WMI-Serv.F.30, 3S-WMI-Serv.F.80, 3S-WMI-Serv.F.85 | CSD-LKO Calender (6 day + Holiday)-25 | Plaster [7060 Sqr Mtr]; Mason [4710 h]; Helper [2360 h]; Physical Progress [3790 h]; TATA Projects Ltd-25 | 3,910,604.6 |
|  | 5 | **MEP** |  | 2027-06-19 | 2028-10-16 |  |  |  |  |
|  | 2 | **HVAC** |  | 2027-07-24 | 2028-10-16 |  |  |  |  |
|  | 1 | **1st Fix** |  | 2027-07-24 | 2027-11-17 |  |  |  |  |
| 3S-WMI-Serv.F.50 |  | Duct Support Fabrication | 35d | 2027-07-24 | 2027-09-03 | 3S-WMI-Serv.F.15, E-GFC-MEP-3S-270 | CSD-LKO Calender (6 day + Holiday)-25 | Physical Progress [3790 h]; HVAC [222862 INR]; TATA Projects Ltd-25 | 222,862 |
| 3S-WMI-Serv.F.105 |  | Installing duct hangers and supports | 30d | 2027-09-03 | 2027-10-12 | 3S-WMI-Serv.F.50, E-GFC-MEP-3S-270 | CSD-LKO Calender (6 day + Holiday)-25 | Physical Progress [2530 h]; HVAC [445725 INR]; TATA Projects Ltd-25 | 445,725 |
| 3S-WMI-Serv.F.135 |  | Laying concealed/exposed refrigerant piping | 30d | 2027-10-12 | 2027-11-17 | 3S-WMI-Serv.F.105, E-GFC-MEP-3S-270 | CSD-LKO Calender (6 day + Holiday)-25 | Physical Progress [3790 h]; HVAC [111431 INR]; TATA Projects Ltd-25 | 111,431 |
| 3S-WMI-Serv.F.140 |  | Laying concealed/exposed drain piping | 30d | 2027-10-12 | 2027-11-17 | 3S-WMI-Serv.F.105, E-GFC-MEP-3S-270 | CSD-LKO Calender (6 day + Holiday)-25 | Physical Progress [2530 h]; HVAC [668587 INR]; TATA Projects Ltd-25 | 668,587 |

| ID | WBS | Activity | Duration | Start | Finish | Predecessors | Calendar | Resources | Cost |
| --- | --- | --- | --- | --- | --- | --- | --- | --- | --- |
|  | 2 | **2nd Fix** |  | 2027-10-12 | 2028-02-28 |  |  |  |  |
| 3S-WMI-Serv.F.145 |  | Duct installation | 20d | 2027-10-12 | 2027-11-05 | 3S-WMI-Serv.F.105 | CSD-LKO Calender (6 day + Holiday)-25 | Physical Progress [3790 h]; HVAC [1671468 INR]; TATA Projects Ltd-25 | 1,671,468 |
| 3S-WMI-Serv.F.175 |  | Insulation of ducts (thermal/acoustic) | 10d | 2027-11-05 | 2027-11-17 | 3S-WMI-Serv.F.145 | CSD-LKO Calender (6 day + Holiday)-25 | Physical Progress [1530 h]; HVAC [1002881 INR]; TATA Projects Ltd-25 | 1,002,881 |
| 3S-WMI-Serv.F.190 |  | Installation of chilled water piping / VRF piping | 20d | 2027-11-17 | 2027-12-10 | 3S-WMI-Serv.F.175 | CSD-LKO Calender (6 day + Holiday)-25 | Physical Progress [1530 h]; HVAC [2228625 INR]; TATA Projects Ltd-25 | 2,228,625 |
| 3S-WMI-Serv.F.225 |  | Installation of indoor units including AHU, FCU | 45d | 2027-12-10 | 2028-02-04 | 3S-WMI-Serv.F.190, 3S-WMI-Serv.F.135, 3S-WMI-Serv.F.140 | CSD-LKO Calender (6 day + Holiday)-25 | Physical Progress [11380 h]; HVAC [2005762 INR]; TATA Projects Ltd-25 | 2,005,762 |
| 3S-WMI-Serv.F.245 |  | Connecting refrigerant and drain piping to indoor units | 20d | 2028-02-04 | 2028-02-28 | 3S-WMI-Serv.F.225 | CSD-LKO Calender (6 day + Holiday)-25 | Physical Progress [1530 h]; HVAC [557156 INR]; TATA Projects Ltd-25 | 557,156 |
|  | 3 | **Final Fix** |  | 2028-08-02 | 2028-10-16 |  |  |  |  |
| 3S-WMI-Serv.F.350 |  | Installing grills, diffusers, dampers | 30d | 2028-08-02 | 2028-09-08 | 3S-WMI-Serv.F.255 | CSD-LKO Calender (6 day + Holiday)-25 | Physical Progress [1530 h]; HVAC [1114312 INR]; TATA Projects Ltd-25 | 1,114,312 |
| 3S-WMI-Serv.F.365 |  | Installation of thermostats and control panels | 30d | 2028-09-08 | 2028-10-16 | 3S-WMI-Serv.F.350, 3S-WMI-Serv.F.265 | CSD-LKO Calender (6 day + Holiday)-25 | Physical Progress [1530 h]; HVAC [557156 INR]; TATA Projects Ltd-25 | 557,156 |
|  | 1 | **Electrical** |  | 2027-06-19 | 2028-09-20 |  |  |  |  |
|  | 1 | **1st Fix** |  | 2027-06-19 | 2027-09-03 |  |  |  |  |
| 3S-WMI-Serv.F.20 |  | Slab Conduiting | 35d | 2027-06-19 | 2027-07-30 | 3S-WMI-Serv.F.10, E-GFC-MEP-3S-270 | CSD-LKO Calender (6 day + Holiday)-25 | Physical Progress [6320 h]; Electrical [1247377 INR]; TATA Projects Ltd-25 | 1,247,377 |
| 3S-WMI-Serv.F.30 |  | Wall Conduiting | 30d | 2027-07-24 | 2027-08-28 | 3S-WMI-Serv.F.15, E-GFC-MEP-3S-270 | CSD-LKO Calender (6 day + Holiday)-25 | Physical Progress [2530 h]; Electrical [623688 INR]; TATA Projects Ltd-25 | 623,688 |
| 3S-WMI-Serv.F.80 |  | Installing back boxes for switches, sockets | 5d | 2027-08-28 | 2027-09-03 | 3S-WMI-Serv.F.30, 3S-WMI-Serv.F.20, E-GFC-MEP-3S-270 | CSD-LKO Calender (6 day + Holiday)-25 | Physical Progress [1280 h]; Electrical [374213 INR]; TATA Projects Ltd-25 | 374,213 |
|  | 2 | **2nd Fix** |  | 2027-10-18 | 2028-03-29 |  |  |  |  |
| 3S-WMI-Serv.F.120 |  | Cable tray laying | 25d | 2027-10-18 | 2027-11-17 | 3S-WMI-Serv.F.100 | CSD-LKO Calender (6 day + Holiday)-25 | Physical Progress [6320 h]; Electrical [498951 INR]; TATA Projects Ltd-25 | 498,951 |
| 3S-WMI-Serv.F.160 |  | Cabling & Wire Pulling | 35d | 2027-11-17 | 2027-12-29 | 3S-WMI-Serv.F.120 | CSD-LKO Calender (6 day + Holiday)-25 | Physical Progress [11380 h]; Electrical [2494753 INR]; TATA Projects Ltd-25 | 2,494,753 |
| 3S-WMI-Serv.F.210 |  | DB fixing and connecting | 35d | 2027-12-29 | 2028-02-10 | 3S-WMI-Serv.F.160 | CSD-LKO Calender (6 day + Holiday)-25 | Physical Progress [3790 h]; Electrical [374213 INR]; TATA Projects Ltd-25 | 374,213 |
| 3S-WMI-Serv.F.215 |  | Floor Rising Main Installation | 20d | 2027-12-29 | 2028-01-22 | 3S-WMI-Serv.F.160 | CSD-LKO Calender (6 day + Holiday)-25 | Physical Progress [1280 h]; Electrical [1746327 INR]; TATA Projects Ltd-25 | 1,746,327 |
| 3S-WMI-Serv.F.230 |  | Floor/Distribution Panel Installation | 20d | 2028-02-10 | 2028-03-04 | 3S-WMI-Serv.F.210 | CSD-LKO Calender (6 day + Holiday)-25 | Physical Progress [1280 h]; Electrical [997901 INR]; TATA Projects Ltd-25 | 997,901 |
| 3S-WMI-Serv.F.240 |  | Equipment Earthing | 20d | 2028-03-04 | 2028-03-29 | 3S-WMI-Serv.F.230, 3S-WMI-Serv.F.215 | CSD-LKO Calender (6 day + Holiday)-25 | Physical Progress [2530 h]; Electrical [374213 INR]; TATA Projects Ltd-25 | 374,213 |
|  | 3 | **Final Fix** |  | 2028-07-10 | 2028-09-20 |  |  |  |  |
| 3S-WMI-Serv.F.270 |  | Switches & Socket | 30d | 2028-07-10 | 2028-08-14 | 3S-WMI-Serv.F.265 | CSD-LKO Calender (6 day + Holiday)-25 | Physical Progress [5060 h]; Electrical [1247377 INR]; TATA Projects Ltd-25 | 1,247,377 |
| 3S-WMI-Serv.F.345 |  | Light Fixtures | 30d | 2028-08-14 | 2028-09-20 | 3S-WMI-Serv.F.270 | CSD-LKO Calender (6 day + Holiday)-25 | Physical Progress [3790 h]; Electrical [1871065 INR]; TATA Projects Ltd-25 | 1,871,065 |

| ID | WBS | Activity | Duration | Start | Finish | Predecessors | Calendar | Resources | Cost |
| --- | --- | --- | --- | --- | --- | --- | --- | --- | --- |
|  | 3 | **Plumbing** |  | 2027-07-24 | 2028-09-02 |  |  |  |  |
|  | 1 | **1st Fix** |  | 2027-07-24 | 2027-12-29 |  |  |  |  |
| 3S-WMI-Serv.F.35 |  | Fixing pipe supports and clamps | 35d | 2027-07-24 | 2027-09-03 | 3S-WMI-Serv.F.15, E-GFC-MEP-3S-270 | CSD-LKO Calender (6 day + Holiday)-25 | Physical Progress [2530 h]; Plumbing [400934 INR]; TATA Projects Ltd-25 | 400,934 |
| 3S-WMI-Serv.F.60 |  | Laying water supply pipes (hot & cold) | 35d | 2027-09-03 | 2027-10-18 | 3S-WMI-Serv.F.35, E-GFC-MEP-3S-270 | CSD-LKO Calender (6 day + Holiday)-25 | Physical Progress [3790 h]; Plumbing [801867 INR]; TATA Projects Ltd-25 | 801,867 |
| 3S-WMI-Serv.F.65 |  | Laying drainage pipes (soil, waste, vent) | 35d | 2027-09-03 | 2027-10-18 | 3S-WMI-Serv.F.35, E-GFC-MEP-3S-270 | CSD-LKO Calender (6 day + Holiday)-25 | Physical Progress [3790 h]; Plumbing [801867 INR]; TATA Projects Ltd-25 | 801,867 |
| 3S-WMI-Serv.F.75 |  | Installation of plumbing fixture base supports (WC frames, sink brackets) | 30d | 2027-10-18 | 2027-11-23 | 3S-WMI-Serv.F.65, E-GFC-MEP-3S-270 | CSD-LKO Calender (6 day + Holiday)-25 | Physical Progress [1530 h]; Plumbing [400934 INR]; TATA Projects Ltd-25 | 400,934 |
| 3S-WMI-Serv.F.90 |  | Pressure testing of water supply lines | 25d | 2027-11-23 | 2027-12-22 | 3S-WMI-Serv.F.60, 3S-WMI-Serv.F.65, 3S-WMI-Serv.F.75, E-GFC-MEP-3S-270 | CSD-LKO Calender (6 day + Holiday)-25 | Physical Progress [1770 h]; Plumbing [80187 INR]; TATA Projects Ltd-25 | 80,187 |
| 3S-WMI-Serv.F.95 |  | Installation of concealed parts of toilet fixtures | 30d | 2027-11-23 | 2027-12-29 | 3S-WMI-Serv.F.75, E-GFC-MEP-3S-270 | CSD-LKO Calender (6 day + Holiday)-25 | Physical Progress [2530 h]; Plumbing [400934 INR]; TATA Projects Ltd-25 | 400,934 |
|  | 2 | **2nd FIx** |  | 2027-12-22 | 2028-03-17 |  |  |  |  |
| 3S-WMI-Serv.F.115 |  | Insulation of hot water pipes (if applicable) | 30d | 2027-12-22 | 2028-01-29 | 3S-WMI-Serv.F.90 | CSD-LKO Calender (6 day + Holiday)-25 | Physical Progress [1530 h]; Plumbing [400934 INR]; TATA Projects Ltd-25 | 400,934 |
| 3S-WMI-Serv.F.125 |  | Installation of vertical risers and main distribution lines | 35d | 2027-12-29 | 2028-02-10 | 3S-WMI-Serv.F.100, 3S-WMI-Serv.F.90, 3S-WMI-Serv.F.95 | CSD-LKO Calender (6 day + Holiday)-25 | Physical Progress [5060 h]; Plumbing [801867 INR]; TATA Projects Ltd-25 | 801,867 |
| 3S-WMI-Serv.F.150 |  | Testing drainage lines for leakage/blockage | 30d | 2028-01-29 | 2028-03-04 | 3S-WMI-Serv.F.75, 3S-WMI-Serv.F.115 | CSD-LKO Calender (6 day + Holiday)-25 | Physical Progress [1530 h]; Plumbing [80187 INR]; TATA Projects Ltd-25 | 80,187 |
| 3S-WMI-Serv.F.165 |  | Fixing floor traps and gully traps | 30d | 2028-02-10 | 2028-03-17 | 3S-WMI-Serv.F.125 | CSD-LKO Calender (6 day + Holiday)-25 | Physical Progress [1530 h]; Plumbing [240560 INR]; TATA Projects Ltd-25 | 240,560 |
|  | 3 | **Final FIx** |  | 2028-07-10 | 2028-09-02 |  |  |  |  |
| 3S-WMI-Serv.F.275 |  | Installation of sanitary fixtures (WC, washbasins, urinals, sinks) | 10d | 2028-07-10 | 2028-07-21 | 3S-WMI-Serv.F.265, 3S-WMI-Serv.F.150 | CSD-LKO Calender (6 day + Holiday)-25 | Physical Progress [2530 h]; Plumbing [1603734 INR]; TATA Projects Ltd-25 | 1,603,734 |
| 3S-WMI-Serv.F.315 |  | Installation of CP fittings (taps, mixers, showers, health faucets) | 10d | 2028-07-21 | 2028-08-02 | 3S-WMI-Serv.F.275, 3S-WMI-Serv.F.265 | CSD-LKO Calender (6 day + Holiday)-25 | Physical Progress [2530 h]; Plumbing [801867 INR]; TATA Projects Ltd-25 | 801,867 |
| 3S-WMI-Serv.F.340 |  | Connection of appliances | 25d | 2028-08-02 | 2028-09-02 | 3S-WMI-Serv.F.315 | CSD-LKO Calender (6 day + Holiday)-25 | Physical Progress [1770 h]; Plumbing [400934 INR]; TATA Projects Ltd-25 | 400,934 |
|  | 4 | **Firefighting** |  | 2027-07-24 | 2028-09-08 |  |  |  |  |
|  | 1 | **1st Fix** |  | 2027-07-24 | 2027-11-23 |  |  |  |  |
| 3S-WMI-Serv.F.40 |  | Fixing pipe supports and hangers | 35d | 2027-07-24 | 2027-09-03 | 3S-WMI-Serv.F.15, E-GFC-MEP-3S-270 | CSD-LKO Calender (6 day + Holiday)-25 | Physical Progress [2530 h]; Firefighting [292135 INR]; TATA Projects Ltd-25 | 292,135 |
| 3S-WMI-Serv.F.110 |  | Laying branch piping | 35d | 2027-09-03 | 2027-10-18 | 3S-WMI-Serv.F.40, E-GFC-MEP-3S-270 | CSD-LKO Calender (6 day + Holiday)-25 | Physical Progress [3790 h]; Firefighting [626004 INR]; TATA Projects Ltd-25 | 626,004 |
| 3S-WMI-Serv.F.155 |  | Hydrostatic pressure testing of piping | 30d | 2027-10-18 | 2027-11-23 | 3S-WMI-Serv.F.110, E-GFC-MEP-3S-270 | CSD-LKO Calender (6 day + Holiday)-25 | Physical Progress [1530 h]; Firefighting [83467 INR]; TATA Projects Ltd-25 | 83,467 |
|  | 2 | **2nd Fix** |  | 2027-11-23 | 2028-02-16 |  |  |  |  |
| 3S-WMI-Serv.F.180 |  | Installation of vertical risers and distribution piping in shafts | 35d | 2027-11-23 | 2028-01-05 | 3S-WMI-Serv.F.100, 3S-WMI-Serv.F.155 | CSD-LKO Calender (6 day + Holiday)-25 | Physical Progress [6320 h]; Firefighting [834672 INR]; TATA Projects Ltd-25 | 834,672 |
| 3S-WMI-Serv.F.185 |  | Painting/insulation of exposed fire pipes | 30d | 2027-11-23 | 2027-12-29 | 3S-WMI-Serv.F.155 | CSD-LKO Calender (6 day + Holiday)-25 | Physical Progress [2530 h]; Firefighting [41734 INR]; TATA Projects Ltd-25 | 41,734 |
| 3S-WMI-Serv.F.195 |  | Testing risers and branch lines for leakage | 30d | 2027-12-29 | 2028-02-04 | 3S-WMI-Serv.F.185 | CSD-LKO Calender (6 day + Holiday)-25 | Physical Progress [1530 h]; Firefighting [83467 INR]; TATA Projects Ltd-25 | 83,467 |
| 3S-WMI-Serv.F.205 |  | Installation of sprinkler branch lines in ceilings | 35d | 2028-01-05 | 2028-02-16 | 3S-WMI-Serv.F.180 | CSD-LKO Calender (6 day + Holiday)-25 | Physical Progress [6320 h]; Firefighting [626004 INR]; TATA Projects Ltd-25 | 626,004 |

| ID | WBS | Activity | Duration | Start | Finish | Predecessors | Calendar | Resources | Cost |
| --- | --- | --- | --- | --- | --- | --- | --- | --- | --- |
|  | 3 | **Final FIx** |  | 2028-07-10 | 2028-09-08 |  |  |  |  |
| 3S-WMI-Serv.F.280 |  | Installation of sprinkler heads, nozzles, and final alignment | 35d | 2028-07-10 | 2028-08-21 | 3S-WMI-Serv.F.265, 3S-WMI-Serv.F.205 | CSD-LKO Calender (6 day + Holiday)-25 | Physical Progress [11380 h]; Firefighting [626004 INR]; TATA Projects Ltd-25 | 626,004 |
| 3S-WMI-Serv.F.285 |  | Installation of hydrant accessories (valves, hose reels, cabinets) | 25d | 2028-07-10 | 2028-08-08 | 3S-WMI-Serv.F.265 | CSD-LKO Calender (6 day + Holiday)-25 | Physical Progress [2530 h]; Firefighting [417336 INR]; TATA Projects Ltd-25 | 417,336 |
| 3S-WMI-Serv.F.290 |  | Installation of portable fire extinguishers | 30d | 2028-07-10 | 2028-08-14 | 3S-WMI-Serv.F.265 | CSD-LKO Calender (6 day + Holiday)-25 | Physical Progress [1530 h]; Firefighting [41734 INR]; TATA Projects Ltd-25 | 41,734 |
| 3S-WMI-Serv.F.355 |  | Integration with fire alarm system | 20d | 2028-08-14 | 2028-09-08 | 3S-WMI-Serv.F.290 | CSD-LKO Calender (6 day + Holiday)-25 | Physical Progress [5060 h]; Firefighting [208668 INR]; TATA Projects Ltd-25 | 208,668 |
|  | 5 | **ELV** |  | 2027-06-19 | 2028-09-02 |  |  |  |  |
|  | 1 | **1st Fix** |  | 2027-06-19 | 2027-09-03 |  |  |  |  |
| 3S-WMI-Serv.F.25 |  | Slab Conduiting | 35d | 2027-06-19 | 2027-07-30 | 3S-WMI-Serv.F.10, E-GFC-MEP-3S-270 | CSD-LKO Calender (6 day + Holiday)-25 | Physical Progress [6320 h]; ELV [234433 INR]; TATA Projects Ltd-25 | 234,433 |
| 3S-WMI-Serv.F.45 |  | Wall Conduiting | 30d | 2027-07-24 | 2027-08-28 | 3S-WMI-Serv.F.15, E-GFC-MEP-3S-270 | CSD-LKO Calender (6 day + Holiday)-25 | Physical Progress [2530 h]; ELV [100471 INR]; TATA Projects Ltd-25 | 100,471 |
| 3S-WMI-Serv.F.85 |  | Installing back boxes for switches, sockets | 5d | 2027-08-28 | 2027-09-03 | 3S-WMI-Serv.F.45, 3S-WMI-Serv.F.25, E-GFC-MEP-3S-270 | CSD-LKO Calender (6 day + Holiday)-25 | Physical Progress [1280 h]; ELV [167452 INR]; TATA Projects Ltd-25 | 167,452 |
|  | 2 | **2nd Fix** |  | 2027-10-18 | 2028-05-12 |  |  |  |  |
| 3S-WMI-Serv.F.130 |  | Cable tray installation | 35d | 2027-10-18 | 2027-11-29 | 3S-WMI-Serv.F.100 | CSD-LKO Calender (6 day + Holiday)-25 | Physical Progress [6320 h]; ELV [167452 INR]; TATA Projects Ltd-25 | 167,452 |
| 3S-WMI-Serv.F.170 |  | Cabeling of ELV cable - IT/Fire Alarm/Public Address | 45d | 2027-11-29 | 2028-01-22 | 3S-WMI-Serv.F.130 | CSD-LKO Calender (6 day + Holiday)-25 | Physical Progress [11380 h]; ELV [401885 INR]; TATA Projects Ltd-25 | 401,885 |
| 3S-WMI-Serv.F.200 |  | ELV Rack Installation | 30d | 2028-01-22 | 2028-02-28 | 3S-WMI-Serv.F.170 | CSD-LKO Calender (6 day + Holiday)-25 | Physical Progress [2530 h]; ELV [167452 INR]; TATA Projects Ltd-25 | 167,452 |
| 3S-WMI-Serv.F.220 |  | Termination of cables at junction boxes, patch panels, and control panels | 35d | 2028-02-28 | 2028-04-10 | 3S-WMI-Serv.F.200 | CSD-LKO Calender (6 day + Holiday)-25 | Physical Progress [7590 h]; ELV [167452 INR]; TATA Projects Ltd-25 | 167,452 |
| 3S-WMI-Serv.F.235 |  | Fixing devices like CCTV camera bases, card reader bases, smoke detector bases, PA Bases, Wifi Bases | 25d | 2028-04-10 | 2028-05-12 | 3S-WMI-Serv.F.220 | CSD-LKO Calender (6 day + Holiday)-25 | Physical Progress [1020 h]; ELV [334904 INR]; TATA Projects Ltd-25 | 334,904 |
|  | 3 | **Final Fix** |  | 2028-07-10 | 2028-09-02 |  |  |  |  |
| 3S-WMI-Serv.F.295 |  | Installation of data and Voice Faceplate | 25d | 2028-07-10 | 2028-08-08 | 3S-WMI-Serv.F.265 | CSD-LKO Calender (6 day + Holiday)-25 | Physical Progress [3790 h]; ELV [167452 INR]; TATA Projects Ltd-25 | 167,452 |
| 3S-WMI-Serv.F.300 |  | Installation of Camera & Wifi | 30d | 2028-07-10 | 2028-08-14 | 3S-WMI-Serv.F.265 | CSD-LKO Calender (6 day + Holiday)-25 | Physical Progress [3790 h]; ELV [167452 INR]; TATA Projects Ltd-25 | 167,452 |
| 3S-WMI-Serv.F.305 |  | Installation of fire alarm devices + Public Address | 15d | 2028-07-10 | 2028-07-27 | 3S-WMI-Serv.F.265 | CSD-LKO Calender (6 day + Holiday)-25 | Physical Progress [3790 h]; ELV [200942 INR]; TATA Projects Ltd-25 | 200,942 |
| 3S-WMI-Serv.F.320 |  | Installation of Active System | 15d | 2028-07-27 | 2028-08-14 | 3S-WMI-Serv.F.305 | CSD-LKO Calender (6 day + Holiday)-25 | Physical Progress [3790 h]; ELV [334904 INR]; TATA Projects Ltd-25 | 334,904 |
| 3S-WMI-Serv.F.325 |  | Fire Panel Intallation & Integration | 25d | 2028-07-27 | 2028-08-28 | 3S-WMI-Serv.F.305 | CSD-LKO Calender (6 day + Holiday)-25 | Physical Progress [6320 h]; ELV [167452 INR]; TATA Projects Ltd-25 | 167,452 |
| 3S-WMI-Serv.F.330 |  | Installation & Integration of Audio Visual System | 25d | 2028-07-27 | 2028-08-28 | 3S-WMI-Serv.F.305 | CSD-LKO Calender (6 day + Holiday)-25 | Physical Progress [6320 h]; ELV [167452 INR]; TATA Projects Ltd-25 | 167,452 |
| 3S-WMI-Serv.F.335 |  | Installation & Integration of Access Control | 25d | 2028-07-27 | 2028-08-28 | 3S-WMI-Serv.F.305 | CSD-LKO Calender (6 day + Holiday)-25 | Physical Progress [6320 h]; ELV [167452 INR]; TATA Projects Ltd-25 | 167,452 |
| 3S-WMI-Serv.F.360 |  | Integration of Active components | 15d | 2028-08-14 | 2028-09-02 | 3S-WMI-Serv.F.320 | CSD-LKO Calender (6 day + Holiday)-25 | Physical Progress [3790 h]; ELV [66981 INR]; TATA Projects Ltd-25 | 66,981 |

| ID | WBS | Activity | Duration | Start | Finish | Predecessors | Calendar | Resources | Cost |
| --- | --- | --- | --- | --- | --- | --- | --- | --- | --- |
|  | 2 | **Dry Finishes/ID Works** |  | 2027-09-03 | 2028-12-20 |  |  |  |  |
| 3S-WMI-Serv.F.70 |  | Flooring | 120d | 2027-09-03 | 2028-01-29 | 3S-WMI-Serv.F.55 | CSD-LKO Calender (6 day + Holiday)-25 | ID Work [13657371 INR]; Physical Progress [3790 h]; TATA Projects Ltd-25 | 13,657,371 |
| 3S-WMI-Serv.F.250 |  | Wall finish ID Works | 35d | 2028-05-12 | 2028-06-22 | 3S-WMI-Serv.F.235, 3S-WMI-Serv.F.165, 3S-WMI-Serv.F.240, 3S-WMI-Serv.F.245, 3S-WMI-Serv.F.145, 3S-WMI-Serv.F.175, 3S-WMI-Serv.F.190, 3S-WMI-Serv.F.225, 3S-WMI-Serv.F.120, 3S-WMI-Serv.F.160, 3S-WMI-Serv.F.210, 3S-WMI-Serv.F.215, 3S-WMI-Serv.F.230, 3S-WMI-Serv.F.115, 3S-WMI-Serv.F.125, 3S-WMI-Serv.F.150, 3S-WMI-Serv.F.180, 3S-WMI-Serv.F.185, 3S-WMI-Serv.F.195, 3S-WMI-Serv.F.205, 3S-WMI-Serv.F.130, 3S-WMI-Serv.F.170, 3S-WMI-Serv.F.200, 3S-WMI-Serv.F.220, 3S-WMI-Serv.F.70 | CSD-LKO Calender (6 day + Holiday)-25 | ID Work [7587428 INR]; Physical Progress [7590 h]; TATA Projects Ltd-25 | 7,587,428 |
| 3S-WMI-Serv.F.255 |  | False Ceiling Installation | 35d | 2028-06-22 | 2028-08-02 | 3S-WMI-Serv.F.250 | CSD-LKO Calender (6 day + Holiday)-25 | ID Work [9104914 INR]; Physical Progress [11380 h]; TATA Projects Ltd-25 | 9,104,914 |
| 3S-WMI-Serv.F.260 |  | Doors & Windows/Fire Doors/Shaft Doors | 35d | 2028-06-22 | 2028-08-02 | 3S-WMI-Serv.F.250 | CSD-LKO Calender (6 day + Holiday)-25 | ID Work [7587428 INR]; Physical Progress [3790 h]; TATA Projects Ltd-25 | 7,587,428 |
| 3S-WMI-Serv.F.265 |  | Putty & First Coat of Paint | 15d | 2028-06-22 | 2028-07-10 | 3S-WMI-Serv.F.250, 3S-WMI-Serv.F.70 | CSD-LKO Calender (6 day + Holiday)-25 | Painting [2172 Sq m]; Painter [2180 h]; Helper [2180 h]; Physical Progress [3790 h]; TATA Projects Ltd-25 | 496,562.64 |
| 3S-WMI-Serv.F.310 |  | Railing for staircase | 35d | 2028-07-10 | 2028-08-21 | 3S-WMI-Serv.F.250, 3S-WMI-Serv.F.265 | CSD-LKO Calender (6 day + Holiday)-25 | ID Work [2276229 INR]; Physical Progress [3790 h]; TATA Projects Ltd-25 | 2,276,229 |
| 3S-WMI-Serv.F.370 |  | False ceiling final finishes | 15d | 2028-10-16 | 2028-11-03 | 3S-WMI-Serv.F.365 | CSD-LKO Calender (6 day + Holiday)-25 | ID Work [2276229 INR]; Physical Progress [3790 h]; TATA Projects Ltd-25 | 2,276,229 |
| 3S-WMI-Serv.F.375 |  | Fixed Furniture | 10d | 2028-11-03 | 2028-11-15 | 3S-WMI-Serv.F.370 | CSD-LKO Calender (6 day + Holiday)-25 | ID Work [6828686 INR]; Physical Progress [2530 h]; TATA Projects Ltd-25 | 6,828,686 |
| 3S-WMI-Serv.F.380 |  | Final coat of paint | 15d | 2028-11-15 | 2028-12-02 | 3S-WMI-Serv.F.370, 3S-WMI-Serv.F.310, 3S-WMI-Serv.F.375, 3S-WMI-Serv.F.345, 3S-WMI-Serv.F.340, 3S-WMI-Serv.F.355, 3S-WMI-Serv.F.290, 3S-WMI-Serv.F.360, 3S-WMI-Serv.F.335, 3S-WMI-Serv.F.330, 3S-WMI-Serv.F.325, 3S-WMI-Serv.F.300, 3S-WMI-Serv.F.295, 3S-WMI-Serv.F.260 | CSD-LKO Calender (6 day + Holiday)-25 | Painting [2172 Sq m]; Painter [2180 h]; Helper [2180 h]; Physical Progress [3790 h]; TATA Projects Ltd-25 | 496,562.64 |
| 3S-WMI-Serv.F.385 |  | Soft Furnishing & Signage | 15d | 2028-12-02 | 2028-12-20 | 3S-WMI-Serv.F.380 | CSD-LKO Calender (6 day + Holiday)-25 | ID Work [11381143 INR]; Physical Progress [1280 h]; TATA Projects Ltd-25 | 11,381,143 |
| 3S-WMI-Serv.F.390 |  | Loose Furniture | 15d | 2028-12-02 | 2028-12-20 | 3S-WMI-Serv.F.380 | CSD-LKO Calender (6 day + Holiday)-25 | ID Work [15174857 INR]; Physical Progress [1280 h]; TATA Projects Ltd-25 | 15,174,857 |
|  | 4 | **Second Floor** |  | 2027-07-14 | 2029-01-09 |  |  |  |  |
|  | 1 | **Wet Finishes** |  | 2027-07-14 | 2027-10-23 |  |  |  |  |
| 3S-WMI-2nd10 |  | Deshuttering | 4d | 2027-07-14 | 2027-07-19 | 3S-SS-3rd295 | CSD-LKO Calender (6 day + Holiday)-25 | Physical Progress [1020 h]; TATA Projects Ltd-25 |  |
| 3S-WMI-2nd15 |  | Brickwork/Blockwork | 30d | 2027-07-19 | 2027-08-23 | 3S-WMI-2nd10, E-GFC-AR-3S-275 | CSD-LKO Calender (6 day + Holiday)-25 | Masonry [446 CuM]; Mason [2980 h]; Helper [1490 h]; Physical Progress [7590 h]; TATA Projects Ltd-25 | 4,252,770.56 |
| 3S-WMI-2nd55 |  | Waterproofing of Toilets, Balcony & Kitchen | 15d | 2027-08-23 | 2027-09-10 | 3S-WMI-2nd15 | CSD-LKO Calender (6 day + Holiday)-25 | Waterproofing [8564838 INR]; Waterprrofing Mason [8160 h]; Helper [4080 h]; Physical Progress [3790 h]; TATA Projects Ltd-25 | 8,564,838 |
| 3S-WMI-2nd95 |  | Plaster | 15d | 2027-10-05 | 2027-10-23 | 3S-WMI-2nd30, 3S-WMI-2nd75, 3S-WMI-2nd80, 3S-WMI-2nd55 | CSD-LKO Calender (6 day + Holiday)-25 | Plaster [7060 Sqr Mtr]; Mason [4710 h]; Helper [2360 h]; Physical Progress [3790 h]; TATA Projects Ltd-25 | 3,910,604.6 |
|  | 5 | **MEP 1st Fix, 2nd Fix** |  | 2027-07-19 | 2028-02-01 |  |  |  |  |
|  | 2 | **HVAC** |  | 2027-08-23 | 2028-01-29 |  |  |  |  |
|  | 1 | **1st Fix** |  | 2027-08-23 | 2027-10-30 |  |  |  |  |
| 3S-WMI-2nd50 |  | Duct Support Fabrication | 15d | 2027-08-23 | 2027-09-10 | 3S-WMI-2nd15, E-GFC-MEP-3S-275 | CSD-LKO Calender (6 day + Holiday)-25 | Physical Progress [3790 h]; HVAC [222862 INR]; TATA Projects Ltd-25 | 222,862 |
| 3S-WMI-2nd100 |  | Installing duct hangers and supports | 25d | 2027-09-10 | 2027-10-12 | 3S-WMI-2nd50, E-GFC-MEP-3S-275 | CSD-LKO Calender (6 day + Holiday)-25 | Physical Progress [2530 h]; HVAC [445725 INR]; TATA Projects Ltd-25 | 445,725 |
| 3S-WMI-2nd130 |  | Laying concealed/exposed refrigerant piping | 15d | 2027-10-12 | 2027-10-30 | 3S-WMI-2nd100, E-GFC-MEP-3S-275 | CSD-LKO Calender (6 day + Holiday)-25 | Physical Progress [3790 h]; HVAC [111431 INR]; TATA Projects Ltd-25 | 111,431 |
| 3S-WMI-2nd135 |  | Laying concealed/exposed drain piping | 15d | 2027-10-12 | 2027-10-30 | 3S-WMI-2nd100, E-GFC-MEP-3S-275 | CSD-LKO Calender (6 day + Holiday)-25 | Physical Progress [2530 h]; HVAC [668587 INR]; TATA Projects Ltd-25 | 668,587 |

| ID | WBS | Activity | Duration | Start | Finish | Predecessors | Calendar | Resources | Cost |
| --- | --- | --- | --- | --- | --- | --- | --- | --- | --- |
|  | 2 | **2nd Fix** |  | 2027-10-12 | 2028-01-29 |  |  |  |  |
| 3S-WMI-2nd140 |  | Duct installation | 15d | 2027-10-12 | 2027-10-30 | 3S-WMI-2nd100 | CSD-LKO Calender (6 day + Holiday)-25 | Physical Progress [3790 h]; HVAC [1671468 INR]; TATA Projects Ltd-25 | 1,671,468 |
| 3S-WMI-2nd170 |  | Insulation of ducts (thermal/acoustic) | 10d | 2027-10-30 | 2027-11-11 | 3S-WMI-2nd140 | CSD-LKO Calender (6 day + Holiday)-25 | Physical Progress [1530 h]; HVAC [1002881 INR]; TATA Projects Ltd-25 | 1,002,881 |
| 3S-WMI-2nd185 |  | Installation of chilled water piping / VRF piping | 20d | 2027-11-11 | 2027-12-04 | 3S-WMI-2nd170 | CSD-LKO Calender (6 day + Holiday)-25 | Physical Progress [1530 h]; HVAC [2228625 INR]; TATA Projects Ltd-25 | 2,228,625 |
| 3S-WMI-2nd270 |  | Installation of indoor units including AHU, FCU | 35d | 2027-12-04 | 2028-01-17 | 3S-WMI-2nd185, 3S-WMI-2nd130, 3S-WMI-2nd135 | CSD-LKO Calender (6 day + Holiday)-25 | Physical Progress [11380 h]; HVAC [2005762 INR]; TATA Projects Ltd-25 | 2,005,762 |
| 3S-WMI-2nd630 |  | Connecting refrigerant and drain piping to indoor units | 10d | 2028-01-17 | 2028-01-29 | 3S-WMI-2nd270 | CSD-LKO Calender (6 day + Holiday)-25 | Physical Progress [1530 h]; HVAC [557156 INR]; TATA Projects Ltd-25 | 557,156 |
|  | 1 | **Electrical** |  | 2027-07-19 | 2028-02-01 |  |  |  |  |
|  | 1 | **1st Fix** |  | 2027-07-19 | 2027-10-05 |  |  |  |  |
| 3S-WMI-2nd20 |  | Slab Conduiting | 35d | 2027-07-19 | 2027-08-28 | 3S-WMI-2nd10, E-GFC-MEP-3S-275 | CSD-LKO Calender (6 day + Holiday)-25 | Physical Progress [6320 h]; Electrical [1247377 INR]; TATA Projects Ltd-25 | 1,247,377 |
| 3S-WMI-2nd30 |  | Wall Conduiting | 30d | 2027-08-23 | 2027-09-28 | 3S-WMI-2nd15, E-GFC-MEP-3S-275 | CSD-LKO Calender (6 day + Holiday)-25 | Physical Progress [2530 h]; Electrical [623688 INR]; TATA Projects Ltd-25 | 623,688 |
| 3S-WMI-2nd75 |  | Installing back boxes for switches, sockets | 5d | 2027-09-28 | 2027-10-05 | 3S-WMI-2nd30, 3S-WMI-2nd20, E-GFC-MEP-3S-275 | CSD-LKO Calender (6 day + Holiday)-25 | Physical Progress [1280 h]; Electrical [374213 INR]; TATA Projects Ltd-25 | 374,213 |
|  | 2 | **2nd Fix** |  | 2027-10-23 | 2028-02-01 |  |  |  |  |
| 3S-WMI-2nd115 |  | Cable tray laying | 20d | 2027-10-23 | 2027-11-17 | 3S-WMI-2nd95 | CSD-LKO Calender (6 day + Holiday)-25 | Physical Progress [6320 h]; Electrical [498951 INR]; TATA Projects Ltd-25 | 498,951 |
| 3S-WMI-2nd155 |  | Cabling & Wire Pulling | 25d | 2027-11-17 | 2027-12-16 | 3S-WMI-2nd115 | CSD-LKO Calender (6 day + Holiday)-25 | Physical Progress [11380 h]; Electrical [2494753 INR]; TATA Projects Ltd-25 | 2,494,753 |
| 3S-WMI-2nd235 |  | DB fixing and connecting | 12d | 2027-12-16 | 2027-12-31 | 3S-WMI-2nd155 | CSD-LKO Calender (6 day + Holiday)-25 | Physical Progress [3790 h]; Electrical [374213 INR]; TATA Projects Ltd-25 | 374,213 |
| 3S-WMI-2nd245 |  | Floor Rising Main Installation | 27d | 2027-12-16 | 2028-01-19 | 3S-WMI-2nd155 | CSD-LKO Calender (6 day + Holiday)-25 | Physical Progress [1280 h]; Electrical [1746327 INR]; TATA Projects Ltd-25 | 1,746,327 |
| 3S-WMI-2nd310 |  | Floor/Distribution Panel Installation | 15d | 2027-12-31 | 2028-01-19 | 3S-WMI-2nd235 | CSD-LKO Calender (6 day + Holiday)-25 | Physical Progress [1280 h]; Electrical [997901 INR]; TATA Projects Ltd-25 | 997,901 |
| 3S-WMI-2nd475 |  | Equipment Earthing | 10d | 2028-01-19 | 2028-02-01 | 3S-WMI-2nd310, 3S-WMI-2nd245 | CSD-LKO Calender (6 day + Holiday)-25 | Physical Progress [2530 h]; Electrical [374213 INR]; TATA Projects Ltd-25 | 374,213 |
|  | 3 | **Plumbing** |  | 2027-08-23 | 2028-01-29 |  |  |  |  |
|  | 1 | **1st Fix** |  | 2027-08-23 | 2027-12-16 |  |  |  |  |
| 3S-WMI-2nd35 |  | Fixing pipe supports and clamps | 10d | 2027-08-23 | 2027-09-03 | 3S-WMI-2nd15, E-GFC-MEP-3S-275 | CSD-LKO Calender (6 day + Holiday)-25 | Physical Progress [2530 h]; Plumbing [400934 INR]; TATA Projects Ltd-25 | 400,934 |
| 3S-WMI-2nd60 |  | Laying water supply pipes (hot & cold) | 35d | 2027-09-03 | 2027-10-18 | 3S-WMI-2nd35, E-GFC-MEP-3S-275 | CSD-LKO Calender (6 day + Holiday)-25 | Physical Progress [3790 h]; Plumbing [801867 INR]; TATA Projects Ltd-25 | 801,867 |
| 3S-WMI-2nd65 |  | Laying drainage pipes (soil, waste, vent) | 25d | 2027-09-03 | 2027-10-05 | 3S-WMI-2nd35, E-GFC-MEP-3S-275 | CSD-LKO Calender (6 day + Holiday)-25 | Physical Progress [3790 h]; Plumbing [801867 INR]; TATA Projects Ltd-25 | 801,867 |
| 3S-WMI-2nd70 |  | Installation of plumbing fixture base supports (WC frames, sink brackets) | 30d | 2027-10-05 | 2027-11-11 | 3S-WMI-2nd65, E-GFC-MEP-3S-275 | CSD-LKO Calender (6 day + Holiday)-25 | Physical Progress [1530 h]; Plumbing [400934 INR]; TATA Projects Ltd-25 | 400,934 |
| 3S-WMI-2nd85 |  | Pressure testing of water supply lines | 25d | 2027-11-11 | 2027-12-10 | 3S-WMI-2nd60, 3S-WMI-2nd65, 3S-WMI-2nd70, E-GFC-MEP-3S-275 | CSD-LKO Calender (6 day + Holiday)-25 | Physical Progress [1770 h]; Plumbing [80187 INR]; TATA Projects Ltd-25 | 80,187 |
| 3S-WMI-2nd90 |  | Installation of concealed parts of toilet fixtures | 30d | 2027-11-11 | 2027-12-16 | 3S-WMI-2nd70, E-GFC-MEP-3S-275 | CSD-LKO Calender (6 day + Holiday)-25 | Physical Progress [2530 h]; Plumbing [400934 INR]; TATA Projects Ltd-25 | 400,934 |

| ID | WBS | Activity | Duration | Start | Finish | Predecessors | Calendar | Resources | Cost |
| --- | --- | --- | --- | --- | --- | --- | --- | --- | --- |
|  | 2 | **2nd FIx** |  | 2027-12-10 | 2028-01-29 |  |  |  |  |
| 3S-WMI-2nd110 |  | Insulation of hot water pipes (if applicable) | 20d | 2027-12-10 | 2028-01-05 | 3S-WMI-2nd85 | CSD-LKO Calender (6 day + Holiday)-25 | Physical Progress [1530 h]; Plumbing [400934 INR]; TATA Projects Ltd-25 | 400,934 |
| 3S-WMI-2nd120 |  | Installation of vertical risers and main distribution lines | 25d | 2027-12-16 | 2028-01-17 | 3S-WMI-2nd95, 3S-WMI-2nd85, 3S-WMI-2nd90 | CSD-LKO Calender (6 day + Holiday)-25 | Physical Progress [5060 h]; Plumbing [801867 INR]; TATA Projects Ltd-25 | 801,867 |
| 3S-WMI-2nd145 |  | Testing drainage lines for leakage/blockage | 20d | 2028-01-05 | 2028-01-29 | 3S-WMI-2nd70, 3S-WMI-2nd110 | CSD-LKO Calender (6 day + Holiday)-25 | Physical Progress [1530 h]; Plumbing [80187 INR]; TATA Projects Ltd-25 | 80,187 |
| 3S-WMI-2nd160 |  | Fixing floor traps and gully traps | 10d | 2028-01-17 | 2028-01-29 | 3S-WMI-2nd120 | CSD-LKO Calender (6 day + Holiday)-25 | Physical Progress [1530 h]; Plumbing [240560 INR]; TATA Projects Ltd-25 | 240,560 |
|  | 4 | **Firefighting** |  | 2027-08-23 | 2028-01-29 |  |  |  |  |
|  | 1 | **1st Fix** |  | 2027-08-23 | 2027-11-05 |  |  |  |  |
| 3S-WMI-2nd40 |  | Fixing pipe supports and hangers | 15d | 2027-08-23 | 2027-09-10 | 3S-WMI-2nd15, E-GFC-MEP-3S-275 | CSD-LKO Calender (6 day + Holiday)-25 | Physical Progress [2530 h]; Firefighting [292135 INR]; TATA Projects Ltd-25 | 292,135 |
| 3S-WMI-2nd105 |  | Laying branch piping | 35d | 2027-09-10 | 2027-10-23 | 3S-WMI-2nd40, E-GFC-MEP-3S-275 | CSD-LKO Calender (6 day + Holiday)-25 | Physical Progress [3790 h]; Firefighting [626004 INR]; TATA Projects Ltd-25 | 626,004 |
| 3S-WMI-2nd150 |  | Hydrostatic pressure testing of piping | 10d | 2027-10-23 | 2027-11-05 | 3S-WMI-2nd105, E-GFC-MEP-3S-275 | CSD-LKO Calender (6 day + Holiday)-25 | Physical Progress [1530 h]; Firefighting [83467 INR]; TATA Projects Ltd-25 | 83,467 |
|  | 2 | **2nd Fix** |  | 2027-11-05 | 2028-01-29 |  |  |  |  |
| 3S-WMI-2nd175 |  | Installation of vertical risers and distribution piping in shafts | 35d | 2027-11-05 | 2027-12-16 | 3S-WMI-2nd95, 3S-WMI-2nd150 | CSD-LKO Calender (6 day + Holiday)-25 | Physical Progress [6320 h]; Firefighting [834672 INR]; TATA Projects Ltd-25 | 834,672 |
| 3S-WMI-2nd180 |  | Painting/insulation of exposed fire pipes | 30d | 2027-11-05 | 2027-12-10 | 3S-WMI-2nd150 | CSD-LKO Calender (6 day + Holiday)-25 | Physical Progress [2530 h]; Firefighting [41734 INR]; TATA Projects Ltd-25 | 41,734 |
| 3S-WMI-2nd190 |  | Testing risers and branch lines for leakage | 30d | 2027-12-10 | 2028-01-17 | 3S-WMI-2nd180 | CSD-LKO Calender (6 day + Holiday)-25 | Physical Progress [1530 h]; Firefighting [83467 INR]; TATA Projects Ltd-25 | 83,467 |
| 3S-WMI-2nd205 |  | Installation of sprinkler branch lines in ceilings | 35d | 2027-12-16 | 2028-01-29 | 3S-WMI-2nd175 | CSD-LKO Calender (6 day + Holiday)-25 | Physical Progress [6320 h]; Firefighting [626004 INR]; TATA Projects Ltd-25 | 626,004 |
|  | 5 | **ELV** |  | 2027-07-19 | 2028-01-29 |  |  |  |  |
|  | 1 | **1st Fix** |  | 2027-07-19 | 2027-10-05 |  |  |  |  |
| 3S-WMI-2nd25 |  | Slab Conduiting | 35d | 2027-07-19 | 2027-08-28 | 3S-WMI-2nd10, E-GFC-MEP-3S-275 | CSD-LKO Calender (6 day + Holiday)-25 | Physical Progress [6320 h]; ELV [234433 INR]; TATA Projects Ltd-25 | 234,433 |
| 3S-WMI-2nd45 |  | Wall Conduiting | 30d | 2027-08-23 | 2027-09-28 | 3S-WMI-2nd15, E-GFC-MEP-3S-275 | CSD-LKO Calender (6 day + Holiday)-25 | Physical Progress [2530 h]; ELV [100471 INR]; TATA Projects Ltd-25 | 100,471 |
| 3S-WMI-2nd80 |  | Installing back boxes for switches, sockets | 5d | 2027-09-28 | 2027-10-05 | 3S-WMI-2nd45, 3S-WMI-2nd25, E-GFC-MEP-3S-275 | CSD-LKO Calender (6 day + Holiday)-25 | Physical Progress [1280 h]; ELV [167452 INR]; TATA Projects Ltd-25 | 167,452 |
|  | 2 | **2nd Fix** |  | 2027-10-23 | 2028-01-29 |  |  |  |  |
| 3S-WMI-2nd125 |  | Cable tray installation | 15d | 2027-10-23 | 2027-11-11 | 3S-WMI-2nd95 | CSD-LKO Calender (6 day + Holiday)-25 | Physical Progress [6320 h]; ELV [167452 INR]; TATA Projects Ltd-25 | 167,452 |
| 3S-WMI-2nd165 |  | Cabeling of ELV cable - IT/Fire Alarm/Public Address | 30d | 2027-11-11 | 2027-12-16 | 3S-WMI-2nd125 | CSD-LKO Calender (6 day + Holiday)-25 | Physical Progress [11380 h]; ELV [401885 INR]; TATA Projects Ltd-25 | 401,885 |
| 3S-WMI-2nd195 |  | ELV Rack Installation | 15d | 2027-12-16 | 2028-01-05 | 3S-WMI-2nd165 | CSD-LKO Calender (6 day + Holiday)-25 | Physical Progress [2530 h]; ELV [167452 INR]; TATA Projects Ltd-25 | 167,452 |
| 3S-WMI-2nd260 |  | Termination of cables at junction boxes, patch panels, and control panels | 10d | 2028-01-05 | 2028-01-17 | 3S-WMI-2nd195 | CSD-LKO Calender (6 day + Holiday)-25 | Physical Progress [7590 h]; ELV [167452 INR]; TATA Projects Ltd-25 | 167,452 |
| 3S-WMI-2nd425 |  | Fixing devices like CCTV camera bases, card reader bases, smoke detector bases, PA Bases, Wifi Bases | 10d | 2028-01-17 | 2028-01-29 | 3S-WMI-2nd260 | CSD-LKO Calender (6 day + Holiday)-25 | Physical Progress [1020 h]; ELV [334904 INR]; TATA Projects Ltd-25 | 334,904 |

| ID | WBS | Activity | Duration | Start | Finish | Predecessors | Calendar | Resources | Cost |
| --- | --- | --- | --- | --- | --- | --- | --- | --- | --- |
|  | 3 | **Front Face - Toward Airport** |  | 2028-03-09 | 2029-01-09 |  |  |  |  |
|  | 2 | **Dry Finishes/ID Works** |  | 2028-03-09 | 2029-01-09 |  |  |  |  |
| 3S-WMI-2nd200 |  | Running of Wild Air | 1d | 2028-03-09 | 2028-03-10 | 3S-F-2nd40, 3S-WMI-2nd140, 3S-WMI-2nd170, 3S-WMI-2nd185, 3S-WMI-2nd270, 3S-WMI-2nd630 | CSD-LKO Calender (6 day + Holiday)-25 | Physical Progress [250 h]; TATA Projects Ltd-25 |  |
| 3S-WMI-2nd210 |  | Wall finish ID Works | 35d | 2028-06-12 | 2028-07-21 | 3S-WMI-2nd200, P-H&CC_ID-Fur-20, P-H&CC_ID-Wall-20, P-H&CC_ID-Floor-20, P-H&CC_ID-SF-20, P-H&CC_ID-FC-20, P-H&CC_ID-Doors-20, 3S-WMI-2nd140, 3S-WMI-2nd170, 3S-WMI-2nd185, 3S-WMI-2nd270, 3S-WMI-2nd630, 3S-WMI-2nd115, 3S-WMI-2nd155, 3S-WMI-2nd235, 3S-WMI-2nd245, 3S-WMI-2nd310, 3S-WMI-2nd475, 3S-WMI-2nd110, 3S-WMI-2nd120, 3S-WMI-2nd145, 3S-WMI-2nd160, 3S-WMI-2nd175, 3S-WMI-2nd180, 3S-WMI-2nd190, 3S-WMI-2nd205, 3S-WMI-2nd125, 3S-WMI-2nd165, 3S-WMI-2nd195, 3S-WMI-2nd260, 3S-WMI-2nd425 | CSD-LKO Calender (6 day + Holiday)-25 | ID Work [2529143 INR]; Physical Progress [2530 h]; TATA Projects Ltd-25 | 2,529,143 |
| 3S-WMI-2nd240 |  | False Ceiling Installation | 35d | 2028-07-22 | 2028-09-02 | 3S-WMI-2nd210 | CSD-LKO Calender (6 day + Holiday)-25 | ID Work [3034971 INR]; Physical Progress [5060 h]; TATA Projects Ltd-25 | 3,034,971 |
| 3S-WMI-2nd275 |  | Flooring of toilets/kitchen/Balcony | 10d | 2028-09-04 | 2028-09-14 | 3S-WMI-2nd55, 3S-WMI-2nd240 | CSD-LKO Calender (6 day + Holiday)-25 | ID Work [2023314 INR]; Physical Progress [2530 h]; TATA Projects Ltd-25 | 2,023,314 |
| 3S-WMI-2nd300 |  | Doors & Windows/Fire Doors/Shaft Doors | 35d | 2028-09-15 | 2028-10-28 | 3S-WMI-2nd210, 3S-WMI-2nd275 | CSD-LKO Calender (6 day + Holiday)-25 | ID Work [2529143 INR]; Physical Progress [2530 h]; TATA Projects Ltd-25 | 2,529,143 |
| 3S-WMI-2nd305 |  | Putty & First Coat of Paint | 10d | 2028-09-15 | 2028-09-26 | 3S-WMI-2nd210, 3S-WMI-2nd275 | CSD-LKO Calender (6 day + Holiday)-25 | Painting [724 Sq m]; Painter [730 h]; Helper [730 h]; Physical Progress [2530 h]; TATA Projects Ltd-25 | 165,520.88 |
| 3S-WMI-2nd355 |  | Wooden Flooring/Flooring | 20d | 2028-09-28 | 2028-10-23 | 3S-WMI-2nd305 | CSD-LKO Calender (6 day + Holiday)-25 | ID Work [2529143 INR]; Physical Progress [5060 h]; TATA Projects Ltd-25 | 2,529,143 |
| 3S-WMI-2nd470 |  | Fixed Furniture | 8d | 2028-10-24 | 2028-11-01 | 3S-WMI-2nd355 | CSD-LKO Calender (6 day + Holiday)-25 | ID Work [2276229 INR]; Physical Progress [2020 h]; TATA Projects Ltd-25 | 2,276,229 |
| 3S-WMI-2nd700 |  | False ceiling final finishes | 10d | 2028-11-16 | 2028-11-27 | 3S-WMI-2nd675 | CSD-LKO Calender (6 day + Holiday)-25 | ID Work [758743 INR]; Physical Progress [2530 h]; TATA Projects Ltd-25 | 758,743 |
| 3S-WMI-2nd705 |  | Final coat of paint | 10d | 2028-12-09 | 2028-12-20 | 3S-WMI-2nd700, 3S-WMI-2nd470, 3S-WMI-2nd660, 3S-WMI-2nd450, 3S-WMI-2nd455, 3S-WMI-2nd540, 3S-WMI-2nd635, 3S-WMI-2nd560, 3S-WMI-2nd555, 3S-WMI-2nd550, 3S-WMI-2nd460, 3S-WMI-2nd565, 3S-WMI-2nd300, 3S-WMI-2nd345 | CSD-LKO Calender (6 day + Holiday)-25 | Painting [724 Sq m]; Painter [730 h]; Helper [730 h]; Physical Progress [2530 h]; TATA Projects Ltd-25 | 165,520.88 |
| 3S-WMI-2nd710 |  | Soft Furnishing & Signage | 15d | 2028-12-21 | 2029-01-09 | 3S-WMI-2nd705 | CSD-LKO Calender (6 day + Holiday)-25 | ID Work [3793714 INR]; Physical Progress [760 h]; TATA Projects Ltd-25 | 3,793,714 |
| 3S-WMI-2nd715 |  | Loose Furniture | 15d | 2028-12-21 | 2029-01-09 | 3S-WMI-2nd705 | CSD-LKO Calender (6 day + Holiday)-25 | ID Work [5058286 INR]; Physical Progress [760 h]; TATA Projects Ltd-25 | 5,058,286 |
|  | 1 | **MEP Final Fix** |  | 2028-09-04 | 2028-12-08 |  |  |  |  |
|  | 3 | **HVAC** |  | 2028-09-04 | 2028-11-15 |  |  |  |  |
| 3S-WMI-2nd265 |  | Installing grills, diffusers, dampers | 30d | 2028-09-04 | 2028-10-10 | 3S-WMI-2nd240 | CSD-LKO Calender (6 day + Holiday)-25 | Physical Progress [1530 h]; HVAC [371437 INR]; TATA Projects Ltd-25 | 371,437 |
| 3S-WMI-2nd675 |  | Installation of thermostats and control panels | 30d | 2028-10-11 | 2028-11-15 | 3S-WMI-2nd265, 3S-WMI-2nd305, 3S-WMI-2nd630 | CSD-LKO Calender (6 day + Holiday)-25 | Physical Progress [1530 h]; HVAC [185719 INR]; TATA Projects Ltd-25 | 185,719 |
|  | 1 | **Electrical** |  | 2028-09-28 | 2028-12-08 |  |  |  |  |
| 3S-WMI-2nd335 |  | Switches & Socket | 30d | 2028-09-28 | 2028-11-03 | 3S-WMI-2nd305 | CSD-LKO Calender (6 day + Holiday)-25 | Physical Progress [5060 h]; Electrical [415792 INR]; TATA Projects Ltd-25 | 415,792 |
| 3S-WMI-2nd660 |  | Light Fixtures | 30d | 2028-11-04 | 2028-12-08 | 3S-WMI-2nd335, 3S-WMI-2nd475 | CSD-LKO Calender (6 day + Holiday)-25 | Physical Progress [3790 h]; Electrical [623688 INR]; TATA Projects Ltd-25 | 623,688 |
|  | 2 | **Plumbing** |  | 2028-09-28 | 2028-11-21 |  |  |  |  |
| 3S-WMI-2nd340 |  | Installation of sanitary fixtures (WC, washbasins, urinals, sinks) | 10d | 2028-09-28 | 2028-10-10 | 3S-WMI-2nd305, 3S-WMI-2nd145, 3S-WMI-2nd160 | CSD-LKO Calender (6 day + Holiday)-25 | Physical Progress [2530 h]; Plumbing [534578 INR]; TATA Projects Ltd-25 | 534,578 |
| 3S-WMI-2nd420 |  | Installation of CP fittings (taps, mixers, showers, health faucets) | 10d | 2028-10-11 | 2028-10-23 | 3S-WMI-2nd340, 3S-WMI-2nd305 | CSD-LKO Calender (6 day + Holiday)-25 | Physical Progress [2530 h]; Plumbing [267289 INR]; TATA Projects Ltd-25 | 267,289 |
| 3S-WMI-2nd450 |  | Connection of appliances | 25d | 2028-10-24 | 2028-11-21 | 3S-WMI-2nd420 | CSD-LKO Calender (6 day + Holiday)-25 | Physical Progress [1770 h]; Plumbing [133645 INR]; TATA Projects Ltd-25 | 133,645 |

| ID | WBS | Activity | Duration | Start | Finish | Predecessors | Calendar | Resources | Cost |
| --- | --- | --- | --- | --- | --- | --- | --- | --- | --- |
|  | 4 | **Firefighting** |  | 2028-09-28 | 2028-12-02 |  |  |  |  |
| 3S-WMI-2nd345 |  | Installation of hydrant accessories (valves, hose reels, cabinets) | 25d | 2028-09-28 | 2028-10-28 | 3S-WMI-2nd305 | CSD-LKO Calender (6 day + Holiday)-25 | Physical Progress [2530 h]; Firefighting [139112 INR]; TATA Projects Ltd-25 | 139,112 |
| 3S-WMI-2nd350 |  | Installation of portable fire extinguishers | 30d | 2028-09-28 | 2028-11-03 | 3S-WMI-2nd305 | CSD-LKO Calender (6 day + Holiday)-25 | Physical Progress [1530 h]; Firefighting [13911 INR]; TATA Projects Ltd-25 | 13,911 |
| 3S-WMI-2nd455 |  | Installation of sprinkler heads, nozzles, and final alignment | 35d | 2028-10-24 | 2028-12-02 | 3S-WMI-2nd305, 3S-WMI-2nd355, 3S-WMI-2nd190, 3S-WMI-2nd205 | CSD-LKO Calender (6 day + Holiday)-25 | Physical Progress [10120 h]; Firefighting [208668 INR]; TATA Projects Ltd-25 | 208,668 |
| 3S-WMI-2nd540 |  | Integration with fire alarm system | 20d | 2028-11-04 | 2028-11-27 | 3S-WMI-2nd350 | CSD-LKO Calender (6 day + Holiday)-25 | Physical Progress [5060 h]; Firefighting [69556 INR]; TATA Projects Ltd-25 | 69,556 |
|  | 5 | **ELV** |  | 2028-10-24 | 2028-12-08 |  |  |  |  |
| 3S-WMI-2nd460 |  | Installation of Camera & Wifi | 30d | 2028-10-24 | 2028-11-27 | 3S-WMI-2nd305, 3S-WMI-2nd355 | CSD-LKO Calender (6 day + Holiday)-25 | Physical Progress [2530 h]; ELV [55817 INR]; TATA Projects Ltd-25 | 55,817 |
| 3S-WMI-2nd465 |  | Installation of fire alarm devices + Public Address | 10d | 2028-10-24 | 2028-11-03 | 3S-WMI-2nd305, 3S-WMI-2nd355 | CSD-LKO Calender (6 day + Holiday)-25 | Physical Progress [2530 h]; ELV [66981 INR]; TATA Projects Ltd-25 | 66,981 |
| 3S-WMI-2nd565 |  | Installation of data and Voice Faceplate | 25d | 2028-10-24 | 2028-11-21 | 3S-WMI-2nd305, 3S-WMI-2nd355, 3S-WMI-2nd425 | CSD-LKO Calender (6 day + Holiday)-25 | Physical Progress [2530 h]; ELV [55817 INR]; TATA Projects Ltd-25 | 55,817 |
| 3S-WMI-2nd545 |  | Installation of Active System | 15d | 2028-11-04 | 2028-11-21 | 3S-WMI-2nd465 | CSD-LKO Calender (6 day + Holiday)-25 | Physical Progress [3790 h]; ELV [111635 INR]; TATA Projects Ltd-25 | 111,635 |
| 3S-WMI-2nd550 |  | Fire Panel Intallation & Integration | 25d | 2028-11-04 | 2028-12-02 | 3S-WMI-2nd465 | CSD-LKO Calender (6 day + Holiday)-25 | Physical Progress [6320 h]; ELV [55817 INR]; TATA Projects Ltd-25 | 55,817 |
| 3S-WMI-2nd555 |  | Installation & Integration of Audio Visual System | 25d | 2028-11-04 | 2028-12-02 | 3S-WMI-2nd465 | CSD-LKO Calender (6 day + Holiday)-25 | Physical Progress [6320 h]; ELV [55817 INR]; TATA Projects Ltd-25 | 55,817 |
| 3S-WMI-2nd560 |  | Installation & Integration of Access Control | 25d | 2028-11-04 | 2028-12-02 | 3S-WMI-2nd465 | CSD-LKO Calender (6 day + Holiday)-25 | Physical Progress [6320 h]; ELV [55817 INR]; TATA Projects Ltd-25 | 55,817 |
| 3S-WMI-2nd635 |  | Integration of Active components | 15d | 2028-11-22 | 2028-12-08 | 3S-WMI-2nd545 | CSD-LKO Calender (6 day + Holiday)-25 | Physical Progress [3790 h]; ELV [22327 INR]; TATA Projects Ltd-25 | 22,327 |
|  | 2 | **Back Face - Toward CC** |  | 2028-01-29 | 2028-08-30 |  |  |  |  |
|  | 2 | **Dry Finishes/ID Works** |  | 2028-01-29 | 2028-08-30 |  |  |  |  |
| 3S-WMI-2nd220 |  | Running of Wild Air | 1d | 2028-01-29 | 2028-01-31 | 3S-F-2nd45, 3S-WMI-2nd140, 3S-WMI-2nd170, 3S-WMI-2nd185, 3S-WMI-2nd270, 3S-WMI-2nd630 | CSD-LKO Calender (6 day + Holiday)-25 | Physical Progress [250 h]; TATA Projects Ltd-25 |  |
| 3S-WMI-2nd225 |  | Wall finish ID Works | 35d | 2028-02-01 | 2028-03-14 | 3S-WMI-2nd220, 3S-WMI-2nd140, 3S-WMI-2nd170, 3S-WMI-2nd185, 3S-WMI-2nd270, 3S-WMI-2nd630, 3S-WMI-2nd115, 3S-WMI-2nd155, 3S-WMI-2nd235, 3S-WMI-2nd245, 3S-WMI-2nd310, 3S-WMI-2nd475, 3S-WMI-2nd110, 3S-WMI-2nd120, 3S-WMI-2nd145, 3S-WMI-2nd160, 3S-WMI-2nd175, 3S-WMI-2nd180, 3S-WMI-2nd190, 3S-WMI-2nd205, 3S-WMI-2nd125, 3S-WMI-2nd165, 3S-WMI-2nd195, 3S-WMI-2nd260, 3S-WMI-2nd425 | CSD-LKO Calender (6 day + Holiday)-25 | ID Work [2529143 INR]; Physical Progress [2530 h]; TATA Projects Ltd-25 | 2,529,143 |
| 3S-WMI-2nd250 |  | False Ceiling Installation | 35d | 2028-03-14 | 2028-04-25 | 3S-WMI-2nd225 | CSD-LKO Calender (6 day + Holiday)-25 | ID Work [3034971 INR]; Physical Progress [5060 h]; TATA Projects Ltd-25 | 3,034,971 |
| 3S-WMI-2nd285 |  | Flooring of toilets/kitchen/Balcony | 10d | 2028-04-25 | 2028-05-09 | 3S-WMI-2nd250, 3S-WMI-2nd55 | CSD-LKO Calender (6 day + Holiday)-25 | ID Work [2023314 INR]; Physical Progress [2530 h]; TATA Projects Ltd-25 | 2,023,314 |
| 3S-WMI-2nd315 |  | Doors & Windows/Fire Doors/Shaft Doors | 35d | 2028-05-09 | 2028-06-19 | 3S-WMI-2nd225, 3S-WMI-2nd285 | CSD-LKO Calender (6 day + Holiday)-25 | ID Work [2529143 INR]; Physical Progress [2530 h]; TATA Projects Ltd-25 | 2,529,143 |
| 3S-WMI-2nd320 |  | Putty & First Coat of Paint | 10d | 2028-05-09 | 2028-05-20 | 3S-WMI-2nd225, 3S-WMI-2nd285 | CSD-LKO Calender (6 day + Holiday)-25 | Painting [724 Sq m]; Painter [730 h]; Helper [730 h]; Physical Progress [2530 h]; TATA Projects Ltd-25 | 165,520.88 |
| 3S-WMI-2nd380 |  | Wooden Flooring/Flooring | 20d | 2028-05-20 | 2028-06-13 | 3S-WMI-2nd320 | CSD-LKO Calender (6 day + Holiday)-25 | ID Work [2529143 INR]; Physical Progress [5060 h]; TATA Projects Ltd-25 | 2,529,143 |
| 3S-WMI-2nd385 |  | Railing for staircase | 35d | 2028-05-20 | 2028-06-30 | 3S-WMI-2nd225, 3S-WMI-2nd320 | CSD-LKO Calender (6 day + Holiday)-25 | ID Work [1138114 INR]; Physical Progress [3790 h]; TATA Projects Ltd-25 | 1,138,114 |
| 3S-WMI-2nd505 |  | Fixed Furniture | 8d | 2028-06-13 | 2028-06-22 | 3S-WMI-2nd380 | CSD-LKO Calender (6 day + Holiday)-25 | ID Work [2276229 INR]; Physical Progress [2020 h]; TATA Projects Ltd-25 | 2,276,229 |
| 3S-WMI-2nd640 |  | False ceiling final finishes | 10d | 2028-07-06 | 2028-07-18 | 3S-WMI-2nd430 | CSD-LKO Calender (6 day + Holiday)-25 | ID Work [758743 INR]; Physical Progress [2530 h]; TATA Projects Ltd-25 | 758,743 |
| 3S-WMI-2nd665 |  | Final coat of paint | 10d | 2028-07-29 | 2028-08-10 | 3S-WMI-2nd640, 3S-WMI-2nd385, 3S-WMI-2nd505, 3S-WMI-2nd570, 3S-WMI-2nd480, 3S-WMI-2nd485, 3S-WMI-2nd575, 3S-WMI-2nd650, 3S-WMI-2nd595, 3S-WMI-2nd590, 3S-WMI-2nd585, 3S-WMI-2nd495, 3S-WMI-2nd490, 3S-WMI-2nd315, 3S-WMI-2nd370 | CSD-LKO Calender (6 day + Holiday)-25 | Painting [724 Sq m]; Painter [730 h]; Helper [730 h]; Physical Progress [2530 h]; TATA Projects Ltd-25 | 165,520.88 |
| 3S-WMI-2nd680 |  | Soft Furnishing & Signage | 15d | 2028-08-10 | 2028-08-30 | 3S-WMI-2nd665 | CSD-LKO Calender (6 day + Holiday)-25 | ID Work [3793714 INR]; Physical Progress [760 h]; TATA Projects Ltd-25 | 3,793,714 |
| 3S-WMI-2nd685 |  | Loose Furniture | 15d | 2028-08-10 | 2028-08-30 | 3S-WMI-2nd665 | CSD-LKO Calender (6 day + Holiday)-25 | ID Work [5058286 INR]; Physical Progress [760 h]; TATA Projects Ltd-25 | 5,058,286 |

| ID | WBS | Activity | Duration | Start | Finish | Predecessors | Calendar | Resources | Cost |
| --- | --- | --- | --- | --- | --- | --- | --- | --- | --- |
|  | 1 | **MEP Final Fix** |  | 2028-04-25 | 2028-07-29 |  |  |  |  |
|  | 3 | **HVAC** |  | 2028-04-25 | 2028-07-06 |  |  |  |  |
| 3S-WMI-2nd280 |  | Installing grills, diffusers, dampers | 30d | 2028-04-25 | 2028-06-01 | 3S-WMI-2nd250 | CSD-LKO Calender (6 day + Holiday)-25 | Physical Progress [1530 h]; HVAC [371437 INR]; TATA Projects Ltd-25 | 371,437 |
| 3S-WMI-2nd430 |  | Installation of thermostats and control panels | 30d | 2028-06-01 | 2028-07-06 | 3S-WMI-2nd280, 3S-WMI-2nd320 | CSD-LKO Calender (6 day + Holiday)-25 | Physical Progress [1530 h]; HVAC [185719 INR]; TATA Projects Ltd-25 | 185,719 |
|  | 1 | **Electrical** |  | 2028-05-20 | 2028-07-29 |  |  |  |  |
| 3S-WMI-2nd360 |  | Switches & Socket | 30d | 2028-05-20 | 2028-06-24 | 3S-WMI-2nd320 | CSD-LKO Calender (6 day + Holiday)-25 | Physical Progress [5060 h]; Electrical [415792 INR]; TATA Projects Ltd-25 | 415,792 |
| 3S-WMI-2nd570 |  | Light Fixtures | 30d | 2028-06-24 | 2028-07-29 | 3S-WMI-2nd360 | CSD-LKO Calender (6 day + Holiday)-25 | Physical Progress [3790 h]; Electrical [623688 INR]; TATA Projects Ltd-25 | 623,688 |
|  | 2 | **Plumbing** |  | 2028-05-20 | 2028-07-12 |  |  |  |  |
| 3S-WMI-2nd365 |  | Installation of sanitary fixtures (WC, washbasins, urinals, sinks) | 10d | 2028-05-20 | 2028-06-01 | 3S-WMI-2nd320 | CSD-LKO Calender (6 day + Holiday)-25 | Physical Progress [2530 h]; Plumbing [534578 INR]; TATA Projects Ltd-25 | 534,578 |
| 3S-WMI-2nd435 |  | Installation of CP fittings (taps, mixers, showers, health faucets) | 10d | 2028-06-01 | 2028-06-13 | 3S-WMI-2nd365, 3S-WMI-2nd320 | CSD-LKO Calender (6 day + Holiday)-25 | Physical Progress [2530 h]; Plumbing [267289 INR]; TATA Projects Ltd-25 | 267,289 |
| 3S-WMI-2nd480 |  | Connection of appliances | 25d | 2028-06-13 | 2028-07-12 | 3S-WMI-2nd435 | CSD-LKO Calender (6 day + Holiday)-25 | Physical Progress [1770 h]; Plumbing [133645 INR]; TATA Projects Ltd-25 | 133,645 |
|  | 4 | **Firefighting** |  | 2028-05-20 | 2028-07-24 |  |  |  |  |
| 3S-WMI-2nd370 |  | Installation of hydrant accessories (valves, hose reels, cabinets) | 25d | 2028-05-20 | 2028-06-19 | 3S-WMI-2nd320 | CSD-LKO Calender (6 day + Holiday)-25 | Physical Progress [2530 h]; Firefighting [139112 INR]; TATA Projects Ltd-25 | 139,112 |
| 3S-WMI-2nd375 |  | Installation of portable fire extinguishers | 30d | 2028-05-20 | 2028-06-24 | 3S-WMI-2nd320 | CSD-LKO Calender (6 day + Holiday)-25 | Physical Progress [1530 h]; Firefighting [13911 INR]; TATA Projects Ltd-25 | 13,911 |
| 3S-WMI-2nd485 |  | Installation of sprinkler heads, nozzles, and final alignment | 35d | 2028-06-13 | 2028-07-24 | 3S-WMI-2nd320, 3S-WMI-2nd380 | CSD-LKO Calender (6 day + Holiday)-25 | Physical Progress [10120 h]; Firefighting [208668 INR]; TATA Projects Ltd-25 | 208,668 |
| 3S-WMI-2nd575 |  | Integration with fire alarm system | 20d | 2028-06-24 | 2028-07-18 | 3S-WMI-2nd375 | CSD-LKO Calender (6 day + Holiday)-25 | Physical Progress [5060 h]; Firefighting [69556 INR]; TATA Projects Ltd-25 | 69,556 |
|  | 5 | **ELV** |  | 2028-06-13 | 2028-07-29 |  |  |  |  |
| 3S-WMI-2nd490 |  | Installation of data and Voice Faceplate | 25d | 2028-06-13 | 2028-07-12 | 3S-WMI-2nd320, 3S-WMI-2nd380 | CSD-LKO Calender (6 day + Holiday)-25 | Physical Progress [2530 h]; ELV [55817 INR]; TATA Projects Ltd-25 | 55,817 |
| 3S-WMI-2nd495 |  | Installation of Camera & Wifi | 30d | 2028-06-13 | 2028-07-18 | 3S-WMI-2nd320, 3S-WMI-2nd380 | CSD-LKO Calender (6 day + Holiday)-25 | Physical Progress [2530 h]; ELV [55817 INR]; TATA Projects Ltd-25 | 55,817 |
| 3S-WMI-2nd500 |  | Installation of fire alarm devices + Public Address | 10d | 2028-06-13 | 2028-06-24 | 3S-WMI-2nd320, 3S-WMI-2nd380 | CSD-LKO Calender (6 day + Holiday)-25 | Physical Progress [2530 h]; ELV [66981 INR]; TATA Projects Ltd-25 | 66,981 |
| 3S-WMI-2nd580 |  | Installation of Active System | 15d | 2028-06-24 | 2028-07-12 | 3S-WMI-2nd500 | CSD-LKO Calender (6 day + Holiday)-25 | Physical Progress [3790 h]; ELV [111635 INR]; TATA Projects Ltd-25 | 111,635 |
| 3S-WMI-2nd585 |  | Fire Panel Intallation & Integration | 25d | 2028-06-24 | 2028-07-24 | 3S-WMI-2nd500 | CSD-LKO Calender (6 day + Holiday)-25 | Physical Progress [6320 h]; ELV [55817 INR]; TATA Projects Ltd-25 | 55,817 |
| 3S-WMI-2nd590 |  | Installation & Integration of Audio Visual System | 25d | 2028-06-24 | 2028-07-24 | 3S-WMI-2nd500 | CSD-LKO Calender (6 day + Holiday)-25 | Physical Progress [6320 h]; ELV [55817 INR]; TATA Projects Ltd-25 | 55,817 |
| 3S-WMI-2nd595 |  | Installation & Integration of Access Control | 25d | 2028-06-24 | 2028-07-24 | 3S-WMI-2nd500 | CSD-LKO Calender (6 day + Holiday)-25 | Physical Progress [6320 h]; ELV [55817 INR]; TATA Projects Ltd-25 | 55,817 |
| 3S-WMI-2nd650 |  | Integration of Active components | 15d | 2028-07-12 | 2028-07-29 | 3S-WMI-2nd580 | CSD-LKO Calender (6 day + Holiday)-25 | Physical Progress [3790 h]; ELV [22327 INR]; TATA Projects Ltd-25 | 22,327 |

| ID | WBS | Activity | Duration | Start | Finish | Predecessors | Calendar | Resources | Cost |
| --- | --- | --- | --- | --- | --- | --- | --- | --- | --- |
|  | 4 | **Side Face** |  | 2028-01-29 | 2028-08-30 |  |  |  |  |
|  | 2 | **Dry Finishes/ID Works** |  | 2028-01-29 | 2028-08-30 |  |  |  |  |
| 3S-WMI-2nd215 |  | Running of Wild Air | 1d | 2028-01-29 | 2028-01-31 | 3S-F-2nd50, 3S-WMI-2nd140, 3S-WMI-2nd170, 3S-WMI-2nd185, 3S-WMI-2nd270, 3S-WMI-2nd630 | CSD-LKO Calender (6 day + Holiday)-25 | Physical Progress [250 h]; TATA Projects Ltd-25 |  |
| 3S-WMI-2nd230 |  | Wall finish ID Works | 35d | 2028-02-01 | 2028-03-14 | 3S-WMI-2nd215, 3S-WMI-2nd140, 3S-WMI-2nd170, 3S-WMI-2nd185, 3S-WMI-2nd270, 3S-WMI-2nd630, 3S-WMI-2nd115, 3S-WMI-2nd155, 3S-WMI-2nd235, 3S-WMI-2nd245, 3S-WMI-2nd310, 3S-WMI-2nd475, 3S-WMI-2nd110, 3S-WMI-2nd120, 3S-WMI-2nd145, 3S-WMI-2nd160, 3S-WMI-2nd175, 3S-WMI-2nd180, 3S-WMI-2nd190, 3S-WMI-2nd205, 3S-WMI-2nd125, 3S-WMI-2nd165, 3S-WMI-2nd195, 3S-WMI-2nd260, 3S-WMI-2nd425 | CSD-LKO Calender (6 day + Holiday)-25 | ID Work [2529143 INR]; Physical Progress [2530 h]; TATA Projects Ltd-25 | 2,529,143 |
| 3S-WMI-2nd255 |  | False Ceiling Installation | 35d | 2028-03-14 | 2028-04-25 | 3S-WMI-2nd230 | CSD-LKO Calender (6 day + Holiday)-25 | ID Work [3034971 INR]; Physical Progress [5060 h]; TATA Projects Ltd-25 | 3,034,971 |
| 3S-WMI-2nd295 |  | Flooring of toilets/kitchen/Balcony | 10d | 2028-04-25 | 2028-05-09 | 3S-WMI-2nd255, 3S-WMI-2nd55 | CSD-LKO Calender (6 day + Holiday)-25 | ID Work [2023314 INR]; Physical Progress [2530 h]; TATA Projects Ltd-25 | 2,023,314 |
| 3S-WMI-2nd325 |  | Doors & Windows/Fire Doors/Shaft Doors | 35d | 2028-05-09 | 2028-06-19 | 3S-WMI-2nd230, 3S-WMI-2nd295 | CSD-LKO Calender (6 day + Holiday)-25 | ID Work [2529143 INR]; Physical Progress [2530 h]; TATA Projects Ltd-25 | 2,529,143 |
| 3S-WMI-2nd330 |  | Putty & First Coat of Paint | 10d | 2028-05-09 | 2028-05-20 | 3S-WMI-2nd230, 3S-WMI-2nd295 | CSD-LKO Calender (6 day + Holiday)-25 | Painting [724 Sq m]; Painter [730 h]; Helper [730 h]; Physical Progress [2530 h]; TATA Projects Ltd-25 | 165,520.88 |
| 3S-WMI-2nd410 |  | Wooden Flooring/Flooring | 20d | 2028-05-20 | 2028-06-13 | 3S-WMI-2nd330 | CSD-LKO Calender (6 day + Holiday)-25 | ID Work [2529143 INR]; Physical Progress [5060 h]; TATA Projects Ltd-25 | 2,529,143 |
| 3S-WMI-2nd415 |  | Railing for staircase | 35d | 2028-05-20 | 2028-06-30 | 3S-WMI-2nd230, 3S-WMI-2nd330 | CSD-LKO Calender (6 day + Holiday)-25 | ID Work [1138114 INR]; Physical Progress [3790 h]; TATA Projects Ltd-25 | 1,138,114 |
| 3S-WMI-2nd535 |  | Fixed Furniture | 8d | 2028-06-13 | 2028-06-22 | 3S-WMI-2nd410 | CSD-LKO Calender (6 day + Holiday)-25 | ID Work [2276229 INR]; Physical Progress [2020 h]; TATA Projects Ltd-25 | 2,276,229 |
| 3S-WMI-2nd645 |  | False ceiling final finishes | 10d | 2028-07-06 | 2028-07-18 | 3S-WMI-2nd440 | CSD-LKO Calender (6 day + Holiday)-25 | ID Work [758743 INR]; Physical Progress [2530 h]; TATA Projects Ltd-25 | 758,743 |
| 3S-WMI-2nd670 |  | Final coat of paint | 10d | 2028-07-29 | 2028-08-10 | 3S-WMI-2nd645, 3S-WMI-2nd415, 3S-WMI-2nd535, 3S-WMI-2nd600, 3S-WMI-2nd510, 3S-WMI-2nd515, 3S-WMI-2nd605, 3S-WMI-2nd655, 3S-WMI-2nd625, 3S-WMI-2nd620, 3S-WMI-2nd615, 3S-WMI-2nd525, 3S-WMI-2nd520, 3S-WMI-2nd325 | CSD-LKO Calender (6 day + Holiday)-25 | Painting [724 Sq m]; Painter [730 h]; Helper [730 h]; Physical Progress [2530 h]; TATA Projects Ltd-25 | 165,520.88 |
| 3S-WMI-2nd690 |  | Soft Furnishing & Signage | 15d | 2028-08-10 | 2028-08-30 | 3S-WMI-2nd670 | CSD-LKO Calender (6 day + Holiday)-25 | ID Work [3793714 INR]; Physical Progress [760 h]; TATA Projects Ltd-25 | 3,793,714 |
| 3S-WMI-2nd695 |  | Loose Furniture | 15d | 2028-08-10 | 2028-08-30 | 3S-WMI-2nd670 | CSD-LKO Calender (6 day + Holiday)-25 | ID Work [5058286 INR]; Physical Progress [760 h]; TATA Projects Ltd-25 | 5,058,286 |
|  | 1 | **MEP Final Fix** |  | 2028-04-25 | 2028-07-29 |  |  |  |  |
|  | 3 | **HVAC** |  | 2028-04-25 | 2028-07-06 |  |  |  |  |
| 3S-WMI-2nd290 |  | Installing grills, diffusers, dampers | 30d | 2028-04-25 | 2028-06-01 | 3S-WMI-2nd255 | CSD-LKO Calender (6 day + Holiday)-25 | Physical Progress [1530 h]; HVAC [371437 INR]; TATA Projects Ltd-25 | 371,437 |
| 3S-WMI-2nd440 |  | Installation of thermostats and control panels | 30d | 2028-06-01 | 2028-07-06 | 3S-WMI-2nd290, 3S-WMI-2nd330 | CSD-LKO Calender (6 day + Holiday)-25 | Physical Progress [1530 h]; HVAC [185719 INR]; TATA Projects Ltd-25 | 185,719 |
|  | 1 | **Electrical** |  | 2028-05-20 | 2028-07-29 |  |  |  |  |
| 3S-WMI-2nd390 |  | Switches & Socket | 30d | 2028-05-20 | 2028-06-24 | 3S-WMI-2nd330 | CSD-LKO Calender (6 day + Holiday)-25 | Physical Progress [5060 h]; Electrical [415792 INR]; TATA Projects Ltd-25 | 415,792 |
| 3S-WMI-2nd600 |  | Light Fixtures | 30d | 2028-06-24 | 2028-07-29 | 3S-WMI-2nd390 | CSD-LKO Calender (6 day + Holiday)-25 | Physical Progress [3790 h]; Electrical [623688 INR]; TATA Projects Ltd-25 | 623,688 |
|  | 2 | **Plumbing** |  | 2028-05-20 | 2028-07-12 |  |  |  |  |
| 3S-WMI-2nd395 |  | Installation of sanitary fixtures (WC, washbasins, urinals, sinks) | 10d | 2028-05-20 | 2028-06-01 | 3S-WMI-2nd330 | CSD-LKO Calender (6 day + Holiday)-25 | Physical Progress [2530 h]; Plumbing [534578 INR]; TATA Projects Ltd-25 | 534,578 |
| 3S-WMI-2nd445 |  | Installation of CP fittings (taps, mixers, showers, health faucets) | 10d | 2028-06-01 | 2028-06-13 | 3S-WMI-2nd395, 3S-WMI-2nd330 | CSD-LKO Calender (6 day + Holiday)-25 | Physical Progress [2530 h]; Plumbing [267289 INR]; TATA Projects Ltd-25 | 267,289 |
| 3S-WMI-2nd510 |  | Connection of appliances | 25d | 2028-06-13 | 2028-07-12 | 3S-WMI-2nd445 | CSD-LKO Calender (6 day + Holiday)-25 | Physical Progress [1770 h]; Plumbing [133645 INR]; TATA Projects Ltd-25 | 133,645 |

| ID | WBS | Activity | Duration | Start | Finish | Predecessors | Calendar | Resources | Cost |
| --- | --- | --- | --- | --- | --- | --- | --- | --- | --- |
|  | 4 | **Firefighting** |  | 2028-05-20 | 2028-07-24 |  |  |  |  |
| 3S-WMI-2nd400 |  | Installation of hydrant accessories (valves, hose reels, cabinets) | 25d | 2028-05-20 | 2028-06-19 | 3S-WMI-2nd330 | CSD-LKO Calender (6 day + Holiday)-25 | Physical Progress [2530 h]; Firefighting [139112 INR]; TATA Projects Ltd-25 | 139,112 |
| 3S-WMI-2nd405 |  | Installation of portable fire extinguishers | 30d | 2028-05-20 | 2028-06-24 | 3S-WMI-2nd330 | CSD-LKO Calender (6 day + Holiday)-25 | Physical Progress [1530 h]; Firefighting [13911 INR]; TATA Projects Ltd-25 | 13,911 |
| 3S-WMI-2nd515 |  | Installation of sprinkler heads, nozzles, and final alignment | 35d | 2028-06-13 | 2028-07-24 | 3S-WMI-2nd330, 3S-WMI-2nd410 | CSD-LKO Calender (6 day + Holiday)-25 | Physical Progress [10120 h]; Firefighting [208668 INR]; TATA Projects Ltd-25 | 208,668 |
| 3S-WMI-2nd605 |  | Integration with fire alarm system | 20d | 2028-06-24 | 2028-07-18 | 3S-WMI-2nd405 | CSD-LKO Calender (6 day + Holiday)-25 | Physical Progress [5060 h]; Firefighting [69556 INR]; TATA Projects Ltd-25 | 69,556 |
|  | 5 | **ELV** |  | 2028-06-13 | 2028-07-29 |  |  |  |  |
| 3S-WMI-2nd520 |  | Installation of data and Voice Faceplate | 25d | 2028-06-13 | 2028-07-12 | 3S-WMI-2nd330, 3S-WMI-2nd410 | CSD-LKO Calender (6 day + Holiday)-25 | Physical Progress [2530 h]; ELV [55817 INR]; TATA Projects Ltd-25 | 55,817 |
| 3S-WMI-2nd525 |  | Installation of Camera & Wifi | 30d | 2028-06-13 | 2028-07-18 | 3S-WMI-2nd330, 3S-WMI-2nd410 | CSD-LKO Calender (6 day + Holiday)-25 | Physical Progress [2530 h]; ELV [55817 INR]; TATA Projects Ltd-25 | 55,817 |
| 3S-WMI-2nd530 |  | Installation of fire alarm devices + Public Address | 10d | 2028-06-13 | 2028-06-24 | 3S-WMI-2nd330, 3S-WMI-2nd410 | CSD-LKO Calender (6 day + Holiday)-25 | Physical Progress [2530 h]; ELV [66981 INR]; TATA Projects Ltd-25 | 66,981 |
| 3S-WMI-2nd610 |  | Installation of Active System | 15d | 2028-06-24 | 2028-07-12 | 3S-WMI-2nd530 | CSD-LKO Calender (6 day + Holiday)-25 | Physical Progress [3790 h]; ELV [111635 INR]; TATA Projects Ltd-25 | 111,635 |
| 3S-WMI-2nd615 |  | Fire Panel Intallation & Integration | 25d | 2028-06-24 | 2028-07-24 | 3S-WMI-2nd530 | CSD-LKO Calender (6 day + Holiday)-25 | Physical Progress [6320 h]; ELV [55817 INR]; TATA Projects Ltd-25 | 55,817 |
| 3S-WMI-2nd620 |  | Installation & Integration of Audio Visual System | 25d | 2028-06-24 | 2028-07-24 | 3S-WMI-2nd530 | CSD-LKO Calender (6 day + Holiday)-25 | Physical Progress [6320 h]; ELV [55817 INR]; TATA Projects Ltd-25 | 55,817 |
| 3S-WMI-2nd625 |  | Installation & Integration of Access Control | 25d | 2028-06-24 | 2028-07-24 | 3S-WMI-2nd530 | CSD-LKO Calender (6 day + Holiday)-25 | Physical Progress [6320 h]; ELV [55817 INR]; TATA Projects Ltd-25 | 55,817 |
| 3S-WMI-2nd655 |  | Integration of Active components | 15d | 2028-07-12 | 2028-07-29 | 3S-WMI-2nd610 | CSD-LKO Calender (6 day + Holiday)-25 | Physical Progress [3790 h]; ELV [22327 INR]; TATA Projects Ltd-25 | 22,327 |
|  | 3 | **Third Floor** |  | 2027-08-21 | 2028-11-29 |  |  |  |  |
|  | 1 | **Wet Finishes** |  | 2027-08-21 | 2027-12-02 |  |  |  |  |
| 3S-WMI-3rd10 |  | Deshuttering | 4d | 2027-08-21 | 2027-08-26 | 3S-SS-4th295 | CSD-LKO Calender (6 day + Holiday)-25 | Physical Progress [1020 h]; TATA Projects Ltd-25 |  |
| 3S-WMI-3rd15 |  | Brickwork/Blockwork | 30d | 2027-08-26 | 2027-10-01 | 3S-WMI-3rd10, E-GFC-AR-3S-280 | CSD-LKO Calender (6 day + Holiday)-25 | Masonry [446 CuM]; Mason [2980 h]; Helper [1490 h]; Physical Progress [7590 h]; TATA Projects Ltd-25 | 4,252,770.56 |
| 3S-WMI-3rd55 |  | Waterproofing of Toilets, Balcony & Kitchen | 15d | 2027-10-01 | 2027-10-21 | 3S-WMI-3rd15 | CSD-LKO Calender (6 day + Holiday)-25 | Waterproofing [8564838 INR]; Waterprrofing Mason [8160 h]; Helper [4080 h]; Physical Progress [3790 h]; TATA Projects Ltd-25 | 8,564,838 |
| 3S-WMI-3rd95 |  | Plaster | 15d | 2027-11-15 | 2027-12-02 | 3S-WMI-3rd30, 3S-WMI-3rd75, 3S-WMI-3rd80, 3S-WMI-3rd55 | CSD-LKO Calender (6 day + Holiday)-25 | Plaster [7060 Sqr Mtr]; Mason [4710 h]; Helper [2360 h]; Physical Progress [3790 h]; TATA Projects Ltd-25 | 3,910,604.6 |
|  | 5 | **MEP 1st Fix, 2nd Fix** |  | 2027-08-26 | 2028-03-15 |  |  |  |  |
|  | 2 | **HVAC** |  | 2027-10-01 | 2028-03-15 |  |  |  |  |
|  | 1 | **1st Fix** |  | 2027-10-01 | 2027-12-14 |  |  |  |  |
| 3S-WMI-3rd50 |  | Duct Support Fabrication | 15d | 2027-10-01 | 2027-10-21 | 3S-WMI-3rd15, E-GFC-MEP-3S-280 | CSD-LKO Calender (6 day + Holiday)-25 | Physical Progress [3790 h]; HVAC [222862 INR]; TATA Projects Ltd-25 | 222,862 |
| 3S-WMI-3rd100 |  | Installing duct hangers and supports | 25d | 2027-10-21 | 2027-11-20 | 3S-WMI-3rd50, E-GFC-MEP-3S-280 | CSD-LKO Calender (6 day + Holiday)-25 | Physical Progress [2530 h]; HVAC [445725 INR]; TATA Projects Ltd-25 | 445,725 |
| 3S-WMI-3rd130 |  | Laying concealed/exposed refrigerant piping | 20d | 2027-11-20 | 2027-12-14 | 3S-WMI-3rd100, E-GFC-MEP-3S-280 | CSD-LKO Calender (6 day + Holiday)-25 | Physical Progress [3790 h]; HVAC [111431 INR]; TATA Projects Ltd-25 | 111,431 |
| 3S-WMI-3rd135 |  | Laying concealed/exposed drain piping | 20d | 2027-11-20 | 2027-12-14 | 3S-WMI-3rd100, E-GFC-MEP-3S-280 | CSD-LKO Calender (6 day + Holiday)-25 | Physical Progress [2530 h]; HVAC [668587 INR]; TATA Projects Ltd-25 | 668,587 |

| ID | WBS | Activity | Duration | Start | Finish | Predecessors | Calendar | Resources | Cost |
| --- | --- | --- | --- | --- | --- | --- | --- | --- | --- |
|  | 2 | **2nd Fix** |  | 2027-11-20 | 2028-03-15 |  |  |  |  |
| 3S-WMI-3rd140 |  | Duct installation | 20d | 2027-11-20 | 2027-12-14 | 3S-WMI-3rd100 | CSD-LKO Calender (6 day + Holiday)-25 | Physical Progress [3790 h]; HVAC [1671468 INR]; TATA Projects Ltd-25 | 1,671,468 |
| 3S-WMI-3rd170 |  | Insulation of ducts (thermal/acoustic) | 10d | 2027-12-14 | 2027-12-27 | 3S-WMI-3rd140 | CSD-LKO Calender (6 day + Holiday)-25 | Physical Progress [1530 h]; HVAC [1002881 INR]; TATA Projects Ltd-25 | 1,002,881 |
| 3S-WMI-3rd185 |  | Installation of chilled water piping / VRF piping | 20d | 2027-12-27 | 2028-01-20 | 3S-WMI-3rd170 | CSD-LKO Calender (6 day + Holiday)-25 | Physical Progress [1530 h]; HVAC [2228625 INR]; TATA Projects Ltd-25 | 2,228,625 |
| 3S-WMI-3rd265 |  | Installation of indoor units including AHU, FCU | 35d | 2028-01-20 | 2028-03-02 | 3S-WMI-3rd185, 3S-WMI-3rd130, 3S-WMI-3rd135 | CSD-LKO Calender (6 day + Holiday)-25 | Physical Progress [11380 h]; HVAC [2005762 INR]; TATA Projects Ltd-25 | 2,005,762 |
| 3S-WMI-3rd630 |  | Connecting refrigerant and drain piping to indoor units | 10d | 2028-03-02 | 2028-03-15 | 3S-WMI-3rd265 | CSD-LKO Calender (6 day + Holiday)-25 | Physical Progress [1530 h]; HVAC [557156 INR]; TATA Projects Ltd-25 | 557,156 |
|  | 1 | **Electrical** |  | 2027-08-26 | 2028-03-15 |  |  |  |  |
|  | 1 | **1st Fix** |  | 2027-08-26 | 2027-11-15 |  |  |  |  |
| 3S-WMI-3rd25 |  | Slab Conduiting | 35d | 2027-08-26 | 2027-10-08 | 3S-WMI-3rd10, E-GFC-MEP-3S-280 | CSD-LKO Calender (6 day + Holiday)-25 | Physical Progress [6320 h]; Electrical [1247377 INR]; TATA Projects Ltd-25 | 1,247,377 |
| 3S-WMI-3rd30 |  | Wall Conduiting | 30d | 2027-10-01 | 2027-11-09 | 3S-WMI-3rd15, E-GFC-MEP-3S-280 | CSD-LKO Calender (6 day + Holiday)-25 | Physical Progress [2530 h]; Electrical [623688 INR]; TATA Projects Ltd-25 | 623,688 |
| 3S-WMI-3rd75 |  | Installing back boxes for switches, sockets | 5d | 2027-11-09 | 2027-11-15 | 3S-WMI-3rd30, 3S-WMI-3rd25, E-GFC-MEP-3S-280 | CSD-LKO Calender (6 day + Holiday)-25 | Physical Progress [1280 h]; Electrical [374213 INR]; TATA Projects Ltd-25 | 374,213 |
|  | 2 | **2nd Fix** |  | 2027-12-02 | 2028-03-15 |  |  |  |  |
| 3S-WMI-3rd115 |  | Cable tray laying | 20d | 2027-12-02 | 2027-12-27 | 3S-WMI-3rd95 | CSD-LKO Calender (6 day + Holiday)-25 | Physical Progress [6320 h]; Electrical [498951 INR]; TATA Projects Ltd-25 | 498,951 |
| 3S-WMI-3rd155 |  | Cabling & Wire Pulling | 35d | 2027-12-27 | 2028-02-08 | 3S-WMI-3rd115 | CSD-LKO Calender (6 day + Holiday)-25 | Physical Progress [11380 h]; Electrical [2494753 INR]; TATA Projects Ltd-25 | 2,494,753 |
| 3S-WMI-3rd235 |  | DB fixing and connecting | 10d | 2028-02-08 | 2028-02-19 | 3S-WMI-3rd155 | CSD-LKO Calender (6 day + Holiday)-25 | Physical Progress [3790 h]; Electrical [374213 INR]; TATA Projects Ltd-25 | 374,213 |
| 3S-WMI-3rd240 |  | Floor Rising Main Installation | 15d | 2028-02-08 | 2028-02-25 | 3S-WMI-3rd155 | CSD-LKO Calender (6 day + Holiday)-25 | Physical Progress [1280 h]; Electrical [1746327 INR]; TATA Projects Ltd-25 | 1,746,327 |
| 3S-WMI-3rd310 |  | Floor/Distribution Panel Installation | 10d | 2028-02-19 | 2028-03-02 | 3S-WMI-3rd235 | CSD-LKO Calender (6 day + Holiday)-25 | Physical Progress [1280 h]; Electrical [997901 INR]; TATA Projects Ltd-25 | 997,901 |
| 3S-WMI-3rd475 |  | Equipment Earthing | 10d | 2028-03-02 | 2028-03-15 | 3S-WMI-3rd310, 3S-WMI-3rd240 | CSD-LKO Calender (6 day + Holiday)-25 | Physical Progress [2530 h]; Electrical [374213 INR]; TATA Projects Ltd-25 | 374,213 |
|  | 3 | **Plumbing** |  | 2027-10-01 | 2028-03-15 |  |  |  |  |
|  | 1 | **1st Fix** |  | 2027-10-01 | 2028-01-14 |  |  |  |  |
| 3S-WMI-3rd35 |  | Fixing pipe supports and clamps | 20d | 2027-10-01 | 2027-10-27 | 3S-WMI-3rd15, E-GFC-MEP-3S-280 | CSD-LKO Calender (6 day + Holiday)-25 | Physical Progress [2530 h]; Plumbing [400934 INR]; TATA Projects Ltd-25 | 400,934 |
| 3S-WMI-3rd60 |  | Laying water supply pipes (hot & cold) | 35d | 2027-10-27 | 2027-12-08 | 3S-WMI-3rd35, E-GFC-MEP-3S-280 | CSD-LKO Calender (6 day + Holiday)-25 | Physical Progress [3790 h]; Plumbing [801867 INR]; TATA Projects Ltd-25 | 801,867 |
| 3S-WMI-3rd65 |  | Laying drainage pipes (soil, waste, vent) | 35d | 2027-10-27 | 2027-12-08 | 3S-WMI-3rd35, E-GFC-MEP-3S-280 | CSD-LKO Calender (6 day + Holiday)-25 | Physical Progress [3790 h]; Plumbing [801867 INR]; TATA Projects Ltd-25 | 801,867 |
| 3S-WMI-3rd70 |  | Installation of plumbing fixture base supports (WC frames, sink brackets) | 15d | 2027-12-08 | 2027-12-27 | 3S-WMI-3rd65, E-GFC-MEP-3S-280 | CSD-LKO Calender (6 day + Holiday)-25 | Physical Progress [1530 h]; Plumbing [400934 INR]; TATA Projects Ltd-25 | 400,934 |
| 3S-WMI-3rd85 |  | Pressure testing of water supply lines | 15d | 2027-12-27 | 2028-01-14 | 3S-WMI-3rd60, 3S-WMI-3rd65, 3S-WMI-3rd70, E-GFC-MEP-3S-280 | CSD-LKO Calender (6 day + Holiday)-25 | Physical Progress [1770 h]; Plumbing [80187 INR]; TATA Projects Ltd-25 | 80,187 |
| 3S-WMI-3rd90 |  | Installation of concealed parts of toilet fixtures | 15d | 2027-12-27 | 2028-01-14 | 3S-WMI-3rd70, E-GFC-MEP-3S-280 | CSD-LKO Calender (6 day + Holiday)-25 | Physical Progress [2530 h]; Plumbing [400934 INR]; TATA Projects Ltd-25 | 400,934 |

| ID | WBS | Activity | Duration | Start | Finish | Predecessors | Calendar | Resources | Cost |
| --- | --- | --- | --- | --- | --- | --- | --- | --- | --- |
|  | 2 | **2nd FIx** |  | 2028-01-14 | 2028-03-15 |  |  |  |  |
| 3S-WMI-3rd110 |  | Insulation of hot water pipes (if applicable) | 30d | 2028-01-14 | 2028-02-19 | 3S-WMI-3rd85 | CSD-LKO Calender (6 day + Holiday)-25 | Physical Progress [1530 h]; Plumbing [400934 INR]; TATA Projects Ltd-25 | 400,934 |
| 3S-WMI-3rd120 |  | Installation of vertical risers and main distribution lines | 25d | 2028-01-14 | 2028-02-14 | 3S-WMI-3rd95, 3S-WMI-3rd85, 3S-WMI-3rd90 | CSD-LKO Calender (6 day + Holiday)-25 | Physical Progress [5060 h]; Plumbing [801867 INR]; TATA Projects Ltd-25 | 801,867 |
| 3S-WMI-3rd160 |  | Fixing floor traps and gully traps | 15d | 2028-02-14 | 2028-03-02 | 3S-WMI-3rd120 | CSD-LKO Calender (6 day + Holiday)-25 | Physical Progress [1530 h]; Plumbing [240560 INR]; TATA Projects Ltd-25 | 240,560 |
| 3S-WMI-3rd145 |  | Testing drainage lines for leakage/blockage | 20d | 2028-02-19 | 2028-03-15 | 3S-WMI-3rd70, 3S-WMI-3rd110 | CSD-LKO Calender (6 day + Holiday)-25 | Physical Progress [1530 h]; Plumbing [80187 INR]; TATA Projects Ltd-25 | 80,187 |
|  | 4 | **Firefighting** |  | 2027-10-01 | 2028-03-15 |  |  |  |  |
|  | 1 | **1st Fix** |  | 2027-10-01 | 2027-12-20 |  |  |  |  |
| 3S-WMI-3rd40 |  | Fixing pipe supports and hangers | 15d | 2027-10-01 | 2027-10-21 | 3S-WMI-3rd15, E-GFC-MEP-3S-280 | CSD-LKO Calender (6 day + Holiday)-25 | Physical Progress [2530 h]; Firefighting [292135 INR]; TATA Projects Ltd-25 | 292,135 |
| 3S-WMI-3rd105 |  | Laying branch piping | 35d | 2027-10-21 | 2027-12-02 | 3S-WMI-3rd40, E-GFC-MEP-3S-280 | CSD-LKO Calender (6 day + Holiday)-25 | Physical Progress [3790 h]; Firefighting [626004 INR]; TATA Projects Ltd-25 | 626,004 |
| 3S-WMI-3rd150 |  | Hydrostatic pressure testing of piping | 15d | 2027-12-02 | 2027-12-20 | 3S-WMI-3rd105, E-GFC-MEP-3S-280 | CSD-LKO Calender (6 day + Holiday)-25 | Physical Progress [1530 h]; Firefighting [83467 INR]; TATA Projects Ltd-25 | 83,467 |
|  | 2 | **2nd Fix** |  | 2027-12-20 | 2028-03-15 |  |  |  |  |
| 3S-WMI-3rd175 |  | Installation of vertical risers and distribution piping in shafts | 35d | 2027-12-20 | 2028-02-02 | 3S-WMI-3rd95, 3S-WMI-3rd150 | CSD-LKO Calender (6 day + Holiday)-25 | Physical Progress [6320 h]; Firefighting [834672 INR]; TATA Projects Ltd-25 | 834,672 |
| 3S-WMI-3rd180 |  | Painting/insulation of exposed fire pipes | 30d | 2027-12-20 | 2028-01-27 | 3S-WMI-3rd150 | CSD-LKO Calender (6 day + Holiday)-25 | Physical Progress [2530 h]; Firefighting [41734 INR]; TATA Projects Ltd-25 | 41,734 |
| 3S-WMI-3rd190 |  | Testing risers and branch lines for leakage | 30d | 2028-01-27 | 2028-03-02 | 3S-WMI-3rd180 | CSD-LKO Calender (6 day + Holiday)-25 | Physical Progress [1530 h]; Firefighting [83467 INR]; TATA Projects Ltd-25 | 83,467 |
| 3S-WMI-3rd200 |  | Installation of sprinkler branch lines in ceilings | 35d | 2028-02-02 | 2028-03-15 | 3S-WMI-3rd175 | CSD-LKO Calender (6 day + Holiday)-25 | Physical Progress [6320 h]; Firefighting [626004 INR]; TATA Projects Ltd-25 | 626,004 |
|  | 5 | **ELV** |  | 2027-08-26 | 2028-03-15 |  |  |  |  |
|  | 1 | **1st Fix** |  | 2027-08-26 | 2027-11-15 |  |  |  |  |
| 3S-WMI-3rd20 |  | Slab Conduiting | 35d | 2027-08-26 | 2027-10-08 | 3S-WMI-3rd10, E-GFC-MEP-3S-280 | CSD-LKO Calender (6 day + Holiday)-25 | Physical Progress [6320 h]; ELV [234433 INR]; TATA Projects Ltd-25 | 234,433 |
| 3S-WMI-3rd45 |  | Wall Conduiting | 30d | 2027-10-01 | 2027-11-09 | 3S-WMI-3rd15, E-GFC-MEP-3S-280 | CSD-LKO Calender (6 day + Holiday)-25 | Physical Progress [2530 h]; ELV [100471 INR]; TATA Projects Ltd-25 | 100,471 |
| 3S-WMI-3rd80 |  | Installing back boxes for switches, sockets | 5d | 2027-11-09 | 2027-11-15 | 3S-WMI-3rd45, 3S-WMI-3rd20, E-GFC-MEP-3S-280 | CSD-LKO Calender (6 day + Holiday)-25 | Physical Progress [1280 h]; ELV [167452 INR]; TATA Projects Ltd-25 | 167,452 |
|  | 2 | **2nd Fix** |  | 2027-12-02 | 2028-03-15 |  |  |  |  |
| 3S-WMI-3rd125 |  | Cable tray installation | 15d | 2027-12-02 | 2027-12-20 | 3S-WMI-3rd95 | CSD-LKO Calender (6 day + Holiday)-25 | Physical Progress [6320 h]; ELV [167452 INR]; TATA Projects Ltd-25 | 167,452 |
| 3S-WMI-3rd165 |  | Cabeling of ELV cable - IT/Fire Alarm/Public Address | 35d | 2027-12-20 | 2028-02-02 | 3S-WMI-3rd125 | CSD-LKO Calender (6 day + Holiday)-25 | Physical Progress [11380 h]; ELV [401885 INR]; TATA Projects Ltd-25 | 401,885 |
| 3S-WMI-3rd195 |  | ELV Rack Installation | 15d | 2028-02-02 | 2028-02-19 | 3S-WMI-3rd165 | CSD-LKO Calender (6 day + Holiday)-25 | Physical Progress [2530 h]; ELV [167452 INR]; TATA Projects Ltd-25 | 167,452 |
| 3S-WMI-3rd260 |  | Termination of cables at junction boxes, patch panels, and control panels | 10d | 2028-02-19 | 2028-03-02 | 3S-WMI-3rd195 | CSD-LKO Calender (6 day + Holiday)-25 | Physical Progress [7590 h]; ELV [167452 INR]; TATA Projects Ltd-25 | 167,452 |
| 3S-WMI-3rd420 |  | Fixing devices like CCTV camera bases, card reader bases, smoke detector bases, PA Bases, Wifi Bases | 10d | 2028-03-02 | 2028-03-15 | 3S-WMI-3rd260 | CSD-LKO Calender (6 day + Holiday)-25 | Physical Progress [1020 h]; ELV [334904 INR]; TATA Projects Ltd-25 | 334,904 |

| ID | WBS | Activity | Duration | Start | Finish | Predecessors | Calendar | Resources | Cost |
| --- | --- | --- | --- | --- | --- | --- | --- | --- | --- |
|  | 3 | **Front Face - Toward Airport** |  | 2028-04-24 | 2028-11-23 |  |  |  |  |
|  | 2 | **Dry Finishes/ID Works** |  | 2028-04-24 | 2028-11-23 |  |  |  |  |
| 3S-WMI-3rd205 |  | Running of Wild Air | 1d | 2028-04-24 | 2028-04-25 | 3S-F-3rd40, 3S-WMI-3rd140, 3S-WMI-3rd170, 3S-WMI-3rd185, 3S-WMI-3rd265, 3S-WMI-3rd630 | CSD-LKO Calender (6 day + Holiday)-25 | Physical Progress [250 h]; TATA Projects Ltd-25 |  |
| 3S-WMI-3rd210 |  | Wall finish ID Works | 35d | 2028-04-25 | 2028-06-07 | 3S-WMI-3rd205, 3S-WMI-3rd140, 3S-WMI-3rd170, 3S-WMI-3rd185, 3S-WMI-3rd265, 3S-WMI-3rd630, 3S-WMI-3rd115, 3S-WMI-3rd155, 3S-WMI-3rd235, 3S-WMI-3rd240, 3S-WMI-3rd310, 3S-WMI-3rd475, 3S-WMI-3rd110, 3S-WMI-3rd120, 3S-WMI-3rd145, 3S-WMI-3rd160, 3S-WMI-3rd175, 3S-WMI-3rd180, 3S-WMI-3rd190, 3S-WMI-3rd200, 3S-WMI-3rd125, 3S-WMI-3rd165, 3S-WMI-3rd195, 3S-WMI-3rd260, 3S-WMI-3rd420 | CSD-LKO Calender (6 day + Holiday)-25 | ID Work [2529143 INR]; Physical Progress [2530 h]; TATA Projects Ltd-25 | 2,529,143 |
| 3S-WMI-3rd245 |  | False Ceiling Installation | 35d | 2028-06-07 | 2028-07-18 | 3S-WMI-3rd210 | CSD-LKO Calender (6 day + Holiday)-25 | ID Work [3034971 INR]; Physical Progress [5060 h]; TATA Projects Ltd-25 | 3,034,971 |
| 3S-WMI-3rd275 |  | Flooring of toilets/kitchen/Balcony | 10d | 2028-07-18 | 2028-07-29 | 3S-WMI-3rd55, 3S-WMI-3rd245 | CSD-LKO Calender (6 day + Holiday)-25 | ID Work [2023314 INR]; Physical Progress [2530 h]; TATA Projects Ltd-25 | 2,023,314 |
| 3S-WMI-3rd300 |  | Doors & Windows/Fire Doors/Shaft Doors | 35d | 2028-07-29 | 2028-09-11 | 3S-WMI-3rd210, 3S-WMI-3rd275 | CSD-LKO Calender (6 day + Holiday)-25 | ID Work [2529143 INR]; Physical Progress [2530 h]; TATA Projects Ltd-25 | 2,529,143 |
| 3S-WMI-3rd305 |  | Putty & First Coat of Paint | 10d | 2028-07-29 | 2028-08-10 | 3S-WMI-3rd210, 3S-WMI-3rd275 | CSD-LKO Calender (6 day + Holiday)-25 | Painting [724 Sq m]; Painter [730 h]; Helper [730 h]; Physical Progress [2530 h]; TATA Projects Ltd-25 | 165,520.88 |
| 3S-WMI-3rd355 |  | Wooden Flooring/Flooring | 20d | 2028-08-10 | 2028-09-05 | 3S-WMI-3rd305 | CSD-LKO Calender (6 day + Holiday)-25 | ID Work [2529143 INR]; Physical Progress [5060 h]; TATA Projects Ltd-25 | 2,529,143 |
| 3S-WMI-3rd470 |  | Fixed Furniture | 8d | 2028-09-05 | 2028-09-14 | 3S-WMI-3rd355 | CSD-LKO Calender (6 day + Holiday)-25 | ID Work [2276229 INR]; Physical Progress [2020 h]; TATA Projects Ltd-25 | 2,276,229 |
| 3S-WMI-3rd700 |  | False ceiling final finishes | 10d | 2028-09-29 | 2028-10-12 | 3S-WMI-3rd675 | CSD-LKO Calender (6 day + Holiday)-25 | ID Work [758743 INR]; Physical Progress [2530 h]; TATA Projects Ltd-25 | 758,743 |
| 3S-WMI-3rd705 |  | Final coat of paint | 10d | 2028-10-25 | 2028-11-06 | 3S-WMI-3rd700, 3S-WMI-3rd470, 3S-WMI-3rd660, 3S-WMI-3rd450, 3S-WMI-3rd455, 3S-WMI-3rd540, 3S-WMI-3rd635, 3S-WMI-3rd560, 3S-WMI-3rd555, 3S-WMI-3rd550, 3S-WMI-3rd460, 3S-WMI-3rd565, 3S-WMI-3rd300, 3S-WMI-3rd345 | CSD-LKO Calender (6 day + Holiday)-25 | Painting [724 Sq m]; Painter [730 h]; Helper [730 h]; Physical Progress [2530 h]; TATA Projects Ltd-25 | 165,520.88 |
| 3S-WMI-3rd710 |  | Soft Furnishing & Signage | 15d | 2028-11-06 | 2028-11-23 | 3S-WMI-3rd705 | CSD-LKO Calender (6 day + Holiday)-25 | ID Work [3793714 INR]; Physical Progress [760 h]; TATA Projects Ltd-25 | 3,793,714 |
| 3S-WMI-3rd715 |  | Loose Furniture | 15d | 2028-11-06 | 2028-11-23 | 3S-WMI-3rd705 | CSD-LKO Calender (6 day + Holiday)-25 | ID Work [5058286 INR]; Physical Progress [760 h]; TATA Projects Ltd-25 | 5,058,286 |
|  | 1 | **MEP Final Fix** |  | 2028-07-18 | 2028-10-25 |  |  |  |  |
|  | 3 | **HVAC** |  | 2028-07-18 | 2028-09-29 |  |  |  |  |
| 3S-WMI-3rd270 |  | Installing grills, diffusers, dampers | 30d | 2028-07-18 | 2028-08-24 | 3S-WMI-3rd245 | CSD-LKO Calender (6 day + Holiday)-25 | Physical Progress [1530 h]; HVAC [371437 INR]; TATA Projects Ltd-25 | 371,437 |
| 3S-WMI-3rd675 |  | Installation of thermostats and control panels | 30d | 2028-08-24 | 2028-09-29 | 3S-WMI-3rd270, 3S-WMI-3rd305, 3S-WMI-3rd630 | CSD-LKO Calender (6 day + Holiday)-25 | Physical Progress [1530 h]; HVAC [185719 INR]; TATA Projects Ltd-25 | 185,719 |
|  | 1 | **Electrical** |  | 2028-08-10 | 2028-10-25 |  |  |  |  |
| 3S-WMI-3rd335 |  | Switches & Socket | 30d | 2028-08-10 | 2028-09-16 | 3S-WMI-3rd305 | CSD-LKO Calender (6 day + Holiday)-25 | Physical Progress [5060 h]; Electrical [415792 INR]; TATA Projects Ltd-25 | 415,792 |
| 3S-WMI-3rd660 |  | Light Fixtures | 30d | 2028-09-16 | 2028-10-25 | 3S-WMI-3rd335, 3S-WMI-3rd475 | CSD-LKO Calender (6 day + Holiday)-25 | Physical Progress [3790 h]; Electrical [623688 INR]; TATA Projects Ltd-25 | 623,688 |
|  | 2 | **Plumbing** |  | 2028-08-10 | 2028-10-06 |  |  |  |  |
| 3S-WMI-3rd340 |  | Installation of sanitary fixtures (WC, washbasins, urinals, sinks) | 10d | 2028-08-10 | 2028-08-24 | 3S-WMI-3rd305, 3S-WMI-3rd145, 3S-WMI-3rd160 | CSD-LKO Calender (6 day + Holiday)-25 | Physical Progress [2530 h]; Plumbing [534578 INR]; TATA Projects Ltd-25 | 534,578 |
| 3S-WMI-3rd425 |  | Installation of CP fittings (taps, mixers, showers, health faucets) | 10d | 2028-08-24 | 2028-09-05 | 3S-WMI-3rd340, 3S-WMI-3rd305 | CSD-LKO Calender (6 day + Holiday)-25 | Physical Progress [2530 h]; Plumbing [267289 INR]; TATA Projects Ltd-25 | 267,289 |
| 3S-WMI-3rd450 |  | Connection of appliances | 25d | 2028-09-05 | 2028-10-06 | 3S-WMI-3rd425 | CSD-LKO Calender (6 day + Holiday)-25 | Physical Progress [1770 h]; Plumbing [133645 INR]; TATA Projects Ltd-25 | 133,645 |

| ID | WBS | Activity | Duration | Start | Finish | Predecessors | Calendar | Resources | Cost |
| --- | --- | --- | --- | --- | --- | --- | --- | --- | --- |
|  | 4 | **Firefighting** |  | 2028-08-10 | 2028-10-19 |  |  |  |  |
| 3S-WMI-3rd345 |  | Installation of hydrant accessories (valves, hose reels, cabinets) | 25d | 2028-08-10 | 2028-09-11 | 3S-WMI-3rd305 | CSD-LKO Calender (6 day + Holiday)-25 | Physical Progress [2530 h]; Firefighting [139112 INR]; TATA Projects Ltd-25 | 139,112 |
| 3S-WMI-3rd350 |  | Installation of portable fire extinguishers | 30d | 2028-08-10 | 2028-09-16 | 3S-WMI-3rd305 | CSD-LKO Calender (6 day + Holiday)-25 | Physical Progress [1530 h]; Firefighting [13911 INR]; TATA Projects Ltd-25 | 13,911 |
| 3S-WMI-3rd455 |  | Installation of sprinkler heads, nozzles, and final alignment | 35d | 2028-09-05 | 2028-10-19 | 3S-WMI-3rd305, 3S-WMI-3rd355, 3S-WMI-3rd190, 3S-WMI-3rd200 | CSD-LKO Calender (6 day + Holiday)-25 | Physical Progress [10120 h]; Firefighting [208668 INR]; TATA Projects Ltd-25 | 208,668 |
| 3S-WMI-3rd540 |  | Integration with fire alarm system | 20d | 2028-09-16 | 2028-10-12 | 3S-WMI-3rd350 | CSD-LKO Calender (6 day + Holiday)-25 | Physical Progress [5060 h]; Firefighting [69556 INR]; TATA Projects Ltd-25 | 69,556 |
|  | 5 | **ELV** |  | 2028-09-05 | 2028-10-25 |  |  |  |  |
| 3S-WMI-3rd460 |  | Installation of Camera & Wifi | 30d | 2028-09-05 | 2028-10-12 | 3S-WMI-3rd305, 3S-WMI-3rd355 | CSD-LKO Calender (6 day + Holiday)-25 | Physical Progress [2530 h]; ELV [55817 INR]; TATA Projects Ltd-25 | 55,817 |
| 3S-WMI-3rd465 |  | Installation of fire alarm devices + Public Address | 10d | 2028-09-05 | 2028-09-16 | 3S-WMI-3rd305, 3S-WMI-3rd355 | CSD-LKO Calender (6 day + Holiday)-25 | Physical Progress [2530 h]; ELV [66981 INR]; TATA Projects Ltd-25 | 66,981 |
| 3S-WMI-3rd565 |  | Installation of data and Voice Faceplate | 25d | 2028-09-05 | 2028-10-06 | 3S-WMI-3rd305, 3S-WMI-3rd355, 3S-WMI-3rd420 | CSD-LKO Calender (6 day + Holiday)-25 | Physical Progress [2530 h]; ELV [55817 INR]; TATA Projects Ltd-25 | 55,817 |
| 3S-WMI-3rd545 |  | Installation of Active System | 15d | 2028-09-16 | 2028-10-06 | 3S-WMI-3rd465 | CSD-LKO Calender (6 day + Holiday)-25 | Physical Progress [3790 h]; ELV [111635 INR]; TATA Projects Ltd-25 | 111,635 |
| 3S-WMI-3rd550 |  | Fire Panel Intallation & Integration | 25d | 2028-09-16 | 2028-10-19 | 3S-WMI-3rd465 | CSD-LKO Calender (6 day + Holiday)-25 | Physical Progress [6320 h]; ELV [55817 INR]; TATA Projects Ltd-25 | 55,817 |
| 3S-WMI-3rd555 |  | Installation & Integration of Audio Visual System | 25d | 2028-09-16 | 2028-10-19 | 3S-WMI-3rd465 | CSD-LKO Calender (6 day + Holiday)-25 | Physical Progress [6320 h]; ELV [55817 INR]; TATA Projects Ltd-25 | 55,817 |
| 3S-WMI-3rd560 |  | Installation & Integration of Access Control | 25d | 2028-09-16 | 2028-10-19 | 3S-WMI-3rd465 | CSD-LKO Calender (6 day + Holiday)-25 | Physical Progress [6320 h]; ELV [55817 INR]; TATA Projects Ltd-25 | 55,817 |
| 3S-WMI-3rd635 |  | Integration of Active components | 15d | 2028-10-06 | 2028-10-25 | 3S-WMI-3rd545 | CSD-LKO Calender (6 day + Holiday)-25 | Physical Progress [3790 h]; ELV [22327 INR]; TATA Projects Ltd-25 | 22,327 |
|  | 2 | **Back Face - Toward CC** |  | 2028-04-29 | 2028-11-29 |  |  |  |  |
|  | 2 | **Dry Finishes/ID Works** |  | 2028-04-29 | 2028-11-29 |  |  |  |  |
| 3S-WMI-3rd215 |  | Running of Wild Air | 1d | 2028-04-29 | 2028-05-02 | 3S-F-3rd45, 3S-WMI-3rd140, 3S-WMI-3rd170, 3S-WMI-3rd185, 3S-WMI-3rd265, 3S-WMI-3rd630 | CSD-LKO Calender (6 day + Holiday)-25 | Physical Progress [250 h]; TATA Projects Ltd-25 |  |
| 3S-WMI-3rd225 |  | Wall finish ID Works | 35d | 2028-05-02 | 2028-06-13 | 3S-WMI-3rd215, 3S-WMI-3rd140, 3S-WMI-3rd170, 3S-WMI-3rd185, 3S-WMI-3rd265, 3S-WMI-3rd630, 3S-WMI-3rd115, 3S-WMI-3rd155, 3S-WMI-3rd235, 3S-WMI-3rd240, 3S-WMI-3rd310, 3S-WMI-3rd475, 3S-WMI-3rd110, 3S-WMI-3rd120, 3S-WMI-3rd145, 3S-WMI-3rd160, 3S-WMI-3rd175, 3S-WMI-3rd180, 3S-WMI-3rd190, 3S-WMI-3rd200, 3S-WMI-3rd125, 3S-WMI-3rd165, 3S-WMI-3rd195, 3S-WMI-3rd260, 3S-WMI-3rd420 | CSD-LKO Calender (6 day + Holiday)-25 | ID Work [2529143 INR]; Physical Progress [2530 h]; TATA Projects Ltd-25 | 2,529,143 |
| 3S-WMI-3rd250 |  | False Ceiling Installation | 35d | 2028-06-13 | 2028-07-24 | 3S-WMI-3rd225 | CSD-LKO Calender (6 day + Holiday)-25 | ID Work [3034971 INR]; Physical Progress [5060 h]; TATA Projects Ltd-25 | 3,034,971 |
| 3S-WMI-3rd285 |  | Flooring of toilets/kitchen/Balcony | 10d | 2028-07-24 | 2028-08-04 | 3S-WMI-3rd250, 3S-WMI-3rd55 | CSD-LKO Calender (6 day + Holiday)-25 | ID Work [2023314 INR]; Physical Progress [2530 h]; TATA Projects Ltd-25 | 2,023,314 |
| 3S-WMI-3rd315 |  | Doors & Windows/Fire Doors/Shaft Doors | 35d | 2028-08-04 | 2028-09-16 | 3S-WMI-3rd225, 3S-WMI-3rd285 | CSD-LKO Calender (6 day + Holiday)-25 | ID Work [2529143 INR]; Physical Progress [2530 h]; TATA Projects Ltd-25 | 2,529,143 |
| 3S-WMI-3rd320 |  | Putty & First Coat of Paint | 10d | 2028-08-04 | 2028-08-17 | 3S-WMI-3rd225, 3S-WMI-3rd285 | CSD-LKO Calender (6 day + Holiday)-25 | Painting [724 Sq m]; Painter [730 h]; Helper [730 h]; Physical Progress [2530 h]; TATA Projects Ltd-25 | 165,520.88 |
| 3S-WMI-3rd380 |  | Wooden Flooring/Flooring | 20d | 2028-08-17 | 2028-09-11 | 3S-WMI-3rd320 | CSD-LKO Calender (6 day + Holiday)-25 | ID Work [2529143 INR]; Physical Progress [5060 h]; TATA Projects Ltd-25 | 2,529,143 |
| 3S-WMI-3rd385 |  | Railing for staircase | 35d | 2028-08-17 | 2028-09-29 | 3S-WMI-3rd225, 3S-WMI-3rd320 | CSD-LKO Calender (6 day + Holiday)-25 | ID Work [1138114 INR]; Physical Progress [3790 h]; TATA Projects Ltd-25 | 1,138,114 |
| 3S-WMI-3rd505 |  | Fixed Furniture | 8d | 2028-09-11 | 2028-09-20 | 3S-WMI-3rd380 | CSD-LKO Calender (6 day + Holiday)-25 | ID Work [2276229 INR]; Physical Progress [2020 h]; TATA Projects Ltd-25 | 2,276,229 |
| 3S-WMI-3rd640 |  | False ceiling final finishes | 10d | 2028-10-06 | 2028-10-19 | 3S-WMI-3rd430 | CSD-LKO Calender (6 day + Holiday)-25 | ID Work [758743 INR]; Physical Progress [2530 h]; TATA Projects Ltd-25 | 758,743 |
| 3S-WMI-3rd665 |  | Final coat of paint | 10d | 2028-10-31 | 2028-11-11 | 3S-WMI-3rd640, 3S-WMI-3rd385, 3S-WMI-3rd505, 3S-WMI-3rd570, 3S-WMI-3rd480, 3S-WMI-3rd485, 3S-WMI-3rd575, 3S-WMI-3rd650, 3S-WMI-3rd595, 3S-WMI-3rd590, 3S-WMI-3rd585, 3S-WMI-3rd495, 3S-WMI-3rd490, 3S-WMI-3rd315, 3S-WMI-3rd370 | CSD-LKO Calender (6 day + Holiday)-25 | Painting [724 Sq m]; Painter [730 h]; Helper [730 h]; Physical Progress [2530 h]; TATA Projects Ltd-25 | 165,520.88 |
| 3S-WMI-3rd680 |  | Soft Furnishing & Signage | 15d | 2028-11-11 | 2028-11-29 | 3S-WMI-3rd665 | CSD-LKO Calender (6 day + Holiday)-25 | ID Work [3793714 INR]; Physical Progress [760 h]; TATA Projects Ltd-25 | 3,793,714 |
| 3S-WMI-3rd685 |  | Loose Furniture | 15d | 2028-11-11 | 2028-11-29 | 3S-WMI-3rd665 | CSD-LKO Calender (6 day + Holiday)-25 | ID Work [5058286 INR]; Physical Progress [760 h]; TATA Projects Ltd-25 | 5,058,286 |

| ID | WBS | Activity | Duration | Start | Finish | Predecessors | Calendar | Resources | Cost |
| --- | --- | --- | --- | --- | --- | --- | --- | --- | --- |
|  | 1 | **MEP Final Fix** |  | 2028-07-24 | 2028-10-31 |  |  |  |  |
|  | 3 | **HVAC** |  | 2028-07-24 | 2028-10-06 |  |  |  |  |
| 3S-WMI-3rd280 |  | Installing grills, diffusers, dampers | 30d | 2028-07-24 | 2028-08-30 | 3S-WMI-3rd250 | CSD-LKO Calender (6 day + Holiday)-25 | Physical Progress [1530 h]; HVAC [371437 INR]; TATA Projects Ltd-25 | 371,437 |
| 3S-WMI-3rd430 |  | Installation of thermostats and control panels | 30d | 2028-08-30 | 2028-10-06 | 3S-WMI-3rd280, 3S-WMI-3rd320 | CSD-LKO Calender (6 day + Holiday)-25 | Physical Progress [1530 h]; HVAC [185719 INR]; TATA Projects Ltd-25 | 185,719 |
|  | 1 | **Electrical** |  | 2028-08-17 | 2028-10-31 |  |  |  |  |
| 3S-WMI-3rd360 |  | Switches & Socket | 30d | 2028-08-17 | 2028-09-22 | 3S-WMI-3rd320 | CSD-LKO Calender (6 day + Holiday)-25 | Physical Progress [5060 h]; Electrical [415792 INR]; TATA Projects Ltd-25 | 415,792 |
| 3S-WMI-3rd570 |  | Light Fixtures | 30d | 2028-09-22 | 2028-10-31 | 3S-WMI-3rd360 | CSD-LKO Calender (6 day + Holiday)-25 | Physical Progress [3790 h]; Electrical [623688 INR]; TATA Projects Ltd-25 | 623,688 |
|  | 2 | **Plumbing** |  | 2028-08-17 | 2028-10-12 |  |  |  |  |
| 3S-WMI-3rd365 |  | Installation of sanitary fixtures (WC, washbasins, urinals, sinks) | 10d | 2028-08-17 | 2028-08-30 | 3S-WMI-3rd320 | CSD-LKO Calender (6 day + Holiday)-25 | Physical Progress [2530 h]; Plumbing [534578 INR]; TATA Projects Ltd-25 | 534,578 |
| 3S-WMI-3rd435 |  | Installation of CP fittings (taps, mixers, showers, health faucets) | 10d | 2028-08-30 | 2028-09-11 | 3S-WMI-3rd365, 3S-WMI-3rd320 | CSD-LKO Calender (6 day + Holiday)-25 | Physical Progress [2530 h]; Plumbing [267289 INR]; TATA Projects Ltd-25 | 267,289 |
| 3S-WMI-3rd480 |  | Connection of appliances | 25d | 2028-09-11 | 2028-10-12 | 3S-WMI-3rd435 | CSD-LKO Calender (6 day + Holiday)-25 | Physical Progress [1770 h]; Plumbing [133645 INR]; TATA Projects Ltd-25 | 133,645 |
|  | 4 | **Firefighting** |  | 2028-08-17 | 2028-10-25 |  |  |  |  |
| 3S-WMI-3rd370 |  | Installation of hydrant accessories (valves, hose reels, cabinets) | 25d | 2028-08-17 | 2028-09-16 | 3S-WMI-3rd320 | CSD-LKO Calender (6 day + Holiday)-25 | Physical Progress [2530 h]; Firefighting [139112 INR]; TATA Projects Ltd-25 | 139,112 |
| 3S-WMI-3rd375 |  | Installation of portable fire extinguishers | 30d | 2028-08-17 | 2028-09-22 | 3S-WMI-3rd320 | CSD-LKO Calender (6 day + Holiday)-25 | Physical Progress [1530 h]; Firefighting [13911 INR]; TATA Projects Ltd-25 | 13,911 |
| 3S-WMI-3rd485 |  | Installation of sprinkler heads, nozzles, and final alignment | 35d | 2028-09-11 | 2028-10-25 | 3S-WMI-3rd320, 3S-WMI-3rd380 | CSD-LKO Calender (6 day + Holiday)-25 | Physical Progress [10120 h]; Firefighting [208668 INR]; TATA Projects Ltd-25 | 208,668 |
| 3S-WMI-3rd575 |  | Integration with fire alarm system | 20d | 2028-09-22 | 2028-10-19 | 3S-WMI-3rd375 | CSD-LKO Calender (6 day + Holiday)-25 | Physical Progress [5060 h]; Firefighting [69556 INR]; TATA Projects Ltd-25 | 69,556 |
|  | 5 | **ELV** |  | 2028-09-11 | 2028-10-31 |  |  |  |  |
| 3S-WMI-3rd490 |  | Installation of data and Voice Faceplate | 25d | 2028-09-11 | 2028-10-12 | 3S-WMI-3rd320, 3S-WMI-3rd380 | CSD-LKO Calender (6 day + Holiday)-25 | Physical Progress [2530 h]; ELV [55817 INR]; TATA Projects Ltd-25 | 55,817 |
| 3S-WMI-3rd495 |  | Installation of Camera & Wifi | 30d | 2028-09-11 | 2028-10-19 | 3S-WMI-3rd320, 3S-WMI-3rd380 | CSD-LKO Calender (6 day + Holiday)-25 | Physical Progress [2530 h]; ELV [55817 INR]; TATA Projects Ltd-25 | 55,817 |
| 3S-WMI-3rd500 |  | Installation of fire alarm devices + Public Address | 10d | 2028-09-11 | 2028-09-22 | 3S-WMI-3rd320, 3S-WMI-3rd380 | CSD-LKO Calender (6 day + Holiday)-25 | Physical Progress [2530 h]; ELV [66981 INR]; TATA Projects Ltd-25 | 66,981 |
| 3S-WMI-3rd580 |  | Installation of Active System | 15d | 2028-09-22 | 2028-10-12 | 3S-WMI-3rd500 | CSD-LKO Calender (6 day + Holiday)-25 | Physical Progress [3790 h]; ELV [111635 INR]; TATA Projects Ltd-25 | 111,635 |
| 3S-WMI-3rd585 |  | Fire Panel Intallation & Integration | 25d | 2028-09-22 | 2028-10-25 | 3S-WMI-3rd500 | CSD-LKO Calender (6 day + Holiday)-25 | Physical Progress [6320 h]; ELV [55817 INR]; TATA Projects Ltd-25 | 55,817 |
| 3S-WMI-3rd590 |  | Installation & Integration of Audio Visual System | 25d | 2028-09-22 | 2028-10-25 | 3S-WMI-3rd500 | CSD-LKO Calender (6 day + Holiday)-25 | Physical Progress [6320 h]; ELV [55817 INR]; TATA Projects Ltd-25 | 55,817 |
| 3S-WMI-3rd595 |  | Installation & Integration of Access Control | 25d | 2028-09-22 | 2028-10-25 | 3S-WMI-3rd500 | CSD-LKO Calender (6 day + Holiday)-25 | Physical Progress [6320 h]; ELV [55817 INR]; TATA Projects Ltd-25 | 55,817 |
| 3S-WMI-3rd650 |  | Integration of Active components | 15d | 2028-10-12 | 2028-10-31 | 3S-WMI-3rd580 | CSD-LKO Calender (6 day + Holiday)-25 | Physical Progress [3790 h]; ELV [22327 INR]; TATA Projects Ltd-25 | 22,327 |

| ID | WBS | Activity | Duration | Start | Finish | Predecessors | Calendar | Resources | Cost |
| --- | --- | --- | --- | --- | --- | --- | --- | --- | --- |
|  | 4 | **Side Face** |  | 2028-04-24 | 2028-10-06 |  |  |  |  |
|  | 2 | **Dry Finishes/ID Works** |  | 2028-04-24 | 2028-10-06 |  |  |  |  |
| 3S-WMI-3rd220 |  | Running of Wild Air | 1d | 2028-04-24 | 2028-04-25 | 3S-F-3rd50, 3S-WMI-3rd140, 3S-WMI-3rd170, 3S-WMI-3rd185, 3S-WMI-3rd265, 3S-WMI-3rd630 | CSD-LKO Calender (6 day + Holiday)-25 | Physical Progress [250 h]; TATA Projects Ltd-25 |  |
| 3S-WMI-3rd230 |  | Wall finish ID Works | 10d | 2028-04-25 | 2028-05-09 | 3S-WMI-3rd220, 3S-WMI-3rd140, 3S-WMI-3rd170, 3S-WMI-3rd185, 3S-WMI-3rd265, 3S-WMI-3rd630, 3S-WMI-3rd115, 3S-WMI-3rd155, 3S-WMI-3rd235, 3S-WMI-3rd240, 3S-WMI-3rd310, 3S-WMI-3rd475, 3S-WMI-3rd110, 3S-WMI-3rd120, 3S-WMI-3rd145, 3S-WMI-3rd160, 3S-WMI-3rd175, 3S-WMI-3rd180, 3S-WMI-3rd190, 3S-WMI-3rd200, 3S-WMI-3rd125, 3S-WMI-3rd165, 3S-WMI-3rd195, 3S-WMI-3rd260, 3S-WMI-3rd420 | CSD-LKO Calender (6 day + Holiday)-25 | ID Work [2529143 INR]; Physical Progress [2530 h]; TATA Projects Ltd-25 | 2,529,143 |
| 3S-WMI-3rd255 |  | False Ceiling Installation | 20d | 2028-05-09 | 2028-06-01 | 3S-WMI-3rd230 | CSD-LKO Calender (6 day + Holiday)-25 | ID Work [3034971 INR]; Physical Progress [5060 h]; TATA Projects Ltd-25 | 3,034,971 |
| 3S-WMI-3rd295 |  | Flooring of toilets/kitchen/Balcony | 10d | 2028-06-01 | 2028-06-13 | 3S-WMI-3rd255, 3S-WMI-3rd55 | CSD-LKO Calender (6 day + Holiday)-25 | ID Work [2023314 INR]; Physical Progress [2530 h]; TATA Projects Ltd-25 | 2,023,314 |
| 3S-WMI-3rd325 |  | Doors & Windows/Fire Doors/Shaft Doors | 35d | 2028-06-13 | 2028-07-24 | 3S-WMI-3rd230, 3S-WMI-3rd295 | CSD-LKO Calender (6 day + Holiday)-25 | ID Work [2529143 INR]; Physical Progress [2530 h]; TATA Projects Ltd-25 | 2,529,143 |
| 3S-WMI-3rd330 |  | Putty & First Coat of Paint | 10d | 2028-06-13 | 2028-06-24 | 3S-WMI-3rd230, 3S-WMI-3rd295 | CSD-LKO Calender (6 day + Holiday)-25 | Painting [724 Sq m]; Painter [730 h]; Helper [730 h]; Physical Progress [2530 h]; TATA Projects Ltd-25 | 165,520.88 |
| 3S-WMI-3rd410 |  | Wooden Flooring/Flooring | 20d | 2028-06-24 | 2028-07-18 | 3S-WMI-3rd330 | CSD-LKO Calender (6 day + Holiday)-25 | ID Work [2529143 INR]; Physical Progress [5060 h]; TATA Projects Ltd-25 | 2,529,143 |
| 3S-WMI-3rd415 |  | Railing for staircase | 35d | 2028-06-24 | 2028-08-04 | 3S-WMI-3rd230, 3S-WMI-3rd330 | CSD-LKO Calender (6 day + Holiday)-25 | ID Work [1138114 INR]; Physical Progress [3790 h]; TATA Projects Ltd-25 | 1,138,114 |
| 3S-WMI-3rd535 |  | Fixed Furniture | 8d | 2028-07-18 | 2028-07-27 | 3S-WMI-3rd410 | CSD-LKO Calender (6 day + Holiday)-25 | ID Work [2276229 INR]; Physical Progress [2020 h]; TATA Projects Ltd-25 | 2,276,229 |
| 3S-WMI-3rd645 |  | False ceiling final finishes | 10d | 2028-08-10 | 2028-08-24 | 3S-WMI-3rd440 | CSD-LKO Calender (6 day + Holiday)-25 | ID Work [758743 INR]; Physical Progress [2530 h]; TATA Projects Ltd-25 | 758,743 |
| 3S-WMI-3rd670 |  | Final coat of paint | 10d | 2028-09-05 | 2028-09-16 | 3S-WMI-3rd645, 3S-WMI-3rd415, 3S-WMI-3rd535, 3S-WMI-3rd600, 3S-WMI-3rd510, 3S-WMI-3rd515, 3S-WMI-3rd605, 3S-WMI-3rd655, 3S-WMI-3rd625, 3S-WMI-3rd620, 3S-WMI-3rd615, 3S-WMI-3rd525, 3S-WMI-3rd520 | CSD-LKO Calender (6 day + Holiday)-25 | Painting [724 Sq m]; Painter [730 h]; Helper [730 h]; Physical Progress [2530 h]; TATA Projects Ltd-25 | 165,520.88 |
| 3S-WMI-3rd690 |  | Soft Furnishing & Signage | 15d | 2028-09-16 | 2028-10-06 | 3S-WMI-3rd670 | CSD-LKO Calender (6 day + Holiday)-25 | ID Work [3793714 INR]; Physical Progress [760 h]; TATA Projects Ltd-25 | 3,793,714 |
| 3S-WMI-3rd695 |  | Loose Furniture | 15d | 2028-09-16 | 2028-10-06 | 3S-WMI-3rd670 | CSD-LKO Calender (6 day + Holiday)-25 | ID Work [5058286 INR]; Physical Progress [760 h]; TATA Projects Ltd-25 | 5,058,286 |
|  | 1 | **MEP Final Fix** |  | 2028-06-01 | 2028-09-05 |  |  |  |  |
|  | 3 | **HVAC** |  | 2028-06-01 | 2028-08-10 |  |  |  |  |
| 3S-WMI-3rd290 |  | Installing grills, diffusers, dampers | 30d | 2028-06-01 | 2028-07-06 | 3S-WMI-3rd255 | CSD-LKO Calender (6 day + Holiday)-25 | Physical Progress [1530 h]; HVAC [371437 INR]; TATA Projects Ltd-25 | 371,437 |
| 3S-WMI-3rd440 |  | Installation of thermostats and control panels | 30d | 2028-07-06 | 2028-08-10 | 3S-WMI-3rd290, 3S-WMI-3rd330 | CSD-LKO Calender (6 day + Holiday)-25 | Physical Progress [1530 h]; HVAC [185719 INR]; TATA Projects Ltd-25 | 185,719 |
|  | 1 | **Electrical** |  | 2028-06-24 | 2028-09-05 |  |  |  |  |
| 3S-WMI-3rd390 |  | Switches & Socket | 30d | 2028-06-24 | 2028-07-29 | 3S-WMI-3rd330 | CSD-LKO Calender (6 day + Holiday)-25 | Physical Progress [5060 h]; Electrical [415792 INR]; TATA Projects Ltd-25 | 415,792 |
| 3S-WMI-3rd600 |  | Light Fixtures | 30d | 2028-07-29 | 2028-09-05 | 3S-WMI-3rd390 | CSD-LKO Calender (6 day + Holiday)-25 | Physical Progress [3790 h]; Electrical [623688 INR]; TATA Projects Ltd-25 | 623,688 |
|  | 2 | **Plumbing** |  | 2028-06-24 | 2028-08-17 |  |  |  |  |
| 3S-WMI-3rd395 |  | Installation of sanitary fixtures (WC, washbasins, urinals, sinks) | 10d | 2028-06-24 | 2028-07-06 | 3S-WMI-3rd330 | CSD-LKO Calender (6 day + Holiday)-25 | Physical Progress [2530 h]; Plumbing [534578 INR]; TATA Projects Ltd-25 | 534,578 |
| 3S-WMI-3rd445 |  | Installation of CP fittings (taps, mixers, showers, health faucets) | 10d | 2028-07-06 | 2028-07-18 | 3S-WMI-3rd395, 3S-WMI-3rd330 | CSD-LKO Calender (6 day + Holiday)-25 | Physical Progress [2530 h]; Plumbing [267289 INR]; TATA Projects Ltd-25 | 267,289 |
| 3S-WMI-3rd510 |  | Connection of appliances | 25d | 2028-07-18 | 2028-08-17 | 3S-WMI-3rd445 | CSD-LKO Calender (6 day + Holiday)-25 | Physical Progress [1770 h]; Plumbing [133645 INR]; TATA Projects Ltd-25 | 133,645 |

| ID | WBS | Activity | Duration | Start | Finish | Predecessors | Calendar | Resources | Cost |
| --- | --- | --- | --- | --- | --- | --- | --- | --- | --- |
|  | 4 | **Firefighting** |  | 2028-06-24 | 2028-08-30 |  |  |  |  |
| 3S-WMI-3rd400 |  | Installation of hydrant accessories (valves, hose reels, cabinets) | 25d | 2028-06-24 | 2028-07-24 | 3S-WMI-3rd330 | CSD-LKO Calender (6 day + Holiday)-25 | Physical Progress [2530 h]; Firefighting [139112 INR]; TATA Projects Ltd-25 | 139,112 |
| 3S-WMI-3rd405 |  | Installation of portable fire extinguishers | 30d | 2028-06-24 | 2028-07-29 | 3S-WMI-3rd330 | CSD-LKO Calender (6 day + Holiday)-25 | Physical Progress [1530 h]; Firefighting [13911 INR]; TATA Projects Ltd-25 | 13,911 |
| 3S-WMI-3rd515 |  | Installation of sprinkler heads, nozzles, and final alignment | 35d | 2028-07-18 | 2028-08-30 | 3S-WMI-3rd330, 3S-WMI-3rd410 | CSD-LKO Calender (6 day + Holiday)-25 | Physical Progress [10120 h]; Firefighting [208668 INR]; TATA Projects Ltd-25 | 208,668 |
| 3S-WMI-3rd605 |  | Integration with fire alarm system | 20d | 2028-07-29 | 2028-08-24 | 3S-WMI-3rd405 | CSD-LKO Calender (6 day + Holiday)-25 | Physical Progress [5060 h]; Firefighting [69556 INR]; TATA Projects Ltd-25 | 69,556 |
|  | 5 | **ELV** |  | 2028-07-18 | 2028-09-05 |  |  |  |  |
| 3S-WMI-3rd520 |  | Installation of data and Voice Faceplate | 25d | 2028-07-18 | 2028-08-17 | 3S-WMI-3rd330, 3S-WMI-3rd410 | CSD-LKO Calender (6 day + Holiday)-25 | Physical Progress [2530 h]; ELV [55817 INR]; TATA Projects Ltd-25 | 55,817 |
| 3S-WMI-3rd525 |  | Installation of Camera & Wifi | 30d | 2028-07-18 | 2028-08-24 | 3S-WMI-3rd330, 3S-WMI-3rd410 | CSD-LKO Calender (6 day + Holiday)-25 | Physical Progress [2530 h]; ELV [55817 INR]; TATA Projects Ltd-25 | 55,817 |
| 3S-WMI-3rd530 |  | Installation of fire alarm devices + Public Address | 10d | 2028-07-18 | 2028-07-29 | 3S-WMI-3rd330, 3S-WMI-3rd410 | CSD-LKO Calender (6 day + Holiday)-25 | Physical Progress [2530 h]; ELV [66981 INR]; TATA Projects Ltd-25 | 66,981 |
| 3S-WMI-3rd610 |  | Installation of Active System | 15d | 2028-07-29 | 2028-08-17 | 3S-WMI-3rd530 | CSD-LKO Calender (6 day + Holiday)-25 | Physical Progress [3790 h]; ELV [111635 INR]; TATA Projects Ltd-25 | 111,635 |
| 3S-WMI-3rd615 |  | Fire Panel Intallation & Integration | 25d | 2028-07-29 | 2028-08-30 | 3S-WMI-3rd530 | CSD-LKO Calender (6 day + Holiday)-25 | Physical Progress [6320 h]; ELV [55817 INR]; TATA Projects Ltd-25 | 55,817 |
| 3S-WMI-3rd620 |  | Installation & Integration of Audio Visual System | 25d | 2028-07-29 | 2028-08-30 | 3S-WMI-3rd530 | CSD-LKO Calender (6 day + Holiday)-25 | Physical Progress [6320 h]; ELV [55817 INR]; TATA Projects Ltd-25 | 55,817 |
| 3S-WMI-3rd625 |  | Installation & Integration of Access Control | 25d | 2028-07-29 | 2028-08-30 | 3S-WMI-3rd530 | CSD-LKO Calender (6 day + Holiday)-25 | Physical Progress [6320 h]; ELV [55817 INR]; TATA Projects Ltd-25 | 55,817 |
| 3S-WMI-3rd655 |  | Integration of Active components | 15d | 2028-08-17 | 2028-09-05 | 3S-WMI-3rd610 | CSD-LKO Calender (6 day + Holiday)-25 | Physical Progress [3790 h]; ELV [22327 INR]; TATA Projects Ltd-25 | 22,327 |
|  | 5 | **Fourth Floor** |  | 2027-09-24 | 2028-12-07 |  |  |  |  |
|  | 1 | **Wet Finishes** |  | 2027-09-24 | 2028-01-06 |  |  |  |  |
| 3S-WMI-4th10 |  | Deshuttering | 4d | 2027-09-24 | 2027-09-29 | 3S-SS-5th295 | CSD-LKO Calender (6 day + Holiday)-25 | Physical Progress [1020 h]; TATA Projects Ltd-25 |  |
| 3S-WMI-4th15 |  | Brickwork/Blockwork | 30d | 2027-09-29 | 2027-11-06 | 3S-WMI-4th10, E-GFC-AR-3S-285 | CSD-LKO Calender (6 day + Holiday)-25 | Masonry [446 CuM]; Mason [2980 h]; Helper [1490 h]; Physical Progress [7590 h]; TATA Projects Ltd-25 | 4,252,770.56 |
| 3S-WMI-4th55 |  | Waterproofing of Toilets, Balcony & Kitchen | 15d | 2027-11-06 | 2027-11-24 | 3S-WMI-4th15 | CSD-LKO Calender (6 day + Holiday)-25 | Waterproofing [8564838 INR]; Waterprrofing Mason [8160 h]; Helper [4080 h]; Physical Progress [3790 h]; TATA Projects Ltd-25 | 8,564,838 |
| 3S-WMI-4th95 |  | Plaster | 15d | 2027-12-17 | 2028-01-06 | 3S-WMI-4th30, 3S-WMI-4th75, 3S-WMI-4th80, 3S-WMI-4th55, 3S-WMI-4th55 FF | CSD-LKO Calender (6 day + Holiday)-25 | Plaster [7060 Sqr Mtr]; Mason [4710 h]; Helper [2360 h]; Physical Progress [3790 h]; TATA Projects Ltd-25 | 3,910,604.6 |
|  | 5 | **MEP 1st Fix, 2nd Fix** |  | 2027-09-29 | 2028-04-29 |  |  |  |  |
|  | 2 | **HVAC** |  | 2027-11-06 | 2028-04-29 |  |  |  |  |
|  | 1 | **1st Fix** |  | 2027-11-06 | 2028-01-18 |  |  |  |  |
| 3S-WMI-4th50 |  | Duct Support Fabrication | 15d | 2027-11-06 | 2027-11-24 | 3S-WMI-4th15, E-GFC-MEP-3S-285 | CSD-LKO Calender (6 day + Holiday)-25 | Physical Progress [3790 h]; HVAC [222862 INR]; TATA Projects Ltd-25 | 222,862 |
| 3S-WMI-4th100 |  | Installing duct hangers and supports | 25d | 2027-11-24 | 2027-12-23 | 3S-WMI-4th50, E-GFC-MEP-3S-285 | CSD-LKO Calender (6 day + Holiday)-25 | Physical Progress [2530 h]; HVAC [445725 INR]; TATA Projects Ltd-25 | 445,725 |
| 3S-WMI-4th130 |  | Laying concealed/exposed refrigerant piping | 20d | 2027-12-23 | 2028-01-18 | 3S-WMI-4th100, E-GFC-MEP-3S-285 | CSD-LKO Calender (6 day + Holiday)-25 | Physical Progress [3790 h]; HVAC [111431 INR]; TATA Projects Ltd-25 | 111,431 |
| 3S-WMI-4th135 |  | Laying concealed/exposed drain piping | 20d | 2027-12-23 | 2028-01-18 | 3S-WMI-4th100, E-GFC-MEP-3S-285 | CSD-LKO Calender (6 day + Holiday)-25 | Physical Progress [2530 h]; HVAC [668587 INR]; TATA Projects Ltd-25 | 668,587 |

| ID | WBS | Activity | Duration | Start | Finish | Predecessors | Calendar | Resources | Cost |
| --- | --- | --- | --- | --- | --- | --- | --- | --- | --- |
|  | 2 | **2nd Fix** |  | 2027-12-23 | 2028-04-29 |  |  |  |  |
| 3S-WMI-4th140 |  | Duct installation | 20d | 2027-12-23 | 2028-01-18 | 3S-WMI-4th100 | CSD-LKO Calender (6 day + Holiday)-25 | Physical Progress [3790 h]; HVAC [1671468 INR]; TATA Projects Ltd-25 | 1,671,468 |
| 3S-WMI-4th170 |  | Insulation of ducts (thermal/acoustic) | 10d | 2028-01-18 | 2028-01-31 | 3S-WMI-4th140 | CSD-LKO Calender (6 day + Holiday)-25 | Physical Progress [1530 h]; HVAC [1002881 INR]; TATA Projects Ltd-25 | 1,002,881 |
| 3S-WMI-4th185 |  | Installation of chilled water piping / VRF piping | 20d | 2028-01-31 | 2028-02-23 | 3S-WMI-4th170 | CSD-LKO Calender (6 day + Holiday)-25 | Physical Progress [1530 h]; HVAC [2228625 INR]; TATA Projects Ltd-25 | 2,228,625 |
| 3S-WMI-4th265 |  | Installation of indoor units including AHU, FCU | 35d | 2028-02-23 | 2028-04-05 | 3S-WMI-4th185, 3S-WMI-4th130, 3S-WMI-4th135 | CSD-LKO Calender (6 day + Holiday)-25 | Physical Progress [11380 h]; HVAC [2005762 INR]; TATA Projects Ltd-25 | 2,005,762 |
| 3S-WMI-4th545 |  | Connecting refrigerant and drain piping to indoor units | 20d | 2028-04-05 | 2028-04-29 | 3S-WMI-4th265 | CSD-LKO Calender (6 day + Holiday)-25 | Physical Progress [1530 h]; HVAC [557156 INR]; TATA Projects Ltd-25 | 557,156 |
|  | 1 | **Electrical** |  | 2027-09-29 | 2028-04-29 |  |  |  |  |
|  | 1 | **1st Fix** |  | 2027-09-29 | 2027-12-17 |  |  |  |  |
| 3S-WMI-4th20 |  | Slab Conduiting | 35d | 2027-09-29 | 2027-11-12 | 3S-WMI-4th10, E-GFC-MEP-3S-285 | CSD-LKO Calender (6 day + Holiday)-25 | Physical Progress [6320 h]; Electrical [1247377 INR]; TATA Projects Ltd-25 | 1,247,377 |
| 3S-WMI-4th30 |  | Wall Conduiting | 30d | 2027-11-06 | 2027-12-11 | 3S-WMI-4th15, E-GFC-MEP-3S-285 | CSD-LKO Calender (6 day + Holiday)-25 | Physical Progress [2530 h]; Electrical [623688 INR]; TATA Projects Ltd-25 | 623,688 |
| 3S-WMI-4th75 |  | Installing back boxes for switches, sockets | 5d | 2027-12-11 | 2027-12-17 | 3S-WMI-4th30, 3S-WMI-4th20, E-GFC-MEP-3S-285 | CSD-LKO Calender (6 day + Holiday)-25 | Physical Progress [1280 h]; Electrical [374213 INR]; TATA Projects Ltd-25 | 374,213 |
|  | 2 | **2nd Fix** |  | 2028-01-06 | 2028-04-29 |  |  |  |  |
| 3S-WMI-4th115 |  | Cable tray laying | 25d | 2028-01-06 | 2028-02-05 | 3S-WMI-4th95 | CSD-LKO Calender (6 day + Holiday)-25 | Physical Progress [6320 h]; Electrical [498951 INR]; TATA Projects Ltd-25 | 498,951 |
| 3S-WMI-4th155 |  | Cabling & Wire Pulling | 35d | 2028-02-05 | 2028-03-18 | 3S-WMI-4th115 | CSD-LKO Calender (6 day + Holiday)-25 | Physical Progress [11380 h]; Electrical [2494753 INR]; TATA Projects Ltd-25 | 2,494,753 |
| 3S-WMI-4th205 |  | DB fixing and connecting | 15d | 2028-03-18 | 2028-04-05 | 3S-WMI-4th155 | CSD-LKO Calender (6 day + Holiday)-25 | Physical Progress [3790 h]; Electrical [374213 INR]; TATA Projects Ltd-25 | 374,213 |
| 3S-WMI-4th210 |  | Floor Rising Main Installation | 15d | 2028-03-18 | 2028-04-05 | 3S-WMI-4th155 | CSD-LKO Calender (6 day + Holiday)-25 | Physical Progress [1280 h]; Electrical [1746327 INR]; TATA Projects Ltd-25 | 1,746,327 |
| 3S-WMI-4th280 |  | Floor/Distribution Panel Installation | 10d | 2028-04-05 | 2028-04-18 | 3S-WMI-4th205 | CSD-LKO Calender (6 day + Holiday)-25 | Physical Progress [1280 h]; Electrical [997901 INR]; TATA Projects Ltd-25 | 997,901 |
| 3S-WMI-4th430 |  | Equipment Earthing | 10d | 2028-04-18 | 2028-04-29 | 3S-WMI-4th280, 3S-WMI-4th210 | CSD-LKO Calender (6 day + Holiday)-25 | Physical Progress [2530 h]; Electrical [374213 INR]; TATA Projects Ltd-25 | 374,213 |
|  | 3 | **Plumbing** |  | 2027-11-06 | 2028-04-29 |  |  |  |  |
|  | 1 | **1st Fix** |  | 2027-11-06 | 2028-02-29 |  |  |  |  |
| 3S-WMI-4th35 |  | Fixing pipe supports and clamps | 15d | 2027-11-06 | 2027-11-24 | 3S-WMI-4th15, E-GFC-MEP-3S-285 | CSD-LKO Calender (6 day + Holiday)-25 | Physical Progress [2530 h]; Plumbing [400934 INR]; TATA Projects Ltd-25 | 400,934 |
| 3S-WMI-4th60 |  | Laying water supply pipes (hot & cold) | 35d | 2027-11-24 | 2028-01-06 | 3S-WMI-4th35, E-GFC-MEP-3S-285 | CSD-LKO Calender (6 day + Holiday)-25 | Physical Progress [3790 h]; Plumbing [801867 INR]; TATA Projects Ltd-25 | 801,867 |
| 3S-WMI-4th65 |  | Laying drainage pipes (soil, waste, vent) | 35d | 2027-11-24 | 2028-01-06 | 3S-WMI-4th35, E-GFC-MEP-3S-285 | CSD-LKO Calender (6 day + Holiday)-25 | Physical Progress [3790 h]; Plumbing [801867 INR]; TATA Projects Ltd-25 | 801,867 |
| 3S-WMI-4th70 |  | Installation of plumbing fixture base supports (WC frames, sink brackets) | 30d | 2028-01-06 | 2028-02-11 | 3S-WMI-4th65, E-GFC-MEP-3S-285 | CSD-LKO Calender (6 day + Holiday)-25 | Physical Progress [1530 h]; Plumbing [400934 INR]; TATA Projects Ltd-25 | 400,934 |
| 3S-WMI-4th85 |  | Pressure testing of water supply lines | 15d | 2028-02-11 | 2028-02-29 | 3S-WMI-4th60, 3S-WMI-4th65, 3S-WMI-4th70, E-GFC-MEP-3S-285 | CSD-LKO Calender (6 day + Holiday)-25 | Physical Progress [1770 h]; Plumbing [80187 INR]; TATA Projects Ltd-25 | 80,187 |
| 3S-WMI-4th90 |  | Installation of concealed parts of toilet fixtures | 15d | 2028-02-11 | 2028-02-29 | 3S-WMI-4th70, E-GFC-MEP-3S-285 | CSD-LKO Calender (6 day + Holiday)-25 | Physical Progress [2530 h]; Plumbing [400934 INR]; TATA Projects Ltd-25 | 400,934 |

| ID | WBS | Activity | Duration | Start | Finish | Predecessors | Calendar | Resources | Cost |
| --- | --- | --- | --- | --- | --- | --- | --- | --- | --- |
|  | 2 | **2nd FIx** |  | 2028-02-29 | 2028-04-29 |  |  |  |  |
| 3S-WMI-4th110 |  | Insulation of hot water pipes (if applicable) | 30d | 2028-02-29 | 2028-04-05 | 3S-WMI-4th85 | CSD-LKO Calender (6 day + Holiday)-25 | Physical Progress [1530 h]; Plumbing [400934 INR]; TATA Projects Ltd-25 | 400,934 |
| 3S-WMI-4th120 |  | Installation of vertical risers and main distribution lines | 30d | 2028-02-29 | 2028-04-05 | 3S-WMI-4th95, 3S-WMI-4th85, 3S-WMI-4th90 | CSD-LKO Calender (6 day + Holiday)-25 | Physical Progress [5060 h]; Plumbing [801867 INR]; TATA Projects Ltd-25 | 801,867 |
| 3S-WMI-4th145 |  | Testing drainage lines for leakage/blockage | 20d | 2028-04-05 | 2028-04-29 | 3S-WMI-4th70, 3S-WMI-4th110 | CSD-LKO Calender (6 day + Holiday)-25 | Physical Progress [1530 h]; Plumbing [80187 INR]; TATA Projects Ltd-25 | 80,187 |
| 3S-WMI-4th160 |  | Fixing floor traps and gully traps | 20d | 2028-04-05 | 2028-04-29 | 3S-WMI-4th120 | CSD-LKO Calender (6 day + Holiday)-25 | Physical Progress [1530 h]; Plumbing [240560 INR]; TATA Projects Ltd-25 | 240,560 |
|  | 4 | **Firefighting** |  | 2027-11-06 | 2028-04-29 |  |  |  |  |
|  | 1 | **1st Fix** |  | 2027-11-06 | 2028-02-05 |  |  |  |  |
| 3S-WMI-4th40 |  | Fixing pipe supports and hangers | 15d | 2027-11-06 | 2027-11-24 | 3S-WMI-4th15, E-GFC-MEP-3S-285 | CSD-LKO Calender (6 day + Holiday)-25 | Physical Progress [2530 h]; Firefighting [292135 INR]; TATA Projects Ltd-25 | 292,135 |
| 3S-WMI-4th105 |  | Laying branch piping | 35d | 2027-11-24 | 2028-01-06 | 3S-WMI-4th40, E-GFC-MEP-3S-285 | CSD-LKO Calender (6 day + Holiday)-25 | Physical Progress [3790 h]; Firefighting [626004 INR]; TATA Projects Ltd-25 | 626,004 |
| 3S-WMI-4th150 |  | Hydrostatic pressure testing of piping | 25d | 2028-01-06 | 2028-02-05 | 3S-WMI-4th105, E-GFC-MEP-3S-285 | CSD-LKO Calender (6 day + Holiday)-25 | Physical Progress [1530 h]; Firefighting [83467 INR]; TATA Projects Ltd-25 | 83,467 |
|  | 2 | **2nd Fix** |  | 2028-02-05 | 2028-04-29 |  |  |  |  |
| 3S-WMI-4th175 |  | Installation of vertical risers and distribution piping in shafts | 35d | 2028-02-05 | 2028-03-18 | 3S-WMI-4th95, 3S-WMI-4th150 | CSD-LKO Calender (6 day + Holiday)-25 | Physical Progress [6320 h]; Firefighting [834672 INR]; TATA Projects Ltd-25 | 834,672 |
| 3S-WMI-4th180 |  | Painting/insulation of exposed fire pipes | 30d | 2028-02-05 | 2028-03-13 | 3S-WMI-4th150 | CSD-LKO Calender (6 day + Holiday)-25 | Physical Progress [2530 h]; Firefighting [41734 INR]; TATA Projects Ltd-25 | 41,734 |
| 3S-WMI-4th190 |  | Testing risers and branch lines for leakage | 30d | 2028-03-13 | 2028-04-18 | 3S-WMI-4th180 | CSD-LKO Calender (6 day + Holiday)-25 | Physical Progress [1530 h]; Firefighting [83467 INR]; TATA Projects Ltd-25 | 83,467 |
| 3S-WMI-4th200 |  | Installation of sprinkler branch lines in ceilings | 35d | 2028-03-18 | 2028-04-29 | 3S-WMI-4th175 | CSD-LKO Calender (6 day + Holiday)-25 | Physical Progress [6320 h]; Firefighting [626004 INR]; TATA Projects Ltd-25 | 626,004 |
|  | 5 | **ELV** |  | 2027-09-29 | 2028-04-29 |  |  |  |  |
|  | 1 | **1st Fix** |  | 2027-09-29 | 2027-12-17 |  |  |  |  |
| 3S-WMI-4th25 |  | Slab Conduiting | 35d | 2027-09-29 | 2027-11-12 | 3S-WMI-4th10, E-GFC-MEP-3S-285 | CSD-LKO Calender (6 day + Holiday)-25 | Physical Progress [6320 h]; ELV [234433 INR]; TATA Projects Ltd-25 | 234,433 |
| 3S-WMI-4th45 |  | Wall Conduiting | 30d | 2027-11-06 | 2027-12-11 | 3S-WMI-4th15, E-GFC-MEP-3S-285 | CSD-LKO Calender (6 day + Holiday)-25 | Physical Progress [2530 h]; ELV [100471 INR]; TATA Projects Ltd-25 | 100,471 |
| 3S-WMI-4th80 |  | Installing back boxes for switches, sockets | 5d | 2027-12-11 | 2027-12-17 | 3S-WMI-4th45, 3S-WMI-4th25, E-GFC-MEP-3S-285 | CSD-LKO Calender (6 day + Holiday)-25 | Physical Progress [1280 h]; ELV [167452 INR]; TATA Projects Ltd-25 | 167,452 |
|  | 2 | **2nd Fix** |  | 2028-01-06 | 2028-04-29 |  |  |  |  |
| 3S-WMI-4th125 |  | Cable tray installation | 20d | 2028-01-06 | 2028-01-31 | 3S-WMI-4th95 | CSD-LKO Calender (6 day + Holiday)-25 | Physical Progress [6320 h]; ELV [167452 INR]; TATA Projects Ltd-25 | 167,452 |
| 3S-WMI-4th165 |  | Cabeling of ELV cable - IT/Fire Alarm/Public Address | 35d | 2028-01-31 | 2028-03-13 | 3S-WMI-4th125 | CSD-LKO Calender (6 day + Holiday)-25 | Physical Progress [11380 h]; ELV [401885 INR]; TATA Projects Ltd-25 | 401,885 |
| 3S-WMI-4th195 |  | ELV Rack Installation | 15d | 2028-03-13 | 2028-03-30 | 3S-WMI-4th165 | CSD-LKO Calender (6 day + Holiday)-25 | Physical Progress [2530 h]; ELV [167452 INR]; TATA Projects Ltd-25 | 167,452 |
| 3S-WMI-4th250 |  | Termination of cables at junction boxes, patch panels, and control panels | 10d | 2028-03-30 | 2028-04-11 | 3S-WMI-4th195 | CSD-LKO Calender (6 day + Holiday)-25 | Physical Progress [7590 h]; ELV [167452 INR]; TATA Projects Ltd-25 | 167,452 |
| 3S-WMI-4th335 |  | Fixing devices like CCTV camera bases, card reader bases, smoke detector bases, PA Bases, Wifi Bases | 15d | 2028-04-11 | 2028-04-29 | 3S-WMI-4th250 | CSD-LKO Calender (6 day + Holiday)-25 | Physical Progress [1020 h]; ELV [334904 INR]; TATA Projects Ltd-25 | 334,904 |

| ID | WBS | Activity | Duration | Start | Finish | Predecessors | Calendar | Resources | Cost |
| --- | --- | --- | --- | --- | --- | --- | --- | --- | --- |
|  | 3 | **Front Face - Toward Airport** |  | 2028-06-02 | 2028-12-01 |  |  |  |  |
|  | 2 | **Dry Finishes/ID Works** |  | 2028-06-02 | 2028-12-01 |  |  |  |  |
| 3S-WMI-4th215 |  | Running of Wild Air | 1d | 2028-06-02 | 2028-06-03 | 3S-F-4th40, 3S-WMI-4th140, 3S-WMI-4th170, 3S-WMI-4th185, 3S-WMI-4th265, 3S-WMI-4th545 | CSD-LKO Calender (6 day + Holiday)-25 | Physical Progress [250 h]; TATA Projects Ltd-25 |  |
| 3S-WMI-4th220 |  | Wall finish ID Works | 10d | 2028-06-03 | 2028-06-15 | 3S-WMI-4th215, 3S-WMI-4th140, 3S-WMI-4th170, 3S-WMI-4th185, 3S-WMI-4th265, 3S-WMI-4th545, 3S-WMI-4th115, 3S-WMI-4th155, 3S-WMI-4th205, 3S-WMI-4th210, 3S-WMI-4th280, 3S-WMI-4th430, 3S-WMI-4th110, 3S-WMI-4th120, 3S-WMI-4th145, 3S-WMI-4th160, 3S-WMI-4th175, 3S-WMI-4th180, 3S-WMI-4th190, 3S-WMI-4th200, 3S-WMI-4th125, 3S-WMI-4th165, 3S-WMI-4th195, 3S-WMI-4th250, 3S-WMI-4th335 | CSD-LKO Calender (6 day + Holiday)-25 | ID Work [2529143 INR]; Physical Progress [2530 h]; TATA Projects Ltd-25 | 2,529,143 |
| 3S-WMI-4th245 |  | False Ceiling Installation | 35d | 2028-06-15 | 2028-07-26 | 3S-WMI-4th220 | CSD-LKO Calender (6 day + Holiday)-25 | ID Work [3034971 INR]; Physical Progress [5060 h]; TATA Projects Ltd-25 | 3,034,971 |
| 3S-WMI-4th275 |  | Flooring of toilets/kitchen/Balcony | 10d | 2028-07-26 | 2028-08-07 | 3S-WMI-4th55, 3S-WMI-4th245 | CSD-LKO Calender (6 day + Holiday)-25 | ID Work [2023314 INR]; Physical Progress [2530 h]; TATA Projects Ltd-25 | 2,023,314 |
| 3S-WMI-4th305 |  | Doors & Windows/Fire Doors/Shaft Doors | 35d | 2028-08-07 | 2028-09-19 | 3S-WMI-4th220, 3S-WMI-4th275 | CSD-LKO Calender (6 day + Holiday)-25 | ID Work [2529143 INR]; Physical Progress [2530 h]; TATA Projects Ltd-25 | 2,529,143 |
| 3S-WMI-4th310 |  | Putty & First Coat of Paint | 10d | 2028-08-07 | 2028-08-19 | 3S-WMI-4th220, 3S-WMI-4th275 | CSD-LKO Calender (6 day + Holiday)-25 | Painting [724 Sq m]; Painter [730 h]; Helper [730 h]; Physical Progress [2530 h]; TATA Projects Ltd-25 | 165,520.88 |
| 3S-WMI-4th360 |  | Wooden Flooring/Flooring | 20d | 2028-08-19 | 2028-09-13 | 3S-WMI-4th310 | CSD-LKO Calender (6 day + Holiday)-25 | ID Work [2529143 INR]; Physical Progress [5060 h]; TATA Projects Ltd-25 | 2,529,143 |
| 3S-WMI-4th475 |  | Fixed Furniture | 8d | 2028-09-13 | 2028-09-22 | 3S-WMI-4th360 | CSD-LKO Calender (6 day + Holiday)-25 | ID Work [2276229 INR]; Physical Progress [2020 h]; TATA Projects Ltd-25 | 2,276,229 |
| 3S-WMI-4th700 |  | False ceiling final finishes | 10d | 2028-10-09 | 2028-10-21 | 3S-WMI-4th665 | CSD-LKO Calender (6 day + Holiday)-25 | ID Work [758743 INR]; Physical Progress [2530 h]; TATA Projects Ltd-25 | 758,743 |
| 3S-WMI-4th705 |  | Final coat of paint | 10d | 2028-11-02 | 2028-11-14 | 3S-WMI-4th700, 3S-WMI-4th475, 3S-WMI-4th635, 3S-WMI-4th455, 3S-WMI-4th460, 3S-WMI-4th550, 3S-WMI-4th640, 3S-WMI-4th570, 3S-WMI-4th565, 3S-WMI-4th560, 3S-WMI-4th465, 3S-WMI-4th480, 3S-WMI-4th305, 3S-WMI-4th350 | CSD-LKO Calender (6 day + Holiday)-25 | Painting [724 Sq m]; Painter [730 h]; Helper [730 h]; Physical Progress [2530 h]; TATA Projects Ltd-25 | 165,520.88 |
| 3S-WMI-4th710 |  | Soft Furnishing & Signage | 15d | 2028-11-14 | 2028-12-01 | 3S-WMI-4th705 | CSD-LKO Calender (6 day + Holiday)-25 | ID Work [3793714 INR]; Physical Progress [760 h]; TATA Projects Ltd-25 | 3,793,714 |
| 3S-WMI-4th715 |  | Loose Furniture | 15d | 2028-11-14 | 2028-12-01 | 3S-WMI-4th705 | CSD-LKO Calender (6 day + Holiday)-25 | ID Work [5058286 INR]; Physical Progress [760 h]; TATA Projects Ltd-25 | 5,058,286 |
|  | 1 | **MEP Final Fix** |  | 2028-07-26 | 2028-11-02 |  |  |  |  |
|  | 3 | **HVAC** |  | 2028-07-26 | 2028-10-09 |  |  |  |  |
| 3S-WMI-4th270 |  | Installing grills, diffusers, dampers | 30d | 2028-07-26 | 2028-09-01 | 3S-WMI-4th245 | CSD-LKO Calender (6 day + Holiday)-25 | Physical Progress [1530 h]; HVAC [371437 INR]; TATA Projects Ltd-25 | 371,437 |
| 3S-WMI-4th665 |  | Installation of thermostats and control panels | 30d | 2028-09-01 | 2028-10-09 | 3S-WMI-4th270, 3S-WMI-4th310, 3S-WMI-4th545 | CSD-LKO Calender (6 day + Holiday)-25 | Physical Progress [1530 h]; HVAC [185719 INR]; TATA Projects Ltd-25 | 185,719 |
|  | 1 | **Electrical** |  | 2028-08-19 | 2028-11-02 |  |  |  |  |
| 3S-WMI-4th340 |  | Switches & Socket | 30d | 2028-08-19 | 2028-09-25 | 3S-WMI-4th310 | CSD-LKO Calender (6 day + Holiday)-25 | Physical Progress [5060 h]; Electrical [415792 INR]; TATA Projects Ltd-25 | 415,792 |
| 3S-WMI-4th635 |  | Light Fixtures | 30d | 2028-09-25 | 2028-11-02 | 3S-WMI-4th340, 3S-WMI-4th430 | CSD-LKO Calender (6 day + Holiday)-25 | Physical Progress [3790 h]; Electrical [623688 INR]; TATA Projects Ltd-25 | 623,688 |
|  | 2 | **Plumbing** |  | 2028-08-19 | 2028-10-14 |  |  |  |  |
| 3S-WMI-4th345 |  | Installation of sanitary fixtures (WC, washbasins, urinals, sinks) | 10d | 2028-08-19 | 2028-09-01 | 3S-WMI-4th310, 3S-WMI-4th145, 3S-WMI-4th160 | CSD-LKO Calender (6 day + Holiday)-25 | Physical Progress [2530 h]; Plumbing [534578 INR]; TATA Projects Ltd-25 | 534,578 |
| 3S-WMI-4th425 |  | Installation of CP fittings (taps, mixers, showers, health faucets) | 10d | 2028-09-01 | 2028-09-13 | 3S-WMI-4th345, 3S-WMI-4th310 | CSD-LKO Calender (6 day + Holiday)-25 | Physical Progress [2530 h]; Plumbing [267289 INR]; TATA Projects Ltd-25 | 267,289 |
| 3S-WMI-4th455 |  | Connection of appliances | 25d | 2028-09-13 | 2028-10-14 | 3S-WMI-4th425 | CSD-LKO Calender (6 day + Holiday)-25 | Physical Progress [1770 h]; Plumbing [133645 INR]; TATA Projects Ltd-25 | 133,645 |

| ID | WBS | Activity | Duration | Start | Finish | Predecessors | Calendar | Resources | Cost |
| --- | --- | --- | --- | --- | --- | --- | --- | --- | --- |
|  | 4 | **Firefighting** |  | 2028-08-19 | 2028-10-27 |  |  |  |  |
| 3S-WMI-4th350 |  | Installation of hydrant accessories (valves, hose reels, cabinets) | 25d | 2028-08-19 | 2028-09-19 | 3S-WMI-4th310 | CSD-LKO Calender (6 day + Holiday)-25 | Physical Progress [2530 h]; Firefighting [139112 INR]; TATA Projects Ltd-25 | 139,112 |
| 3S-WMI-4th355 |  | Installation of portable fire extinguishers | 30d | 2028-08-19 | 2028-09-25 | 3S-WMI-4th310 | CSD-LKO Calender (6 day + Holiday)-25 | Physical Progress [1530 h]; Firefighting [13911 INR]; TATA Projects Ltd-25 | 13,911 |
| 3S-WMI-4th460 |  | Installation of sprinkler heads, nozzles, and final alignment | 35d | 2028-09-13 | 2028-10-27 | 3S-WMI-4th310, 3S-WMI-4th360, 3S-WMI-4th190, 3S-WMI-4th200 | CSD-LKO Calender (6 day + Holiday)-25 | Physical Progress [10120 h]; Firefighting [208668 INR]; TATA Projects Ltd-25 | 208,668 |
| 3S-WMI-4th550 |  | Integration with fire alarm system | 20d | 2028-09-25 | 2028-10-21 | 3S-WMI-4th355 | CSD-LKO Calender (6 day + Holiday)-25 | Physical Progress [5060 h]; Firefighting [69556 INR]; TATA Projects Ltd-25 | 69,556 |
|  | 5 | **ELV** |  | 2028-09-13 | 2028-11-02 |  |  |  |  |
| 3S-WMI-4th465 |  | Installation of Camera & Wifi | 30d | 2028-09-13 | 2028-10-21 | 3S-WMI-4th310, 3S-WMI-4th360 | CSD-LKO Calender (6 day + Holiday)-25 | Physical Progress [2530 h]; ELV [55817 INR]; TATA Projects Ltd-25 | 55,817 |
| 3S-WMI-4th470 |  | Installation of fire alarm devices + Public Address | 10d | 2028-09-13 | 2028-09-25 | 3S-WMI-4th310, 3S-WMI-4th360 | CSD-LKO Calender (6 day + Holiday)-25 | Physical Progress [2530 h]; ELV [66981 INR]; TATA Projects Ltd-25 | 66,981 |
| 3S-WMI-4th480 |  | Installation of data and Voice Faceplate | 25d | 2028-09-13 | 2028-10-14 | 3S-WMI-4th310, 3S-WMI-4th360, 3S-WMI-4th335 | CSD-LKO Calender (6 day + Holiday)-25 | Physical Progress [2530 h]; ELV [55817 INR]; TATA Projects Ltd-25 | 55,817 |
| 3S-WMI-4th555 |  | Installation of Active System | 15d | 2028-09-25 | 2028-10-14 | 3S-WMI-4th470 | CSD-LKO Calender (6 day + Holiday)-25 | Physical Progress [3790 h]; ELV [111635 INR]; TATA Projects Ltd-25 | 111,635 |
| 3S-WMI-4th560 |  | Fire Panel Intallation & Integration | 25d | 2028-09-25 | 2028-10-27 | 3S-WMI-4th470 | CSD-LKO Calender (6 day + Holiday)-25 | Physical Progress [6320 h]; ELV [55817 INR]; TATA Projects Ltd-25 | 55,817 |
| 3S-WMI-4th565 |  | Installation & Integration of Audio Visual System | 25d | 2028-09-25 | 2028-10-27 | 3S-WMI-4th470 | CSD-LKO Calender (6 day + Holiday)-25 | Physical Progress [6320 h]; ELV [55817 INR]; TATA Projects Ltd-25 | 55,817 |
| 3S-WMI-4th570 |  | Installation & Integration of Access Control | 25d | 2028-09-25 | 2028-10-27 | 3S-WMI-4th470 | CSD-LKO Calender (6 day + Holiday)-25 | Physical Progress [6320 h]; ELV [55817 INR]; TATA Projects Ltd-25 | 55,817 |
| 3S-WMI-4th640 |  | Integration of Active components | 15d | 2028-10-14 | 2028-11-02 | 3S-WMI-4th555 | CSD-LKO Calender (6 day + Holiday)-25 | Physical Progress [3790 h]; ELV [22327 INR]; TATA Projects Ltd-25 | 22,327 |
|  | 2 | **Back Face - Toward CC** |  | 2028-06-08 | 2028-12-07 |  |  |  |  |
|  | 2 | **Dry Finishes/ID Works** |  | 2028-06-08 | 2028-12-07 |  |  |  |  |
| 3S-WMI-4th225 |  | Running of Wild Air | 1d | 2028-06-08 | 2028-06-09 | 3S-F-4th45, 3S-WMI-4th140, 3S-WMI-4th170, 3S-WMI-4th185, 3S-WMI-4th265, 3S-WMI-4th545 | CSD-LKO Calender (6 day + Holiday)-25 | Physical Progress [250 h]; TATA Projects Ltd-25 |  |
| 3S-WMI-4th235 |  | Wall finish ID Works | 10d | 2028-06-09 | 2028-06-21 | 3S-WMI-4th225, 3S-WMI-4th140, 3S-WMI-4th170, 3S-WMI-4th185, 3S-WMI-4th265, 3S-WMI-4th545, 3S-WMI-4th115, 3S-WMI-4th155, 3S-WMI-4th205, 3S-WMI-4th210, 3S-WMI-4th280, 3S-WMI-4th430, 3S-WMI-4th110, 3S-WMI-4th120, 3S-WMI-4th145, 3S-WMI-4th160, 3S-WMI-4th175, 3S-WMI-4th180, 3S-WMI-4th190, 3S-WMI-4th200, 3S-WMI-4th125, 3S-WMI-4th165, 3S-WMI-4th195, 3S-WMI-4th250, 3S-WMI-4th335 | CSD-LKO Calender (6 day + Holiday)-25 | ID Work [2529143 INR]; Physical Progress [2530 h]; TATA Projects Ltd-25 | 2,529,143 |
| 3S-WMI-4th255 |  | False Ceiling Installation | 35d | 2028-06-21 | 2028-08-01 | 3S-WMI-4th235 | CSD-LKO Calender (6 day + Holiday)-25 | ID Work [3034971 INR]; Physical Progress [5060 h]; TATA Projects Ltd-25 | 3,034,971 |
| 3S-WMI-4th290 |  | Flooring of toilets/kitchen/Balcony | 10d | 2028-08-01 | 2028-08-12 | 3S-WMI-4th255, 3S-WMI-4th55 | CSD-LKO Calender (6 day + Holiday)-25 | ID Work [2023314 INR]; Physical Progress [2530 h]; TATA Projects Ltd-25 | 2,023,314 |
| 3S-WMI-4th315 |  | Doors & Windows/Fire Doors/Shaft Doors | 35d | 2028-08-12 | 2028-09-25 | 3S-WMI-4th235, 3S-WMI-4th290 | CSD-LKO Calender (6 day + Holiday)-25 | ID Work [2529143 INR]; Physical Progress [2530 h]; TATA Projects Ltd-25 | 2,529,143 |
| 3S-WMI-4th320 |  | Putty & First Coat of Paint | 10d | 2028-08-12 | 2028-08-26 | 3S-WMI-4th235, 3S-WMI-4th290 | CSD-LKO Calender (6 day + Holiday)-25 | Painting [724 Sq m]; Painter [730 h]; Helper [730 h]; Physical Progress [2530 h]; TATA Projects Ltd-25 | 165,520.88 |
| 3S-WMI-4th385 |  | Wooden Flooring/Flooring | 20d | 2028-08-26 | 2028-09-19 | 3S-WMI-4th320 | CSD-LKO Calender (6 day + Holiday)-25 | ID Work [2529143 INR]; Physical Progress [5060 h]; TATA Projects Ltd-25 | 2,529,143 |
| 3S-WMI-4th390 |  | Railing for staircase | 35d | 2028-08-26 | 2028-10-09 | 3S-WMI-4th235, 3S-WMI-4th320 | CSD-LKO Calender (6 day + Holiday)-25 | ID Work [1138114 INR]; Physical Progress [3790 h]; TATA Projects Ltd-25 | 1,138,114 |
| 3S-WMI-4th510 |  | Fixed Furniture | 8d | 2028-09-19 | 2028-09-29 | 3S-WMI-4th385 | CSD-LKO Calender (6 day + Holiday)-25 | ID Work [2276229 INR]; Physical Progress [2020 h]; TATA Projects Ltd-25 | 2,276,229 |
| 3S-WMI-4th645 |  | False ceiling final finishes | 10d | 2028-10-14 | 2028-10-27 | 3S-WMI-4th435 | CSD-LKO Calender (6 day + Holiday)-25 | ID Work [758743 INR]; Physical Progress [2530 h]; TATA Projects Ltd-25 | 758,743 |
| 3S-WMI-4th670 |  | Final coat of paint | 10d | 2028-11-08 | 2028-11-20 | 3S-WMI-4th645, 3S-WMI-4th390, 3S-WMI-4th510, 3S-WMI-4th575, 3S-WMI-4th485, 3S-WMI-4th490, 3S-WMI-4th580, 3S-WMI-4th655, 3S-WMI-4th600, 3S-WMI-4th595, 3S-WMI-4th590, 3S-WMI-4th500, 3S-WMI-4th495, 3S-WMI-4th315, 3S-WMI-4th375 | CSD-LKO Calender (6 day + Holiday)-25 | Painting [724 Sq m]; Painter [730 h]; Helper [730 h]; Physical Progress [2530 h]; TATA Projects Ltd-25 | 165,520.88 |
| 3S-WMI-4th680 |  | Soft Furnishing & Signage | 15d | 2028-11-20 | 2028-12-07 | 3S-WMI-4th670 | CSD-LKO Calender (6 day + Holiday)-25 | ID Work [3793714 INR]; Physical Progress [760 h]; TATA Projects Ltd-25 | 3,793,714 |
| 3S-WMI-4th685 |  | Loose Furniture | 15d | 2028-11-20 | 2028-12-07 | 3S-WMI-4th670 | CSD-LKO Calender (6 day + Holiday)-25 | ID Work [5058286 INR]; Physical Progress [760 h]; TATA Projects Ltd-25 | 5,058,286 |

| ID | WBS | Activity | Duration | Start | Finish | Predecessors | Calendar | Resources | Cost |
| --- | --- | --- | --- | --- | --- | --- | --- | --- | --- |
|  | 1 | **MEP Final Fix** |  | 2028-08-01 | 2028-11-08 |  |  |  |  |
|  | 3 | **HVAC** |  | 2028-08-01 | 2028-10-14 |  |  |  |  |
| 3S-WMI-4th285 |  | Installing grills, diffusers, dampers | 30d | 2028-08-01 | 2028-09-07 | 3S-WMI-4th255 | CSD-LKO Calender (6 day + Holiday)-25 | Physical Progress [1530 h]; HVAC [371437 INR]; TATA Projects Ltd-25 | 371,437 |
| 3S-WMI-4th435 |  | Installation of thermostats and control panels | 30d | 2028-09-07 | 2028-10-14 | 3S-WMI-4th285, 3S-WMI-4th320 | CSD-LKO Calender (6 day + Holiday)-25 | Physical Progress [1530 h]; HVAC [185719 INR]; TATA Projects Ltd-25 | 185,719 |
|  | 1 | **Electrical** |  | 2028-08-26 | 2028-11-08 |  |  |  |  |
| 3S-WMI-4th365 |  | Switches & Socket | 30d | 2028-08-26 | 2028-10-03 | 3S-WMI-4th320 | CSD-LKO Calender (6 day + Holiday)-25 | Physical Progress [5060 h]; Electrical [415792 INR]; TATA Projects Ltd-25 | 415,792 |
| 3S-WMI-4th575 |  | Light Fixtures | 30d | 2028-10-03 | 2028-11-08 | 3S-WMI-4th365 | CSD-LKO Calender (6 day + Holiday)-25 | Physical Progress [3790 h]; Electrical [623688 INR]; TATA Projects Ltd-25 | 623,688 |
|  | 2 | **Plumbing** |  | 2028-08-26 | 2028-10-21 |  |  |  |  |
| 3S-WMI-4th370 |  | Installation of sanitary fixtures (WC, washbasins, urinals, sinks) | 10d | 2028-08-26 | 2028-09-07 | 3S-WMI-4th320 | CSD-LKO Calender (6 day + Holiday)-25 | Physical Progress [2530 h]; Plumbing [534578 INR]; TATA Projects Ltd-25 | 534,578 |
| 3S-WMI-4th440 |  | Installation of CP fittings (taps, mixers, showers, health faucets) | 10d | 2028-09-07 | 2028-09-19 | 3S-WMI-4th370, 3S-WMI-4th320 | CSD-LKO Calender (6 day + Holiday)-25 | Physical Progress [2530 h]; Plumbing [267289 INR]; TATA Projects Ltd-25 | 267,289 |
| 3S-WMI-4th485 |  | Connection of appliances | 25d | 2028-09-19 | 2028-10-21 | 3S-WMI-4th440 | CSD-LKO Calender (6 day + Holiday)-25 | Physical Progress [1770 h]; Plumbing [133645 INR]; TATA Projects Ltd-25 | 133,645 |
|  | 4 | **Firefighting** |  | 2028-08-26 | 2028-11-02 |  |  |  |  |
| 3S-WMI-4th375 |  | Installation of hydrant accessories (valves, hose reels, cabinets) | 25d | 2028-08-26 | 2028-09-25 | 3S-WMI-4th320 | CSD-LKO Calender (6 day + Holiday)-25 | Physical Progress [2530 h]; Firefighting [139112 INR]; TATA Projects Ltd-25 | 139,112 |
| 3S-WMI-4th380 |  | Installation of portable fire extinguishers | 30d | 2028-08-26 | 2028-10-03 | 3S-WMI-4th320 | CSD-LKO Calender (6 day + Holiday)-25 | Physical Progress [1530 h]; Firefighting [13911 INR]; TATA Projects Ltd-25 | 13,911 |
| 3S-WMI-4th490 |  | Installation of sprinkler heads, nozzles, and final alignment | 35d | 2028-09-19 | 2028-11-02 | 3S-WMI-4th320, 3S-WMI-4th385 | CSD-LKO Calender (6 day + Holiday)-25 | Physical Progress [10120 h]; Firefighting [208668 INR]; TATA Projects Ltd-25 | 208,668 |
| 3S-WMI-4th580 |  | Integration with fire alarm system | 20d | 2028-10-03 | 2028-10-27 | 3S-WMI-4th380 | CSD-LKO Calender (6 day + Holiday)-25 | Physical Progress [5060 h]; Firefighting [69556 INR]; TATA Projects Ltd-25 | 69,556 |
|  | 5 | **ELV** |  | 2028-09-19 | 2028-11-08 |  |  |  |  |
| 3S-WMI-4th495 |  | Installation of data and Voice Faceplate | 25d | 2028-09-19 | 2028-10-21 | 3S-WMI-4th320, 3S-WMI-4th385 | CSD-LKO Calender (6 day + Holiday)-25 | Physical Progress [2530 h]; ELV [55817 INR]; TATA Projects Ltd-25 | 55,817 |
| 3S-WMI-4th500 |  | Installation of Camera & Wifi | 30d | 2028-09-19 | 2028-10-27 | 3S-WMI-4th320, 3S-WMI-4th385 | CSD-LKO Calender (6 day + Holiday)-25 | Physical Progress [2530 h]; ELV [55817 INR]; TATA Projects Ltd-25 | 55,817 |
| 3S-WMI-4th505 |  | Installation of fire alarm devices + Public Address | 10d | 2028-09-19 | 2028-10-03 | 3S-WMI-4th320, 3S-WMI-4th385 | CSD-LKO Calender (6 day + Holiday)-25 | Physical Progress [2530 h]; ELV [66981 INR]; TATA Projects Ltd-25 | 66,981 |
| 3S-WMI-4th585 |  | Installation of Active System | 15d | 2028-10-03 | 2028-10-21 | 3S-WMI-4th505 | CSD-LKO Calender (6 day + Holiday)-25 | Physical Progress [3790 h]; ELV [111635 INR]; TATA Projects Ltd-25 | 111,635 |
| 3S-WMI-4th590 |  | Fire Panel Intallation & Integration | 25d | 2028-10-03 | 2028-11-02 | 3S-WMI-4th505 | CSD-LKO Calender (6 day + Holiday)-25 | Physical Progress [6320 h]; ELV [55817 INR]; TATA Projects Ltd-25 | 55,817 |
| 3S-WMI-4th595 |  | Installation & Integration of Audio Visual System | 25d | 2028-10-03 | 2028-11-02 | 3S-WMI-4th505 | CSD-LKO Calender (6 day + Holiday)-25 | Physical Progress [6320 h]; ELV [55817 INR]; TATA Projects Ltd-25 | 55,817 |
| 3S-WMI-4th600 |  | Installation & Integration of Access Control | 25d | 2028-10-03 | 2028-11-02 | 3S-WMI-4th505 | CSD-LKO Calender (6 day + Holiday)-25 | Physical Progress [6320 h]; ELV [55817 INR]; TATA Projects Ltd-25 | 55,817 |
| 3S-WMI-4th655 |  | Integration of Active components | 15d | 2028-10-21 | 2028-11-08 | 3S-WMI-4th585 | CSD-LKO Calender (6 day + Holiday)-25 | Physical Progress [3790 h]; ELV [22327 INR]; TATA Projects Ltd-25 | 22,327 |

| ID | WBS | Activity | Duration | Start | Finish | Predecessors | Calendar | Resources | Cost |
| --- | --- | --- | --- | --- | --- | --- | --- | --- | --- |
|  | 4 | **Side Face** |  | 2028-06-08 | 2028-12-07 |  |  |  |  |
|  | 2 | **Dry Finishes/ID Works** |  | 2028-06-08 | 2028-12-07 |  |  |  |  |
| 3S-WMI-4th230 |  | Running of Wild Air | 1d | 2028-06-08 | 2028-06-09 | 3S-F-4th50, 3S-WMI-4th140, 3S-WMI-4th170, 3S-WMI-4th185, 3S-WMI-4th265, 3S-WMI-4th545 | CSD-LKO Calender (6 day + Holiday)-25 | Physical Progress [250 h]; TATA Projects Ltd-25 |  |
| 3S-WMI-4th240 |  | Wall finish ID Works | 10d | 2028-06-09 | 2028-06-21 | 3S-WMI-4th230, 3S-WMI-4th140, 3S-WMI-4th170, 3S-WMI-4th185, 3S-WMI-4th265, 3S-WMI-4th545, 3S-WMI-4th115, 3S-WMI-4th155, 3S-WMI-4th205, 3S-WMI-4th210, 3S-WMI-4th280, 3S-WMI-4th430, 3S-WMI-4th110, 3S-WMI-4th120, 3S-WMI-4th145, 3S-WMI-4th160, 3S-WMI-4th175, 3S-WMI-4th180, 3S-WMI-4th190, 3S-WMI-4th200, 3S-WMI-4th125, 3S-WMI-4th165, 3S-WMI-4th195, 3S-WMI-4th250, 3S-WMI-4th335 | CSD-LKO Calender (6 day + Holiday)-25 | ID Work [2529143 INR]; Physical Progress [2530 h]; TATA Projects Ltd-25 | 2,529,143 |
| 3S-WMI-4th260 |  | False Ceiling Installation | 35d | 2028-06-21 | 2028-08-01 | 3S-WMI-4th240 | CSD-LKO Calender (6 day + Holiday)-25 | ID Work [3034971 INR]; Physical Progress [5060 h]; TATA Projects Ltd-25 | 3,034,971 |
| 3S-WMI-4th300 |  | Flooring of toilets/kitchen/Balcony | 10d | 2028-08-01 | 2028-08-12 | 3S-WMI-4th260, 3S-WMI-4th55 | CSD-LKO Calender (6 day + Holiday)-25 | ID Work [2023314 INR]; Physical Progress [2530 h]; TATA Projects Ltd-25 | 2,023,314 |
| 3S-WMI-4th325 |  | Doors & Windows/Fire Doors/Shaft Doors | 35d | 2028-08-12 | 2028-09-25 | 3S-WMI-4th240, 3S-WMI-4th300 | CSD-LKO Calender (6 day + Holiday)-25 | ID Work [2529143 INR]; Physical Progress [2530 h]; TATA Projects Ltd-25 | 2,529,143 |
| 3S-WMI-4th330 |  | Putty & First Coat of Paint | 10d | 2028-08-12 | 2028-08-26 | 3S-WMI-4th240, 3S-WMI-4th300 | CSD-LKO Calender (6 day + Holiday)-25 | Painting [724 Sq m]; Painter [730 h]; Helper [730 h]; Physical Progress [2530 h]; TATA Projects Ltd-25 | 165,520.88 |
| 3S-WMI-4th415 |  | Wooden Flooring/Flooring | 20d | 2028-08-26 | 2028-09-19 | 3S-WMI-4th330 | CSD-LKO Calender (6 day + Holiday)-25 | ID Work [2529143 INR]; Physical Progress [5060 h]; TATA Projects Ltd-25 | 2,529,143 |
| 3S-WMI-4th420 |  | Railing for staircase | 35d | 2028-08-26 | 2028-10-09 | 3S-WMI-4th240, 3S-WMI-4th330 | CSD-LKO Calender (6 day + Holiday)-25 | ID Work [1138114 INR]; Physical Progress [3790 h]; TATA Projects Ltd-25 | 1,138,114 |
| 3S-WMI-4th540 |  | Fixed Furniture | 8d | 2028-09-19 | 2028-09-29 | 3S-WMI-4th415 | CSD-LKO Calender (6 day + Holiday)-25 | ID Work [2276229 INR]; Physical Progress [2020 h]; TATA Projects Ltd-25 | 2,276,229 |
| 3S-WMI-4th650 |  | False ceiling final finishes | 10d | 2028-10-14 | 2028-10-27 | 3S-WMI-4th445 | CSD-LKO Calender (6 day + Holiday)-25 | ID Work [758743 INR]; Physical Progress [2530 h]; TATA Projects Ltd-25 | 758,743 |
| 3S-WMI-4th675 |  | Final coat of paint | 10d | 2028-11-08 | 2028-11-20 | 3S-WMI-4th650, 3S-WMI-4th420, 3S-WMI-4th540, 3S-WMI-4th605, 3S-WMI-4th515, 3S-WMI-4th520, 3S-WMI-4th610, 3S-WMI-4th660, 3S-WMI-4th630, 3S-WMI-4th625, 3S-WMI-4th620, 3S-WMI-4th530, 3S-WMI-4th525, 3S-WMI-4th325 | CSD-LKO Calender (6 day + Holiday)-25 | Painting [724 Sq m]; Painter [730 h]; Helper [730 h]; Physical Progress [2530 h]; TATA Projects Ltd-25 | 165,520.88 |
| 3S-WMI-4th690 |  | Soft Furnishing & Signage | 15d | 2028-11-20 | 2028-12-07 | 3S-WMI-4th675 | CSD-LKO Calender (6 day + Holiday)-25 | ID Work [3793714 INR]; Physical Progress [760 h]; TATA Projects Ltd-25 | 3,793,714 |
| 3S-WMI-4th695 |  | Loose Furniture | 15d | 2028-11-20 | 2028-12-07 | 3S-WMI-4th675 | CSD-LKO Calender (6 day + Holiday)-25 | ID Work [5058286 INR]; Physical Progress [760 h]; TATA Projects Ltd-25 | 5,058,286 |
|  | 1 | **MEP Final Fix** |  | 2028-08-01 | 2028-11-08 |  |  |  |  |
|  | 3 | **HVAC** |  | 2028-08-01 | 2028-10-14 |  |  |  |  |
| 3S-WMI-4th295 |  | Installing grills, diffusers, dampers | 30d | 2028-08-01 | 2028-09-07 | 3S-WMI-4th260 | CSD-LKO Calender (6 day + Holiday)-25 | Physical Progress [1530 h]; HVAC [371437 INR]; TATA Projects Ltd-25 | 371,437 |
| 3S-WMI-4th445 |  | Installation of thermostats and control panels | 30d | 2028-09-07 | 2028-10-14 | 3S-WMI-4th295, 3S-WMI-4th330 | CSD-LKO Calender (6 day + Holiday)-25 | Physical Progress [1530 h]; HVAC [185719 INR]; TATA Projects Ltd-25 | 185,719 |
|  | 1 | **Electrical** |  | 2028-08-26 | 2028-11-08 |  |  |  |  |
| 3S-WMI-4th395 |  | Switches & Socket | 30d | 2028-08-26 | 2028-10-03 | 3S-WMI-4th330 | CSD-LKO Calender (6 day + Holiday)-25 | Physical Progress [5060 h]; Electrical [415792 INR]; TATA Projects Ltd-25 | 415,792 |
| 3S-WMI-4th605 |  | Light Fixtures | 30d | 2028-10-03 | 2028-11-08 | 3S-WMI-4th395 | CSD-LKO Calender (6 day + Holiday)-25 | Physical Progress [3790 h]; Electrical [623688 INR]; TATA Projects Ltd-25 | 623,688 |
|  | 2 | **Plumbing** |  | 2028-08-26 | 2028-10-21 |  |  |  |  |
| 3S-WMI-4th400 |  | Installation of sanitary fixtures (WC, washbasins, urinals, sinks) | 10d | 2028-08-26 | 2028-09-07 | 3S-WMI-4th330 | CSD-LKO Calender (6 day + Holiday)-25 | Physical Progress [2530 h]; Plumbing [534578 INR]; TATA Projects Ltd-25 | 534,578 |
| 3S-WMI-4th450 |  | Installation of CP fittings (taps, mixers, showers, health faucets) | 10d | 2028-09-07 | 2028-09-19 | 3S-WMI-4th400, 3S-WMI-4th330 | CSD-LKO Calender (6 day + Holiday)-25 | Physical Progress [2530 h]; Plumbing [267289 INR]; TATA Projects Ltd-25 | 267,289 |
| 3S-WMI-4th515 |  | Connection of appliances | 25d | 2028-09-19 | 2028-10-21 | 3S-WMI-4th450 | CSD-LKO Calender (6 day + Holiday)-25 | Physical Progress [1770 h]; Plumbing [133645 INR]; TATA Projects Ltd-25 | 133,645 |

| ID | WBS | Activity | Duration | Start | Finish | Predecessors | Calendar | Resources | Cost |
| --- | --- | --- | --- | --- | --- | --- | --- | --- | --- |
|  | 4 | **Firefighting** |  | 2028-08-26 | 2028-11-02 |  |  |  |  |
| 3S-WMI-4th405 |  | Installation of hydrant accessories (valves, hose reels, cabinets) | 25d | 2028-08-26 | 2028-09-25 | 3S-WMI-4th330 | CSD-LKO Calender (6 day + Holiday)-25 | Physical Progress [2530 h]; Firefighting [139112 INR]; TATA Projects Ltd-25 | 139,112 |
| 3S-WMI-4th410 |  | Installation of portable fire extinguishers | 30d | 2028-08-26 | 2028-10-03 | 3S-WMI-4th330 | CSD-LKO Calender (6 day + Holiday)-25 | Physical Progress [1530 h]; Firefighting [13911 INR]; TATA Projects Ltd-25 | 13,911 |
| 3S-WMI-4th520 |  | Installation of sprinkler heads, nozzles, and final alignment | 35d | 2028-09-19 | 2028-11-02 | 3S-WMI-4th330, 3S-WMI-4th415 | CSD-LKO Calender (6 day + Holiday)-25 | Physical Progress [10120 h]; Firefighting [208668 INR]; TATA Projects Ltd-25 | 208,668 |
| 3S-WMI-4th610 |  | Integration with fire alarm system | 20d | 2028-10-03 | 2028-10-27 | 3S-WMI-4th410 | CSD-LKO Calender (6 day + Holiday)-25 | Physical Progress [5060 h]; Firefighting [69556 INR]; TATA Projects Ltd-25 | 69,556 |
|  | 5 | **ELV** |  | 2028-09-19 | 2028-11-08 |  |  |  |  |
| 3S-WMI-4th525 |  | Installation of data and Voice Faceplate | 25d | 2028-09-19 | 2028-10-21 | 3S-WMI-4th330, 3S-WMI-4th415 | CSD-LKO Calender (6 day + Holiday)-25 | Physical Progress [2530 h]; ELV [55817 INR]; TATA Projects Ltd-25 | 55,817 |
| 3S-WMI-4th530 |  | Installation of Camera & Wifi | 30d | 2028-09-19 | 2028-10-27 | 3S-WMI-4th330, 3S-WMI-4th415 | CSD-LKO Calender (6 day + Holiday)-25 | Physical Progress [2530 h]; ELV [55817 INR]; TATA Projects Ltd-25 | 55,817 |
| 3S-WMI-4th535 |  | Installation of fire alarm devices + Public Address | 10d | 2028-09-19 | 2028-10-03 | 3S-WMI-4th330, 3S-WMI-4th415 | CSD-LKO Calender (6 day + Holiday)-25 | Physical Progress [2530 h]; ELV [66981 INR]; TATA Projects Ltd-25 | 66,981 |
| 3S-WMI-4th615 |  | Installation of Active System | 15d | 2028-10-03 | 2028-10-21 | 3S-WMI-4th535 | CSD-LKO Calender (6 day + Holiday)-25 | Physical Progress [3790 h]; ELV [111635 INR]; TATA Projects Ltd-25 | 111,635 |
| 3S-WMI-4th620 |  | Fire Panel Intallation & Integration | 25d | 2028-10-03 | 2028-11-02 | 3S-WMI-4th535 | CSD-LKO Calender (6 day + Holiday)-25 | Physical Progress [6320 h]; ELV [55817 INR]; TATA Projects Ltd-25 | 55,817 |
| 3S-WMI-4th625 |  | Installation & Integration of Audio Visual System | 25d | 2028-10-03 | 2028-11-02 | 3S-WMI-4th535 | CSD-LKO Calender (6 day + Holiday)-25 | Physical Progress [6320 h]; ELV [55817 INR]; TATA Projects Ltd-25 | 55,817 |
| 3S-WMI-4th630 |  | Installation & Integration of Access Control | 25d | 2028-10-03 | 2028-11-02 | 3S-WMI-4th535 | CSD-LKO Calender (6 day + Holiday)-25 | Physical Progress [6320 h]; ELV [55817 INR]; TATA Projects Ltd-25 | 55,817 |
| 3S-WMI-4th660 |  | Integration of Active components | 15d | 2028-10-21 | 2028-11-08 | 3S-WMI-4th615 | CSD-LKO Calender (6 day + Holiday)-25 | Physical Progress [3790 h]; ELV [22327 INR]; TATA Projects Ltd-25 | 22,327 |
|  | 6 | **Fifth Floor** |  | 2027-10-23 | 2029-01-18 |  |  |  |  |
|  | 1 | **Wet Finishes** |  | 2027-10-23 | 2028-02-03 |  |  |  |  |
| 3S-WMI-5th10 |  | Deshuttering | 4d | 2027-10-23 | 2027-10-28 | 3S-SS-6th295 | CSD-LKO Calender (6 day + Holiday)-25 | Physical Progress [1020 h]; TATA Projects Ltd-25 |  |
| 3S-WMI-5th15 |  | Brickwork/Blockwork | 30d | 2027-10-28 | 2027-12-03 | 3S-WMI-5th10, E-GFC-AR-3S-290 | CSD-LKO Calender (6 day + Holiday)-25 | Masonry [446 CuM]; Mason [2980 h]; Helper [1490 h]; Physical Progress [7590 h]; TATA Projects Ltd-25 | 4,252,770.56 |
| 3S-WMI-5th55 |  | Waterproofing of Toilets, Balcony & Kitchen | 15d | 2027-12-03 | 2027-12-21 | 3S-WMI-5th15 | CSD-LKO Calender (6 day + Holiday)-25 | Waterproofing [8564838 INR]; Waterprrofing Mason [8160 h]; Helper [4080 h]; Physical Progress [3790 h]; TATA Projects Ltd-25 | 8,564,838 |
| 3S-WMI-5th95 |  | Plaster | 15d | 2028-01-15 | 2028-02-03 | 3S-WMI-5th30, 3S-WMI-5th75, 3S-WMI-5th80, 3S-WMI-5th55 | CSD-LKO Calender (6 day + Holiday)-25 | Plaster [7060 Sqr Mtr]; Mason [4710 h]; Helper [2360 h]; Physical Progress [3790 h]; TATA Projects Ltd-25 | 3,910,604.6 |
|  | 5 | **MEP 1st Fix, 2nd Fix** |  | 2027-10-28 | 2028-06-15 |  |  |  |  |
|  | 2 | **HVAC** |  | 2027-12-03 | 2028-06-15 |  |  |  |  |
|  | 1 | **1st Fix** |  | 2027-12-03 | 2028-03-16 |  |  |  |  |
| 3S-WMI-5th50 |  | Duct Support Fabrication | 25d | 2027-12-03 | 2028-01-04 | 3S-WMI-5th15, E-GFC-MEP-3S-290 | CSD-LKO Calender (6 day + Holiday)-25 | Physical Progress [3790 h]; HVAC [222862 INR]; TATA Projects Ltd-25 | 222,862 |
| 3S-WMI-5th100 |  | Installing duct hangers and supports | 30d | 2028-01-04 | 2028-02-09 | 3S-WMI-5th50, E-GFC-MEP-3S-290 | CSD-LKO Calender (6 day + Holiday)-25 | Physical Progress [2530 h]; HVAC [445725 INR]; TATA Projects Ltd-25 | 445,725 |
| 3S-WMI-5th130 |  | Laying concealed/exposed refrigerant piping | 30d | 2028-02-09 | 2028-03-16 | 3S-WMI-5th100, E-GFC-MEP-3S-290 | CSD-LKO Calender (6 day + Holiday)-25 | Physical Progress [3790 h]; HVAC [111431 INR]; TATA Projects Ltd-25 | 111,431 |
| 3S-WMI-5th135 |  | Laying concealed/exposed drain piping | 30d | 2028-02-09 | 2028-03-16 | 3S-WMI-5th100, E-GFC-MEP-3S-290 | CSD-LKO Calender (6 day + Holiday)-25 | Physical Progress [2530 h]; HVAC [668587 INR]; TATA Projects Ltd-25 | 668,587 |

| ID | WBS | Activity | Duration | Start | Finish | Predecessors | Calendar | Resources | Cost |
| --- | --- | --- | --- | --- | --- | --- | --- | --- | --- |
|  | 2 | **2nd Fix** |  | 2028-02-09 | 2028-06-15 |  |  |  |  |
| 3S-WMI-5th140 |  | Duct installation | 20d | 2028-02-09 | 2028-03-03 | 3S-WMI-5th100 | CSD-LKO Calender (6 day + Holiday)-25 | Physical Progress [3790 h]; HVAC [1671468 INR]; TATA Projects Ltd-25 | 1,671,468 |
| 3S-WMI-5th170 |  | Insulation of ducts (thermal/acoustic) | 10d | 2028-03-03 | 2028-03-16 | 3S-WMI-5th140 | CSD-LKO Calender (6 day + Holiday)-25 | Physical Progress [1530 h]; HVAC [1002881 INR]; TATA Projects Ltd-25 | 1,002,881 |
| 3S-WMI-5th185 |  | Installation of chilled water piping / VRF piping | 20d | 2028-03-16 | 2028-04-08 | 3S-WMI-5th170 | CSD-LKO Calender (6 day + Holiday)-25 | Physical Progress [1530 h]; HVAC [2228625 INR]; TATA Projects Ltd-25 | 2,228,625 |
| 3S-WMI-5th230 |  | Installation of indoor units including AHU, FCU | 35d | 2028-04-08 | 2028-05-23 | 3S-WMI-5th185, 3S-WMI-5th130, 3S-WMI-5th135 | CSD-LKO Calender (6 day + Holiday)-25 | Physical Progress [11380 h]; HVAC [2005762 INR]; TATA Projects Ltd-25 | 2,005,762 |
| 3S-WMI-5th435 |  | Connecting refrigerant and drain piping to indoor units | 20d | 2028-05-23 | 2028-06-15 | 3S-WMI-5th230 | CSD-LKO Calender (6 day + Holiday)-25 | Physical Progress [1530 h]; HVAC [557156 INR]; TATA Projects Ltd-25 | 557,156 |
|  | 1 | **Electrical** |  | 2027-10-28 | 2028-06-15 |  |  |  |  |
|  | 1 | **1st Fix** |  | 2027-10-28 | 2028-01-15 |  |  |  |  |
| 3S-WMI-5th25 |  | Slab Conduiting | 35d | 2027-10-28 | 2027-12-09 | 3S-WMI-5th10, E-GFC-MEP-3S-290 | CSD-LKO Calender (6 day + Holiday)-25 | Physical Progress [6320 h]; Electrical [1247377 INR]; TATA Projects Ltd-25 | 1,247,377 |
| 3S-WMI-5th30 |  | Wall Conduiting | 30d | 2027-12-03 | 2028-01-10 | 3S-WMI-5th15, E-GFC-MEP-3S-290 | CSD-LKO Calender (6 day + Holiday)-25 | Physical Progress [2530 h]; Electrical [623688 INR]; TATA Projects Ltd-25 | 623,688 |
| 3S-WMI-5th75 |  | Installing back boxes for switches, sockets | 5d | 2028-01-10 | 2028-01-15 | 3S-WMI-5th30, 3S-WMI-5th25, E-GFC-MEP-3S-290 | CSD-LKO Calender (6 day + Holiday)-25 | Physical Progress [1280 h]; Electrical [374213 INR]; TATA Projects Ltd-25 | 374,213 |
|  | 2 | **2nd Fix** |  | 2028-02-03 | 2028-06-15 |  |  |  |  |
| 3S-WMI-5th115 |  | Cable tray laying | 25d | 2028-02-03 | 2028-03-03 | 3S-WMI-5th95 | CSD-LKO Calender (6 day + Holiday)-25 | Physical Progress [6320 h]; Electrical [498951 INR]; TATA Projects Ltd-25 | 498,951 |
| 3S-WMI-5th155 |  | Cabling & Wire Pulling | 35d | 2028-03-03 | 2028-04-15 | 3S-WMI-5th115 | CSD-LKO Calender (6 day + Holiday)-25 | Physical Progress [11380 h]; Electrical [2494753 INR]; TATA Projects Ltd-25 | 2,494,753 |
| 3S-WMI-5th205 |  | DB fixing and connecting | 20d | 2028-04-15 | 2028-05-11 | 3S-WMI-5th155 | CSD-LKO Calender (6 day + Holiday)-25 | Physical Progress [3790 h]; Electrical [374213 INR]; TATA Projects Ltd-25 | 374,213 |
| 3S-WMI-5th210 |  | Floor Rising Main Installation | 20d | 2028-04-15 | 2028-05-11 | 3S-WMI-5th155 | CSD-LKO Calender (6 day + Holiday)-25 | Physical Progress [1280 h]; Electrical [1746327 INR]; TATA Projects Ltd-25 | 1,746,327 |
| 3S-WMI-5th260 |  | Floor/Distribution Panel Installation | 20d | 2028-05-11 | 2028-06-03 | 3S-WMI-5th205 | CSD-LKO Calender (6 day + Holiday)-25 | Physical Progress [1280 h]; Electrical [997901 INR]; TATA Projects Ltd-25 | 997,901 |
| 3S-WMI-5th320 |  | Equipment Earthing | 10d | 2028-06-03 | 2028-06-15 | 3S-WMI-5th260, 3S-WMI-5th210 | CSD-LKO Calender (6 day + Holiday)-25 | Physical Progress [2530 h]; Electrical [374213 INR]; TATA Projects Ltd-25 | 374,213 |
|  | 3 | **Plumbing** |  | 2027-12-03 | 2028-06-15 |  |  |  |  |
|  | 1 | **1st Fix** |  | 2027-12-03 | 2028-04-15 |  |  |  |  |
| 3S-WMI-5th35 |  | Fixing pipe supports and clamps | 20d | 2027-12-03 | 2027-12-28 | 3S-WMI-5th15, E-GFC-MEP-3S-290 | CSD-LKO Calender (6 day + Holiday)-25 | Physical Progress [2530 h]; Plumbing [400934 INR]; TATA Projects Ltd-25 | 400,934 |
| 3S-WMI-5th60 |  | Laying water supply pipes (hot & cold) | 35d | 2027-12-28 | 2028-02-09 | 3S-WMI-5th35, E-GFC-MEP-3S-290 | CSD-LKO Calender (6 day + Holiday)-25 | Physical Progress [3790 h]; Plumbing [801867 INR]; TATA Projects Ltd-25 | 801,867 |
| 3S-WMI-5th65 |  | Laying drainage pipes (soil, waste, vent) | 35d | 2027-12-28 | 2028-02-09 | 3S-WMI-5th35, E-GFC-MEP-3S-290 | CSD-LKO Calender (6 day + Holiday)-25 | Physical Progress [3790 h]; Plumbing [801867 INR]; TATA Projects Ltd-25 | 801,867 |
| 3S-WMI-5th70 |  | Installation of plumbing fixture base supports (WC frames, sink brackets) | 30d | 2028-02-09 | 2028-03-16 | 3S-WMI-5th65, E-GFC-MEP-3S-290 | CSD-LKO Calender (6 day + Holiday)-25 | Physical Progress [1530 h]; Plumbing [400934 INR]; TATA Projects Ltd-25 | 400,934 |
| 3S-WMI-5th85 |  | Pressure testing of water supply lines | 25d | 2028-03-16 | 2028-04-15 | 3S-WMI-5th60, 3S-WMI-5th65, 3S-WMI-5th70, E-GFC-MEP-3S-290 | CSD-LKO Calender (6 day + Holiday)-25 | Physical Progress [1770 h]; Plumbing [80187 INR]; TATA Projects Ltd-25 | 80,187 |
| 3S-WMI-5th90 |  | Installation of concealed parts of toilet fixtures | 15d | 2028-03-16 | 2028-04-03 | 3S-WMI-5th70, E-GFC-MEP-3S-290 | CSD-LKO Calender (6 day + Holiday)-25 | Physical Progress [2530 h]; Plumbing [400934 INR]; TATA Projects Ltd-25 | 400,934 |

| ID | WBS | Activity | Duration | Start | Finish | Predecessors | Calendar | Resources | Cost |
| --- | --- | --- | --- | --- | --- | --- | --- | --- | --- |
|  | 2 | **2nd FIx** |  | 2028-04-15 | 2028-06-15 |  |  |  |  |
| 3S-WMI-5th110 |  | Insulation of hot water pipes (if applicable) | 30d | 2028-04-15 | 2028-05-23 | 3S-WMI-5th85 | CSD-LKO Calender (6 day + Holiday)-25 | Physical Progress [1530 h]; Plumbing [400934 INR]; TATA Projects Ltd-25 | 400,934 |
| 3S-WMI-5th120 |  | Installation of vertical risers and main distribution lines | 35d | 2028-04-15 | 2028-05-29 | 3S-WMI-5th95, 3S-WMI-5th85, 3S-WMI-5th90 | CSD-LKO Calender (6 day + Holiday)-25 | Physical Progress [5060 h]; Plumbing [801867 INR]; TATA Projects Ltd-25 | 801,867 |
| 3S-WMI-5th145 |  | Testing drainage lines for leakage/blockage | 15d | 2028-05-23 | 2028-06-09 | 3S-WMI-5th70, 3S-WMI-5th110 | CSD-LKO Calender (6 day + Holiday)-25 | Physical Progress [1530 h]; Plumbing [80187 INR]; TATA Projects Ltd-25 | 80,187 |
| 3S-WMI-5th160 |  | Fixing floor traps and gully traps | 15d | 2028-05-29 | 2028-06-15 | 3S-WMI-5th120 | CSD-LKO Calender (6 day + Holiday)-25 | Physical Progress [1530 h]; Plumbing [240560 INR]; TATA Projects Ltd-25 | 240,560 |
|  | 4 | **Firefighting** |  | 2027-12-03 | 2028-06-15 |  |  |  |  |
|  | 1 | **1st Fix** |  | 2027-12-03 | 2028-03-22 |  |  |  |  |
| 3S-WMI-5th40 |  | Fixing pipe supports and hangers | 25d | 2027-12-03 | 2028-01-04 | 3S-WMI-5th15, E-GFC-MEP-3S-290 | CSD-LKO Calender (6 day + Holiday)-25 | Physical Progress [2530 h]; Firefighting [292135 INR]; TATA Projects Ltd-25 | 292,135 |
| 3S-WMI-5th105 |  | Laying branch piping | 35d | 2028-01-04 | 2028-02-15 | 3S-WMI-5th40, E-GFC-MEP-3S-290 | CSD-LKO Calender (6 day + Holiday)-25 | Physical Progress [3790 h]; Firefighting [626004 INR]; TATA Projects Ltd-25 | 626,004 |
| 3S-WMI-5th150 |  | Hydrostatic pressure testing of piping | 30d | 2028-02-15 | 2028-03-22 | 3S-WMI-5th105, E-GFC-MEP-3S-290 | CSD-LKO Calender (6 day + Holiday)-25 | Physical Progress [1530 h]; Firefighting [83467 INR]; TATA Projects Ltd-25 | 83,467 |
|  | 2 | **2nd Fix** |  | 2028-03-22 | 2028-06-15 |  |  |  |  |
| 3S-WMI-5th175 |  | Installation of vertical risers and distribution piping in shafts | 35d | 2028-03-22 | 2028-05-05 | 3S-WMI-5th95, 3S-WMI-5th150 | CSD-LKO Calender (6 day + Holiday)-25 | Physical Progress [6320 h]; Firefighting [834672 INR]; TATA Projects Ltd-25 | 834,672 |
| 3S-WMI-5th180 |  | Painting/insulation of exposed fire pipes | 30d | 2028-03-22 | 2028-04-27 | 3S-WMI-5th150 | CSD-LKO Calender (6 day + Holiday)-25 | Physical Progress [2530 h]; Firefighting [41734 INR]; TATA Projects Ltd-25 | 41,734 |
| 3S-WMI-5th190 |  | Testing risers and branch lines for leakage | 30d | 2028-04-27 | 2028-06-03 | 3S-WMI-5th180 | CSD-LKO Calender (6 day + Holiday)-25 | Physical Progress [1530 h]; Firefighting [83467 INR]; TATA Projects Ltd-25 | 83,467 |
| 3S-WMI-5th200 |  | Installation of sprinkler branch lines in ceilings | 35d | 2028-05-05 | 2028-06-15 | 3S-WMI-5th175 | CSD-LKO Calender (6 day + Holiday)-25 | Physical Progress [6320 h]; Firefighting [626004 INR]; TATA Projects Ltd-25 | 626,004 |
|  | 5 | **ELV** |  | 2027-10-28 | 2028-06-15 |  |  |  |  |
|  | 1 | **1st Fix** |  | 2027-10-28 | 2028-01-15 |  |  |  |  |
| 3S-WMI-5th20 |  | Slab Conduiting | 35d | 2027-10-28 | 2027-12-09 | 3S-WMI-5th10, E-GFC-MEP-3S-290 | CSD-LKO Calender (6 day + Holiday)-25 | Physical Progress [6320 h]; ELV [234433 INR]; TATA Projects Ltd-25 | 234,433 |
| 3S-WMI-5th45 |  | Wall Conduiting | 30d | 2027-12-03 | 2028-01-10 | 3S-WMI-5th15, E-GFC-MEP-3S-290 | CSD-LKO Calender (6 day + Holiday)-25 | Physical Progress [2530 h]; ELV [100471 INR]; TATA Projects Ltd-25 | 100,471 |
| 3S-WMI-5th80 |  | Installing back boxes for switches, sockets | 5d | 2028-01-10 | 2028-01-15 | 3S-WMI-5th45, 3S-WMI-5th20, E-GFC-MEP-3S-290 | CSD-LKO Calender (6 day + Holiday)-25 | Physical Progress [1280 h]; ELV [167452 INR]; TATA Projects Ltd-25 | 167,452 |
|  | 2 | **2nd Fix** |  | 2028-02-03 | 2028-06-15 |  |  |  |  |
| 3S-WMI-5th125 |  | Cable tray installation | 20d | 2028-02-03 | 2028-02-26 | 3S-WMI-5th95 | CSD-LKO Calender (6 day + Holiday)-25 | Physical Progress [6320 h]; ELV [167452 INR]; TATA Projects Ltd-25 | 167,452 |
| 3S-WMI-5th165 |  | Cabeling of ELV cable - IT/Fire Alarm/Public Address | 35d | 2028-02-26 | 2028-04-08 | 3S-WMI-5th125 | CSD-LKO Calender (6 day + Holiday)-25 | Physical Progress [11380 h]; ELV [401885 INR]; TATA Projects Ltd-25 | 401,885 |
| 3S-WMI-5th195 |  | ELV Rack Installation | 20d | 2028-04-08 | 2028-05-05 | 3S-WMI-5th165 | CSD-LKO Calender (6 day + Holiday)-25 | Physical Progress [2530 h]; ELV [167452 INR]; TATA Projects Ltd-25 | 167,452 |
| 3S-WMI-5th215 |  | Termination of cables at junction boxes, patch panels, and control panels | 10d | 2028-05-05 | 2028-05-17 | 3S-WMI-5th195 | CSD-LKO Calender (6 day + Holiday)-25 | Physical Progress [7590 h]; ELV [167452 INR]; TATA Projects Ltd-25 | 167,452 |
| 3S-WMI-5th285 |  | Fixing devices like CCTV camera bases, card reader bases, smoke detector bases, PA Bases, Wifi Bases | 25d | 2028-05-17 | 2028-06-15 | 3S-WMI-5th215 | CSD-LKO Calender (6 day + Holiday)-25 | Physical Progress [1020 h]; ELV [334904 INR]; TATA Projects Ltd-25 | 334,904 |

| ID | WBS | Activity | Duration | Start | Finish | Predecessors | Calendar | Resources | Cost |
| --- | --- | --- | --- | --- | --- | --- | --- | --- | --- |
|  | 3 | **Front Face - Toward Airport** |  | 2028-07-11 | 2029-01-11 |  |  |  |  |
|  | 2 | **Dry Finishes/ID Works** |  | 2028-07-11 | 2029-01-11 |  |  |  |  |
| 3S-WMI-5th220 |  | Running of Wild Air | 1d | 2028-07-11 | 2028-07-12 | 3S-F-5th40, 3S-WMI-5th140, 3S-WMI-5th170, 3S-WMI-5th185, 3S-WMI-5th230, 3S-WMI-5th435 | CSD-LKO Calender (6 day + Holiday)-25 | Physical Progress [250 h]; TATA Projects Ltd-25 |  |
| 3S-WMI-5th225 |  | Wall finish ID Works | 10d | 2028-07-12 | 2028-07-24 | 3S-WMI-5th220, 3S-WMI-5th140, 3S-WMI-5th170, 3S-WMI-5th185, 3S-WMI-5th230, 3S-WMI-5th435, 3S-WMI-5th115, 3S-WMI-5th155, 3S-WMI-5th205, 3S-WMI-5th210, 3S-WMI-5th260, 3S-WMI-5th320, 3S-WMI-5th110, 3S-WMI-5th120, 3S-WMI-5th145, 3S-WMI-5th160, 3S-WMI-5th175, 3S-WMI-5th180, 3S-WMI-5th190, 3S-WMI-5th200, 3S-WMI-5th125, 3S-WMI-5th165, 3S-WMI-5th195, 3S-WMI-5th215, 3S-WMI-5th285 | CSD-LKO Calender (6 day + Holiday)-25 | ID Work [2529143 INR]; Physical Progress [2530 h]; TATA Projects Ltd-25 | 2,529,143 |
| 3S-WMI-5th255 |  | False Ceiling Installation | 35d | 2028-07-24 | 2028-09-05 | 3S-WMI-5th225 | CSD-LKO Calender (6 day + Holiday)-25 | ID Work [3034971 INR]; Physical Progress [5060 h]; TATA Projects Ltd-25 | 3,034,971 |
| 3S-WMI-5th280 |  | Flooring of toilets/kitchen/Balcony | 10d | 2028-09-05 | 2028-09-16 | 3S-WMI-5th55, 3S-WMI-5th255 | CSD-LKO Calender (6 day + Holiday)-25 | ID Work [2023314 INR]; Physical Progress [2530 h]; TATA Projects Ltd-25 | 2,023,314 |
| 3S-WMI-5th310 |  | Doors & Windows/Fire Doors/Shaft Doors | 35d | 2028-09-16 | 2028-10-31 | 3S-WMI-5th225, 3S-WMI-5th280 | CSD-LKO Calender (6 day + Holiday)-25 | ID Work [2529143 INR]; Physical Progress [2530 h]; TATA Projects Ltd-25 | 2,529,143 |
| 3S-WMI-5th315 |  | Putty & First Coat of Paint | 10d | 2028-09-16 | 2028-09-29 | 3S-WMI-5th225, 3S-WMI-5th280 | CSD-LKO Calender (6 day + Holiday)-25 | Painting [724 Sq m]; Painter [730 h]; Helper [730 h]; Physical Progress [2530 h]; TATA Projects Ltd-25 | 165,520.88 |
| 3S-WMI-5th365 |  | Wooden Flooring/Flooring | 20d | 2028-09-29 | 2028-10-25 | 3S-WMI-5th315 | CSD-LKO Calender (6 day + Holiday)-25 | ID Work [2529143 INR]; Physical Progress [5060 h]; TATA Projects Ltd-25 | 2,529,143 |
| 3S-WMI-5th485 |  | Fixed Furniture | 8d | 2028-10-25 | 2028-11-03 | 3S-WMI-5th365 | CSD-LKO Calender (6 day + Holiday)-25 | ID Work [2276229 INR]; Physical Progress [2020 h]; TATA Projects Ltd-25 | 2,276,229 |
| 3S-WMI-5th680 |  | False ceiling final finishes | 10d | 2028-11-17 | 2028-11-29 | 3S-WMI-5th645 | CSD-LKO Calender (6 day + Holiday)-25 | ID Work [758743 INR]; Physical Progress [2530 h]; TATA Projects Ltd-25 | 758,743 |
| 3S-WMI-5th705 |  | Final coat of paint | 10d | 2028-12-11 | 2028-12-22 | 3S-WMI-5th680, 3S-WMI-5th485, 3S-WMI-5th550, 3S-WMI-5th460, 3S-WMI-5th465, 3S-WMI-5th555, 3S-WMI-5th640, 3S-WMI-5th575, 3S-WMI-5th570, 3S-WMI-5th565, 3S-WMI-5th475, 3S-WMI-5th470, 3S-WMI-5th310, 3S-WMI-5th355 | CSD-LKO Calender (6 day + Holiday)-25 | Painting [724 Sq m]; Painter [730 h]; Helper [730 h]; Physical Progress [2530 h]; TATA Projects Ltd-25 | 165,520.88 |
| 3S-WMI-5th710 |  | Soft Furnishing & Signage | 15d | 2028-12-22 | 2029-01-11 | 3S-WMI-5th705 | CSD-LKO Calender (6 day + Holiday)-25 | ID Work [3793714 INR]; Physical Progress [760 h]; TATA Projects Ltd-25 | 3,793,714 |
| 3S-WMI-5th715 |  | Loose Furniture | 15d | 2028-12-22 | 2029-01-11 | 3S-WMI-5th705 | CSD-LKO Calender (6 day + Holiday)-25 | ID Work [5058286 INR]; Physical Progress [760 h]; TATA Projects Ltd-25 | 5,058,286 |
|  | 1 | **MEP Final Fix** |  | 2028-09-05 | 2028-12-11 |  |  |  |  |
|  | 3 | **HVAC** |  | 2028-09-05 | 2028-11-17 |  |  |  |  |
| 3S-WMI-5th275 |  | Installing grills, diffusers, dampers | 30d | 2028-09-05 | 2028-10-12 | 3S-WMI-5th255 | CSD-LKO Calender (6 day + Holiday)-25 | Physical Progress [1530 h]; HVAC [371437 INR]; TATA Projects Ltd-25 | 371,437 |
| 3S-WMI-5th645 |  | Installation of thermostats and control panels | 30d | 2028-10-12 | 2028-11-17 | 3S-WMI-5th275, 3S-WMI-5th315, 3S-WMI-5th435 | CSD-LKO Calender (6 day + Holiday)-25 | Physical Progress [1530 h]; HVAC [185719 INR]; TATA Projects Ltd-25 | 185,719 |
|  | 1 | **Electrical** |  | 2028-09-29 | 2028-12-11 |  |  |  |  |
| 3S-WMI-5th345 |  | Switches & Socket | 30d | 2028-09-29 | 2028-11-06 | 3S-WMI-5th315 | CSD-LKO Calender (6 day + Holiday)-25 | Physical Progress [5060 h]; Electrical [415792 INR]; TATA Projects Ltd-25 | 415,792 |
| 3S-WMI-5th550 |  | Light Fixtures | 30d | 2028-11-06 | 2028-12-11 | 3S-WMI-5th345, 3S-WMI-5th320 | CSD-LKO Calender (6 day + Holiday)-25 | Physical Progress [3790 h]; Electrical [623688 INR]; TATA Projects Ltd-25 | 623,688 |
|  | 2 | **Plumbing** |  | 2028-09-29 | 2028-11-23 |  |  |  |  |
| 3S-WMI-5th350 |  | Installation of sanitary fixtures (WC, washbasins, urinals, sinks) | 10d | 2028-09-29 | 2028-10-12 | 3S-WMI-5th315, 3S-WMI-5th145, 3S-WMI-5th160 | CSD-LKO Calender (6 day + Holiday)-25 | Physical Progress [2530 h]; Plumbing [534578 INR]; TATA Projects Ltd-25 | 534,578 |
| 3S-WMI-5th430 |  | Installation of CP fittings (taps, mixers, showers, health faucets) | 10d | 2028-10-12 | 2028-10-25 | 3S-WMI-5th350, 3S-WMI-5th315 | CSD-LKO Calender (6 day + Holiday)-25 | Physical Progress [2530 h]; Plumbing [267289 INR]; TATA Projects Ltd-25 | 267,289 |
| 3S-WMI-5th460 |  | Connection of appliances | 25d | 2028-10-25 | 2028-11-23 | 3S-WMI-5th430 | CSD-LKO Calender (6 day + Holiday)-25 | Physical Progress [1770 h]; Plumbing [133645 INR]; TATA Projects Ltd-25 | 133,645 |

| ID | WBS | Activity | Duration | Start | Finish | Predecessors | Calendar | Resources | Cost |
| --- | --- | --- | --- | --- | --- | --- | --- | --- | --- |
|  | 4 | **Firefighting** |  | 2028-09-29 | 2028-12-05 |  |  |  |  |
| 3S-WMI-5th355 |  | Installation of hydrant accessories (valves, hose reels, cabinets) | 25d | 2028-09-29 | 2028-10-31 | 3S-WMI-5th315 | CSD-LKO Calender (6 day + Holiday)-25 | Physical Progress [2530 h]; Firefighting [139112 INR]; TATA Projects Ltd-25 | 139,112 |
| 3S-WMI-5th360 |  | Installation of portable fire extinguishers | 30d | 2028-09-29 | 2028-11-06 | 3S-WMI-5th315 | CSD-LKO Calender (6 day + Holiday)-25 | Physical Progress [1530 h]; Firefighting [13911 INR]; TATA Projects Ltd-25 | 13,911 |
| 3S-WMI-5th465 |  | Installation of sprinkler heads, nozzles, and final alignment | 35d | 2028-10-25 | 2028-12-05 | 3S-WMI-5th315, 3S-WMI-5th365, 3S-WMI-5th190, 3S-WMI-5th200 | CSD-LKO Calender (6 day + Holiday)-25 | Physical Progress [10120 h]; Firefighting [208668 INR]; TATA Projects Ltd-25 | 208,668 |
| 3S-WMI-5th555 |  | Integration with fire alarm system | 20d | 2028-11-06 | 2028-11-29 | 3S-WMI-5th360 | CSD-LKO Calender (6 day + Holiday)-25 | Physical Progress [5060 h]; Firefighting [69556 INR]; TATA Projects Ltd-25 | 69,556 |
|  | 5 | **ELV** |  | 2028-10-25 | 2028-12-11 |  |  |  |  |
| 3S-WMI-5th470 |  | Installation of data and Voice Faceplate | 25d | 2028-10-25 | 2028-11-23 | 3S-WMI-5th315, 3S-WMI-5th365 | CSD-LKO Calender (6 day + Holiday)-25 | Physical Progress [2530 h]; ELV [55817 INR]; TATA Projects Ltd-25 | 55,817 |
| 3S-WMI-5th475 |  | Installation of Camera & Wifi | 30d | 2028-10-25 | 2028-11-29 | 3S-WMI-5th315, 3S-WMI-5th365 | CSD-LKO Calender (6 day + Holiday)-25 | Physical Progress [2530 h]; ELV [55817 INR]; TATA Projects Ltd-25 | 55,817 |
| 3S-WMI-5th480 |  | Installation of fire alarm devices + Public Address | 10d | 2028-10-25 | 2028-11-06 | 3S-WMI-5th315, 3S-WMI-5th365 | CSD-LKO Calender (6 day + Holiday)-25 | Physical Progress [2530 h]; ELV [66981 INR]; TATA Projects Ltd-25 | 66,981 |
| 3S-WMI-5th560 |  | Installation of Active System | 15d | 2028-11-06 | 2028-11-23 | 3S-WMI-5th480 | CSD-LKO Calender (6 day + Holiday)-25 | Physical Progress [3790 h]; ELV [111635 INR]; TATA Projects Ltd-25 | 111,635 |
| 3S-WMI-5th565 |  | Fire Panel Intallation & Integration | 25d | 2028-11-06 | 2028-12-05 | 3S-WMI-5th480 | CSD-LKO Calender (6 day + Holiday)-25 | Physical Progress [6320 h]; ELV [55817 INR]; TATA Projects Ltd-25 | 55,817 |
| 3S-WMI-5th570 |  | Installation & Integration of Audio Visual System | 25d | 2028-11-06 | 2028-12-05 | 3S-WMI-5th480 | CSD-LKO Calender (6 day + Holiday)-25 | Physical Progress [6320 h]; ELV [55817 INR]; TATA Projects Ltd-25 | 55,817 |
| 3S-WMI-5th575 |  | Installation & Integration of Access Control | 25d | 2028-11-06 | 2028-12-05 | 3S-WMI-5th480 | CSD-LKO Calender (6 day + Holiday)-25 | Physical Progress [6320 h]; ELV [55817 INR]; TATA Projects Ltd-25 | 55,817 |
| 3S-WMI-5th640 |  | Integration of Active components | 15d | 2028-11-23 | 2028-12-11 | 3S-WMI-5th560 | CSD-LKO Calender (6 day + Holiday)-25 | Physical Progress [3790 h]; ELV [22327 INR]; TATA Projects Ltd-25 | 22,327 |
|  | 2 | **Back Face - Toward CC** |  | 2028-07-18 | 2029-01-18 |  |  |  |  |
|  | 2 | **Dry Finishes/ID Works** |  | 2028-07-18 | 2029-01-18 |  |  |  |  |
| 3S-WMI-5th235 |  | Running of Wild Air | 1d | 2028-07-18 | 2028-07-19 | 3S-F-5th45, 3S-WMI-5th140, 3S-WMI-5th170, 3S-WMI-5th185, 3S-WMI-5th230, 3S-WMI-5th435 | CSD-LKO Calender (6 day + Holiday)-25 | Physical Progress [250 h]; TATA Projects Ltd-25 |  |
| 3S-WMI-5th245 |  | Wall finish ID Works | 10d | 2028-07-19 | 2028-07-31 | 3S-WMI-5th235, 3S-WMI-5th140, 3S-WMI-5th170, 3S-WMI-5th185, 3S-WMI-5th230, 3S-WMI-5th435, 3S-WMI-5th115, 3S-WMI-5th155, 3S-WMI-5th205, 3S-WMI-5th210, 3S-WMI-5th260, 3S-WMI-5th320, 3S-WMI-5th110, 3S-WMI-5th120, 3S-WMI-5th145, 3S-WMI-5th160, 3S-WMI-5th175, 3S-WMI-5th180, 3S-WMI-5th190, 3S-WMI-5th200, 3S-WMI-5th125, 3S-WMI-5th165, 3S-WMI-5th195, 3S-WMI-5th215, 3S-WMI-5th285 | CSD-LKO Calender (6 day + Holiday)-25 | ID Work [2529143 INR]; Physical Progress [2530 h]; TATA Projects Ltd-25 | 2,529,143 |
| 3S-WMI-5th265 |  | False Ceiling Installation | 35d | 2028-07-31 | 2028-09-12 | 3S-WMI-5th245 | CSD-LKO Calender (6 day + Holiday)-25 | ID Work [3034971 INR]; Physical Progress [5060 h]; TATA Projects Ltd-25 | 3,034,971 |
| 3S-WMI-5th295 |  | Flooring of toilets/kitchen/Balcony | 10d | 2028-09-12 | 2028-09-23 | 3S-WMI-5th265, 3S-WMI-5th55 | CSD-LKO Calender (6 day + Holiday)-25 | ID Work [2023314 INR]; Physical Progress [2530 h]; TATA Projects Ltd-25 | 2,023,314 |
| 3S-WMI-5th325 |  | Doors & Windows/Fire Doors/Shaft Doors | 35d | 2028-09-23 | 2028-11-07 | 3S-WMI-5th245, 3S-WMI-5th295 | CSD-LKO Calender (6 day + Holiday)-25 | ID Work [2529143 INR]; Physical Progress [2530 h]; TATA Projects Ltd-25 | 2,529,143 |
| 3S-WMI-5th330 |  | Putty & First Coat of Paint | 10d | 2028-09-23 | 2028-10-07 | 3S-WMI-5th245, 3S-WMI-5th295 | CSD-LKO Calender (6 day + Holiday)-25 | Painting [724 Sq m]; Painter [730 h]; Helper [730 h]; Physical Progress [2530 h]; TATA Projects Ltd-25 | 165,520.88 |
| 3S-WMI-5th390 |  | Wooden Flooring/Flooring | 20d | 2028-10-07 | 2028-11-01 | 3S-WMI-5th330 | CSD-LKO Calender (6 day + Holiday)-25 | ID Work [2529143 INR]; Physical Progress [5060 h]; TATA Projects Ltd-25 | 2,529,143 |
| 3S-WMI-5th395 |  | Railing for staircase | 35d | 2028-10-07 | 2028-11-18 | 3S-WMI-5th245, 3S-WMI-5th330 | CSD-LKO Calender (6 day + Holiday)-25 | ID Work [1138114 INR]; Physical Progress [3790 h]; TATA Projects Ltd-25 | 1,138,114 |
| 3S-WMI-5th515 |  | Fixed Furniture | 8d | 2028-11-01 | 2028-11-10 | 3S-WMI-5th390 | CSD-LKO Calender (6 day + Holiday)-25 | ID Work [2276229 INR]; Physical Progress [2020 h]; TATA Projects Ltd-25 | 2,276,229 |
| 3S-WMI-5th650 |  | False ceiling final finishes | 10d | 2028-11-24 | 2028-12-06 | 3S-WMI-5th440 | CSD-LKO Calender (6 day + Holiday)-25 | ID Work [758743 INR]; Physical Progress [2530 h]; TATA Projects Ltd-25 | 758,743 |
| 3S-WMI-5th670 |  | Final coat of paint | 10d | 2028-12-18 | 2028-12-30 | 3S-WMI-5th650, 3S-WMI-5th395, 3S-WMI-5th515, 3S-WMI-5th580, 3S-WMI-5th490, 3S-WMI-5th495, 3S-WMI-5th585, 3S-WMI-5th660, 3S-WMI-5th605, 3S-WMI-5th600, 3S-WMI-5th595, 3S-WMI-5th505, 3S-WMI-5th500, 3S-WMI-5th325, 3S-WMI-5th380 | CSD-LKO Calender (6 day + Holiday)-25 | Painting [724 Sq m]; Painter [730 h]; Helper [730 h]; Physical Progress [2530 h]; TATA Projects Ltd-25 | 165,520.88 |
| 3S-WMI-5th685 |  | Soft Furnishing & Signage | 15d | 2028-12-30 | 2029-01-18 | 3S-WMI-5th670 | CSD-LKO Calender (6 day + Holiday)-25 | ID Work [3793714 INR]; Physical Progress [760 h]; TATA Projects Ltd-25 | 3,793,714 |
| 3S-WMI-5th690 |  | Loose Furniture | 15d | 2028-12-30 | 2029-01-18 | 3S-WMI-5th670 | CSD-LKO Calender (6 day + Holiday)-25 | ID Work [5058286 INR]; Physical Progress [760 h]; TATA Projects Ltd-25 | 5,058,286 |

| ID | WBS | Activity | Duration | Start | Finish | Predecessors | Calendar | Resources | Cost |
| --- | --- | --- | --- | --- | --- | --- | --- | --- | --- |
|  | 1 | **MEP Final Fix** |  | 2028-09-12 | 2028-12-18 |  |  |  |  |
|  | 3 | **HVAC** |  | 2028-09-12 | 2028-11-24 |  |  |  |  |
| 3S-WMI-5th290 |  | Installing grills, diffusers, dampers | 30d | 2028-09-12 | 2028-10-20 | 3S-WMI-5th265 | CSD-LKO Calender (6 day + Holiday)-25 | Physical Progress [1530 h]; HVAC [371437 INR]; TATA Projects Ltd-25 | 371,437 |
| 3S-WMI-5th440 |  | Installation of thermostats and control panels | 30d | 2028-10-20 | 2028-11-24 | 3S-WMI-5th290, 3S-WMI-5th330 | CSD-LKO Calender (6 day + Holiday)-25 | Physical Progress [1530 h]; HVAC [185719 INR]; TATA Projects Ltd-25 | 185,719 |
|  | 1 | **Electrical** |  | 2028-10-07 | 2028-12-18 |  |  |  |  |
| 3S-WMI-5th370 |  | Switches & Socket | 30d | 2028-10-07 | 2028-11-13 | 3S-WMI-5th330 | CSD-LKO Calender (6 day + Holiday)-25 | Physical Progress [5060 h]; Electrical [415792 INR]; TATA Projects Ltd-25 | 415,792 |
| 3S-WMI-5th580 |  | Light Fixtures | 30d | 2028-11-13 | 2028-12-18 | 3S-WMI-5th370 | CSD-LKO Calender (6 day + Holiday)-25 | Physical Progress [3790 h]; Electrical [623688 INR]; TATA Projects Ltd-25 | 623,688 |
|  | 2 | **Plumbing** |  | 2028-10-07 | 2028-11-30 |  |  |  |  |
| 3S-WMI-5th375 |  | Installation of sanitary fixtures (WC, washbasins, urinals, sinks) | 10d | 2028-10-07 | 2028-10-20 | 3S-WMI-5th330 | CSD-LKO Calender (6 day + Holiday)-25 | Physical Progress [2530 h]; Plumbing [534578 INR]; TATA Projects Ltd-25 | 534,578 |
| 3S-WMI-5th445 |  | Installation of CP fittings (taps, mixers, showers, health faucets) | 10d | 2028-10-20 | 2028-11-01 | 3S-WMI-5th375, 3S-WMI-5th330 | CSD-LKO Calender (6 day + Holiday)-25 | Physical Progress [2530 h]; Plumbing [267289 INR]; TATA Projects Ltd-25 | 267,289 |
| 3S-WMI-5th490 |  | Connection of appliances | 25d | 2028-11-01 | 2028-11-30 | 3S-WMI-5th445 | CSD-LKO Calender (6 day + Holiday)-25 | Physical Progress [1770 h]; Plumbing [133645 INR]; TATA Projects Ltd-25 | 133,645 |
|  | 4 | **Firefighting** |  | 2028-10-07 | 2028-12-12 |  |  |  |  |
| 3S-WMI-5th380 |  | Installation of hydrant accessories (valves, hose reels, cabinets) | 25d | 2028-10-07 | 2028-11-07 | 3S-WMI-5th330 | CSD-LKO Calender (6 day + Holiday)-25 | Physical Progress [2530 h]; Firefighting [139112 INR]; TATA Projects Ltd-25 | 139,112 |
| 3S-WMI-5th385 |  | Installation of portable fire extinguishers | 30d | 2028-10-07 | 2028-11-13 | 3S-WMI-5th330 | CSD-LKO Calender (6 day + Holiday)-25 | Physical Progress [1530 h]; Firefighting [13911 INR]; TATA Projects Ltd-25 | 13,911 |
| 3S-WMI-5th495 |  | Installation of sprinkler heads, nozzles, and final alignment | 35d | 2028-11-01 | 2028-12-12 | 3S-WMI-5th330, 3S-WMI-5th390 | CSD-LKO Calender (6 day + Holiday)-25 | Physical Progress [10120 h]; Firefighting [208668 INR]; TATA Projects Ltd-25 | 208,668 |
| 3S-WMI-5th585 |  | Integration with fire alarm system | 20d | 2028-11-13 | 2028-12-06 | 3S-WMI-5th385 | CSD-LKO Calender (6 day + Holiday)-25 | Physical Progress [5060 h]; Firefighting [69556 INR]; TATA Projects Ltd-25 | 69,556 |
|  | 5 | **ELV** |  | 2028-11-01 | 2028-12-18 |  |  |  |  |
| 3S-WMI-5th500 |  | Installation of data and Voice Faceplate | 25d | 2028-11-01 | 2028-11-30 | 3S-WMI-5th330, 3S-WMI-5th390 | CSD-LKO Calender (6 day + Holiday)-25 | Physical Progress [2530 h]; ELV [55817 INR]; TATA Projects Ltd-25 | 55,817 |
| 3S-WMI-5th505 |  | Installation of Camera & Wifi | 30d | 2028-11-01 | 2028-12-06 | 3S-WMI-5th330, 3S-WMI-5th390 | CSD-LKO Calender (6 day + Holiday)-25 | Physical Progress [2530 h]; ELV [55817 INR]; TATA Projects Ltd-25 | 55,817 |
| 3S-WMI-5th510 |  | Installation of fire alarm devices + Public Address | 10d | 2028-11-01 | 2028-11-13 | 3S-WMI-5th330, 3S-WMI-5th390 | CSD-LKO Calender (6 day + Holiday)-25 | Physical Progress [2530 h]; ELV [66981 INR]; TATA Projects Ltd-25 | 66,981 |
| 3S-WMI-5th590 |  | Installation of Active System | 15d | 2028-11-13 | 2028-11-30 | 3S-WMI-5th510 | CSD-LKO Calender (6 day + Holiday)-25 | Physical Progress [3790 h]; ELV [111635 INR]; TATA Projects Ltd-25 | 111,635 |
| 3S-WMI-5th595 |  | Fire Panel Intallation & Integration | 25d | 2028-11-13 | 2028-12-12 | 3S-WMI-5th510 | CSD-LKO Calender (6 day + Holiday)-25 | Physical Progress [6320 h]; ELV [55817 INR]; TATA Projects Ltd-25 | 55,817 |
| 3S-WMI-5th600 |  | Installation & Integration of Audio Visual System | 25d | 2028-11-13 | 2028-12-12 | 3S-WMI-5th510 | CSD-LKO Calender (6 day + Holiday)-25 | Physical Progress [6320 h]; ELV [55817 INR]; TATA Projects Ltd-25 | 55,817 |
| 3S-WMI-5th605 |  | Installation & Integration of Access Control | 25d | 2028-11-13 | 2028-12-12 | 3S-WMI-5th510 | CSD-LKO Calender (6 day + Holiday)-25 | Physical Progress [6320 h]; ELV [55817 INR]; TATA Projects Ltd-25 | 55,817 |
| 3S-WMI-5th660 |  | Integration of Active components | 15d | 2028-11-30 | 2028-12-18 | 3S-WMI-5th590 | CSD-LKO Calender (6 day + Holiday)-25 | Physical Progress [3790 h]; ELV [22327 INR]; TATA Projects Ltd-25 | 22,327 |

| ID | WBS | Activity | Duration | Start | Finish | Predecessors | Calendar | Resources | Cost |
| --- | --- | --- | --- | --- | --- | --- | --- | --- | --- |
|  | 4 | **Side Face** |  | 2028-07-18 | 2029-01-18 |  |  |  |  |
|  | 2 | **Dry Finishes/ID Works** |  | 2028-07-18 | 2029-01-18 |  |  |  |  |
| 3S-WMI-5th240 |  | Running of Wild Air | 1d | 2028-07-18 | 2028-07-19 | 3S-F-5th50, 3S-WMI-5th140, 3S-WMI-5th170, 3S-WMI-5th185, 3S-WMI-5th230, 3S-WMI-5th435 | CSD-LKO Calender (6 day + Holiday)-25 | Physical Progress [250 h]; TATA Projects Ltd-25 |  |
| 3S-WMI-5th250 |  | Wall finish ID Works | 10d | 2028-07-19 | 2028-07-31 | 3S-WMI-5th240, 3S-WMI-5th140, 3S-WMI-5th170, 3S-WMI-5th185, 3S-WMI-5th230, 3S-WMI-5th435, 3S-WMI-5th115, 3S-WMI-5th155, 3S-WMI-5th205, 3S-WMI-5th210, 3S-WMI-5th260, 3S-WMI-5th320, 3S-WMI-5th110, 3S-WMI-5th120, 3S-WMI-5th145, 3S-WMI-5th160, 3S-WMI-5th175, 3S-WMI-5th180, 3S-WMI-5th190, 3S-WMI-5th200, 3S-WMI-5th125, 3S-WMI-5th165, 3S-WMI-5th195, 3S-WMI-5th215, 3S-WMI-5th285 | CSD-LKO Calender (6 day + Holiday)-25 | ID Work [2529143 INR]; Physical Progress [2530 h]; TATA Projects Ltd-25 | 2,529,143 |
| 3S-WMI-5th270 |  | False Ceiling Installation | 35d | 2028-07-31 | 2028-09-12 | 3S-WMI-5th250 | CSD-LKO Calender (6 day + Holiday)-25 | ID Work [3034971 INR]; Physical Progress [5060 h]; TATA Projects Ltd-25 | 3,034,971 |
| 3S-WMI-5th305 |  | Flooring of toilets/kitchen/Balcony | 10d | 2028-09-12 | 2028-09-23 | 3S-WMI-5th270, 3S-WMI-5th55 | CSD-LKO Calender (6 day + Holiday)-25 | ID Work [2023314 INR]; Physical Progress [2530 h]; TATA Projects Ltd-25 | 2,023,314 |
| 3S-WMI-5th335 |  | Doors & Windows/Fire Doors/Shaft Doors | 35d | 2028-09-23 | 2028-11-07 | 3S-WMI-5th250, 3S-WMI-5th305 | CSD-LKO Calender (6 day + Holiday)-25 | ID Work [2529143 INR]; Physical Progress [2530 h]; TATA Projects Ltd-25 | 2,529,143 |
| 3S-WMI-5th340 |  | Putty & First Coat of Paint | 10d | 2028-09-23 | 2028-10-07 | 3S-WMI-5th250, 3S-WMI-5th305 | CSD-LKO Calender (6 day + Holiday)-25 | Painting [724 Sq m]; Painter [730 h]; Helper [730 h]; Physical Progress [2530 h]; TATA Projects Ltd-25 | 165,520.88 |
| 3S-WMI-5th420 |  | Wooden Flooring/Flooring | 20d | 2028-10-07 | 2028-11-01 | 3S-WMI-5th340 | CSD-LKO Calender (6 day + Holiday)-25 | ID Work [2529143 INR]; Physical Progress [5060 h]; TATA Projects Ltd-25 | 2,529,143 |
| 3S-WMI-5th425 |  | Railing for staircase | 35d | 2028-10-07 | 2028-11-18 | 3S-WMI-5th250, 3S-WMI-5th340 | CSD-LKO Calender (6 day + Holiday)-25 | ID Work [1138114 INR]; Physical Progress [3790 h]; TATA Projects Ltd-25 | 1,138,114 |
| 3S-WMI-5th545 |  | Fixed Furniture | 8d | 2028-11-01 | 2028-11-10 | 3S-WMI-5th420 | CSD-LKO Calender (6 day + Holiday)-25 | ID Work [2276229 INR]; Physical Progress [2020 h]; TATA Projects Ltd-25 | 2,276,229 |
| 3S-WMI-5th655 |  | False ceiling final finishes | 10d | 2028-11-24 | 2028-12-06 | 3S-WMI-5th450 | CSD-LKO Calender (6 day + Holiday)-25 | ID Work [758743 INR]; Physical Progress [2530 h]; TATA Projects Ltd-25 | 758,743 |
| 3S-WMI-5th675 |  | Final coat of paint | 10d | 2028-12-18 | 2028-12-30 | 3S-WMI-5th655, 3S-WMI-5th425, 3S-WMI-5th545, 3S-WMI-5th610, 3S-WMI-5th520, 3S-WMI-5th525, 3S-WMI-5th615, 3S-WMI-5th665, 3S-WMI-5th635, 3S-WMI-5th630, 3S-WMI-5th625, 3S-WMI-5th535, 3S-WMI-5th530, 3S-WMI-5th335 | CSD-LKO Calender (6 day + Holiday)-25 | Painting [724 Sq m]; Painter [730 h]; Helper [730 h]; Physical Progress [2530 h]; TATA Projects Ltd-25 | 165,520.88 |
| 3S-WMI-5th695 |  | Soft Furnishing & Signage | 15d | 2028-12-30 | 2029-01-18 | 3S-WMI-5th675 | CSD-LKO Calender (6 day + Holiday)-25 | ID Work [3793714 INR]; Physical Progress [760 h]; TATA Projects Ltd-25 | 3,793,714 |
| 3S-WMI-5th700 |  | Loose Furniture | 15d | 2028-12-30 | 2029-01-18 | 3S-WMI-5th675 | CSD-LKO Calender (6 day + Holiday)-25 | ID Work [5058286 INR]; Physical Progress [760 h]; TATA Projects Ltd-25 | 5,058,286 |
|  | 1 | **MEP Final Fix** |  | 2028-09-12 | 2028-12-18 |  |  |  |  |
|  | 3 | **HVAC** |  | 2028-09-12 | 2028-11-24 |  |  |  |  |
| 3S-WMI-5th300 |  | Installing grills, diffusers, dampers | 30d | 2028-09-12 | 2028-10-20 | 3S-WMI-5th270 | CSD-LKO Calender (6 day + Holiday)-25 | Physical Progress [1530 h]; HVAC [371437 INR]; TATA Projects Ltd-25 | 371,437 |
| 3S-WMI-5th450 |  | Installation of thermostats and control panels | 30d | 2028-10-20 | 2028-11-24 | 3S-WMI-5th300, 3S-WMI-5th340 | CSD-LKO Calender (6 day + Holiday)-25 | Physical Progress [1530 h]; HVAC [185719 INR]; TATA Projects Ltd-25 | 185,719 |
|  | 1 | **Electrical** |  | 2028-10-07 | 2028-12-18 |  |  |  |  |
| 3S-WMI-5th400 |  | Switches & Socket | 30d | 2028-10-07 | 2028-11-13 | 3S-WMI-5th340 | CSD-LKO Calender (6 day + Holiday)-25 | Physical Progress [5060 h]; Electrical [415792 INR]; TATA Projects Ltd-25 | 415,792 |
| 3S-WMI-5th610 |  | Light Fixtures | 30d | 2028-11-13 | 2028-12-18 | 3S-WMI-5th400 | CSD-LKO Calender (6 day + Holiday)-25 | Physical Progress [3790 h]; Electrical [623688 INR]; TATA Projects Ltd-25 | 623,688 |
|  | 2 | **Plumbing** |  | 2028-10-07 | 2028-11-30 |  |  |  |  |
| 3S-WMI-5th405 |  | Installation of sanitary fixtures (WC, washbasins, urinals, sinks) | 10d | 2028-10-07 | 2028-10-20 | 3S-WMI-5th340 | CSD-LKO Calender (6 day + Holiday)-25 | Physical Progress [2530 h]; Plumbing [534578 INR]; TATA Projects Ltd-25 | 534,578 |
| 3S-WMI-5th455 |  | Installation of CP fittings (taps, mixers, showers, health faucets) | 10d | 2028-10-20 | 2028-11-01 | 3S-WMI-5th405, 3S-WMI-5th340 | CSD-LKO Calender (6 day + Holiday)-25 | Physical Progress [2530 h]; Plumbing [267289 INR]; TATA Projects Ltd-25 | 267,289 |
| 3S-WMI-5th520 |  | Connection of appliances | 25d | 2028-11-01 | 2028-11-30 | 3S-WMI-5th455 | CSD-LKO Calender (6 day + Holiday)-25 | Physical Progress [1770 h]; Plumbing [133645 INR]; TATA Projects Ltd-25 | 133,645 |

| ID | WBS | Activity | Duration | Start | Finish | Predecessors | Calendar | Resources | Cost |
| --- | --- | --- | --- | --- | --- | --- | --- | --- | --- |
|  | 4 | **Firefighting** |  | 2028-10-07 | 2028-12-12 |  |  |  |  |
| 3S-WMI-5th410 |  | Installation of hydrant accessories (valves, hose reels, cabinets) | 25d | 2028-10-07 | 2028-11-07 | 3S-WMI-5th340 | CSD-LKO Calender (6 day + Holiday)-25 | Physical Progress [2530 h]; Firefighting [139112 INR]; TATA Projects Ltd-25 | 139,112 |
| 3S-WMI-5th415 |  | Installation of portable fire extinguishers | 30d | 2028-10-07 | 2028-11-13 | 3S-WMI-5th340 | CSD-LKO Calender (6 day + Holiday)-25 | Physical Progress [1530 h]; Firefighting [13911 INR]; TATA Projects Ltd-25 | 13,911 |
| 3S-WMI-5th525 |  | Installation of sprinkler heads, nozzles, and final alignment | 35d | 2028-11-01 | 2028-12-12 | 3S-WMI-5th340, 3S-WMI-5th420 | CSD-LKO Calender (6 day + Holiday)-25 | Physical Progress [10120 h]; Firefighting [208668 INR]; TATA Projects Ltd-25 | 208,668 |
| 3S-WMI-5th615 |  | Integration with fire alarm system | 20d | 2028-11-13 | 2028-12-06 | 3S-WMI-5th415 | CSD-LKO Calender (6 day + Holiday)-25 | Physical Progress [5060 h]; Firefighting [69556 INR]; TATA Projects Ltd-25 | 69,556 |
|  | 5 | **ELV** |  | 2028-11-01 | 2028-12-18 |  |  |  |  |
| 3S-WMI-5th530 |  | Installation of data and Voice Faceplate | 25d | 2028-11-01 | 2028-11-30 | 3S-WMI-5th340, 3S-WMI-5th420 | CSD-LKO Calender (6 day + Holiday)-25 | Physical Progress [2530 h]; ELV [55817 INR]; TATA Projects Ltd-25 | 55,817 |
| 3S-WMI-5th535 |  | Installation of Camera & Wifi | 30d | 2028-11-01 | 2028-12-06 | 3S-WMI-5th340, 3S-WMI-5th420 | CSD-LKO Calender (6 day + Holiday)-25 | Physical Progress [2530 h]; ELV [55817 INR]; TATA Projects Ltd-25 | 55,817 |
| 3S-WMI-5th540 |  | Installation of fire alarm devices + Public Address | 10d | 2028-11-01 | 2028-11-13 | 3S-WMI-5th340, 3S-WMI-5th420 | CSD-LKO Calender (6 day + Holiday)-25 | Physical Progress [2530 h]; ELV [66981 INR]; TATA Projects Ltd-25 | 66,981 |
| 3S-WMI-5th620 |  | Installation of Active System | 15d | 2028-11-13 | 2028-11-30 | 3S-WMI-5th540 | CSD-LKO Calender (6 day + Holiday)-25 | Physical Progress [3790 h]; ELV [111635 INR]; TATA Projects Ltd-25 | 111,635 |
| 3S-WMI-5th625 |  | Fire Panel Intallation & Integration | 25d | 2028-11-13 | 2028-12-12 | 3S-WMI-5th540 | CSD-LKO Calender (6 day + Holiday)-25 | Physical Progress [6320 h]; ELV [55817 INR]; TATA Projects Ltd-25 | 55,817 |
| 3S-WMI-5th630 |  | Installation & Integration of Audio Visual System | 25d | 2028-11-13 | 2028-12-12 | 3S-WMI-5th540 | CSD-LKO Calender (6 day + Holiday)-25 | Physical Progress [6320 h]; ELV [55817 INR]; TATA Projects Ltd-25 | 55,817 |
| 3S-WMI-5th635 |  | Installation & Integration of Access Control | 25d | 2028-11-13 | 2028-12-12 | 3S-WMI-5th540 | CSD-LKO Calender (6 day + Holiday)-25 | Physical Progress [6320 h]; ELV [55817 INR]; TATA Projects Ltd-25 | 55,817 |
| 3S-WMI-5th665 |  | Integration of Active components | 15d | 2028-11-30 | 2028-12-18 | 3S-WMI-5th620 | CSD-LKO Calender (6 day + Holiday)-25 | Physical Progress [3790 h]; ELV [22327 INR]; TATA Projects Ltd-25 | 22,327 |
|  | 7 | **Sixth Floor** |  | 2027-11-19 | 2029-02-16 |  |  |  |  |
|  | 1 | **Wet Finishes** |  | 2027-11-19 | 2028-02-04 |  |  |  |  |
| 3S-WMI-6th10 |  | Deshuttering | 4d | 2027-11-19 | 2027-11-24 | 3S-SS-7th295 | CSD-LKO Calender (6 day + Holiday)-25 | Physical Progress [1020 h]; TATA Projects Ltd-25 |  |
| 3S-WMI-6th15 |  | Brickwork/Blockwork | 14d | 2027-11-24 | 2027-12-10 | 3S-WMI-6th10, E-GFC-AR-3S-295 | CSD-LKO Calender (6 day + Holiday)-25 | Masonry [446 CuM]; Mason [2980 h]; Helper [1490 h]; Physical Progress [7590 h]; TATA Projects Ltd-25 | 4,252,770.56 |
| 3S-WMI-6th55 |  | Waterproofing of Toilets, Balcony & Kitchen | 15d | 2027-12-10 | 2027-12-29 | 3S-WMI-6th15 | CSD-LKO Calender (6 day + Holiday)-25 | Waterproofing [8564838 INR]; Waterprrofing Mason [8160 h]; Helper [4080 h]; Physical Progress [3790 h]; TATA Projects Ltd-25 | 8,564,838 |
| 3S-WMI-6th95 |  | Plaster | 10d | 2028-01-22 | 2028-02-04 | 3S-WMI-6th30, 3S-WMI-6th75, 3S-WMI-6th80, 3S-WMI-6th55 | CSD-LKO Calender (6 day + Holiday)-25 | Plaster [7060 Sqr Mtr]; Mason [4710 h]; Helper [2360 h]; Physical Progress [3790 h]; TATA Projects Ltd-25 | 3,910,604.6 |
|  | 5 | **MEP 1st Fix, 2nd Fix** |  | 2027-11-24 | 2028-07-15 |  |  |  |  |
|  | 2 | **HVAC** |  | 2027-12-10 | 2028-07-15 |  |  |  |  |
|  | 1 | **1st Fix** |  | 2027-12-10 | 2028-04-04 |  |  |  |  |
| 3S-WMI-6th50 |  | Duct Support Fabrication | 35d | 2027-12-10 | 2028-01-22 | 3S-WMI-6th15, E-GFC-MEP-3S-295 | CSD-LKO Calender (6 day + Holiday)-25 | Physical Progress [3790 h]; HVAC [222862 INR]; TATA Projects Ltd-25 | 222,862 |
| 3S-WMI-6th100 |  | Installing duct hangers and supports | 30d | 2028-01-22 | 2028-02-28 | 3S-WMI-6th50, E-GFC-MEP-3S-295 | CSD-LKO Calender (6 day + Holiday)-25 | Physical Progress [2530 h]; HVAC [445725 INR]; TATA Projects Ltd-25 | 445,725 |
| 3S-WMI-6th130 |  | Laying concealed/exposed refrigerant piping | 30d | 2028-02-28 | 2028-04-04 | 3S-WMI-6th100, E-GFC-MEP-3S-295 | CSD-LKO Calender (6 day + Holiday)-25 | Physical Progress [3790 h]; HVAC [111431 INR]; TATA Projects Ltd-25 | 111,431 |
| 3S-WMI-6th135 |  | Laying concealed/exposed drain piping | 30d | 2028-02-28 | 2028-04-04 | 3S-WMI-6th100, E-GFC-MEP-3S-295 | CSD-LKO Calender (6 day + Holiday)-25 | Physical Progress [2530 h]; HVAC [668587 INR]; TATA Projects Ltd-25 | 668,587 |

| ID | WBS | Activity | Duration | Start | Finish | Predecessors | Calendar | Resources | Cost |
| --- | --- | --- | --- | --- | --- | --- | --- | --- | --- |
|  | 2 | **2nd Fix** |  | 2028-02-28 | 2028-07-15 |  |  |  |  |
| 3S-WMI-6th140 |  | Duct installation | 20d | 2028-02-28 | 2028-03-23 | 3S-WMI-6th100 | CSD-LKO Calender (6 day + Holiday)-25 | Physical Progress [3790 h]; HVAC [1671468 INR]; TATA Projects Ltd-25 | 1,671,468 |
| 3S-WMI-6th170 |  | Insulation of ducts (thermal/acoustic) | 10d | 2028-03-23 | 2028-04-04 | 3S-WMI-6th140 | CSD-LKO Calender (6 day + Holiday)-25 | Physical Progress [1530 h]; HVAC [1002881 INR]; TATA Projects Ltd-25 | 1,002,881 |
| 3S-WMI-6th185 |  | Installation of chilled water piping / VRF piping | 20d | 2028-04-04 | 2028-04-28 | 3S-WMI-6th170 | CSD-LKO Calender (6 day + Holiday)-25 | Physical Progress [1530 h]; HVAC [2228625 INR]; TATA Projects Ltd-25 | 2,228,625 |
| 3S-WMI-6th220 |  | Installation of indoor units including AHU, FCU | 45d | 2028-04-28 | 2028-06-22 | 3S-WMI-6th185, 3S-WMI-6th130, 3S-WMI-6th135 | CSD-LKO Calender (6 day + Holiday)-25 | Physical Progress [11380 h]; HVAC [2005762 INR]; TATA Projects Ltd-25 | 2,005,762 |
| 3S-WMI-6th315 |  | Connecting refrigerant and drain piping to indoor units | 20d | 2028-06-22 | 2028-07-15 | 3S-WMI-6th220 | CSD-LKO Calender (6 day + Holiday)-25 | Physical Progress [1530 h]; HVAC [557156 INR]; TATA Projects Ltd-25 | 557,156 |
|  | 1 | **Electrical** |  | 2027-11-24 | 2028-06-28 |  |  |  |  |
|  | 1 | **1st Fix** |  | 2027-11-24 | 2028-01-22 |  |  |  |  |
| 3S-WMI-6th25 |  | Slab Conduiting | 35d | 2027-11-24 | 2028-01-06 | 3S-WMI-6th10, E-GFC-MEP-3S-295 | CSD-LKO Calender (6 day + Holiday)-25 | Physical Progress [6320 h]; Electrical [1247377 INR]; TATA Projects Ltd-25 | 1,247,377 |
| 3S-WMI-6th30 |  | Wall Conduiting | 30d | 2027-12-10 | 2028-01-17 | 3S-WMI-6th15, E-GFC-MEP-3S-295 | CSD-LKO Calender (6 day + Holiday)-25 | Physical Progress [2530 h]; Electrical [623688 INR]; TATA Projects Ltd-25 | 623,688 |
| 3S-WMI-6th75 |  | Installing back boxes for switches, sockets | 5d | 2028-01-17 | 2028-01-22 | 3S-WMI-6th30, 3S-WMI-6th25, E-GFC-MEP-3S-295 | CSD-LKO Calender (6 day + Holiday)-25 | Physical Progress [1280 h]; Electrical [374213 INR]; TATA Projects Ltd-25 | 374,213 |
|  | 2 | **2nd Fix** |  | 2028-02-04 | 2028-06-28 |  |  |  |  |
| 3S-WMI-6th115 |  | Cable tray laying | 25d | 2028-02-04 | 2028-03-04 | 3S-WMI-6th95 | CSD-LKO Calender (6 day + Holiday)-25 | Physical Progress [6320 h]; Electrical [498951 INR]; TATA Projects Ltd-25 | 498,951 |
| 3S-WMI-6th155 |  | Cabling & Wire Pulling | 35d | 2028-03-04 | 2028-04-17 | 3S-WMI-6th115 | CSD-LKO Calender (6 day + Holiday)-25 | Physical Progress [11380 h]; Electrical [2494753 INR]; TATA Projects Ltd-25 | 2,494,753 |
| 3S-WMI-6th205 |  | DB fixing and connecting | 20d | 2028-04-17 | 2028-05-12 | 3S-WMI-6th155 | CSD-LKO Calender (6 day + Holiday)-25 | Physical Progress [3790 h]; Electrical [374213 INR]; TATA Projects Ltd-25 | 374,213 |
| 3S-WMI-6th210 |  | Floor Rising Main Installation | 20d | 2028-04-17 | 2028-05-12 | 3S-WMI-6th155 | CSD-LKO Calender (6 day + Holiday)-25 | Physical Progress [1280 h]; Electrical [1746327 INR]; TATA Projects Ltd-25 | 1,746,327 |
| 3S-WMI-6th225 |  | Floor/Distribution Panel Installation | 20d | 2028-05-12 | 2028-06-05 | 3S-WMI-6th205 | CSD-LKO Calender (6 day + Holiday)-25 | Physical Progress [1280 h]; Electrical [997901 INR]; TATA Projects Ltd-25 | 997,901 |
| 3S-WMI-6th280 |  | Equipment Earthing | 20d | 2028-06-05 | 2028-06-28 | 3S-WMI-6th225, 3S-WMI-6th210 | CSD-LKO Calender (6 day + Holiday)-25 | Physical Progress [2530 h]; Electrical [374213 INR]; TATA Projects Ltd-25 | 374,213 |
|  | 3 | **Plumbing** |  | 2027-12-10 | 2028-07-15 |  |  |  |  |
|  | 1 | **1st Fix** |  | 2027-12-10 | 2028-04-28 |  |  |  |  |
| 3S-WMI-6th35 |  | Fixing pipe supports and clamps | 20d | 2027-12-10 | 2028-01-05 | 3S-WMI-6th15, E-GFC-MEP-3S-295 | CSD-LKO Calender (6 day + Holiday)-25 | Physical Progress [2530 h]; Plumbing [400934 INR]; TATA Projects Ltd-25 | 400,934 |
| 3S-WMI-6th60 |  | Laying water supply pipes (hot & cold) | 35d | 2028-01-05 | 2028-02-16 | 3S-WMI-6th35, E-GFC-MEP-3S-295 | CSD-LKO Calender (6 day + Holiday)-25 | Physical Progress [3790 h]; Plumbing [801867 INR]; TATA Projects Ltd-25 | 801,867 |
| 3S-WMI-6th65 |  | Laying drainage pipes (soil, waste, vent) | 35d | 2028-01-05 | 2028-02-16 | 3S-WMI-6th35, E-GFC-MEP-3S-295 | CSD-LKO Calender (6 day + Holiday)-25 | Physical Progress [3790 h]; Plumbing [801867 INR]; TATA Projects Ltd-25 | 801,867 |
| 3S-WMI-6th70 |  | Installation of plumbing fixture base supports (WC frames, sink brackets) | 30d | 2028-02-16 | 2028-03-23 | 3S-WMI-6th65, E-GFC-MEP-3S-295 | CSD-LKO Calender (6 day + Holiday)-25 | Physical Progress [1530 h]; Plumbing [400934 INR]; TATA Projects Ltd-25 | 400,934 |
| 3S-WMI-6th85 |  | Pressure testing of water supply lines | 25d | 2028-03-23 | 2028-04-22 | 3S-WMI-6th60, 3S-WMI-6th65, 3S-WMI-6th70, E-GFC-MEP-3S-295 | CSD-LKO Calender (6 day + Holiday)-25 | Physical Progress [1770 h]; Plumbing [80187 INR]; TATA Projects Ltd-25 | 80,187 |
| 3S-WMI-6th90 |  | Installation of concealed parts of toilet fixtures | 30d | 2028-03-23 | 2028-04-28 | 3S-WMI-6th70, E-GFC-MEP-3S-295 | CSD-LKO Calender (6 day + Holiday)-25 | Physical Progress [2530 h]; Plumbing [400934 INR]; TATA Projects Ltd-25 | 400,934 |

| ID | WBS | Activity | Duration | Start | Finish | Predecessors | Calendar | Resources | Cost |
| --- | --- | --- | --- | --- | --- | --- | --- | --- | --- |
|  | 2 | **2nd FIx** |  | 2028-04-22 | 2028-07-15 |  |  |  |  |
| 3S-WMI-6th110 |  | Insulation of hot water pipes (if applicable) | 30d | 2028-04-22 | 2028-05-30 | 3S-WMI-6th85 | CSD-LKO Calender (6 day + Holiday)-25 | Physical Progress [1530 h]; Plumbing [400934 INR]; TATA Projects Ltd-25 | 400,934 |
| 3S-WMI-6th120 |  | Installation of vertical risers and main distribution lines | 35d | 2028-04-28 | 2028-06-10 | 3S-WMI-6th95, 3S-WMI-6th85, 3S-WMI-6th90 | CSD-LKO Calender (6 day + Holiday)-25 | Physical Progress [5060 h]; Plumbing [801867 INR]; TATA Projects Ltd-25 | 801,867 |
| 3S-WMI-6th145 |  | Testing drainage lines for leakage/blockage | 30d | 2028-05-30 | 2028-07-04 | 3S-WMI-6th70, 3S-WMI-6th110 | CSD-LKO Calender (6 day + Holiday)-25 | Physical Progress [1530 h]; Plumbing [80187 INR]; TATA Projects Ltd-25 | 80,187 |
| 3S-WMI-6th160 |  | Fixing floor traps and gully traps | 30d | 2028-06-10 | 2028-07-15 | 3S-WMI-6th120 | CSD-LKO Calender (6 day + Holiday)-25 | Physical Progress [1530 h]; Plumbing [240560 INR]; TATA Projects Ltd-25 | 240,560 |
|  | 4 | **Firefighting** |  | 2027-12-10 | 2028-07-04 |  |  |  |  |
|  | 1 | **1st Fix** |  | 2027-12-10 | 2028-04-10 |  |  |  |  |
| 3S-WMI-6th40 |  | Fixing pipe supports and hangers | 35d | 2027-12-10 | 2028-01-22 | 3S-WMI-6th15, E-GFC-MEP-3S-295 | CSD-LKO Calender (6 day + Holiday)-25 | Physical Progress [2530 h]; Firefighting [292135 INR]; TATA Projects Ltd-25 | 292,135 |
| 3S-WMI-6th105 |  | Laying branch piping | 35d | 2028-01-22 | 2028-03-04 | 3S-WMI-6th40, E-GFC-MEP-3S-295 | CSD-LKO Calender (6 day + Holiday)-25 | Physical Progress [3790 h]; Firefighting [626004 INR]; TATA Projects Ltd-25 | 626,004 |
| 3S-WMI-6th150 |  | Hydrostatic pressure testing of piping | 30d | 2028-03-04 | 2028-04-10 | 3S-WMI-6th105, E-GFC-MEP-3S-295 | CSD-LKO Calender (6 day + Holiday)-25 | Physical Progress [1530 h]; Firefighting [83467 INR]; TATA Projects Ltd-25 | 83,467 |
|  | 2 | **2nd Fix** |  | 2028-04-10 | 2028-07-04 |  |  |  |  |
| 3S-WMI-6th175 |  | Installation of vertical risers and distribution piping in shafts | 35d | 2028-04-10 | 2028-05-24 | 3S-WMI-6th95, 3S-WMI-6th150 | CSD-LKO Calender (6 day + Holiday)-25 | Physical Progress [6320 h]; Firefighting [834672 INR]; TATA Projects Ltd-25 | 834,672 |
| 3S-WMI-6th180 |  | Painting/insulation of exposed fire pipes | 30d | 2028-04-10 | 2028-05-18 | 3S-WMI-6th150 | CSD-LKO Calender (6 day + Holiday)-25 | Physical Progress [2530 h]; Firefighting [41734 INR]; TATA Projects Ltd-25 | 41,734 |
| 3S-WMI-6th190 |  | Testing risers and branch lines for leakage | 30d | 2028-05-18 | 2028-06-22 | 3S-WMI-6th180 | CSD-LKO Calender (6 day + Holiday)-25 | Physical Progress [1530 h]; Firefighting [83467 INR]; TATA Projects Ltd-25 | 83,467 |
| 3S-WMI-6th200 |  | Installation of sprinkler branch lines in ceilings | 35d | 2028-05-24 | 2028-07-04 | 3S-WMI-6th175 | CSD-LKO Calender (6 day + Holiday)-25 | Physical Progress [6320 h]; Firefighting [626004 INR]; TATA Projects Ltd-25 | 626,004 |
|  | 5 | **ELV** |  | 2027-11-24 | 2028-07-10 |  |  |  |  |
|  | 1 | **1st Fix** |  | 2027-11-24 | 2028-01-22 |  |  |  |  |
| 3S-WMI-6th20 |  | Slab Conduiting | 35d | 2027-11-24 | 2028-01-06 | 3S-WMI-6th10, E-GFC-MEP-3S-295 | CSD-LKO Calender (6 day + Holiday)-25 | Physical Progress [6320 h]; ELV [234433 INR]; TATA Projects Ltd-25 | 234,433 |
| 3S-WMI-6th45 |  | Wall Conduiting | 30d | 2027-12-10 | 2028-01-17 | 3S-WMI-6th15, E-GFC-MEP-3S-295 | CSD-LKO Calender (6 day + Holiday)-25 | Physical Progress [2530 h]; ELV [100471 INR]; TATA Projects Ltd-25 | 100,471 |
| 3S-WMI-6th80 |  | Installing back boxes for switches, sockets | 5d | 2028-01-17 | 2028-01-22 | 3S-WMI-6th45, 3S-WMI-6th20, E-GFC-MEP-3S-295 | CSD-LKO Calender (6 day + Holiday)-25 | Physical Progress [1280 h]; ELV [167452 INR]; TATA Projects Ltd-25 | 167,452 |
|  | 2 | **2nd Fix** |  | 2028-02-04 | 2028-07-10 |  |  |  |  |
| 3S-WMI-6th125 |  | Cable tray installation | 20d | 2028-02-04 | 2028-02-28 | 3S-WMI-6th95 | CSD-LKO Calender (6 day + Holiday)-25 | Physical Progress [6320 h]; ELV [167452 INR]; TATA Projects Ltd-25 | 167,452 |
| 3S-WMI-6th165 |  | Cabeling of ELV cable - IT/Fire Alarm/Public Address | 45d | 2028-02-28 | 2028-04-22 | 3S-WMI-6th125 | CSD-LKO Calender (6 day + Holiday)-25 | Physical Progress [11380 h]; ELV [401885 INR]; TATA Projects Ltd-25 | 401,885 |
| 3S-WMI-6th195 |  | ELV Rack Installation | 20d | 2028-04-22 | 2028-05-18 | 3S-WMI-6th165 | CSD-LKO Calender (6 day + Holiday)-25 | Physical Progress [2530 h]; ELV [167452 INR]; TATA Projects Ltd-25 | 167,452 |
| 3S-WMI-6th215 |  | Termination of cables at junction boxes, patch panels, and control panels | 20d | 2028-05-18 | 2028-06-10 | 3S-WMI-6th195 | CSD-LKO Calender (6 day + Holiday)-25 | Physical Progress [7590 h]; ELV [167452 INR]; TATA Projects Ltd-25 | 167,452 |
| 3S-WMI-6th260 |  | Fixing devices like CCTV camera bases, card reader bases, smoke detector bases, PA Bases, Wifi Bases | 25d | 2028-06-10 | 2028-07-10 | 3S-WMI-6th215 | CSD-LKO Calender (6 day + Holiday)-25 | Physical Progress [1020 h]; ELV [334904 INR]; TATA Projects Ltd-25 | 334,904 |

| ID | WBS | Activity | Duration | Start | Finish | Predecessors | Calendar | Resources | Cost |
| --- | --- | --- | --- | --- | --- | --- | --- | --- | --- |
|  | 3 | **Front Face - Toward Airport** |  | 2028-08-26 | 2029-02-08 |  |  |  |  |
|  | 2 | **Dry Finishes/ID Works** |  | 2028-08-26 | 2029-02-08 |  |  |  |  |
| 3S-WMI-6th230 |  | Running of Wild Air | 1d | 2028-08-26 | 2028-08-28 | 3S-F-6th40, 3S-WMI-6th140, 3S-WMI-6th170, 3S-WMI-6th185, 3S-WMI-6th220, 3S-WMI-6th315 | CSD-LKO Calender (6 day + Holiday)-25 | Physical Progress [250 h]; TATA Projects Ltd-25 |  |
| 3S-WMI-6th240 |  | Wall finish ID Works | 10d | 2028-08-28 | 2028-09-08 | 3S-WMI-6th230, 3S-WMI-6th140, 3S-WMI-6th170, 3S-WMI-6th185, 3S-WMI-6th220, 3S-WMI-6th315, 3S-WMI-6th115, 3S-WMI-6th155, 3S-WMI-6th205, 3S-WMI-6th210, 3S-WMI-6th225, 3S-WMI-6th280, 3S-WMI-6th110, 3S-WMI-6th120, 3S-WMI-6th145, 3S-WMI-6th160, 3S-WMI-6th175, 3S-WMI-6th180, 3S-WMI-6th190, 3S-WMI-6th200, 3S-WMI-6th125, 3S-WMI-6th165, 3S-WMI-6th195, 3S-WMI-6th215, 3S-WMI-6th260 | CSD-LKO Calender (6 day + Holiday)-25 | ID Work [2529143 INR]; Physical Progress [2530 h]; TATA Projects Ltd-25 | 2,529,143 |
| 3S-WMI-6th265 |  | False Ceiling Installation | 20d | 2028-09-08 | 2028-10-04 | 3S-WMI-6th240 | CSD-LKO Calender (6 day + Holiday)-25 | ID Work [3034971 INR]; Physical Progress [5060 h]; TATA Projects Ltd-25 | 3,034,971 |
| 3S-WMI-6th290 |  | Flooring of toilets/kitchen/Balcony | 10d | 2028-10-04 | 2028-10-16 | 3S-WMI-6th55, 3S-WMI-6th265 | CSD-LKO Calender (6 day + Holiday)-25 | ID Work [2023314 INR]; Physical Progress [2530 h]; TATA Projects Ltd-25 | 2,023,314 |
| 3S-WMI-6th320 |  | Doors & Windows/Fire Doors/Shaft Doors | 35d | 2028-10-16 | 2028-11-27 | 3S-WMI-6th240, 3S-WMI-6th290 | CSD-LKO Calender (6 day + Holiday)-25 | ID Work [2529143 INR]; Physical Progress [2530 h]; TATA Projects Ltd-25 | 2,529,143 |
| 3S-WMI-6th325 |  | Putty & First Coat of Paint | 10d | 2028-10-16 | 2028-10-28 | 3S-WMI-6th240, 3S-WMI-6th290 | CSD-LKO Calender (6 day + Holiday)-25 | Painting [724 Sq m]; Painter [730 h]; Helper [730 h]; Physical Progress [2530 h]; TATA Projects Ltd-25 | 165,520.88 |
| 3S-WMI-6th370 |  | Wooden Flooring/Flooring | 20d | 2028-10-28 | 2028-11-21 | 3S-WMI-6th325 | CSD-LKO Calender (6 day + Holiday)-25 | ID Work [2529143 INR]; Physical Progress [5060 h]; TATA Projects Ltd-25 | 2,529,143 |
| 3S-WMI-6th485 |  | Fixed Furniture | 8d | 2028-11-21 | 2028-11-30 | 3S-WMI-6th370 | CSD-LKO Calender (6 day + Holiday)-25 | ID Work [2276229 INR]; Physical Progress [2020 h]; TATA Projects Ltd-25 | 2,276,229 |
| 3S-WMI-6th670 |  | False ceiling final finishes | 10d | 2028-12-14 | 2028-12-27 | 3S-WMI-6th520 | CSD-LKO Calender (6 day + Holiday)-25 | ID Work [758743 INR]; Physical Progress [2530 h]; TATA Projects Ltd-25 | 758,743 |
| 3S-WMI-6th680 |  | Final coat of paint | 10d | 2029-01-09 | 2029-01-20 | 3S-WMI-6th670, 3S-WMI-6th485, 3S-WMI-6th555, 3S-WMI-6th460, 3S-WMI-6th465, 3S-WMI-6th560, 3S-WMI-6th650, 3S-WMI-6th580, 3S-WMI-6th575, 3S-WMI-6th570, 3S-WMI-6th475, 3S-WMI-6th470, 3S-WMI-6th320, 3S-WMI-6th360 | CSD-LKO Calender (6 day + Holiday)-25 | Painting [724 Sq m]; Painter [730 h]; Helper [730 h]; Physical Progress [2530 h]; TATA Projects Ltd-25 | 165,520.88 |
| 3S-WMI-6th700 |  | Soft Furnishing & Signage | 15d | 2029-01-20 | 2029-02-08 | 3S-WMI-6th680 | CSD-LKO Calender (6 day + Holiday)-25 | ID Work [3793714 INR]; Physical Progress [760 h]; TATA Projects Ltd-25 | 3,793,714 |
| 3S-WMI-6th705 |  | Loose Furniture | 15d | 2029-01-20 | 2029-02-08 | 3S-WMI-6th680 | CSD-LKO Calender (6 day + Holiday)-25 | ID Work [5058286 INR]; Physical Progress [760 h]; TATA Projects Ltd-25 | 5,058,286 |
|  | 1 | **MEP Final Fix** |  | 2028-10-04 | 2029-01-09 |  |  |  |  |
|  | 3 | **HVAC** |  | 2028-10-04 | 2028-12-14 |  |  |  |  |
| 3S-WMI-6th285 |  | Installing grills, diffusers, dampers | 30d | 2028-10-04 | 2028-11-09 | 3S-WMI-6th265 | CSD-LKO Calender (6 day + Holiday)-25 | Physical Progress [1530 h]; HVAC [371437 INR]; TATA Projects Ltd-25 | 371,437 |
| 3S-WMI-6th520 |  | Installation of thermostats and control panels | 30d | 2028-11-09 | 2028-12-14 | 3S-WMI-6th285, 3S-WMI-6th325, 3S-WMI-6th315 | CSD-LKO Calender (6 day + Holiday)-25 | Physical Progress [1530 h]; HVAC [185719 INR]; TATA Projects Ltd-25 | 185,719 |
|  | 1 | **Electrical** |  | 2028-10-28 | 2029-01-09 |  |  |  |  |
| 3S-WMI-6th350 |  | Switches & Socket | 30d | 2028-10-28 | 2028-12-02 | 3S-WMI-6th325 | CSD-LKO Calender (6 day + Holiday)-25 | Physical Progress [5060 h]; Electrical [415792 INR]; TATA Projects Ltd-25 | 415,792 |
| 3S-WMI-6th555 |  | Light Fixtures | 30d | 2028-12-02 | 2029-01-09 | 3S-WMI-6th350, 3S-WMI-6th280 | CSD-LKO Calender (6 day + Holiday)-25 | Physical Progress [3790 h]; Electrical [623688 INR]; TATA Projects Ltd-25 | 623,688 |
|  | 2 | **Plumbing** |  | 2028-10-28 | 2028-12-20 |  |  |  |  |
| 3S-WMI-6th355 |  | Installation of sanitary fixtures (WC, washbasins, urinals, sinks) | 10d | 2028-10-28 | 2028-11-09 | 3S-WMI-6th325, 3S-WMI-6th145, 3S-WMI-6th160 | CSD-LKO Calender (6 day + Holiday)-25 | Physical Progress [2530 h]; Plumbing [534578 INR]; TATA Projects Ltd-25 | 534,578 |
| 3S-WMI-6th435 |  | Installation of CP fittings (taps, mixers, showers, health faucets) | 10d | 2028-11-09 | 2028-11-21 | 3S-WMI-6th355, 3S-WMI-6th325 | CSD-LKO Calender (6 day + Holiday)-25 | Physical Progress [2530 h]; Plumbing [267289 INR]; TATA Projects Ltd-25 | 267,289 |
| 3S-WMI-6th460 |  | Connection of appliances | 25d | 2028-11-21 | 2028-12-20 | 3S-WMI-6th435 | CSD-LKO Calender (6 day + Holiday)-25 | Physical Progress [1770 h]; Plumbing [133645 INR]; TATA Projects Ltd-25 | 133,645 |

| ID | WBS | Activity | Duration | Start | Finish | Predecessors | Calendar | Resources | Cost |
| --- | --- | --- | --- | --- | --- | --- | --- | --- | --- |
|  | 4 | **Firefighting** |  | 2028-10-28 | 2029-01-03 |  |  |  |  |
| 3S-WMI-6th360 |  | Installation of hydrant accessories (valves, hose reels, cabinets) | 25d | 2028-10-28 | 2028-11-27 | 3S-WMI-6th325 | CSD-LKO Calender (6 day + Holiday)-25 | Physical Progress [2530 h]; Firefighting [139112 INR]; TATA Projects Ltd-25 | 139,112 |
| 3S-WMI-6th365 |  | Installation of portable fire extinguishers | 30d | 2028-10-28 | 2028-12-02 | 3S-WMI-6th325 | CSD-LKO Calender (6 day + Holiday)-25 | Physical Progress [1530 h]; Firefighting [13911 INR]; TATA Projects Ltd-25 | 13,911 |
| 3S-WMI-6th465 |  | Installation of sprinkler heads, nozzles, and final alignment | 35d | 2028-11-21 | 2029-01-03 | 3S-WMI-6th325, 3S-WMI-6th370, 3S-WMI-6th190, 3S-WMI-6th200 | CSD-LKO Calender (6 day + Holiday)-25 | Physical Progress [10120 h]; Firefighting [208668 INR]; TATA Projects Ltd-25 | 208,668 |
| 3S-WMI-6th560 |  | Integration with fire alarm system | 20d | 2028-12-02 | 2028-12-27 | 3S-WMI-6th365 | CSD-LKO Calender (6 day + Holiday)-25 | Physical Progress [5060 h]; Firefighting [69556 INR]; TATA Projects Ltd-25 | 69,556 |
|  | 5 | **ELV** |  | 2028-11-21 | 2029-01-09 |  |  |  |  |
| 3S-WMI-6th470 |  | Installation of data and Voice Faceplate | 25d | 2028-11-21 | 2028-12-20 | 3S-WMI-6th325, 3S-WMI-6th370, 3S-WMI-6th260 | CSD-LKO Calender (6 day + Holiday)-25 | Physical Progress [2530 h]; ELV [55817 INR]; TATA Projects Ltd-25 | 55,817 |
| 3S-WMI-6th475 |  | Installation of Camera & Wifi | 30d | 2028-11-21 | 2028-12-27 | 3S-WMI-6th325, 3S-WMI-6th370 | CSD-LKO Calender (6 day + Holiday)-25 | Physical Progress [2530 h]; ELV [55817 INR]; TATA Projects Ltd-25 | 55,817 |
| 3S-WMI-6th480 |  | Installation of fire alarm devices + Public Address | 10d | 2028-11-21 | 2028-12-02 | 3S-WMI-6th325, 3S-WMI-6th370 | CSD-LKO Calender (6 day + Holiday)-25 | Physical Progress [2530 h]; ELV [66981 INR]; TATA Projects Ltd-25 | 66,981 |
| 3S-WMI-6th565 |  | Installation of Active System | 15d | 2028-12-02 | 2028-12-20 | 3S-WMI-6th480 | CSD-LKO Calender (6 day + Holiday)-25 | Physical Progress [3790 h]; ELV [111635 INR]; TATA Projects Ltd-25 | 111,635 |
| 3S-WMI-6th570 |  | Fire Panel Intallation & Integration | 25d | 2028-12-02 | 2029-01-03 | 3S-WMI-6th480 | CSD-LKO Calender (6 day + Holiday)-25 | Physical Progress [6320 h]; ELV [55817 INR]; TATA Projects Ltd-25 | 55,817 |
| 3S-WMI-6th575 |  | Installation & Integration of Audio Visual System | 25d | 2028-12-02 | 2029-01-03 | 3S-WMI-6th480 | CSD-LKO Calender (6 day + Holiday)-25 | Physical Progress [6320 h]; ELV [55817 INR]; TATA Projects Ltd-25 | 55,817 |
| 3S-WMI-6th580 |  | Installation & Integration of Access Control | 25d | 2028-12-02 | 2029-01-03 | 3S-WMI-6th480 | CSD-LKO Calender (6 day + Holiday)-25 | Physical Progress [6320 h]; ELV [55817 INR]; TATA Projects Ltd-25 | 55,817 |
| 3S-WMI-6th650 |  | Integration of Active components | 15d | 2028-12-20 | 2029-01-09 | 3S-WMI-6th565 | CSD-LKO Calender (6 day + Holiday)-25 | Physical Progress [3790 h]; ELV [22327 INR]; TATA Projects Ltd-25 | 22,327 |
|  | 2 | **Back Face - Toward CC** |  | 2028-09-02 | 2029-02-16 |  |  |  |  |
|  | 2 | **Dry Finishes/ID Works** |  | 2028-09-02 | 2029-02-16 |  |  |  |  |
| 3S-WMI-6th250 |  | Running of Wild Air | 1d | 2028-09-02 | 2028-09-04 | 3S-F-6th45, 3S-WMI-6th140, 3S-WMI-6th170, 3S-WMI-6th185, 3S-WMI-6th220, 3S-WMI-6th315 | CSD-LKO Calender (6 day + Holiday)-25 | Physical Progress [250 h]; TATA Projects Ltd-25 |  |
| 3S-WMI-6th255 |  | Wall finish ID Works | 10d | 2028-09-04 | 2028-09-15 | 3S-WMI-6th250, 3S-WMI-6th140, 3S-WMI-6th170, 3S-WMI-6th185, 3S-WMI-6th220, 3S-WMI-6th315, 3S-WMI-6th115, 3S-WMI-6th155, 3S-WMI-6th205, 3S-WMI-6th210, 3S-WMI-6th225, 3S-WMI-6th280, 3S-WMI-6th110, 3S-WMI-6th120, 3S-WMI-6th145, 3S-WMI-6th160, 3S-WMI-6th175, 3S-WMI-6th180, 3S-WMI-6th190, 3S-WMI-6th200, 3S-WMI-6th125, 3S-WMI-6th165, 3S-WMI-6th195, 3S-WMI-6th215, 3S-WMI-6th260 | CSD-LKO Calender (6 day + Holiday)-25 | ID Work [2529143 INR]; Physical Progress [2530 h]; TATA Projects Ltd-25 | 2,529,143 |
| 3S-WMI-6th275 |  | False Ceiling Installation | 20d | 2028-09-15 | 2028-10-11 | 3S-WMI-6th255 | CSD-LKO Calender (6 day + Holiday)-25 | ID Work [3034971 INR]; Physical Progress [5060 h]; TATA Projects Ltd-25 | 3,034,971 |
| 3S-WMI-6th310 |  | Flooring of toilets/kitchen/Balcony | 10d | 2028-10-11 | 2028-10-24 | 3S-WMI-6th275, 3S-WMI-6th55 | CSD-LKO Calender (6 day + Holiday)-25 | ID Work [2023314 INR]; Physical Progress [2530 h]; TATA Projects Ltd-25 | 2,023,314 |
| 3S-WMI-6th340 |  | Doors & Windows/Fire Doors/Shaft Doors | 35d | 2028-10-24 | 2028-12-04 | 3S-WMI-6th255, 3S-WMI-6th310 | CSD-LKO Calender (6 day + Holiday)-25 | ID Work [2529143 INR]; Physical Progress [2530 h]; TATA Projects Ltd-25 | 2,529,143 |
| 3S-WMI-6th345 |  | Putty & First Coat of Paint | 10d | 2028-10-24 | 2028-11-04 | 3S-WMI-6th255, 3S-WMI-6th310 | CSD-LKO Calender (6 day + Holiday)-25 | Painting [724 Sq m]; Painter [730 h]; Helper [730 h]; Physical Progress [2530 h]; TATA Projects Ltd-25 | 165,520.88 |
| 3S-WMI-6th425 |  | Wooden Flooring/Flooring | 20d | 2028-11-04 | 2028-11-28 | 3S-WMI-6th345 | CSD-LKO Calender (6 day + Holiday)-25 | ID Work [2529143 INR]; Physical Progress [5060 h]; TATA Projects Ltd-25 | 2,529,143 |
| 3S-WMI-6th430 |  | Railing for staircase | 35d | 2028-11-04 | 2028-12-15 | 3S-WMI-6th255, 3S-WMI-6th345 | CSD-LKO Calender (6 day + Holiday)-25 | ID Work [1138114 INR]; Physical Progress [3790 h]; TATA Projects Ltd-25 | 1,138,114 |
| 3S-WMI-6th550 |  | Fixed Furniture | 8d | 2028-11-28 | 2028-12-07 | 3S-WMI-6th425 | CSD-LKO Calender (6 day + Holiday)-25 | ID Work [2276229 INR]; Physical Progress [2020 h]; TATA Projects Ltd-25 | 2,276,229 |
| 3S-WMI-6th655 |  | False ceiling final finishes | 10d | 2028-12-21 | 2029-01-04 | 3S-WMI-6th450 | CSD-LKO Calender (6 day + Holiday)-25 | ID Work [758743 INR]; Physical Progress [2530 h]; TATA Projects Ltd-25 | 758,743 |
| 3S-WMI-6th685 |  | Final coat of paint | 10d | 2029-01-16 | 2029-01-29 | 3S-WMI-6th655, 3S-WMI-6th430, 3S-WMI-6th550, 3S-WMI-6th615, 3S-WMI-6th525, 3S-WMI-6th530, 3S-WMI-6th620, 3S-WMI-6th665, 3S-WMI-6th640, 3S-WMI-6th635, 3S-WMI-6th630, 3S-WMI-6th540, 3S-WMI-6th535, 3S-WMI-6th340, 3S-WMI-6th415 | CSD-LKO Calender (6 day + Holiday)-25 | Painting [724 Sq m]; Painter [730 h]; Helper [730 h]; Physical Progress [2530 h]; TATA Projects Ltd-25 | 165,520.88 |
| 3S-WMI-6th710 |  | Soft Furnishing & Signage | 15d | 2029-01-29 | 2029-02-16 | 3S-WMI-6th685 | CSD-LKO Calender (6 day + Holiday)-25 | ID Work [3793714 INR]; Physical Progress [760 h]; TATA Projects Ltd-25 | 3,793,714 |
| 3S-WMI-6th715 |  | Loose Furniture | 15d | 2029-01-29 | 2029-02-16 | 3S-WMI-6th685 | CSD-LKO Calender (6 day + Holiday)-25 | ID Work [5058286 INR]; Physical Progress [760 h]; TATA Projects Ltd-25 | 5,058,286 |

| ID | WBS | Activity | Duration | Start | Finish | Predecessors | Calendar | Resources | Cost |
| --- | --- | --- | --- | --- | --- | --- | --- | --- | --- |
|  | 1 | **MEP Final Fix** |  | 2028-10-11 | 2029-01-16 |  |  |  |  |
|  | 3 | **HVAC** |  | 2028-10-11 | 2028-12-21 |  |  |  |  |
| 3S-WMI-6th305 |  | Installing grills, diffusers, dampers | 30d | 2028-10-11 | 2028-11-16 | 3S-WMI-6th275 | CSD-LKO Calender (6 day + Holiday)-25 | Physical Progress [1530 h]; HVAC [371437 INR]; TATA Projects Ltd-25 | 371,437 |
| 3S-WMI-6th450 |  | Installation of thermostats and control panels | 30d | 2028-11-16 | 2028-12-21 | 3S-WMI-6th305, 3S-WMI-6th345 | CSD-LKO Calender (6 day + Holiday)-25 | Physical Progress [1530 h]; HVAC [185719 INR]; TATA Projects Ltd-25 | 185,719 |
|  | 1 | **Electrical** |  | 2028-11-04 | 2029-01-16 |  |  |  |  |
| 3S-WMI-6th405 |  | Switches & Socket | 30d | 2028-11-04 | 2028-12-09 | 3S-WMI-6th345 | CSD-LKO Calender (6 day + Holiday)-25 | Physical Progress [5060 h]; Electrical [415792 INR]; TATA Projects Ltd-25 | 415,792 |
| 3S-WMI-6th615 |  | Light Fixtures | 30d | 2028-12-09 | 2029-01-16 | 3S-WMI-6th405 | CSD-LKO Calender (6 day + Holiday)-25 | Physical Progress [3790 h]; Electrical [623688 INR]; TATA Projects Ltd-25 | 623,688 |
|  | 2 | **Plumbing** |  | 2028-11-04 | 2028-12-28 |  |  |  |  |
| 3S-WMI-6th410 |  | Installation of sanitary fixtures (WC, washbasins, urinals, sinks) | 10d | 2028-11-04 | 2028-11-16 | 3S-WMI-6th345 | CSD-LKO Calender (6 day + Holiday)-25 | Physical Progress [2530 h]; Plumbing [534578 INR]; TATA Projects Ltd-25 | 534,578 |
| 3S-WMI-6th455 |  | Installation of CP fittings (taps, mixers, showers, health faucets) | 10d | 2028-11-16 | 2028-11-28 | 3S-WMI-6th410, 3S-WMI-6th345 | CSD-LKO Calender (6 day + Holiday)-25 | Physical Progress [2530 h]; Plumbing [267289 INR]; TATA Projects Ltd-25 | 267,289 |
| 3S-WMI-6th525 |  | Connection of appliances | 25d | 2028-11-28 | 2028-12-28 | 3S-WMI-6th455 | CSD-LKO Calender (6 day + Holiday)-25 | Physical Progress [1770 h]; Plumbing [133645 INR]; TATA Projects Ltd-25 | 133,645 |
|  | 4 | **Firefighting** |  | 2028-11-04 | 2029-01-10 |  |  |  |  |
| 3S-WMI-6th415 |  | Installation of hydrant accessories (valves, hose reels, cabinets) | 25d | 2028-11-04 | 2028-12-04 | 3S-WMI-6th345 | CSD-LKO Calender (6 day + Holiday)-25 | Physical Progress [2530 h]; Firefighting [139112 INR]; TATA Projects Ltd-25 | 139,112 |
| 3S-WMI-6th420 |  | Installation of portable fire extinguishers | 30d | 2028-11-04 | 2028-12-09 | 3S-WMI-6th345 | CSD-LKO Calender (6 day + Holiday)-25 | Physical Progress [1530 h]; Firefighting [13911 INR]; TATA Projects Ltd-25 | 13,911 |
| 3S-WMI-6th530 |  | Installation of sprinkler heads, nozzles, and final alignment | 35d | 2028-11-28 | 2029-01-10 | 3S-WMI-6th345, 3S-WMI-6th425 | CSD-LKO Calender (6 day + Holiday)-25 | Physical Progress [10120 h]; Firefighting [208668 INR]; TATA Projects Ltd-25 | 208,668 |
| 3S-WMI-6th620 |  | Integration with fire alarm system | 20d | 2028-12-09 | 2029-01-04 | 3S-WMI-6th420 | CSD-LKO Calender (6 day + Holiday)-25 | Physical Progress [5060 h]; Firefighting [69556 INR]; TATA Projects Ltd-25 | 69,556 |
|  | 5 | **ELV** |  | 2028-11-28 | 2029-01-16 |  |  |  |  |
| 3S-WMI-6th535 |  | Installation of data and Voice Faceplate | 25d | 2028-11-28 | 2028-12-28 | 3S-WMI-6th345, 3S-WMI-6th425 | CSD-LKO Calender (6 day + Holiday)-25 | Physical Progress [2530 h]; ELV [55817 INR]; TATA Projects Ltd-25 | 55,817 |
| 3S-WMI-6th540 |  | Installation of Camera & Wifi | 30d | 2028-11-28 | 2029-01-04 | 3S-WMI-6th345, 3S-WMI-6th425 | CSD-LKO Calender (6 day + Holiday)-25 | Physical Progress [2530 h]; ELV [55817 INR]; TATA Projects Ltd-25 | 55,817 |
| 3S-WMI-6th545 |  | Installation of fire alarm devices + Public Address | 10d | 2028-11-28 | 2028-12-09 | 3S-WMI-6th345, 3S-WMI-6th425 | CSD-LKO Calender (6 day + Holiday)-25 | Physical Progress [2530 h]; ELV [66981 INR]; TATA Projects Ltd-25 | 66,981 |
| 3S-WMI-6th625 |  | Installation of Active System | 15d | 2028-12-09 | 2028-12-28 | 3S-WMI-6th545 | CSD-LKO Calender (6 day + Holiday)-25 | Physical Progress [3790 h]; ELV [111635 INR]; TATA Projects Ltd-25 | 111,635 |
| 3S-WMI-6th630 |  | Fire Panel Intallation & Integration | 25d | 2028-12-09 | 2029-01-10 | 3S-WMI-6th545 | CSD-LKO Calender (6 day + Holiday)-25 | Physical Progress [6320 h]; ELV [55817 INR]; TATA Projects Ltd-25 | 55,817 |
| 3S-WMI-6th635 |  | Installation & Integration of Audio Visual System | 25d | 2028-12-09 | 2029-01-10 | 3S-WMI-6th545 | CSD-LKO Calender (6 day + Holiday)-25 | Physical Progress [6320 h]; ELV [55817 INR]; TATA Projects Ltd-25 | 55,817 |
| 3S-WMI-6th640 |  | Installation & Integration of Access Control | 25d | 2028-12-09 | 2029-01-10 | 3S-WMI-6th545 | CSD-LKO Calender (6 day + Holiday)-25 | Physical Progress [6320 h]; ELV [55817 INR]; TATA Projects Ltd-25 | 55,817 |
| 3S-WMI-6th665 |  | Integration of Active components | 15d | 2028-12-28 | 2029-01-16 | 3S-WMI-6th625 | CSD-LKO Calender (6 day + Holiday)-25 | Physical Progress [3790 h]; ELV [22327 INR]; TATA Projects Ltd-25 | 22,327 |

| ID | WBS | Activity | Duration | Start | Finish | Predecessors | Calendar | Resources | Cost |
| --- | --- | --- | --- | --- | --- | --- | --- | --- | --- |
|  | 4 | **Side Face** |  | 2028-09-02 | 2029-02-16 |  |  |  |  |
|  | 2 | **Dry Finishes/ID Works** |  | 2028-09-02 | 2029-02-16 |  |  |  |  |
| 3S-WMI-6th235 |  | Running of Wild Air | 1d | 2028-09-02 | 2028-09-04 | 3S-F-6th50, 3S-WMI-6th140, 3S-WMI-6th170, 3S-WMI-6th185, 3S-WMI-6th220, 3S-WMI-6th315 | CSD-LKO Calender (6 day + Holiday)-25 | Physical Progress [250 h]; TATA Projects Ltd-25 |  |
| 3S-WMI-6th245 |  | Wall finish ID Works | 10d | 2028-09-04 | 2028-09-15 | 3S-WMI-6th235, 3S-WMI-6th140, 3S-WMI-6th170, 3S-WMI-6th185, 3S-WMI-6th220, 3S-WMI-6th315, 3S-WMI-6th115, 3S-WMI-6th155, 3S-WMI-6th205, 3S-WMI-6th210, 3S-WMI-6th225, 3S-WMI-6th280, 3S-WMI-6th110, 3S-WMI-6th120, 3S-WMI-6th145, 3S-WMI-6th160, 3S-WMI-6th175, 3S-WMI-6th180, 3S-WMI-6th190, 3S-WMI-6th200, 3S-WMI-6th125, 3S-WMI-6th165, 3S-WMI-6th195, 3S-WMI-6th215, 3S-WMI-6th260 | CSD-LKO Calender (6 day + Holiday)-25 | ID Work [2529143 INR]; Physical Progress [2530 h]; TATA Projects Ltd-25 | 2,529,143 |
| 3S-WMI-6th270 |  | False Ceiling Installation | 20d | 2028-09-15 | 2028-10-11 | 3S-WMI-6th245 | CSD-LKO Calender (6 day + Holiday)-25 | ID Work [3034971 INR]; Physical Progress [5060 h]; TATA Projects Ltd-25 | 3,034,971 |
| 3S-WMI-6th300 |  | Flooring of toilets/kitchen/Balcony | 10d | 2028-10-11 | 2028-10-24 | 3S-WMI-6th270, 3S-WMI-6th55 | CSD-LKO Calender (6 day + Holiday)-25 | ID Work [2023314 INR]; Physical Progress [2530 h]; TATA Projects Ltd-25 | 2,023,314 |
| 3S-WMI-6th330 |  | Doors & Windows/Fire Doors/Shaft Doors | 35d | 2028-10-24 | 2028-12-04 | 3S-WMI-6th245, 3S-WMI-6th300 | CSD-LKO Calender (6 day + Holiday)-25 | ID Work [2529143 INR]; Physical Progress [2530 h]; TATA Projects Ltd-25 | 2,529,143 |
| 3S-WMI-6th335 |  | Putty & First Coat of Paint | 10d | 2028-10-24 | 2028-11-04 | 3S-WMI-6th245, 3S-WMI-6th300 | CSD-LKO Calender (6 day + Holiday)-25 | Painting [724 Sq m]; Painter [730 h]; Helper [730 h]; Physical Progress [2530 h]; TATA Projects Ltd-25 | 165,520.88 |
| 3S-WMI-6th395 |  | Wooden Flooring/Flooring | 20d | 2028-11-04 | 2028-11-28 | 3S-WMI-6th335 | CSD-LKO Calender (6 day + Holiday)-25 | ID Work [2529143 INR]; Physical Progress [5060 h]; TATA Projects Ltd-25 | 2,529,143 |
| 3S-WMI-6th400 |  | Railing for staircase | 35d | 2028-11-04 | 2028-12-15 | 3S-WMI-6th245, 3S-WMI-6th335 | CSD-LKO Calender (6 day + Holiday)-25 | ID Work [1138114 INR]; Physical Progress [3790 h]; TATA Projects Ltd-25 | 1,138,114 |
| 3S-WMI-6th515 |  | Fixed Furniture | 8d | 2028-11-28 | 2028-12-07 | 3S-WMI-6th395 | CSD-LKO Calender (6 day + Holiday)-25 | ID Work [2276229 INR]; Physical Progress [2020 h]; TATA Projects Ltd-25 | 2,276,229 |
| 3S-WMI-6th645 |  | False ceiling final finishes | 10d | 2028-12-21 | 2029-01-04 | 3S-WMI-6th440 | CSD-LKO Calender (6 day + Holiday)-25 | ID Work [758743 INR]; Physical Progress [2530 h]; TATA Projects Ltd-25 | 758,743 |
| 3S-WMI-6th675 |  | Final coat of paint | 10d | 2029-01-16 | 2029-01-29 | 3S-WMI-6th645, 3S-WMI-6th400, 3S-WMI-6th515, 3S-WMI-6th585, 3S-WMI-6th490, 3S-WMI-6th495, 3S-WMI-6th590, 3S-WMI-6th660, 3S-WMI-6th610, 3S-WMI-6th605, 3S-WMI-6th600, 3S-WMI-6th505, 3S-WMI-6th500, 3S-WMI-6th330 | CSD-LKO Calender (6 day + Holiday)-25 | Painting [724 Sq m]; Painter [730 h]; Helper [730 h]; Physical Progress [2530 h]; TATA Projects Ltd-25 | 165,520.88 |
| 3S-WMI-6th690 |  | Soft Furnishing & Signage | 15d | 2029-01-29 | 2029-02-16 | 3S-WMI-6th675 | CSD-LKO Calender (6 day + Holiday)-25 | ID Work [3793714 INR]; Physical Progress [760 h]; TATA Projects Ltd-25 | 3,793,714 |
| 3S-WMI-6th695 |  | Loose Furniture | 15d | 2029-01-29 | 2029-02-16 | 3S-WMI-6th675 | CSD-LKO Calender (6 day + Holiday)-25 | ID Work [5058286 INR]; Physical Progress [760 h]; TATA Projects Ltd-25 | 5,058,286 |
|  | 1 | **MEP Final Fix** |  | 2028-10-11 | 2029-01-16 |  |  |  |  |
|  | 3 | **HVAC** |  | 2028-10-11 | 2028-12-21 |  |  |  |  |
| 3S-WMI-6th295 |  | Installing grills, diffusers, dampers | 30d | 2028-10-11 | 2028-11-16 | 3S-WMI-6th270 | CSD-LKO Calender (6 day + Holiday)-25 | Physical Progress [1530 h]; HVAC [371437 INR]; TATA Projects Ltd-25 | 371,437 |
| 3S-WMI-6th440 |  | Installation of thermostats and control panels | 30d | 2028-11-16 | 2028-12-21 | 3S-WMI-6th295, 3S-WMI-6th335 | CSD-LKO Calender (6 day + Holiday)-25 | Physical Progress [1530 h]; HVAC [185719 INR]; TATA Projects Ltd-25 | 185,719 |
|  | 1 | **Electrical** |  | 2028-11-04 | 2029-01-16 |  |  |  |  |
| 3S-WMI-6th375 |  | Switches & Socket | 30d | 2028-11-04 | 2028-12-09 | 3S-WMI-6th335 | CSD-LKO Calender (6 day + Holiday)-25 | Physical Progress [5060 h]; Electrical [415792 INR]; TATA Projects Ltd-25 | 415,792 |
| 3S-WMI-6th585 |  | Light Fixtures | 30d | 2028-12-09 | 2029-01-16 | 3S-WMI-6th375 | CSD-LKO Calender (6 day + Holiday)-25 | Physical Progress [3790 h]; Electrical [623688 INR]; TATA Projects Ltd-25 | 623,688 |
|  | 2 | **Plumbing** |  | 2028-11-04 | 2028-12-28 |  |  |  |  |
| 3S-WMI-6th380 |  | Installation of sanitary fixtures (WC, washbasins, urinals, sinks) | 10d | 2028-11-04 | 2028-11-16 | 3S-WMI-6th335 | CSD-LKO Calender (6 day + Holiday)-25 | Physical Progress [2530 h]; Plumbing [534578 INR]; TATA Projects Ltd-25 | 534,578 |
| 3S-WMI-6th445 |  | Installation of CP fittings (taps, mixers, showers, health faucets) | 10d | 2028-11-16 | 2028-11-28 | 3S-WMI-6th380, 3S-WMI-6th335 | CSD-LKO Calender (6 day + Holiday)-25 | Physical Progress [2530 h]; Plumbing [267289 INR]; TATA Projects Ltd-25 | 267,289 |
| 3S-WMI-6th490 |  | Connection of appliances | 25d | 2028-11-28 | 2028-12-28 | 3S-WMI-6th445 | CSD-LKO Calender (6 day + Holiday)-25 | Physical Progress [1770 h]; Plumbing [133645 INR]; TATA Projects Ltd-25 | 133,645 |

| ID | WBS | Activity | Duration | Start | Finish | Predecessors | Calendar | Resources | Cost |
| --- | --- | --- | --- | --- | --- | --- | --- | --- | --- |
|  | 4 | **Firefighting** |  | 2028-11-04 | 2029-01-10 |  |  |  |  |
| 3S-WMI-6th385 |  | Installation of hydrant accessories (valves, hose reels, cabinets) | 25d | 2028-11-04 | 2028-12-04 | 3S-WMI-6th335 | CSD-LKO Calender (6 day + Holiday)-25 | Physical Progress [2530 h]; Firefighting [139112 INR]; TATA Projects Ltd-25 | 139,112 |
| 3S-WMI-6th390 |  | Installation of portable fire extinguishers | 30d | 2028-11-04 | 2028-12-09 | 3S-WMI-6th335 | CSD-LKO Calender (6 day + Holiday)-25 | Physical Progress [1530 h]; Firefighting [13911 INR]; TATA Projects Ltd-25 | 13,911 |
| 3S-WMI-6th495 |  | Installation of sprinkler heads, nozzles, and final alignment | 35d | 2028-11-28 | 2029-01-10 | 3S-WMI-6th335, 3S-WMI-6th395 | CSD-LKO Calender (6 day + Holiday)-25 | Physical Progress [10120 h]; Firefighting [208668 INR]; TATA Projects Ltd-25 | 208,668 |
| 3S-WMI-6th590 |  | Integration with fire alarm system | 20d | 2028-12-09 | 2029-01-04 | 3S-WMI-6th390 | CSD-LKO Calender (6 day + Holiday)-25 | Physical Progress [5060 h]; Firefighting [69556 INR]; TATA Projects Ltd-25 | 69,556 |
|  | 5 | **ELV** |  | 2028-11-28 | 2029-01-16 |  |  |  |  |
| 3S-WMI-6th500 |  | Installation of data and Voice Faceplate | 25d | 2028-11-28 | 2028-12-28 | 3S-WMI-6th335, 3S-WMI-6th395 | CSD-LKO Calender (6 day + Holiday)-25 | Physical Progress [2530 h]; ELV [55817 INR]; TATA Projects Ltd-25 | 55,817 |
| 3S-WMI-6th505 |  | Installation of Camera & Wifi | 30d | 2028-11-28 | 2029-01-04 | 3S-WMI-6th335, 3S-WMI-6th395 | CSD-LKO Calender (6 day + Holiday)-25 | Physical Progress [2530 h]; ELV [55817 INR]; TATA Projects Ltd-25 | 55,817 |
| 3S-WMI-6th510 |  | Installation of fire alarm devices + Public Address | 10d | 2028-11-28 | 2028-12-09 | 3S-WMI-6th335, 3S-WMI-6th395 | CSD-LKO Calender (6 day + Holiday)-25 | Physical Progress [2530 h]; ELV [66981 INR]; TATA Projects Ltd-25 | 66,981 |
| 3S-WMI-6th595 |  | Installation of Active System | 15d | 2028-12-09 | 2028-12-28 | 3S-WMI-6th510 | CSD-LKO Calender (6 day + Holiday)-25 | Physical Progress [3790 h]; ELV [111635 INR]; TATA Projects Ltd-25 | 111,635 |
| 3S-WMI-6th600 |  | Fire Panel Intallation & Integration | 25d | 2028-12-09 | 2029-01-10 | 3S-WMI-6th510 | CSD-LKO Calender (6 day + Holiday)-25 | Physical Progress [6320 h]; ELV [55817 INR]; TATA Projects Ltd-25 | 55,817 |
| 3S-WMI-6th605 |  | Installation & Integration of Audio Visual System | 25d | 2028-12-09 | 2029-01-10 | 3S-WMI-6th510 | CSD-LKO Calender (6 day + Holiday)-25 | Physical Progress [6320 h]; ELV [55817 INR]; TATA Projects Ltd-25 | 55,817 |
| 3S-WMI-6th610 |  | Installation & Integration of Access Control | 25d | 2028-12-09 | 2029-01-10 | 3S-WMI-6th510 | CSD-LKO Calender (6 day + Holiday)-25 | Physical Progress [6320 h]; ELV [55817 INR]; TATA Projects Ltd-25 | 55,817 |
| 3S-WMI-6th660 |  | Integration of Active components | 15d | 2028-12-28 | 2029-01-16 | 3S-WMI-6th595 | CSD-LKO Calender (6 day + Holiday)-25 | Physical Progress [3790 h]; ELV [22327 INR]; TATA Projects Ltd-25 | 22,327 |
|  | 9 | **Seventh Floor** |  | 2028-01-10 | 2029-04-19 |  |  |  |  |
|  | 1 | **Wet Finishes** |  | 2028-01-10 | 2028-03-03 |  |  |  |  |
| 3S-WMI-7th10 |  | Deshuttering | 3d | 2028-01-10 | 2028-01-13 | 3S-SS-Roof40 | CSD-LKO Calender (6 day + Holiday)-25 | Physical Progress [760 h]; TATA Projects Ltd-25 |  |
| 3S-WMI-7th15 |  | Brickwork/Blockwork | 14d | 2028-01-13 | 2028-01-31 | 3S-WMI-7th10, E-GFC-AR-3S-305 | CSD-LKO Calender (6 day + Holiday)-25 | Masonry [446 CuM]; Mason [2980 h]; Helper [1490 h]; Physical Progress [3790 h]; TATA Projects Ltd-25 | 4,252,770.56 |
| 3S-WMI-7th55 |  | Waterproofing of Toilets, Balcony & Kitchen | 15d | 2028-01-31 | 2028-02-17 | 3S-WMI-7th15 | CSD-LKO Calender (6 day + Holiday)-25 | Waterproofing [8564838 INR]; Waterprrofing Mason [8160 h]; Helper [4080 h]; Physical Progress [3790 h]; TATA Projects Ltd-25 | 8,564,838 |
| 3S-WMI-7th80 |  | Plaster | 9d | 2028-02-22 | 2028-03-03 | 3S-WMI-7th30, 3S-WMI-7th70, 3S-WMI-7th75 | CSD-LKO Calender (6 day + Holiday)-25 | Plaster [7060 Sqr Mtr]; Mason [4710 h]; Helper [2360 h]; Physical Progress [2020 h]; TATA Projects Ltd-25 | 3,910,604.6 |
|  | 5 | **MEP 1st Fix, 2nd Fix** |  | 2028-01-13 | 2028-09-25 |  |  |  |  |
|  | 2 | **HVAC** |  | 2028-01-31 | 2028-08-22 |  |  |  |  |
|  | 1 | **1st Fix** |  | 2028-01-31 | 2028-05-25 |  |  |  |  |
| 3S-WMI-7th50 |  | Duct Support Fabrication | 35d | 2028-01-31 | 2028-03-13 | 3S-WMI-7th15, E-GFC-MEP-3S-300 | CSD-LKO Calender (6 day + Holiday)-25 | Physical Progress [3790 h]; HVAC [222862 INR]; TATA Projects Ltd-25 | 222,862 |
| 3S-WMI-7th110 |  | Installing duct hangers and supports | 30d | 2028-03-13 | 2028-04-18 | 3S-WMI-7th50, E-GFC-MEP-3S-300 | CSD-LKO Calender (6 day + Holiday)-25 | Physical Progress [2530 h]; HVAC [445725 INR]; TATA Projects Ltd-25 | 445,725 |
| 3S-WMI-7th140 |  | Laying concealed/exposed refrigerant piping | 30d | 2028-04-18 | 2028-05-25 | 3S-WMI-7th110, E-GFC-MEP-3S-300 | CSD-LKO Calender (6 day + Holiday)-25 | Physical Progress [3790 h]; HVAC [111431 INR]; TATA Projects Ltd-25 | 111,431 |
| 3S-WMI-7th145 |  | Laying concealed/exposed drain piping | 30d | 2028-04-18 | 2028-05-25 | 3S-WMI-7th110, E-GFC-MEP-3S-300 | CSD-LKO Calender (6 day + Holiday)-25 | Physical Progress [2530 h]; HVAC [668587 INR]; TATA Projects Ltd-25 | 668,587 |

| ID | WBS | Activity | Duration | Start | Finish | Predecessors | Calendar | Resources | Cost |
| --- | --- | --- | --- | --- | --- | --- | --- | --- | --- |
|  | 2 | **2nd Fix** |  | 2028-04-18 | 2028-08-22 |  |  |  |  |
| 3S-WMI-7th150 |  | Duct installation | 20d | 2028-04-18 | 2028-05-13 | 3S-WMI-7th110 | CSD-LKO Calender (6 day + Holiday)-25 | Physical Progress [3790 h]; HVAC [1671468 INR]; TATA Projects Ltd-25 | 1,671,468 |
| 3S-WMI-7th170 |  | Insulation of ducts (thermal/acoustic) | 10d | 2028-05-13 | 2028-05-25 | 3S-WMI-7th150 | CSD-LKO Calender (6 day + Holiday)-25 | Physical Progress [1530 h]; HVAC [1002881 INR]; TATA Projects Ltd-25 | 1,002,881 |
| 3S-WMI-7th200 |  | Installation of chilled water piping / VRF piping | 20d | 2028-05-25 | 2028-06-17 | 3S-WMI-7th170 | CSD-LKO Calender (6 day + Holiday)-25 | Physical Progress [1530 h]; HVAC [2228625 INR]; TATA Projects Ltd-25 | 2,228,625 |
| 3S-WMI-7th225 |  | Installation of indoor units including AHU, FCU | 35d | 2028-06-17 | 2028-07-28 | 3S-WMI-7th200, 3S-WMI-7th140, 3S-WMI-7th145 | CSD-LKO Calender (6 day + Holiday)-25 | Physical Progress [11380 h]; HVAC [2005762 INR]; TATA Projects Ltd-25 | 2,005,762 |
| 3S-WMI-7th280 |  | Connecting refrigerant and drain piping to indoor units | 20d | 2028-07-28 | 2028-08-22 | 3S-WMI-7th225 | CSD-LKO Calender (6 day + Holiday)-25 | Physical Progress [1530 h]; HVAC [557156 INR]; TATA Projects Ltd-25 | 557,156 |
|  | 1 | **Electrical** |  | 2028-01-13 | 2028-07-26 |  |  |  |  |
|  | 1 | **1st Fix** |  | 2028-01-13 | 2028-02-22 |  |  |  |  |
| 3S-WMI-7th25 |  | Slab Conduiting | 30d | 2028-01-13 | 2028-02-18 | 3S-WMI-7th10, E-GFC-MEP-3S-300 | CSD-LKO Calender (6 day + Holiday)-25 | Physical Progress [6320 h]; Electrical [1247377 INR]; TATA Projects Ltd-25 | 1,247,377 |
| 3S-WMI-7th30 |  | Wall Conduiting | 15d | 2028-01-31 | 2028-02-17 | 3S-WMI-7th15, E-GFC-MEP-3S-300 | CSD-LKO Calender (6 day + Holiday)-25 | Physical Progress [1770 h]; Electrical [623688 INR]; TATA Projects Ltd-25 | 623,688 |
| 3S-WMI-7th70 |  | Installing back boxes for switches, sockets | 3d | 2028-02-18 | 2028-02-22 | 3S-WMI-7th30, 3S-WMI-7th25, E-GFC-MEP-3S-300 | CSD-LKO Calender (6 day + Holiday)-25 | Physical Progress [760 h]; Electrical [374213 INR]; TATA Projects Ltd-25 | 374,213 |
|  | 2 | **2nd Fix** |  | 2028-03-03 | 2028-07-26 |  |  |  |  |
| 3S-WMI-7th90 |  | Cable tray laying | 25d | 2028-03-03 | 2028-04-03 | 3S-WMI-7th80 | CSD-LKO Calender (6 day + Holiday)-25 | Physical Progress [6320 h]; Electrical [498951 INR]; TATA Projects Ltd-25 | 498,951 |
| 3S-WMI-7th130 |  | Cabling & Wire Pulling | 35d | 2028-04-03 | 2028-05-17 | 3S-WMI-7th90 | CSD-LKO Calender (6 day + Holiday)-25 | Physical Progress [11380 h]; Electrical [2494753 INR]; TATA Projects Ltd-25 | 2,494,753 |
| 3S-WMI-7th190 |  | DB fixing and connecting | 20d | 2028-05-17 | 2028-06-09 | 3S-WMI-7th130 | CSD-LKO Calender (6 day + Holiday)-25 | Physical Progress [3790 h]; Electrical [374213 INR]; TATA Projects Ltd-25 | 374,213 |
| 3S-WMI-7th195 |  | Floor Rising Main Installation | 20d | 2028-05-17 | 2028-06-09 | 3S-WMI-7th130 | CSD-LKO Calender (6 day + Holiday)-25 | Physical Progress [1280 h]; Electrical [1746327 INR]; TATA Projects Ltd-25 | 1,746,327 |
| 3S-WMI-7th220 |  | Floor/Distribution Panel Installation | 20d | 2028-06-09 | 2028-07-03 | 3S-WMI-7th190 | CSD-LKO Calender (6 day + Holiday)-25 | Physical Progress [1280 h]; Electrical [997901 INR]; TATA Projects Ltd-25 | 997,901 |
| 3S-WMI-7th235 |  | Equipment Earthing | 20d | 2028-07-03 | 2028-07-26 | 3S-WMI-7th220, 3S-WMI-7th195 | CSD-LKO Calender (6 day + Holiday)-25 | Physical Progress [2530 h]; Electrical [374213 INR]; TATA Projects Ltd-25 | 374,213 |
|  | 3 | **Plumbing** |  | 2028-01-31 | 2028-09-21 |  |  |  |  |
|  | 1 | **1st Fix** |  | 2028-01-31 | 2028-07-05 |  |  |  |  |
| 3S-WMI-7th35 |  | Fixing pipe supports and clamps | 35d | 2028-01-31 | 2028-03-13 | 3S-WMI-7th15, E-GFC-MEP-3S-300 | CSD-LKO Calender (6 day + Holiday)-25 | Physical Progress [2530 h]; Plumbing [400934 INR]; TATA Projects Ltd-25 | 400,934 |
| 3S-WMI-7th60 |  | Laying water supply pipes (hot & cold) | 35d | 2028-03-13 | 2028-04-24 | 3S-WMI-7th35, E-GFC-MEP-3S-300 | CSD-LKO Calender (6 day + Holiday)-25 | Physical Progress [3790 h]; Plumbing [801867 INR]; TATA Projects Ltd-25 | 801,867 |
| 3S-WMI-7th65 |  | Laying drainage pipes (soil, waste, vent) | 35d | 2028-03-13 | 2028-04-24 | 3S-WMI-7th35, E-GFC-MEP-3S-300 | CSD-LKO Calender (6 day + Holiday)-25 | Physical Progress [3790 h]; Plumbing [801867 INR]; TATA Projects Ltd-25 | 801,867 |
| 3S-WMI-7th85 |  | Installation of plumbing fixture base supports (WC frames, sink brackets) | 30d | 2028-04-24 | 2028-05-31 | 3S-WMI-7th65, E-GFC-MEP-3S-300 | CSD-LKO Calender (6 day + Holiday)-25 | Physical Progress [1530 h]; Plumbing [400934 INR]; TATA Projects Ltd-25 | 400,934 |
| 3S-WMI-7th100 |  | Pressure testing of water supply lines | 25d | 2028-05-31 | 2028-06-29 | 3S-WMI-7th60, 3S-WMI-7th65, 3S-WMI-7th85, E-GFC-MEP-3S-300 | CSD-LKO Calender (6 day + Holiday)-25 | Physical Progress [1770 h]; Plumbing [80187 INR]; TATA Projects Ltd-25 | 80,187 |
| 3S-WMI-7th105 |  | Installation of concealed parts of toilet fixtures | 30d | 2028-05-31 | 2028-07-05 | 3S-WMI-7th85, E-GFC-MEP-3S-300 | CSD-LKO Calender (6 day + Holiday)-25 | Physical Progress [2530 h]; Plumbing [400934 INR]; TATA Projects Ltd-25 | 400,934 |

| ID | WBS | Activity | Duration | Start | Finish | Predecessors | Calendar | Resources | Cost |
| --- | --- | --- | --- | --- | --- | --- | --- | --- | --- |
|  | 2 | **2nd FIx** |  | 2028-06-29 | 2028-09-21 |  |  |  |  |
| 3S-WMI-7th120 |  | Insulation of hot water pipes (if applicable) | 30d | 2028-06-29 | 2028-08-03 | 3S-WMI-7th100 | CSD-LKO Calender (6 day + Holiday)-25 | Physical Progress [1530 h]; Plumbing [400934 INR]; TATA Projects Ltd-25 | 400,934 |
| 3S-WMI-7th125 |  | Installation of vertical risers and main distribution lines | 35d | 2028-07-05 | 2028-08-16 | 3S-WMI-7th80, 3S-WMI-7th100, 3S-WMI-7th105 | CSD-LKO Calender (6 day + Holiday)-25 | Physical Progress [5060 h]; Plumbing [801867 INR]; TATA Projects Ltd-25 | 801,867 |
| 3S-WMI-7th155 |  | Testing drainage lines for leakage/blockage | 30d | 2028-08-03 | 2028-09-09 | 3S-WMI-7th85, 3S-WMI-7th120 | CSD-LKO Calender (6 day + Holiday)-25 | Physical Progress [1530 h]; Plumbing [80187 INR]; TATA Projects Ltd-25 | 80,187 |
| 3S-WMI-7th165 |  | Fixing floor traps and gully traps | 30d | 2028-08-16 | 2028-09-21 | 3S-WMI-7th125 | CSD-LKO Calender (6 day + Holiday)-25 | Physical Progress [1530 h]; Plumbing [240560 INR]; TATA Projects Ltd-25 | 240,560 |
|  | 4 | **Firefighting** |  | 2028-01-31 | 2028-08-22 |  |  |  |  |
|  | 1 | **1st Fix** |  | 2028-01-31 | 2028-05-31 |  |  |  |  |
| 3S-WMI-7th40 |  | Fixing pipe supports and hangers | 35d | 2028-01-31 | 2028-03-13 | 3S-WMI-7th15, E-GFC-MEP-3S-300 | CSD-LKO Calender (6 day + Holiday)-25 | Physical Progress [2530 h]; Firefighting [292135 INR]; TATA Projects Ltd-25 | 292,135 |
| 3S-WMI-7th115 |  | Laying branch piping | 35d | 2028-03-13 | 2028-04-24 | 3S-WMI-7th40, E-GFC-MEP-3S-300 | CSD-LKO Calender (6 day + Holiday)-25 | Physical Progress [3790 h]; Firefighting [626004 INR]; TATA Projects Ltd-25 | 626,004 |
| 3S-WMI-7th160 |  | Hydrostatic pressure testing of piping | 30d | 2028-04-24 | 2028-05-31 | 3S-WMI-7th115, E-GFC-MEP-3S-300 | CSD-LKO Calender (6 day + Holiday)-25 | Physical Progress [1530 h]; Firefighting [83467 INR]; TATA Projects Ltd-25 | 83,467 |
|  | 2 | **2nd Fix** |  | 2028-05-31 | 2028-08-22 |  |  |  |  |
| 3S-WMI-7th175 |  | Installation of vertical risers and distribution piping in shafts | 35d | 2028-05-31 | 2028-07-11 | 3S-WMI-7th80, 3S-WMI-7th160 | CSD-LKO Calender (6 day + Holiday)-25 | Physical Progress [6320 h]; Firefighting [834672 INR]; TATA Projects Ltd-25 | 834,672 |
| 3S-WMI-7th180 |  | Painting/insulation of exposed fire pipes | 30d | 2028-05-31 | 2028-07-05 | 3S-WMI-7th160 | CSD-LKO Calender (6 day + Holiday)-25 | Physical Progress [2530 h]; Firefighting [41734 INR]; TATA Projects Ltd-25 | 41,734 |
| 3S-WMI-7th205 |  | Testing risers and branch lines for leakage | 30d | 2028-07-05 | 2028-08-09 | 3S-WMI-7th180 | CSD-LKO Calender (6 day + Holiday)-25 | Physical Progress [1530 h]; Firefighting [83467 INR]; TATA Projects Ltd-25 | 83,467 |
| 3S-WMI-7th210 |  | Installation of sprinkler branch lines in ceilings | 35d | 2028-07-11 | 2028-08-22 | 3S-WMI-7th175 | CSD-LKO Calender (6 day + Holiday)-25 | Physical Progress [6320 h]; Firefighting [626004 INR]; TATA Projects Ltd-25 | 626,004 |
|  | 5 | **ELV** |  | 2028-01-13 | 2028-09-25 |  |  |  |  |
|  | 1 | **1st Fix** |  | 2028-01-13 | 2028-02-22 |  |  |  |  |
| 3S-WMI-7th20 |  | Slab Conduiting | 30d | 2028-01-13 | 2028-02-18 | 3S-WMI-7th10, E-GFC-MEP-3S-300 | CSD-LKO Calender (6 day + Holiday)-25 | Physical Progress [6320 h]; ELV [234433 INR]; TATA Projects Ltd-25 | 234,433 |
| 3S-WMI-7th45 |  | Wall Conduiting | 15d | 2028-01-31 | 2028-02-17 | 3S-WMI-7th15, E-GFC-MEP-3S-300 | CSD-LKO Calender (6 day + Holiday)-25 | Physical Progress [1770 h]; ELV [100471 INR]; TATA Projects Ltd-25 | 100,471 |
| 3S-WMI-7th75 |  | Installing back boxes for switches, sockets | 3d | 2028-02-18 | 2028-02-22 | 3S-WMI-7th45, 3S-WMI-7th20, E-GFC-MEP-3S-300 | CSD-LKO Calender (6 day + Holiday)-25 | Physical Progress [760 h]; ELV [167452 INR]; TATA Projects Ltd-25 | 167,452 |
|  | 2 | **2nd Fix** |  | 2028-03-03 | 2028-09-25 |  |  |  |  |
| 3S-WMI-7th95 |  | Cable tray installation | 35d | 2028-03-03 | 2028-04-15 | 3S-WMI-7th80 | CSD-LKO Calender (6 day + Holiday)-25 | Physical Progress [6320 h]; ELV [167452 INR]; TATA Projects Ltd-25 | 167,452 |
| 3S-WMI-7th135 |  | Cabeling of ELV cable - IT/Fire Alarm/Public Address | 45d | 2028-04-15 | 2028-06-09 | 3S-WMI-7th95 | CSD-LKO Calender (6 day + Holiday)-25 | Physical Progress [11380 h]; ELV [401885 INR]; TATA Projects Ltd-25 | 401,885 |
| 3S-WMI-7th185 |  | ELV Rack Installation | 30d | 2028-06-09 | 2028-07-14 | 3S-WMI-7th135 | CSD-LKO Calender (6 day + Holiday)-25 | Physical Progress [2530 h]; ELV [167452 INR]; TATA Projects Ltd-25 | 167,452 |
| 3S-WMI-7th215 |  | Termination of cables at junction boxes, patch panels, and control panels | 35d | 2028-07-14 | 2028-08-26 | 3S-WMI-7th185 | CSD-LKO Calender (6 day + Holiday)-25 | Physical Progress [7590 h]; ELV [167452 INR]; TATA Projects Ltd-25 | 167,452 |
| 3S-WMI-7th230 |  | Fixing devices like CCTV camera bases, card reader bases, smoke detector bases, PA Bases, Wifi Bases | 25d | 2028-08-26 | 2028-09-25 | 3S-WMI-7th215 | CSD-LKO Calender (6 day + Holiday)-25 | Physical Progress [1020 h]; ELV [334904 INR]; TATA Projects Ltd-25 | 334,904 |

| ID | WBS | Activity | Duration | Start | Finish | Predecessors | Calendar | Resources | Cost |
| --- | --- | --- | --- | --- | --- | --- | --- | --- | --- |
|  | 3 | **Front Face - Toward Airport** |  | 2028-10-11 | 2029-04-13 |  |  |  |  |
|  | 2 | **Dry Finishes/ID Works** |  | 2028-10-11 | 2029-04-13 |  |  |  |  |
| 3S-WMI-7th250 |  | Running of Wild Air | 1d | 2028-10-11 | 2028-10-12 | 3S-F-7th40, 3S-WMI-7th150, 3S-WMI-7th170, 3S-WMI-7th200, 3S-WMI-7th225, 3S-WMI-7th280 | CSD-LKO Calender (6 day + Holiday)-25 | Physical Progress [250 h]; TATA Projects Ltd-25 |  |
| 3S-WMI-7th255 |  | Wall finish ID Works | 25d | 2028-10-12 | 2028-11-11 | 3S-WMI-7th250, 3S-WMI-7th150, 3S-WMI-7th170, 3S-WMI-7th200, 3S-WMI-7th225, 3S-WMI-7th280, 3S-WMI-7th90, 3S-WMI-7th130, 3S-WMI-7th190, 3S-WMI-7th195, 3S-WMI-7th220, 3S-WMI-7th235, 3S-WMI-7th120, 3S-WMI-7th125, 3S-WMI-7th155, 3S-WMI-7th165, 3S-WMI-7th175, 3S-WMI-7th180, 3S-WMI-7th205, 3S-WMI-7th210, 3S-WMI-7th95, 3S-WMI-7th135, 3S-WMI-7th185, 3S-WMI-7th215, 3S-WMI-7th230 | CSD-LKO Calender (6 day + Holiday)-25 | ID Work [2529143 INR]; Physical Progress [2530 h]; TATA Projects Ltd-25 | 2,529,143 |
| 3S-WMI-7th275 |  | False Ceiling Installation | 20d | 2028-11-11 | 2028-12-05 | 3S-WMI-7th255 | CSD-LKO Calender (6 day + Holiday)-25 | ID Work [3034971 INR]; Physical Progress [5060 h]; TATA Projects Ltd-25 | 3,034,971 |
| 3S-WMI-7th305 |  | Flooring of toilets/kitchen/Balcony | 10d | 2028-12-05 | 2028-12-16 | 3S-WMI-7th55, 3S-WMI-7th275 | CSD-LKO Calender (6 day + Holiday)-25 | ID Work [2023314 INR]; Physical Progress [2530 h]; TATA Projects Ltd-25 | 2,023,314 |
| 3S-WMI-7th330 |  | Doors & Windows/Fire Doors/Shaft Doors | 35d | 2028-12-16 | 2029-01-30 | 3S-WMI-7th255, 3S-WMI-7th305 | CSD-LKO Calender (6 day + Holiday)-25 | ID Work [2529143 INR]; Physical Progress [2530 h]; TATA Projects Ltd-25 | 2,529,143 |
| 3S-WMI-7th335 |  | Putty & First Coat of Paint | 10d | 2028-12-16 | 2028-12-29 | 3S-WMI-7th255, 3S-WMI-7th305 | CSD-LKO Calender (6 day + Holiday)-25 | Painting [724 Sq m]; Painter [730 h]; Helper [730 h]; Physical Progress [2530 h]; TATA Projects Ltd-25 | 165,520.88 |
| 3S-WMI-7th400 |  | Wooden Flooring/Flooring | 20d | 2028-12-29 | 2029-01-23 | 3S-WMI-7th335 | CSD-LKO Calender (6 day + Holiday)-25 | ID Work [2529143 INR]; Physical Progress [5060 h]; TATA Projects Ltd-25 | 2,529,143 |
| 3S-WMI-7th520 |  | Fixed Furniture | 8d | 2029-01-23 | 2029-02-02 | 3S-WMI-7th400 | CSD-LKO Calender (6 day + Holiday)-25 | ID Work [2276229 INR]; Physical Progress [2020 h]; TATA Projects Ltd-25 | 2,276,229 |
| 3S-WMI-7th650 |  | False ceiling final finishes | 10d | 2029-02-17 | 2029-03-02 | 3S-WMI-7th445 | CSD-LKO Calender (6 day + Holiday)-25 | ID Work [758743 INR]; Physical Progress [2530 h]; TATA Projects Ltd-25 | 758,743 |
| 3S-WMI-7th680 |  | Final coat of paint | 10d | 2029-03-14 | 2029-03-26 | 3S-WMI-7th650, 3S-WMI-7th520, 3S-WMI-7th585, 3S-WMI-7th495, 3S-WMI-7th500, 3S-WMI-7th590, 3S-WMI-7th660, 3S-WMI-7th610, 3S-WMI-7th605, 3S-WMI-7th600, 3S-WMI-7th510, 3S-WMI-7th505, 3S-WMI-7th330, 3S-WMI-7th390 | CSD-LKO Calender (6 day + Holiday)-25 | Painting [724 Sq m]; Painter [730 h]; Helper [730 h]; Physical Progress [2530 h]; TATA Projects Ltd-25 | 165,520.88 |
| 3S-WMI-7th700 |  | Soft Furnishing & Signage | 15d | 2029-03-26 | 2029-04-13 | 3S-WMI-7th680 | CSD-LKO Calender (6 day + Holiday)-25 | ID Work [3793714 INR]; Physical Progress [760 h]; TATA Projects Ltd-25 | 3,793,714 |
| 3S-WMI-7th705 |  | Loose Furniture | 15d | 2029-03-26 | 2029-04-13 | 3S-WMI-7th680 | CSD-LKO Calender (6 day + Holiday)-25 | ID Work [5058286 INR]; Physical Progress [760 h]; TATA Projects Ltd-25 | 5,058,286 |
|  | 1 | **MEP Final Fix** |  | 2028-12-05 | 2029-03-14 |  |  |  |  |
|  | 3 | **HVAC** |  | 2028-12-05 | 2029-02-17 |  |  |  |  |
| 3S-WMI-7th300 |  | Installing grills, diffusers, dampers | 30d | 2028-12-05 | 2029-01-11 | 3S-WMI-7th275 | CSD-LKO Calender (6 day + Holiday)-25 | Physical Progress [1530 h]; HVAC [371437 INR]; TATA Projects Ltd-25 | 371,437 |
| 3S-WMI-7th445 |  | Installation of thermostats and control panels | 30d | 2029-01-11 | 2029-02-17 | 3S-WMI-7th300, 3S-WMI-7th335, 3S-WMI-7th280 | CSD-LKO Calender (6 day + Holiday)-25 | Physical Progress [1530 h]; HVAC [185719 INR]; TATA Projects Ltd-25 | 185,719 |
|  | 1 | **Electrical** |  | 2028-12-29 | 2029-03-14 |  |  |  |  |
| 3S-WMI-7th380 |  | Switches & Socket | 30d | 2028-12-29 | 2029-02-05 | 3S-WMI-7th335 | CSD-LKO Calender (6 day + Holiday)-25 | Physical Progress [5060 h]; Electrical [415792 INR]; TATA Projects Ltd-25 | 415,792 |
| 3S-WMI-7th585 |  | Light Fixtures | 30d | 2029-02-05 | 2029-03-14 | 3S-WMI-7th380, 3S-WMI-7th235 | CSD-LKO Calender (6 day + Holiday)-25 | Physical Progress [3790 h]; Electrical [623688 INR]; TATA Projects Ltd-25 | 623,688 |
|  | 2 | **Plumbing** |  | 2028-12-29 | 2029-02-23 |  |  |  |  |
| 3S-WMI-7th385 |  | Installation of sanitary fixtures (WC, washbasins, urinals, sinks) | 10d | 2028-12-29 | 2029-01-11 | 3S-WMI-7th335, 3S-WMI-7th155, 3S-WMI-7th165 | CSD-LKO Calender (6 day + Holiday)-25 | Physical Progress [2530 h]; Plumbing [534578 INR]; TATA Projects Ltd-25 | 534,578 |
| 3S-WMI-7th450 |  | Installation of CP fittings (taps, mixers, showers, health faucets) | 10d | 2029-01-11 | 2029-01-23 | 3S-WMI-7th385, 3S-WMI-7th335 | CSD-LKO Calender (6 day + Holiday)-25 | Physical Progress [2530 h]; Plumbing [267289 INR]; TATA Projects Ltd-25 | 267,289 |
| 3S-WMI-7th495 |  | Connection of appliances | 25d | 2029-01-23 | 2029-02-23 | 3S-WMI-7th450 | CSD-LKO Calender (6 day + Holiday)-25 | Physical Progress [1770 h]; Plumbing [133645 INR]; TATA Projects Ltd-25 | 133,645 |

| ID | WBS | Activity | Duration | Start | Finish | Predecessors | Calendar | Resources | Cost |
| --- | --- | --- | --- | --- | --- | --- | --- | --- | --- |
|  | 4 | **Firefighting** |  | 2028-12-29 | 2029-03-08 |  |  |  |  |
| 3S-WMI-7th390 |  | Installation of hydrant accessories (valves, hose reels, cabinets) | 25d | 2028-12-29 | 2029-01-30 | 3S-WMI-7th335 | CSD-LKO Calender (6 day + Holiday)-25 | Physical Progress [2530 h]; Firefighting [139112 INR]; TATA Projects Ltd-25 | 139,112 |
| 3S-WMI-7th395 |  | Installation of portable fire extinguishers | 30d | 2028-12-29 | 2029-02-05 | 3S-WMI-7th335 | CSD-LKO Calender (6 day + Holiday)-25 | Physical Progress [1530 h]; Firefighting [13911 INR]; TATA Projects Ltd-25 | 13,911 |
| 3S-WMI-7th500 |  | Installation of sprinkler heads, nozzles, and final alignment | 35d | 2029-01-23 | 2029-03-08 | 3S-WMI-7th335, 3S-WMI-7th400, 3S-WMI-7th205, 3S-WMI-7th210 | CSD-LKO Calender (6 day + Holiday)-25 | Physical Progress [10120 h]; Firefighting [208668 INR]; TATA Projects Ltd-25 | 208,668 |
| 3S-WMI-7th590 |  | Integration with fire alarm system | 20d | 2029-02-05 | 2029-03-02 | 3S-WMI-7th395 | CSD-LKO Calender (6 day + Holiday)-25 | Physical Progress [5060 h]; Firefighting [69556 INR]; TATA Projects Ltd-25 | 69,556 |
|  | 5 | **ELV** |  | 2029-01-23 | 2029-03-14 |  |  |  |  |
| 3S-WMI-7th505 |  | Installation of data and Voice Faceplate | 25d | 2029-01-23 | 2029-02-23 | 3S-WMI-7th335, 3S-WMI-7th400, 3S-WMI-7th230 | CSD-LKO Calender (6 day + Holiday)-25 | Physical Progress [2530 h]; ELV [55817 INR]; TATA Projects Ltd-25 | 55,817 |
| 3S-WMI-7th510 |  | Installation of Camera & Wifi | 30d | 2029-01-23 | 2029-03-02 | 3S-WMI-7th335, 3S-WMI-7th400 | CSD-LKO Calender (6 day + Holiday)-25 | Physical Progress [2530 h]; ELV [55817 INR]; TATA Projects Ltd-25 | 55,817 |
| 3S-WMI-7th515 |  | Installation of fire alarm devices + Public Address | 10d | 2029-01-23 | 2029-02-05 | 3S-WMI-7th335, 3S-WMI-7th400 | CSD-LKO Calender (6 day + Holiday)-25 | Physical Progress [2530 h]; ELV [66981 INR]; TATA Projects Ltd-25 | 66,981 |
| 3S-WMI-7th595 |  | Installation of Active System | 15d | 2029-02-05 | 2029-02-23 | 3S-WMI-7th515 | CSD-LKO Calender (6 day + Holiday)-25 | Physical Progress [3790 h]; ELV [111635 INR]; TATA Projects Ltd-25 | 111,635 |
| 3S-WMI-7th600 |  | Fire Panel Intallation & Integration | 25d | 2029-02-05 | 2029-03-08 | 3S-WMI-7th515 | CSD-LKO Calender (6 day + Holiday)-25 | Physical Progress [6320 h]; ELV [55817 INR]; TATA Projects Ltd-25 | 55,817 |
| 3S-WMI-7th605 |  | Installation & Integration of Audio Visual System | 25d | 2029-02-05 | 2029-03-08 | 3S-WMI-7th515 | CSD-LKO Calender (6 day + Holiday)-25 | Physical Progress [6320 h]; ELV [55817 INR]; TATA Projects Ltd-25 | 55,817 |
| 3S-WMI-7th610 |  | Installation & Integration of Access Control | 25d | 2029-02-05 | 2029-03-08 | 3S-WMI-7th515 | CSD-LKO Calender (6 day + Holiday)-25 | Physical Progress [6320 h]; ELV [55817 INR]; TATA Projects Ltd-25 | 55,817 |
| 3S-WMI-7th660 |  | Integration of Active components | 15d | 2029-02-23 | 2029-03-14 | 3S-WMI-7th595 | CSD-LKO Calender (6 day + Holiday)-25 | Physical Progress [3790 h]; ELV [22327 INR]; TATA Projects Ltd-25 | 22,327 |
|  | 2 | **Back Face - Toward CC** |  | 2028-10-18 | 2029-04-12 |  |  |  |  |
|  | 2 | **Dry Finishes/ID Works** |  | 2028-10-18 | 2029-04-12 |  |  |  |  |
| 3S-WMI-7th260 |  | Running of Wild Air | 1d | 2028-10-18 | 2028-10-19 | 3S-F-7th45, 3S-WMI-7th150, 3S-WMI-7th170, 3S-WMI-7th200, 3S-WMI-7th225, 3S-WMI-7th280 | CSD-LKO Calender (6 day + Holiday)-25 | Physical Progress [250 h]; TATA Projects Ltd-25 |  |
| 3S-WMI-7th265 |  | Wall finish ID Works | 24d | 2028-10-19 | 2028-11-16 | 3S-WMI-7th260, 3S-WMI-7th150, 3S-WMI-7th170, 3S-WMI-7th200, 3S-WMI-7th225, 3S-WMI-7th280, 3S-WMI-7th90, 3S-WMI-7th130, 3S-WMI-7th190, 3S-WMI-7th195, 3S-WMI-7th220, 3S-WMI-7th235, 3S-WMI-7th120, 3S-WMI-7th125, 3S-WMI-7th155, 3S-WMI-7th165, 3S-WMI-7th175, 3S-WMI-7th180, 3S-WMI-7th205, 3S-WMI-7th210, 3S-WMI-7th95, 3S-WMI-7th135, 3S-WMI-7th185, 3S-WMI-7th215, 3S-WMI-7th230 | CSD-LKO Calender (6 day + Holiday)-25 | ID Work [2529143 INR]; Physical Progress [2530 h]; TATA Projects Ltd-25 | 2,529,143 |
| 3S-WMI-7th285 |  | False Ceiling Installation | 20d | 2028-11-16 | 2028-12-09 | 3S-WMI-7th265 | CSD-LKO Calender (6 day + Holiday)-25 | ID Work [3034971 INR]; Physical Progress [5060 h]; TATA Projects Ltd-25 | 3,034,971 |
| 3S-WMI-7th315 |  | Flooring of toilets/kitchen/Balcony | 10d | 2028-12-09 | 2028-12-21 | 3S-WMI-7th285, 3S-WMI-7th55 | CSD-LKO Calender (6 day + Holiday)-25 | ID Work [2023314 INR]; Physical Progress [2530 h]; TATA Projects Ltd-25 | 2,023,314 |
| 3S-WMI-7th340 |  | Doors & Windows/Fire Doors/Shaft Doors | 35d | 2028-12-21 | 2029-02-03 | 3S-WMI-7th265, 3S-WMI-7th315 | CSD-LKO Calender (6 day + Holiday)-25 | ID Work [2529143 INR]; Physical Progress [2530 h]; TATA Projects Ltd-25 | 2,529,143 |
| 3S-WMI-7th345 |  | Putty & First Coat of Paint | 10d | 2028-12-21 | 2029-01-04 | 3S-WMI-7th265, 3S-WMI-7th315 | CSD-LKO Calender (6 day + Holiday)-25 | Painting [724 Sq m]; Painter [730 h]; Helper [730 h]; Physical Progress [2530 h]; TATA Projects Ltd-25 | 165,520.88 |
| 3S-WMI-7th425 |  | Wooden Flooring/Flooring | 20d | 2029-01-04 | 2029-01-29 | 3S-WMI-7th345 | CSD-LKO Calender (6 day + Holiday)-25 | ID Work [2529143 INR]; Physical Progress [5060 h]; TATA Projects Ltd-25 | 2,529,143 |
| 3S-WMI-7th430 |  | Railing for staircase | 35d | 2029-01-04 | 2029-02-16 | 3S-WMI-7th265, 3S-WMI-7th345 | CSD-LKO Calender (6 day + Holiday)-25 | ID Work [1138114 INR]; Physical Progress [3790 h]; TATA Projects Ltd-25 | 1,138,114 |
| 3S-WMI-7th550 |  | Fixed Furniture | 8d | 2029-01-29 | 2029-02-07 | 3S-WMI-7th425 | CSD-LKO Calender (6 day + Holiday)-25 | ID Work [2276229 INR]; Physical Progress [2020 h]; TATA Projects Ltd-25 | 2,276,229 |
| 3S-WMI-7th665 |  | False ceiling final finishes | 10d | 2029-02-22 | 2029-03-07 | 3S-WMI-7th455 | CSD-LKO Calender (6 day + Holiday)-25 | ID Work [758743 INR]; Physical Progress [2530 h]; TATA Projects Ltd-25 | 758,743 |
| 3S-WMI-7th685 |  | Final coat of paint | 10d | 2029-03-13 | 2029-03-24 | 3S-WMI-7th665, 3S-WMI-7th430, 3S-WMI-7th550, 3S-WMI-7th615, 3S-WMI-7th525, 3S-WMI-7th530, 3S-WMI-7th620, 3S-WMI-7th670, 3S-WMI-7th640, 3S-WMI-7th635, 3S-WMI-7th630, 3S-WMI-7th540, 3S-WMI-7th535, 3S-WMI-7th340, 3S-WMI-7th415 | CSD-LKO Calender (6 day + Holiday)-25 | Painting [724 Sq m]; Painter [730 h]; Helper [730 h]; Physical Progress [2530 h]; TATA Projects Ltd-25 | 165,520.88 |
| 3S-WMI-7th710 |  | Soft Furnishing & Signage | 15d | 2029-03-24 | 2029-04-12 | 3S-WMI-7th685 | CSD-LKO Calender (6 day + Holiday)-25 | ID Work [3793714 INR]; Physical Progress [760 h]; TATA Projects Ltd-25 | 3,793,714 |
| 3S-WMI-7th715 |  | Loose Furniture | 15d | 2029-03-24 | 2029-04-12 | 3S-WMI-7th685 | CSD-LKO Calender (6 day + Holiday)-25 | ID Work [5058286 INR]; Physical Progress [760 h]; TATA Projects Ltd-25 | 5,058,286 |

| ID | WBS | Activity | Duration | Start | Finish | Predecessors | Calendar | Resources | Cost |
| --- | --- | --- | --- | --- | --- | --- | --- | --- | --- |
|  | 1 | **MEP Final Fix** |  | 2028-12-09 | 2029-03-13 |  |  |  |  |
|  | 3 | **HVAC** |  | 2028-12-09 | 2029-02-22 |  |  |  |  |
| 3S-WMI-7th310 |  | Installing grills, diffusers, dampers | 30d | 2028-12-09 | 2029-01-16 | 3S-WMI-7th285 | CSD-LKO Calender (6 day + Holiday)-25 | Physical Progress [1530 h]; HVAC [371437 INR]; TATA Projects Ltd-25 | 371,437 |
| 3S-WMI-7th455 |  | Installation of thermostats and control panels | 30d | 2029-01-16 | 2029-02-22 | 3S-WMI-7th310, 3S-WMI-7th345 | CSD-LKO Calender (6 day + Holiday)-25 | Physical Progress [1530 h]; HVAC [185719 INR]; TATA Projects Ltd-25 | 185,719 |
|  | 1 | **Electrical** |  | 2029-01-04 | 2029-03-07 |  |  |  |  |
| 3S-WMI-7th405 |  | Switches & Socket | 25d | 2029-01-04 | 2029-02-03 | 3S-WMI-7th345 | CSD-LKO Calender (6 day + Holiday)-25 | Physical Progress [5060 h]; Electrical [415792 INR]; TATA Projects Ltd-25 | 415,792 |
| 3S-WMI-7th615 |  | Light Fixtures | 25d | 2029-02-03 | 2029-03-07 | 3S-WMI-7th405 | CSD-LKO Calender (6 day + Holiday)-25 | Physical Progress [3790 h]; Electrical [623688 INR]; TATA Projects Ltd-25 | 623,688 |
|  | 2 | **Plumbing** |  | 2029-01-04 | 2029-02-28 |  |  |  |  |
| 3S-WMI-7th410 |  | Installation of sanitary fixtures (WC, washbasins, urinals, sinks) | 10d | 2029-01-04 | 2029-01-16 | 3S-WMI-7th345 | CSD-LKO Calender (6 day + Holiday)-25 | Physical Progress [2530 h]; Plumbing [534578 INR]; TATA Projects Ltd-25 | 534,578 |
| 3S-WMI-7th460 |  | Installation of CP fittings (taps, mixers, showers, health faucets) | 10d | 2029-01-16 | 2029-01-29 | 3S-WMI-7th410, 3S-WMI-7th345 | CSD-LKO Calender (6 day + Holiday)-25 | Physical Progress [2530 h]; Plumbing [267289 INR]; TATA Projects Ltd-25 | 267,289 |
| 3S-WMI-7th525 |  | Connection of appliances | 25d | 2029-01-29 | 2029-02-28 | 3S-WMI-7th460 | CSD-LKO Calender (6 day + Holiday)-25 | Physical Progress [1770 h]; Plumbing [133645 INR]; TATA Projects Ltd-25 | 133,645 |
|  | 4 | **Firefighting** |  | 2029-01-04 | 2029-03-13 |  |  |  |  |
| 3S-WMI-7th415 |  | Installation of hydrant accessories (valves, hose reels, cabinets) | 25d | 2029-01-04 | 2029-02-03 | 3S-WMI-7th345 | CSD-LKO Calender (6 day + Holiday)-25 | Physical Progress [2530 h]; Firefighting [139112 INR]; TATA Projects Ltd-25 | 139,112 |
| 3S-WMI-7th420 |  | Installation of portable fire extinguishers | 30d | 2029-01-04 | 2029-02-09 | 3S-WMI-7th345 | CSD-LKO Calender (6 day + Holiday)-25 | Physical Progress [1530 h]; Firefighting [13911 INR]; TATA Projects Ltd-25 | 13,911 |
| 3S-WMI-7th530 |  | Installation of sprinkler heads, nozzles, and final alignment | 35d | 2029-01-29 | 2029-03-13 | 3S-WMI-7th345, 3S-WMI-7th425 | CSD-LKO Calender (6 day + Holiday)-25 | Physical Progress [10120 h]; Firefighting [208668 INR]; TATA Projects Ltd-25 | 208,668 |
| 3S-WMI-7th620 |  | Integration with fire alarm system | 20d | 2029-02-09 | 2029-03-07 | 3S-WMI-7th420 | CSD-LKO Calender (6 day + Holiday)-25 | Physical Progress [5060 h]; Firefighting [69556 INR]; TATA Projects Ltd-25 | 69,556 |
|  | 5 | **ELV** |  | 2029-01-29 | 2029-03-13 |  |  |  |  |
| 3S-WMI-7th535 |  | Installation of data and Voice Faceplate | 25d | 2029-01-29 | 2029-02-28 | 3S-WMI-7th345, 3S-WMI-7th425 | CSD-LKO Calender (6 day + Holiday)-25 | Physical Progress [2530 h]; ELV [55817 INR]; TATA Projects Ltd-25 | 55,817 |
| 3S-WMI-7th540 |  | Installation of Camera & Wifi | 30d | 2029-01-29 | 2029-03-07 | 3S-WMI-7th345, 3S-WMI-7th425 | CSD-LKO Calender (6 day + Holiday)-25 | Physical Progress [2530 h]; ELV [55817 INR]; TATA Projects Ltd-25 | 55,817 |
| 3S-WMI-7th545 |  | Installation of fire alarm devices + Public Address | 10d | 2029-01-29 | 2029-02-09 | 3S-WMI-7th345, 3S-WMI-7th425 | CSD-LKO Calender (6 day + Holiday)-25 | Physical Progress [2530 h]; ELV [66981 INR]; TATA Projects Ltd-25 | 66,981 |
| 3S-WMI-7th625 |  | Installation of Active System | 15d | 2029-02-09 | 2029-02-28 | 3S-WMI-7th545 | CSD-LKO Calender (6 day + Holiday)-25 | Physical Progress [3790 h]; ELV [111635 INR]; TATA Projects Ltd-25 | 111,635 |
| 3S-WMI-7th630 |  | Fire Panel Intallation & Integration | 25d | 2029-02-09 | 2029-03-13 | 3S-WMI-7th545 | CSD-LKO Calender (6 day + Holiday)-25 | Physical Progress [6320 h]; ELV [55817 INR]; TATA Projects Ltd-25 | 55,817 |
| 3S-WMI-7th635 |  | Installation & Integration of Audio Visual System | 25d | 2029-02-09 | 2029-03-13 | 3S-WMI-7th545 | CSD-LKO Calender (6 day + Holiday)-25 | Physical Progress [6320 h]; ELV [55817 INR]; TATA Projects Ltd-25 | 55,817 |
| 3S-WMI-7th640 |  | Installation & Integration of Access Control | 25d | 2029-02-09 | 2029-03-13 | 3S-WMI-7th545 | CSD-LKO Calender (6 day + Holiday)-25 | Physical Progress [6320 h]; ELV [55817 INR]; TATA Projects Ltd-25 | 55,817 |
| 3S-WMI-7th670 |  | Integration of Active components | 10d | 2029-02-28 | 2029-03-13 | 3S-WMI-7th625 | CSD-LKO Calender (6 day + Holiday)-25 | Physical Progress [3790 h]; ELV [22327 INR]; TATA Projects Ltd-25 | 22,327 |

| ID | WBS | Activity | Duration | Start | Finish | Predecessors | Calendar | Resources | Cost |
| --- | --- | --- | --- | --- | --- | --- | --- | --- | --- |
|  | 4 | **Side Face** |  | 2028-10-18 | 2029-04-19 |  |  |  |  |
|  | 2 | **Dry Finishes/ID Works** |  | 2028-10-18 | 2029-04-19 |  |  |  |  |
| 3S-WMI-7th240 |  | Running of Wild Air | 1d | 2028-10-18 | 2028-10-19 | 3S-F-7th50, 3S-WMI-7th150, 3S-WMI-7th170, 3S-WMI-7th200, 3S-WMI-7th225, 3S-WMI-7th280 | CSD-LKO Calender (6 day + Holiday)-25 | Physical Progress [250 h]; TATA Projects Ltd-25 |  |
| 3S-WMI-7th245 |  | Wall finish ID Works | 25d | 2028-10-19 | 2028-11-17 | 3S-WMI-7th240, 3S-WMI-7th150, 3S-WMI-7th170, 3S-WMI-7th200, 3S-WMI-7th225, 3S-WMI-7th280, 3S-WMI-7th90, 3S-WMI-7th130, 3S-WMI-7th190, 3S-WMI-7th195, 3S-WMI-7th220, 3S-WMI-7th235, 3S-WMI-7th120, 3S-WMI-7th125, 3S-WMI-7th155, 3S-WMI-7th165, 3S-WMI-7th175, 3S-WMI-7th180, 3S-WMI-7th205, 3S-WMI-7th210, 3S-WMI-7th95, 3S-WMI-7th135, 3S-WMI-7th185, 3S-WMI-7th215, 3S-WMI-7th230 | CSD-LKO Calender (6 day + Holiday)-25 | ID Work [2529143 INR]; Physical Progress [2530 h]; TATA Projects Ltd-25 | 2,529,143 |
| 3S-WMI-7th270 |  | False Ceiling Installation | 20d | 2028-11-17 | 2028-12-11 | 3S-WMI-7th245 | CSD-LKO Calender (6 day + Holiday)-25 | ID Work [3034971 INR]; Physical Progress [5060 h]; TATA Projects Ltd-25 | 3,034,971 |
| 3S-WMI-7th295 |  | Flooring of toilets/kitchen/Balcony | 10d | 2028-12-11 | 2028-12-22 | 3S-WMI-7th270, 3S-WMI-7th55 | CSD-LKO Calender (6 day + Holiday)-25 | ID Work [2023314 INR]; Physical Progress [2530 h]; TATA Projects Ltd-25 | 2,023,314 |
| 3S-WMI-7th320 |  | Doors & Windows/Fire Doors/Shaft Doors | 35d | 2028-12-22 | 2029-02-05 | 3S-WMI-7th245, 3S-WMI-7th295 | CSD-LKO Calender (6 day + Holiday)-25 | ID Work [2529143 INR]; Physical Progress [2530 h]; TATA Projects Ltd-25 | 2,529,143 |
| 3S-WMI-7th325 |  | Putty & First Coat of Paint | 10d | 2028-12-22 | 2029-01-05 | 3S-WMI-7th245, 3S-WMI-7th295 | CSD-LKO Calender (6 day + Holiday)-25 | Painting [724 Sq m]; Painter [730 h]; Helper [730 h]; Physical Progress [2530 h]; TATA Projects Ltd-25 | 165,520.88 |
| 3S-WMI-7th370 |  | Wooden Flooring/Flooring | 20d | 2029-01-05 | 2029-01-30 | 3S-WMI-7th325 | CSD-LKO Calender (6 day + Holiday)-25 | ID Work [2529143 INR]; Physical Progress [5060 h]; TATA Projects Ltd-25 | 2,529,143 |
| 3S-WMI-7th375 |  | Railing for staircase | 35d | 2029-01-05 | 2029-02-17 | 3S-WMI-7th245, 3S-WMI-7th325 | CSD-LKO Calender (6 day + Holiday)-25 | ID Work [1138114 INR]; Physical Progress [3790 h]; TATA Projects Ltd-25 | 1,138,114 |
| 3S-WMI-7th490 |  | Fixed Furniture | 8d | 2029-01-30 | 2029-02-08 | 3S-WMI-7th370 | CSD-LKO Calender (6 day + Holiday)-25 | ID Work [2276229 INR]; Physical Progress [2020 h]; TATA Projects Ltd-25 | 2,276,229 |
| 3S-WMI-7th645 |  | False ceiling final finishes | 10d | 2029-02-23 | 2029-03-08 | 3S-WMI-7th435 | CSD-LKO Calender (6 day + Holiday)-25 | ID Work [758743 INR]; Physical Progress [2530 h]; TATA Projects Ltd-25 | 758,743 |
| 3S-WMI-7th675 |  | Final coat of paint | 10d | 2029-03-20 | 2029-04-02 | 3S-WMI-7th645, 3S-WMI-7th375, 3S-WMI-7th490, 3S-WMI-7th555, 3S-WMI-7th465, 3S-WMI-7th470, 3S-WMI-7th560, 3S-WMI-7th655, 3S-WMI-7th580, 3S-WMI-7th575, 3S-WMI-7th570, 3S-WMI-7th480, 3S-WMI-7th475, 3S-WMI-7th320 | CSD-LKO Calender (6 day + Holiday)-25 | Painting [724 Sq m]; Painter [730 h]; Helper [730 h]; Physical Progress [2530 h]; TATA Projects Ltd-25 | 165,520.88 |
| 3S-WMI-7th690 |  | Soft Furnishing & Signage | 15d | 2029-04-02 | 2029-04-19 | 3S-WMI-7th675 | CSD-LKO Calender (6 day + Holiday)-25 | ID Work [3793714 INR]; Physical Progress [760 h]; TATA Projects Ltd-25 | 3,793,714 |
| 3S-WMI-7th695 |  | Loose Furniture | 15d | 2029-04-02 | 2029-04-19 | 3S-WMI-7th675 | CSD-LKO Calender (6 day + Holiday)-25 | ID Work [5058286 INR]; Physical Progress [760 h]; TATA Projects Ltd-25 | 5,058,286 |
|  | 1 | **MEP Final Fix** |  | 2028-12-11 | 2029-03-20 |  |  |  |  |
|  | 3 | **HVAC** |  | 2028-12-11 | 2029-02-23 |  |  |  |  |
| 3S-WMI-7th290 |  | Installing grills, diffusers, dampers | 30d | 2028-12-11 | 2029-01-17 | 3S-WMI-7th270 | CSD-LKO Calender (6 day + Holiday)-25 | Physical Progress [1530 h]; HVAC [371437 INR]; TATA Projects Ltd-25 | 371,437 |
| 3S-WMI-7th435 |  | Installation of thermostats and control panels | 30d | 2029-01-17 | 2029-02-23 | 3S-WMI-7th290, 3S-WMI-7th325 | CSD-LKO Calender (6 day + Holiday)-25 | Physical Progress [1530 h]; HVAC [185719 INR]; TATA Projects Ltd-25 | 185,719 |
|  | 1 | **Electrical** |  | 2029-01-05 | 2029-03-20 |  |  |  |  |
| 3S-WMI-7th350 |  | Switches & Socket | 30d | 2029-01-05 | 2029-02-10 | 3S-WMI-7th325 | CSD-LKO Calender (6 day + Holiday)-25 | Physical Progress [5060 h]; Electrical [415792 INR]; TATA Projects Ltd-25 | 415,792 |
| 3S-WMI-7th555 |  | Light Fixtures | 30d | 2029-02-10 | 2029-03-20 | 3S-WMI-7th350 | CSD-LKO Calender (6 day + Holiday)-25 | Physical Progress [3790 h]; Electrical [623688 INR]; TATA Projects Ltd-25 | 623,688 |
|  | 2 | **Plumbing** |  | 2029-01-05 | 2029-03-02 |  |  |  |  |
| 3S-WMI-7th355 |  | Installation of sanitary fixtures (WC, washbasins, urinals, sinks) | 10d | 2029-01-05 | 2029-01-17 | 3S-WMI-7th325 | CSD-LKO Calender (6 day + Holiday)-25 | Physical Progress [2530 h]; Plumbing [534578 INR]; TATA Projects Ltd-25 | 534,578 |
| 3S-WMI-7th440 |  | Installation of CP fittings (taps, mixers, showers, health faucets) | 10d | 2029-01-17 | 2029-01-30 | 3S-WMI-7th355, 3S-WMI-7th325 | CSD-LKO Calender (6 day + Holiday)-25 | Physical Progress [2530 h]; Plumbing [267289 INR]; TATA Projects Ltd-25 | 267,289 |
| 3S-WMI-7th465 |  | Connection of appliances | 25d | 2029-01-30 | 2029-03-02 | 3S-WMI-7th440 | CSD-LKO Calender (6 day + Holiday)-25 | Physical Progress [1770 h]; Plumbing [133645 INR]; TATA Projects Ltd-25 | 133,645 |

| ID | WBS | Activity | Duration | Start | Finish | Predecessors | Calendar | Resources | Cost |
| --- | --- | --- | --- | --- | --- | --- | --- | --- | --- |
|  | 4 | **Firefighting** |  | 2029-01-05 | 2029-03-14 |  |  |  |  |
| 3S-WMI-7th360 |  | Installation of hydrant accessories (valves, hose reels, cabinets) | 25d | 2029-01-05 | 2029-02-05 | 3S-WMI-7th325 | CSD-LKO Calender (6 day + Holiday)-25 | Physical Progress [2530 h]; Firefighting [139112 INR]; TATA Projects Ltd-25 | 139,112 |
| 3S-WMI-7th365 |  | Installation of portable fire extinguishers | 30d | 2029-01-05 | 2029-02-10 | 3S-WMI-7th325 | CSD-LKO Calender (6 day + Holiday)-25 | Physical Progress [1530 h]; Firefighting [13911 INR]; TATA Projects Ltd-25 | 13,911 |
| 3S-WMI-7th470 |  | Installation of sprinkler heads, nozzles, and final alignment | 35d | 2029-01-30 | 2029-03-14 | 3S-WMI-7th325, 3S-WMI-7th370 | CSD-LKO Calender (6 day + Holiday)-25 | Physical Progress [10120 h]; Firefighting [208668 INR]; TATA Projects Ltd-25 | 208,668 |
| 3S-WMI-7th560 |  | Integration with fire alarm system | 20d | 2029-02-10 | 2029-03-08 | 3S-WMI-7th365 | CSD-LKO Calender (6 day + Holiday)-25 | Physical Progress [5060 h]; Firefighting [69556 INR]; TATA Projects Ltd-25 | 69,556 |
|  | 5 | **ELV** |  | 2029-01-30 | 2029-03-20 |  |  |  |  |
| 3S-WMI-7th475 |  | Installation of data and Voice Faceplate | 25d | 2029-01-30 | 2029-03-02 | 3S-WMI-7th325, 3S-WMI-7th370 | CSD-LKO Calender (6 day + Holiday)-25 | Physical Progress [2530 h]; ELV [55817 INR]; TATA Projects Ltd-25 | 55,817 |
| 3S-WMI-7th480 |  | Installation of Camera & Wifi | 30d | 2029-01-30 | 2029-03-08 | 3S-WMI-7th325, 3S-WMI-7th370 | CSD-LKO Calender (6 day + Holiday)-25 | Physical Progress [2530 h]; ELV [55817 INR]; TATA Projects Ltd-25 | 55,817 |
| 3S-WMI-7th485 |  | Installation of fire alarm devices + Public Address | 10d | 2029-01-30 | 2029-02-10 | 3S-WMI-7th325, 3S-WMI-7th370 | CSD-LKO Calender (6 day + Holiday)-25 | Physical Progress [2530 h]; ELV [66981 INR]; TATA Projects Ltd-25 | 66,981 |
| 3S-WMI-7th565 |  | Installation of Active System | 15d | 2029-02-10 | 2029-03-02 | 3S-WMI-7th485 | CSD-LKO Calender (6 day + Holiday)-25 | Physical Progress [3790 h]; ELV [111635 INR]; TATA Projects Ltd-25 | 111,635 |
| 3S-WMI-7th570 |  | Fire Panel Intallation & Integration | 25d | 2029-02-10 | 2029-03-14 | 3S-WMI-7th485 | CSD-LKO Calender (6 day + Holiday)-25 | Physical Progress [6320 h]; ELV [55817 INR]; TATA Projects Ltd-25 | 55,817 |
| 3S-WMI-7th575 |  | Installation & Integration of Audio Visual System | 25d | 2029-02-10 | 2029-03-14 | 3S-WMI-7th485 | CSD-LKO Calender (6 day + Holiday)-25 | Physical Progress [6320 h]; ELV [55817 INR]; TATA Projects Ltd-25 | 55,817 |
| 3S-WMI-7th580 |  | Installation & Integration of Access Control | 25d | 2029-02-10 | 2029-03-14 | 3S-WMI-7th485 | CSD-LKO Calender (6 day + Holiday)-25 | Physical Progress [6320 h]; ELV [55817 INR]; TATA Projects Ltd-25 | 55,817 |
| 3S-WMI-7th655 |  | Integration of Active components | 15d | 2029-03-02 | 2029-03-20 | 3S-WMI-7th565 | CSD-LKO Calender (6 day + Holiday)-25 | Physical Progress [3790 h]; ELV [22327 INR]; TATA Projects Ltd-25 | 22,327 |
|  | 13 | **Structural Steel works for Facade** |  | 2028-01-08 | 2028-04-18 |  |  |  |  |
| 3S-F-SS10 |  | Second Floor to Third Floor | 15d | 2028-01-08 | 2028-01-27 | 3S-SS-7th200, SSF15 |  | Physical Progress [107140 h]; TATA Projects Ltd-25 |  |
| 3S-F-SS15 |  | GF to Service Floor | 20d | 2028-01-27 | 2028-02-19 | 3S-F-SS10 |  | Physical Progress [107140 h]; TATA Projects Ltd-25 |  |
| 3S-F-SS20 |  | Third Floor to Fourth Floor | 15d | 2028-01-27 | 2028-02-14 | 3S-F-SS10 |  | Physical Progress [107140 h]; TATA Projects Ltd-25 |  |
| 3S-F-SS25 |  | Fourth Floor to Fifth Floor | 15d | 2028-02-14 | 2028-03-03 | 3S-F-SS20 |  | Physical Progress [80360 h]; TATA Projects Ltd-25 |  |
| 3S-F-SS30 |  | Fifth Floor to Sixth Floor | 15d | 2028-03-03 | 2028-03-22 | 3S-F-SS25 |  | Physical Progress [80360 h]; TATA Projects Ltd-25 |  |
| 3S-F-SS35 |  | Sixth Floor to Seventh Floor | 15d | 2028-03-22 | 2028-04-08 | 3S-F-SS30 |  | Physical Progress [80360 h]; TATA Projects Ltd-25 |  |
| 3S-F-SS40 |  | Seventh Floor to Terrace | 7d | 2028-04-08 | 2028-04-18 | 3S-F-SS35, 3S-SS-Roof40 FF+14d, SSF20 |  | Physical Progress [37500 h]; TATA Projects Ltd-25 |  |
|  | 10 | **Vertical Transport** |  | 2028-01-10 | 2028-08-08 |  |  |  |  |
| 3S-VT10 |  | Wait for Strength Gain | 6d | 2028-01-10 | 2028-01-17 | 3S-SS-Roof40 |  | Physical Progress [65970 h]; TATA Projects Ltd-25 |  |
| 3S-VT15 |  | Deshuttering | 5d | 2028-01-17 | 2028-01-22 | 3S-VT10 | CSD-LKO Calender (6 day + Holiday)-25 | Physical Progress [15710 h]; TATA Projects Ltd-25 |  |
| 3S-VT20 |  | Plaster | 15d | 2028-01-22 | 2028-02-10 | 3S-VT15 | CSD-LKO Calender (6 day + Holiday)-25 | Plaster [1000 Sqr Mtr]; Mason [670 h]; Helper [340 h]; Physical Progress [47120 h]; TATA Projects Ltd-25 | 553,910 |
| 3S-VT25 |  | Installation of Lift/Escalator | 120d | 2028-02-10 | 2028-07-04 | P-MEP-VT-20, 3S-VT20 | CSD-LKO Calender (6 day + Holiday)-25 | Physical Progress [376960 h]; Lift [69300000 INR]; TATA Projects Ltd-25 | 69,300,000 |
| 3S-VT30 |  | Testing & Commissioning | 30d | 2028-07-04 | 2028-08-08 | 3S-VT25 | CSD-LKO Calender (6 day + Holiday)-25 | Physical Progress [94240 h]; Testing & Commissioing [7700000 INR]; TATA Projects Ltd-25 | 7,700,000 |

| ID | WBS | Activity | Duration | Start | Finish | Predecessors | Resources | Cost |
| --- | --- | --- | --- | --- | --- | --- | --- | --- |
|  | 3 | **Terrace Works** |  | 2028-01-10 | 2029-02-21 |  |  |  |
| 3S-Terrace10 |  | Waterproofing | 45d | 2028-01-10 | 2028-03-04 | 3S-SS-Roof40 | Waterproofing [8564838 INR]; Waterprrofing Mason [8160 h]; Helper [4080 h]; Physical Progress [90000 h]; TATA Projects Ltd-25 | 8,564,838 |
| 3S-Terrace15 |  | Flooring | 30d | 2028-03-04 | 2028-04-10 | 3S-Terrace10, E-GFC-AR-3S-300 | ID Work [2210466 INR]; Physical Progress [60000 h]; TATA Projects Ltd-25 | 2,210,466 |
| 3S-Terrace20 |  | Installation of Fans, Solar and other MEP Equipments | 45d | 2028-12-27 | 2029-02-21 | 3S-Terrace15, 3S-F-Terrace25, E-GFC-MEP-3S-305 | Physical Progress [90000 h]; MEP Equipments on Terrace [3000000 INR]; TATA Projects Ltd-25 | 3,000,000 |
|  | 5 | **Facade** |  | 2027-12-01 | 2028-12-27 |  |  |  |
|  | 2 | **GF to Service Floor** |  | 2028-01-15 | 2028-06-03 |  |  |  |
|  | 1 | **Front Face - Toward Airport** |  | 2028-01-15 | 2028-06-03 |  |  |  |
| 3S-F-GF10 |  | Integration of Services Before Facade | 10d | 2028-01-15 | 2028-01-28 | 3S-F-2nd50 | Facade [638658 INR]; Physical Progress [13370 h]; TATA Projects Ltd-25 | 638,658 |
| 3S-F-GF15 |  | Fixing of Facade Support | 15d | 2028-02-19 | 2028-03-09 | 3S-F-GF10, SSF15, 3S-F-SS15 | Facade [3193291 INR]; Physical Progress [20060 h]; TATA Projects Ltd-25 | 3,193,291 |
| 3S-F-GF35 |  | Fixing of Facade | 40d | 2028-03-09 | 2028-04-27 | 3S-F-GF15 | Facade [7663899 INR]; Physical Progress [53490 h]; TATA Projects Ltd-25 | 7,663,899 |
| 3S-F-GF55 |  | Integration of Services After Facade | 30d | 2028-04-27 | 2028-06-03 | 3S-F-GF35 | Facade [1277316 INR]; Physical Progress [13370 h]; TATA Projects Ltd-25 | 1,277,316 |
|  | 2 | **Back Face - Toward CC** |  | 2028-01-28 | 2028-05-24 |  |  |  |
| 3S-F-GF20 |  | Integration of Services Before Facade | 10d | 2028-01-28 | 2028-02-09 | 3S-F-GF10 | Facade [638658 INR]; Physical Progress [13370 h]; TATA Projects Ltd-25 | 638,658 |
| 3S-F-GF25 |  | Fixing of Facade Support | 15d | 2028-02-09 | 2028-02-28 | 3S-F-GF20 | Facade [3193291 INR]; Physical Progress [20060 h]; TATA Projects Ltd-25 | 3,193,291 |
| 3S-F-GF45 |  | Fixing of Facade | 40d | 2028-02-28 | 2028-04-17 | 3S-F-GF25 | Facade [7663899 INR]; Physical Progress [53490 h]; TATA Projects Ltd-25 | 7,663,899 |
| 3S-F-GF60 |  | Integration of Services After Facade | 30d | 2028-04-17 | 2028-05-24 | 3S-F-GF45 | Facade [1277316 INR]; Physical Progress [13370 h]; TATA Projects Ltd-25 | 1,277,316 |
|  | 3 | **Side Face** |  | 2028-02-09 | 2028-05-30 |  |  |  |
| 3S-F-GF30 |  | Integration of Services Before Facade | 10d | 2028-02-09 | 2028-02-21 | 3S-F-GF20 | Facade [638658 INR]; Physical Progress [13370 h]; TATA Projects Ltd-25 | 638,658 |
| 3S-F-GF40 |  | Fixing of Facade Support | 10d | 2028-02-21 | 2028-03-04 | 3S-F-GF30 | Facade [3193291 INR]; Physical Progress [13370 h]; TATA Projects Ltd-25 | 3,193,291 |
| 3S-F-GF50 |  | Fixing of Facade | 40d | 2028-03-04 | 2028-04-22 | 3S-F-GF40 | Facade [7663899 INR]; Physical Progress [53490 h]; TATA Projects Ltd-25 | 7,663,899 |
| 3S-F-GF65 |  | Integration of Services After Facade | 30d | 2028-04-22 | 2028-05-30 | 3S-F-GF50 | Facade [1277316 INR]; Physical Progress [13370 h]; TATA Projects Ltd-25 | 1,277,316 |
|  | 3 | **Second Floor - Third Floor** |  | 2027-12-01 | 2028-04-15 |  |  |  |
|  | 1 | **Front Face - Toward Airport** |  | 2027-12-01 | 2028-04-15 |  |  |  |
| 3S-F-2nd10 |  | Integration of Services Before Facade | 5d | 2027-12-01 | 2027-12-07 | 3S-SS-7th305 | Facade [212886 INR]; Physical Progress [6690 h]; TATA Projects Ltd-25 | 212,886 |
| 3S-F-2nd15 |  | Fixing of Facade Support | 15d | 2028-01-27 | 2028-02-14 | 3S-F-2nd10 SS+2d, 3S-F-SS10, P-F-Glass-15 | Facade [1064430 INR]; Physical Progress [20060 h]; TATA Projects Ltd-25 | 1,064,430 |
| 3S-F-2nd40 |  | Fixing of Facade | 20d | 2028-02-14 | 2028-03-09 | 3S-F-2nd15 | Facade [2554633 INR]; Physical Progress [26750 h]; TATA Projects Ltd-25 | 2,554,633 |
| 3S-F-2nd55 |  | Integration of Services After Facade | 30d | 2028-03-09 | 2028-04-15 | 3S-F-2nd40 | Facade [425772 INR]; Physical Progress [13370 h]; TATA Projects Ltd-25 | 425,772 |

| ID | WBS | Activity | Duration | Start | Finish | Predecessors | Resources | Cost |
| --- | --- | --- | --- | --- | --- | --- | --- | --- |
|  | 2 | **Back Face - Toward CC** |  | 2027-12-07 | 2028-02-28 |  |  |  |
| 3S-F-2nd20 |  | Integration of Services Before Facade | 5d | 2027-12-07 | 2027-12-13 | 3S-F-2nd10 | Facade [212886 INR]; Physical Progress [6690 h]; TATA Projects Ltd-25 | 212,886 |
| 3S-F-2nd25 |  | Fixing of Facade Support | 15d | 2027-12-09 | 2027-12-28 | 3S-F-2nd20 SS+2d | Facade [1064430 INR]; Physical Progress [20060 h]; TATA Projects Ltd-25 | 1,064,430 |
| 3S-F-2nd45 |  | Fixing of Facade | 20d | 2027-12-28 | 2028-01-21 | 3S-F-2nd25 | Facade [2554633 INR]; Physical Progress [26750 h]; TATA Projects Ltd-25 | 2,554,633 |
| 3S-F-2nd60 |  | Integration of Services After Facade | 30d | 2028-01-21 | 2028-02-28 | 3S-F-2nd45 | Facade [425772 INR]; Physical Progress [13370 h]; TATA Projects Ltd-25 | 425,772 |
|  | 3 | **Side Face** |  | 2027-12-13 | 2028-02-21 |  |  |  |
| 3S-F-2nd30 |  | Integration of Services Before Facade | 5d | 2027-12-13 | 2027-12-18 | 3S-F-2nd20 | Facade [212886 INR]; Physical Progress [6690 h]; TATA Projects Ltd-25 | 212,886 |
| 3S-F-2nd35 |  | Fixing of Facade Support | 10d | 2027-12-15 | 2027-12-28 | 3S-F-2nd30 SS+2d | Facade [1064430 INR]; Physical Progress [13370 h]; TATA Projects Ltd-25 | 1,064,430 |
| 3S-F-2nd50 |  | Fixing of Facade | 15d | 2027-12-28 | 2028-01-15 | 3S-F-2nd35 | Facade [2554633 INR]; Physical Progress [26750 h]; TATA Projects Ltd-25 | 2,554,633 |
| 3S-F-2nd65 |  | Integration of Services After Facade | 30d | 2028-01-15 | 2028-02-21 | 3S-F-2nd50 | Facade [425772 INR]; Physical Progress [13370 h]; TATA Projects Ltd-25 | 425,772 |
|  | 4 | **Third Floor - Fourth Floor** |  | 2028-03-09 | 2028-06-06 |  |  |  |
|  | 1 | **Front Face - Toward Airport** |  | 2028-03-09 | 2028-05-31 |  |  |  |
| 3S-F-3rd10 |  | Integration of Services Before Facade | 5d | 2028-03-09 | 2028-03-16 | 3S-F-2nd40 | Facade [212886 INR]; Physical Progress [6690 h]; TATA Projects Ltd-25 | 212,886 |
| 3S-F-3rd15 |  | Fixing of Facade Support | 15d | 2028-03-13 | 2028-03-30 | 3S-F-3rd10 SS+2d, 3S-F-SS20 | Facade [1064430 INR]; Physical Progress [20060 h]; TATA Projects Ltd-25 | 1,064,430 |
| 3S-F-3rd40 |  | Fixing of Facade | 20d | 2028-03-30 | 2028-04-24 | 3S-F-3rd15 | Facade [2554633 INR]; Physical Progress [26750 h]; TATA Projects Ltd-25 | 2,554,633 |
| 3S-F-3rd55 |  | Integration of Services After Facade | 30d | 2028-04-24 | 2028-05-31 | 3S-F-3rd40 | Facade [425772 INR]; Physical Progress [13370 h]; TATA Projects Ltd-25 | 425,772 |
|  | 2 | **Back Face - Toward CC** |  | 2028-03-16 | 2028-06-06 |  |  |  |
| 3S-F-3rd20 |  | Integration of Services Before Facade | 5d | 2028-03-16 | 2028-03-22 | 3S-F-3rd10, 3S-F-2nd45 | Facade [212886 INR]; Physical Progress [6690 h]; TATA Projects Ltd-25 | 212,886 |
| 3S-F-3rd25 |  | Fixing of Facade Support | 15d | 2028-03-18 | 2028-04-05 | 3S-F-3rd20 SS+2d | Facade [1064430 INR]; Physical Progress [20060 h]; TATA Projects Ltd-25 | 1,064,430 |
| 3S-F-3rd45 |  | Fixing of Facade | 20d | 2028-04-05 | 2028-04-29 | 3S-F-3rd25 | Facade [2554633 INR]; Physical Progress [26750 h]; TATA Projects Ltd-25 | 2,554,633 |
| 3S-F-3rd60 |  | Integration of Services After Facade | 30d | 2028-04-29 | 2028-06-06 | 3S-F-3rd45 | Facade [425772 INR]; Physical Progress [13370 h]; TATA Projects Ltd-25 | 425,772 |
|  | 3 | **Side Face** |  | 2028-03-22 | 2028-05-31 |  |  |  |
| 3S-F-3rd30 |  | Integration of Services Before Facade | 5d | 2028-03-22 | 2028-03-28 | 3S-F-3rd20, 3S-F-2nd50 | Facade [212886 INR]; Physical Progress [6690 h]; TATA Projects Ltd-25 | 212,886 |
| 3S-F-3rd35 |  | Fixing of Facade Support | 10d | 2028-03-24 | 2028-04-05 | 3S-F-3rd30 SS+2d | Facade [1064430 INR]; Physical Progress [13370 h]; TATA Projects Ltd-25 | 1,064,430 |
| 3S-F-3rd50 |  | Fixing of Facade | 15d | 2028-04-05 | 2028-04-24 | 3S-F-3rd35 | Facade [2554633 INR]; Physical Progress [26750 h]; TATA Projects Ltd-25 | 2,554,633 |
| 3S-F-3rd65 |  | Integration of Services After Facade | 30d | 2028-04-24 | 2028-05-31 | 3S-F-3rd50 | Facade [425772 INR]; Physical Progress [13370 h]; TATA Projects Ltd-25 | 425,772 |

| ID | WBS | Activity | Duration | Start | Finish | Predecessors | Resources | Cost |
| --- | --- | --- | --- | --- | --- | --- | --- | --- |
|  | 5 | **Fourth Floor - Fifth Floor** |  | 2028-04-24 | 2028-07-15 |  |  |  |
|  | 1 | **Front Face - Toward Airport** |  | 2028-04-24 | 2028-07-08 |  |  |  |
| 3S-F-4th10 |  | Integration of Services Before Facade | 5d | 2028-04-24 | 2028-04-29 | 3S-F-3rd40 | Facade [212886 INR]; Physical Progress [6690 h]; TATA Projects Ltd-25 | 212,886 |
| 3S-F-4th15 |  | Fixing of Facade Support | 15d | 2028-04-26 | 2028-05-16 | 3S-F-4th10 SS+2d, 3S-F-SS25 | Facade [1064430 INR]; Physical Progress [20060 h]; TATA Projects Ltd-25 | 1,064,430 |
| 3S-F-4th40 |  | Fixing of Facade | 15d | 2028-05-16 | 2028-06-02 | 3S-F-4th15 | Facade [2554633 INR]; Physical Progress [26750 h]; TATA Projects Ltd-25 | 2,554,633 |
| 3S-F-4th55 |  | Integration of Services After Facade | 30d | 2028-06-02 | 2028-07-08 | 3S-F-4th40 | Facade [425772 INR]; Physical Progress [13370 h]; TATA Projects Ltd-25 | 425,772 |
|  | 2 | **Back Face - Toward CC** |  | 2028-04-29 | 2028-07-15 |  |  |  |
| 3S-F-4th20 |  | Integration of Services Before Facade | 5d | 2028-04-29 | 2028-05-08 | 3S-F-4th10, 3S-F-3rd45 | Facade [212886 INR]; Physical Progress [6690 h]; TATA Projects Ltd-25 | 212,886 |
| 3S-F-4th25 |  | Fixing of Facade Support | 15d | 2028-05-03 | 2028-05-22 | 3S-F-4th20 SS+2d | Facade [1064430 INR]; Physical Progress [20060 h]; TATA Projects Ltd-25 | 1,064,430 |
| 3S-F-4th45 |  | Fixing of Facade | 15d | 2028-05-22 | 2028-06-08 | 3S-F-4th25 | Facade [2554633 INR]; Physical Progress [26750 h]; TATA Projects Ltd-25 | 2,554,633 |
| 3S-F-4th60 |  | Integration of Services After Facade | 30d | 2028-06-08 | 2028-07-15 | 3S-F-4th45 | Facade [425772 INR]; Physical Progress [13370 h]; TATA Projects Ltd-25 | 425,772 |
|  | 3 | **Side Face** |  | 2028-05-08 | 2028-07-15 |  |  |  |
| 3S-F-4th30 |  | Integration of Services Before Facade | 5d | 2028-05-08 | 2028-05-13 | 3S-F-4th20, 3S-F-3rd50 | Facade [212886 INR]; Physical Progress [6690 h]; TATA Projects Ltd-25 | 212,886 |
| 3S-F-4th35 |  | Fixing of Facade Support | 10d | 2028-05-10 | 2028-05-22 | 3S-F-4th30 SS+2d | Facade [1064430 INR]; Physical Progress [13370 h]; TATA Projects Ltd-25 | 1,064,430 |
| 3S-F-4th50 |  | Fixing of Facade | 15d | 2028-05-22 | 2028-06-08 | 3S-F-4th35 | Facade [2554633 INR]; Physical Progress [26750 h]; TATA Projects Ltd-25 | 2,554,633 |
| 3S-F-4th65 |  | Integration of Services After Facade | 30d | 2028-06-08 | 2028-07-15 | 3S-F-4th50 | Facade [425772 INR]; Physical Progress [13370 h]; TATA Projects Ltd-25 | 425,772 |
|  | 6 | **Fifth Floor - Sixth Floor** |  | 2028-06-02 | 2028-08-31 |  |  |  |
|  | 1 | **Front Face - Toward Airport** |  | 2028-06-02 | 2028-08-24 |  |  |  |
| 3S-F-5th10 |  | Integration of Services Before Facade | 5d | 2028-06-02 | 2028-06-08 | 3S-F-4th40 | Facade [212886 INR]; Physical Progress [6690 h]; TATA Projects Ltd-25 | 212,886 |
| 3S-F-5th15 |  | Fixing of Facade Support | 15d | 2028-06-05 | 2028-06-22 | 3S-F-5th10 SS+2d, 3S-F-SS30 | Facade [1064430 INR]; Physical Progress [20060 h]; TATA Projects Ltd-25 | 1,064,430 |
| 3S-F-5th40 |  | Fixing of Facade | 15d | 2028-06-22 | 2028-07-11 | 3S-F-5th15 | Facade [2554633 INR]; Physical Progress [26750 h]; TATA Projects Ltd-25 | 2,554,633 |
| 3S-F-5th55 |  | Integration of Services After Facade | 30d | 2028-07-11 | 2028-08-24 | 3S-F-5th40 | Facade [425772 INR]; Physical Progress [13370 h]; TATA Projects Ltd-25 | 425,772 |
|  | 2 | **Back Face - Toward CC** |  | 2028-06-08 | 2028-08-31 |  |  |  |
| 3S-F-5th20 |  | Integration of Services Before Facade | 5d | 2028-06-08 | 2028-06-14 | 3S-F-5th10, 3S-F-4th45 | Facade [212886 INR]; Physical Progress [6690 h]; TATA Projects Ltd-25 | 212,886 |
| 3S-F-5th25 |  | Fixing of Facade Support | 15d | 2028-06-10 | 2028-06-28 | 3S-F-5th20 SS+2d | Facade [1064430 INR]; Physical Progress [20060 h]; TATA Projects Ltd-25 | 1,064,430 |
| 3S-F-5th45 |  | Fixing of Facade | 15d | 2028-06-28 | 2028-07-18 | 3S-F-5th25 | Facade [2554633 INR]; Physical Progress [26750 h]; TATA Projects Ltd-25 | 2,554,633 |
| 3S-F-5th60 |  | Integration of Services After Facade | 30d | 2028-07-18 | 2028-08-31 | 3S-F-5th45 | Facade [425772 INR]; Physical Progress [13370 h]; TATA Projects Ltd-25 | 425,772 |

| ID | WBS | Activity | Duration | Start | Finish | Predecessors | Resources | Cost |
| --- | --- | --- | --- | --- | --- | --- | --- | --- |
|  | 3 | **Side Face** |  | 2028-06-14 | 2028-08-31 |  |  |  |
| 3S-F-5th30 |  | Integration of Services Before Facade | 5d | 2028-06-14 | 2028-06-20 | 3S-F-5th20, 3S-F-4th50 | Facade [212886 INR]; Physical Progress [6690 h]; TATA Projects Ltd-25 | 212,886 |
| 3S-F-5th35 |  | Fixing of Facade Support | 10d | 2028-06-16 | 2028-06-28 | 3S-F-5th30 SS+2d | Facade [1064430 INR]; Physical Progress [13370 h]; TATA Projects Ltd-25 | 1,064,430 |
| 3S-F-5th50 |  | Fixing of Facade | 15d | 2028-06-28 | 2028-07-18 | 3S-F-5th35 | Facade [2554633 INR]; Physical Progress [26750 h]; TATA Projects Ltd-25 | 2,554,633 |
| 3S-F-5th65 |  | Integration of Services After Facade | 30d | 2028-07-18 | 2028-08-31 | 3S-F-5th50 | Facade [425772 INR]; Physical Progress [13370 h]; TATA Projects Ltd-25 | 425,772 |
|  | 7 | **Sixth Floor - Seventh Floor** |  | 2028-07-11 | 2028-10-14 |  |  |  |
|  | 1 | **Front Face - Toward Airport** |  | 2028-07-11 | 2028-10-09 |  |  |  |
| 3S-F-6th10 |  | Integration of Services Before Facade | 5d | 2028-07-11 | 2028-07-18 | 3S-F-5th40 | Facade [212886 INR]; Physical Progress [6690 h]; TATA Projects Ltd-25 | 212,886 |
| 3S-F-6th15 |  | Fixing of Facade Support | 15d | 2028-07-14 | 2028-08-04 | 3S-F-6th10 SS+2d, 3S-F-SS35 | Facade [1064430 INR]; Physical Progress [20060 h]; TATA Projects Ltd-25 | 1,064,430 |
| 3S-F-6th40 |  | Fixing of Facade | 15d | 2028-08-04 | 2028-08-26 | 3S-F-6th15 | Facade [2554633 INR]; Physical Progress [26750 h]; TATA Projects Ltd-25 | 2,554,633 |
| 3S-F-6th55 |  | Integration of Services After Facade | 30d | 2028-08-26 | 2028-10-09 | 3S-F-6th40 | Facade [425772 INR]; Physical Progress [13370 h]; TATA Projects Ltd-25 | 425,772 |
|  | 2 | **Back Face - Toward CC** |  | 2028-07-18 | 2028-10-14 |  |  |  |
| 3S-F-6th20 |  | Integration of Services Before Facade | 5d | 2028-07-18 | 2028-07-25 | 3S-F-6th10, 3S-F-5th45 | Facade [212886 INR]; Physical Progress [6690 h]; TATA Projects Ltd-25 | 212,886 |
| 3S-F-6th25 |  | Fixing of Facade Support | 15d | 2028-07-21 | 2028-08-11 | 3S-F-6th20 SS+2d | Facade [1064430 INR]; Physical Progress [20060 h]; TATA Projects Ltd-25 | 1,064,430 |
| 3S-F-6th45 |  | Fixing of Facade | 15d | 2028-08-11 | 2028-09-02 | 3S-F-6th25 | Facade [2554633 INR]; Physical Progress [26750 h]; TATA Projects Ltd-25 | 2,554,633 |
| 3S-F-6th65 |  | Integration of Services After Facade | 30d | 2028-09-02 | 2028-10-14 | 3S-F-6th45 | Facade [425772 INR]; Physical Progress [13370 h]; TATA Projects Ltd-25 | 425,772 |
|  | 3 | **Side Face** |  | 2028-07-25 | 2028-10-14 |  |  |  |
| 3S-F-6th30 |  | Integration of Services Before Facade | 5d | 2028-07-25 | 2028-08-02 | 3S-F-6th20, 3S-F-5th50 | Facade [212886 INR]; Physical Progress [6690 h]; TATA Projects Ltd-25 | 212,886 |
| 3S-F-6th35 |  | Fixing of Facade Support | 10d | 2028-07-28 | 2028-08-11 | 3S-F-6th30 SS+2d | Facade [1064430 INR]; Physical Progress [13370 h]; TATA Projects Ltd-25 | 1,064,430 |
| 3S-F-6th50 |  | Fixing of Facade | 15d | 2028-08-11 | 2028-09-02 | 3S-F-6th35 | Facade [2554633 INR]; Physical Progress [20060 h]; TATA Projects Ltd-25 | 2,554,633 |
| 3S-F-6th60 |  | Integration of Services After Facade | 30d | 2028-09-02 | 2028-10-14 | 3S-F-6th50 | Facade [425772 INR]; Physical Progress [13370 h]; TATA Projects Ltd-25 | 425,772 |
|  | 8 | **Seventh Floor - Terrace** |  | 2028-08-26 | 2028-11-22 |  |  |  |
|  | 1 | **Front Face - Toward Airport** |  | 2028-08-26 | 2028-11-16 |  |  |  |
| 3S-F-7th10 |  | Integration of Services Before Facade | 5d | 2028-08-26 | 2028-09-02 | 3S-F-6th40 | Facade [212886 INR]; Physical Progress [6690 h]; TATA Projects Ltd-25 | 212,886 |
| 3S-F-7th15 |  | Fixing of Facade Support | 15d | 2028-08-30 | 2028-09-19 | 3S-F-7th10 SS+2d, 3S-F-SS40 | Facade [1064430 INR]; Physical Progress [20060 h]; TATA Projects Ltd-25 | 1,064,430 |
| 3S-F-7th40 |  | Fixing of Facade | 15d | 2028-09-19 | 2028-10-11 | 3S-F-7th15 | Facade [2554633 INR]; Physical Progress [26750 h]; TATA Projects Ltd-25 | 2,554,633 |
| 3S-F-7th60 |  | Integration of Services After Facade | 30d | 2028-10-11 | 2028-11-16 | 3S-F-7th40 | Facade [425772 INR]; Physical Progress [13370 h]; TATA Projects Ltd-25 | 425,772 |

| ID | WBS | Activity | Duration | Start | Finish | Predecessors | Resources | Cost |
| --- | --- | --- | --- | --- | --- | --- | --- | --- |
|  | 2 | **Back Face - Toward CC** |  | 2028-09-02 | 2028-11-22 |  |  |  |
| 3S-F-7th20 |  | Integration of Services Before Facade | 5d | 2028-09-02 | 2028-09-09 | 3S-F-7th10, 3S-F-6th45 | Facade [212886 INR]; Physical Progress [6690 h]; TATA Projects Ltd-25 | 212,886 |
| 3S-F-7th25 |  | Fixing of Facade Support | 15d | 2028-09-05 | 2028-09-26 | 3S-F-7th20 SS+2d | Facade [1064430 INR]; Physical Progress [20060 h]; TATA Projects Ltd-25 | 1,064,430 |
| 3S-F-7th45 |  | Fixing of Facade | 15d | 2028-09-26 | 2028-10-18 | 3S-F-7th25 | Facade [2554633 INR]; Physical Progress [26750 h]; TATA Projects Ltd-25 | 2,554,633 |
| 3S-F-7th65 |  | Integration of Services After Facade | 30d | 2028-10-18 | 2028-11-22 | 3S-F-7th45 | Facade [425772 INR]; Physical Progress [13370 h]; TATA Projects Ltd-25 | 425,772 |
|  | 3 | **Side Face** |  | 2028-09-09 | 2028-11-22 |  |  |  |
| 3S-F-7th30 |  | Integration of Services Before Facade | 5d | 2028-09-09 | 2028-09-16 | 3S-F-7th20, 3S-F-6th50 | Facade [212886 INR]; Physical Progress [6690 h]; TATA Projects Ltd-25 | 212,886 |
| 3S-F-7th35 |  | Fixing of Facade Support | 10d | 2028-09-12 | 2028-09-26 | 3S-F-7th30 SS+2d | Facade [1064430 INR]; Physical Progress [13370 h]; TATA Projects Ltd-25 | 1,064,430 |
| 3S-F-7th50 |  | Fixing of Facade | 15d | 2028-09-26 | 2028-10-18 | 3S-F-7th35 | Facade [2554633 INR]; Physical Progress [16050 h]; TATA Projects Ltd-25 | 2,554,633 |
| 3S-F-7th55 |  | Integration of Services After Facade | 30d | 2028-10-18 | 2028-11-22 | 3S-F-7th50 | Facade [425772 INR]; Physical Progress [13370 h]; TATA Projects Ltd-25 | 425,772 |
|  | 1 | **Above Terrace** |  | 2028-06-08 | 2028-12-27 |  |  |  |
|  | 1 | **Front Face - Toward Airport** |  | 2028-10-11 | 2028-11-30 |  |  |  |
| 3S-F-Terrace30 |  | Integration of Services Before Facade | 5d | 2028-10-11 | 2028-10-18 | 3S-F-7th40 | Facade [212886 INR]; Physical Progress [6690 h]; TATA Projects Ltd-25 | 212,886 |
| 3S-F-Terrace35 |  | Fixing of Facade Support | 15d | 2028-10-13 | 2028-11-01 | 3S-F-Terrace30 SS+2d | Facade [1064430 INR]; Physical Progress [20060 h]; TATA Projects Ltd-25 | 1,064,430 |
| 3S-F-Terrace60 |  | Fixing of Facade | 15d | 2028-11-01 | 2028-11-18 | 3S-F-Terrace35 | Facade [2554633 INR]; Physical Progress [26750 h]; TATA Projects Ltd-25 | 2,554,633 |
| 3S-F-Terrace75 |  | Integration of Services After Facade | 10d | 2028-11-18 | 2028-11-30 | 3S-F-Terrace60 | Facade [425772 INR]; Physical Progress [13370 h]; TATA Projects Ltd-25 | 425,772 |
|  | 2 | **Back Face - Toward CC** |  | 2028-10-18 | 2028-12-06 |  |  |  |
| 3S-F-Terrace40 |  | Integration of Services Before Facade | 5d | 2028-10-18 | 2028-10-24 | 3S-F-Terrace30, 3S-F-7th45 | Facade [212886 INR]; Physical Progress [6690 h]; TATA Projects Ltd-25 | 212,886 |
| 3S-F-Terrace45 |  | Fixing of Facade Support | 15d | 2028-10-20 | 2028-11-07 | 3S-F-Terrace40 SS+2d | Facade [1064430 INR]; Physical Progress [20060 h]; TATA Projects Ltd-25 | 1,064,430 |
| 3S-F-Terrace65 |  | Fixing of Facade | 15d | 2028-11-07 | 2028-11-24 | 3S-F-Terrace45 | Facade [2554633 INR]; Physical Progress [26750 h]; TATA Projects Ltd-25 | 2,554,633 |
| 3S-F-Terrace80 |  | Integration of Services After Facade | 10d | 2028-11-24 | 2028-12-06 | 3S-F-Terrace65 | Facade [425772 INR]; Physical Progress [13370 h]; TATA Projects Ltd-25 | 425,772 |
|  | 3 | **Side Face** |  | 2028-10-24 | 2028-12-06 |  |  |  |
| 3S-F-Terrace50 |  | Integration of Services Before Facade | 5d | 2028-10-24 | 2028-10-30 | 3S-F-Terrace40, 3S-F-7th50 | Facade [212886 INR]; Physical Progress [6690 h]; TATA Projects Ltd-25 | 212,886 |
| 3S-F-Terrace55 |  | Fixing of Facade Support | 10d | 2028-10-26 | 2028-11-07 | 3S-F-Terrace50 SS+2d | Facade [1064430 INR]; Physical Progress [13370 h]; TATA Projects Ltd-25 | 1,064,430 |
| 3S-F-Terrace70 |  | Fixing of Facade | 15d | 2028-11-07 | 2028-11-24 | 3S-F-Terrace55 | Facade [2554633 INR]; Physical Progress [26750 h]; TATA Projects Ltd-25 | 2,554,633 |
| 3S-F-Terrace85 |  | Integration of Services After Facade | 10d | 2028-11-24 | 2028-12-06 | 3S-F-Terrace70 | Facade [425772 INR]; Physical Progress [13370 h]; TATA Projects Ltd-25 | 425,772 |

| ID | WBS | Activity | Duration | Start | Finish | Predecessors | Calendar | Resources | Cost |
| --- | --- | --- | --- | --- | --- | --- | --- | --- | --- |
|  | 4 | **Rooftop** |  | 2028-06-08 | 2028-12-27 |  |  |  |  |
| 3S-F-Terrace10 |  | Integration of Services Before Facade | 10d | 2028-06-08 | 2028-06-20 | 3S-F-4th50, 3S-Terrace15 |  | Facade [3701848 INR]; Physical Progress [5350 h]; TATA Projects Ltd-25 | 3,701,848 |
| 3S-F-Terrace15 |  | Fixing of Facade Support including structural steel | 45d | 2028-06-20 | 2028-08-19 | 3S-F-Terrace10, P-F-FRP-15, SSF20 |  | Facade [18509240 INR]; Physical Progress [60180 h]; TATA Projects Ltd-25 | 18,509,240 |
| 3S-F-Terrace20 |  | Fixing of FRP Facade with aluminium bars and louvers | 90d | 2028-08-19 | 2028-12-14 | 3S-F-Terrace15 |  | Facade [44422175 INR]; Physical Progress [80240 h]; TATA Projects Ltd-25 | 44,422,175 |
| 3S-F-Terrace25 |  | Integration of Services After Facade | 10d | 2028-12-14 | 2028-12-27 | 3S-F-Terrace20 |  | Facade [7403696 INR]; Physical Progress [20060 h]; TATA Projects Ltd-25 | 7,403,696 |
|  | 2 | **Testing, Commissioning, HO** |  | 2028-10-16 | 2029-05-16 |  |  |  |  |
|  | 1 | **Ground Floor** |  | 2029-01-10 | 2029-03-24 |  |  |  |  |
| 3S-T&C-GF10 |  | Testing & Commissioning | 30d | 2029-01-10 | 2029-02-15 | 3S-WMI-GF340, 3S-WMI-GF295, 3S-WMI-GF300, 3S-WMI-GF345, 3S-WMI-GF405 FF, 3S-WMI-GF290, 3S-WMI-GF320, 3S-WMI-GF325, 3S-WMI-GF280, 3S-WMI-GF335, 3S-WMI-GF260, 3S-WMI-GF285, 3S-WMI-GF350, 3S-WMI-GF355, 3S-WMI-GF360, 3S-WMI-GF380, 3S-WMI-GF385, 3S-WMI-GF390, 3S-WMI-GF395, 3S-WMI-GF400 | CSD-LKO Calender (6 day + Holiday)-25 | Physical Progress [30790 h]; Testing & Commissioing [2442299 INR]; TATA Projects Ltd-25 | 2,442,299 |
| 3S-T&C-GF15 |  | Snagging & Desnagging | 30d | 2029-02-16 | 2029-03-23 | 3S-T&C-GF10 | CSD-LKO Calender (6 day + Holiday)-25 | Physical Progress [30790 h]; TATA Projects Ltd-25 |  |
| 3S-T&C-GF20 |  | Handing Over | 1d | 2029-03-24 | 2029-03-24 | 3S-T&C-GF15 | CSD-LKO Calender (6 day + Holiday)-25 | Physical Progress [680 h]; TATA Projects Ltd-25 |  |
|  | 2 | **First Floor** |  | 2028-11-27 | 2029-02-09 |  |  |  |  |
| 3S-T&C-1st10 |  | Testing & Commissioning | 30d | 2028-11-27 | 2029-01-03 | 3S-WMI-1st330, 3S-WMI-1st295, 3S-WMI-1st300, 3S-WMI-1st335, 3S-WMI-1st260, 3S-WMI-1st285, 3S-WMI-1st280, 3S-WMI-1st325, 3S-WMI-1st290, 3S-WMI-1st315, 3S-WMI-1st320, 3S-WMI-1st340, 3S-WMI-1st345, 3S-WMI-1st350, 3S-WMI-1st365, 3S-WMI-1st370, 3S-WMI-1st375, 3S-WMI-1st380, 3S-WMI-1st385 | CSD-LKO Calender (6 day + Holiday)-25 | Physical Progress [30790 h]; Testing & Commissioing [2442299 INR]; TATA Projects Ltd-25 | 2,442,299 |
| 3S-T&C-1st15 |  | Snagging & Desnagging | 30d | 2029-01-03 | 2029-02-08 | 3S-T&C-1st10 | CSD-LKO Calender (6 day + Holiday)-25 | Physical Progress [30790 h]; TATA Projects Ltd-25 |  |
| 3S-T&C-1st20 |  | Handing Over | 1d | 2029-02-08 | 2029-02-09 | 3S-T&C-1st15 | CSD-LKO Calender (6 day + Holiday)-25 | Physical Progress [680 h]; TATA Projects Ltd-25 |  |
|  | 5 | **Service Floor** |  | 2028-10-16 | 2029-03-13 |  |  |  |  |
| 3S-T&C-Serv.F10 |  | Testing & Commissioning | 60d | 2028-10-16 | 2028-12-27 | 3S-WMI-Serv.F.280, 3S-WMI-Serv.F.285, 3S-WMI-Serv.F.290, 3S-WMI-Serv.F.355, 3S-WMI-Serv.F.350, 3S-WMI-Serv.F.365, 3S-WMI-Serv.F.270, 3S-WMI-Serv.F.345, 3S-WMI-Serv.F.275, 3S-WMI-Serv.F.315, 3S-WMI-Serv.F.340, 3S-WMI-Serv.F.295, 3S-WMI-Serv.F.300, 3S-WMI-Serv.F.305, 3S-WMI-Serv.F.320, 3S-WMI-Serv.F.325, 3S-WMI-Serv.F.330, 3S-WMI-Serv.F.335, 3S-WMI-Serv.F.360 | CSD-LKO Calender (6 day + Holiday)-25 | Physical Progress [30790 h]; Testing & Commissioing [2442299 INR]; TATA Projects Ltd-25 | 2,442,299 |
| 3S-T&C-Serv.F15 |  | Snagging & Desnagging | 60d | 2028-12-27 | 2029-03-12 | 3S-T&C-Serv.F10 | CSD-LKO Calender (6 day + Holiday)-25 | Physical Progress [30790 h]; TATA Projects Ltd-25 |  |
| 3S-T&C-Serv.F20 |  | Handing Over | 1d | 2029-03-12 | 2029-03-13 | 3S-T&C-Serv.F15 | CSD-LKO Calender (6 day + Holiday)-25 | Physical Progress [680 h]; TATA Projects Ltd-25 |  |
|  | 3 | **Second Floor** |  | 2028-12-09 | 2029-02-22 |  |  |  |  |
| 3S-T&C-2nd10 |  | Testing & Commissioning | 30d | 2028-12-09 | 2029-01-15 | 3S-WMI-2nd290, 3S-WMI-2nd440, 3S-WMI-2nd390, 3S-WMI-2nd600, 3S-WMI-2nd395, 3S-WMI-2nd445, 3S-WMI-2nd510, 3S-WMI-2nd400, 3S-WMI-2nd405, 3S-WMI-2nd605, 3S-WMI-2nd515, 3S-WMI-2nd520, 3S-WMI-2nd525, 3S-WMI-2nd530, 3S-WMI-2nd610, 3S-WMI-2nd615, 3S-WMI-2nd620, 3S-WMI-2nd625, 3S-WMI-2nd655, 3S-WMI-2nd280, 3S-WMI-2nd430, 3S-WMI-2nd360, 3S-WMI-2nd570, 3S-WMI-2nd365, 3S-WMI-2nd435, 3S-WMI-2nd480, 3S-WMI-2nd370, 3S-WMI-2nd375, 3S-WMI-2nd575, 3S-WMI-2nd485, 3S-WMI-2nd490, 3S-WMI-2nd495, 3S-WMI-2nd500, 3S-WMI-2nd580, 3S-WMI-2nd585, 3S-WMI-2nd590, 3S-WMI-2nd595, 3S-WMI-2nd650, 3S-WMI-2nd265, 3S-WMI-2nd675, 3S-WMI-2nd335, 3S-WMI-2nd660, 3S-WMI-2nd340, 3S-WMI-2nd420, 3S-WMI-2nd450, 3S-WMI-2nd345, 3S-WMI-2nd350, 3S-WMI-2nd540, 3S-WMI-2nd455, 3S-WMI-2nd460, 3S-WMI-2nd465, 3S-WMI-2nd565, 3S-WMI-2nd545, 3S-WMI-2nd550, 3S-WMI-2nd555, 3S-WMI-2nd560, 3S-WMI-2nd635 | CSD-LKO Calender (6 day + Holiday)-25 | Physical Progress [30790 h]; Testing & Commissioing [2442299 INR]; TATA Projects Ltd-25 | 2,442,299 |
| 3S-T&C-2nd15 |  | Snagging & Desnagging | 30d | 2029-01-16 | 2029-02-21 | 3S-T&C-2nd10 | CSD-LKO Calender (6 day + Holiday)-25 | Physical Progress [30790 h]; TATA Projects Ltd-25 |  |
| 3S-T&C-2nd20 |  | Handing Over | 1d | 2029-02-22 | 2029-02-22 | 3S-T&C-2nd15 | CSD-LKO Calender (6 day + Holiday)-25 | Physical Progress [680 h]; TATA Projects Ltd-25 |  |
|  | 4 | **Third Floor** |  | 2028-10-31 | 2029-01-12 |  |  |  |  |
| 3S-T&C-3rd10 |  | Testing & Commissioning | 30d | 2028-10-31 | 2028-12-05 | 3S-WMI-3rd270, 3S-WMI-3rd675, 3S-WMI-3rd335, 3S-WMI-3rd660, 3S-WMI-3rd340, 3S-WMI-3rd425, 3S-WMI-3rd450, 3S-WMI-3rd345, 3S-WMI-3rd350, 3S-WMI-3rd540, 3S-WMI-3rd455, 3S-WMI-3rd460, 3S-WMI-3rd465, 3S-WMI-3rd565, 3S-WMI-3rd545, 3S-WMI-3rd550, 3S-WMI-3rd555, 3S-WMI-3rd560, 3S-WMI-3rd635, 3S-WMI-3rd280, 3S-WMI-3rd430, 3S-WMI-3rd360, 3S-WMI-3rd570, 3S-WMI-3rd365, 3S-WMI-3rd435, 3S-WMI-3rd480, 3S-WMI-3rd370, 3S-WMI-3rd375, 3S-WMI-3rd575, 3S-WMI-3rd485, 3S-WMI-3rd490, 3S-WMI-3rd495, 3S-WMI-3rd500, 3S-WMI-3rd580, 3S-WMI-3rd585, 3S-WMI-3rd590, 3S-WMI-3rd595, 3S-WMI-3rd650, 3S-WMI-3rd290, 3S-WMI-3rd440, 3S-WMI-3rd390, 3S-WMI-3rd600, 3S-WMI-3rd395, 3S-WMI-3rd445, 3S-WMI-3rd510, 3S-WMI-3rd400, 3S-WMI-3rd405, 3S-WMI-3rd605, 3S-WMI-3rd515, 3S-WMI-3rd520, 3S-WMI-3rd525, 3S-WMI-3rd530, 3S-WMI-3rd610, 3S-WMI-3rd615, 3S-WMI-3rd620, 3S-WMI-3rd625, 3S-WMI-3rd655 | CSD-LKO Calender (6 day + Holiday)-25 | Physical Progress [30790 h]; Testing & Commissioing [2442299 INR]; TATA Projects Ltd-25 | 2,442,299 |
| 3S-T&C-3rd15 |  | Snagging & Desnagging | 30d | 2028-12-05 | 2029-01-11 | 3S-T&C-3rd10 | CSD-LKO Calender (6 day + Holiday)-25 | Physical Progress [30790 h]; TATA Projects Ltd-25 |  |
| 3S-T&C-3rd20 |  | Handing Over | 1d | 2029-01-11 | 2029-01-12 | 3S-T&C-3rd15 | CSD-LKO Calender (6 day + Holiday)-25 | Physical Progress [680 h]; TATA Projects Ltd-25 |  |

| ID | WBS | Activity | Duration | Start | Finish | Predecessors | Calendar | Resources | Cost |
| --- | --- | --- | --- | --- | --- | --- | --- | --- | --- |
|  | 6 | **Fourth Floor** |  | 2028-11-08 | 2029-01-20 |  |  |  |  |
| 3S-T&C-4th10 |  | Testing & Commissioning | 30d | 2028-11-08 | 2028-12-13 | 3S-WMI-4th270, 3S-WMI-4th665, 3S-WMI-4th340, 3S-WMI-4th635, 3S-WMI-4th345, 3S-WMI-4th425, 3S-WMI-4th455, 3S-WMI-4th350, 3S-WMI-4th355, 3S-WMI-4th550, 3S-WMI-4th460, 3S-WMI-4th465, 3S-WMI-4th470, 3S-WMI-4th480, 3S-WMI-4th555, 3S-WMI-4th560, 3S-WMI-4th565, 3S-WMI-4th570, 3S-WMI-4th640, 3S-WMI-4th285, 3S-WMI-4th435, 3S-WMI-4th365, 3S-WMI-4th575, 3S-WMI-4th370, 3S-WMI-4th440, 3S-WMI-4th485, 3S-WMI-4th375, 3S-WMI-4th380, 3S-WMI-4th580, 3S-WMI-4th490, 3S-WMI-4th495, 3S-WMI-4th500, 3S-WMI-4th505, 3S-WMI-4th585, 3S-WMI-4th590, 3S-WMI-4th595, 3S-WMI-4th600, 3S-WMI-4th655, 3S-WMI-4th295, 3S-WMI-4th445, 3S-WMI-4th395, 3S-WMI-4th605, 3S-WMI-4th400, 3S-WMI-4th450, 3S-WMI-4th515, 3S-WMI-4th405, 3S-WMI-4th410, 3S-WMI-4th610, 3S-WMI-4th520, 3S-WMI-4th525, 3S-WMI-4th530, 3S-WMI-4th535, 3S-WMI-4th615, 3S-WMI-4th620, 3S-WMI-4th625, 3S-WMI-4th630, 3S-WMI-4th660 | CSD-LKO Calender (6 day + Holiday)-25 | Physical Progress [30790 h]; Testing & Commissioing [2442299 INR]; TATA Projects Ltd-25 | 2,442,299 |
| 3S-T&C-4th15 |  | Snagging & Desnagging | 30d | 2028-12-13 | 2029-01-19 | 3S-T&C-4th10 | CSD-LKO Calender (6 day + Holiday)-25 | Physical Progress [30790 h]; TATA Projects Ltd-25 |  |
| 3S-T&C-4th20 |  | Handing Over | 1d | 2029-01-19 | 2029-01-20 | 3S-T&C-4th15 | CSD-LKO Calender (6 day + Holiday)-25 | Physical Progress [680 h]; TATA Projects Ltd-25 |  |
|  | 7 | **Fifth Floor** |  | 2028-12-18 | 2029-03-05 |  |  |  |  |
| 3S-T&C-5th10 |  | Testing & Commissioning | 30d | 2028-12-18 | 2029-01-24 | 3S-WMI-5th275, 3S-WMI-5th645, 3S-WMI-5th345, 3S-WMI-5th550, 3S-WMI-5th350, 3S-WMI-5th430, 3S-WMI-5th460, 3S-WMI-5th355, 3S-WMI-5th360, 3S-WMI-5th555, 3S-WMI-5th465, 3S-WMI-5th470, 3S-WMI-5th475, 3S-WMI-5th480, 3S-WMI-5th560, 3S-WMI-5th565, 3S-WMI-5th570, 3S-WMI-5th575, 3S-WMI-5th640, 3S-WMI-5th290, 3S-WMI-5th440, 3S-WMI-5th370, 3S-WMI-5th580, 3S-WMI-5th375, 3S-WMI-5th445, 3S-WMI-5th490, 3S-WMI-5th380, 3S-WMI-5th385, 3S-WMI-5th585, 3S-WMI-5th495, 3S-WMI-5th500, 3S-WMI-5th505, 3S-WMI-5th510, 3S-WMI-5th590, 3S-WMI-5th595, 3S-WMI-5th600, 3S-WMI-5th605, 3S-WMI-5th660, 3S-WMI-5th300, 3S-WMI-5th450, 3S-WMI-5th400, 3S-WMI-5th610, 3S-WMI-5th405, 3S-WMI-5th455, 3S-WMI-5th520, 3S-WMI-5th410, 3S-WMI-5th415, 3S-WMI-5th615, 3S-WMI-5th525, 3S-WMI-5th530, 3S-WMI-5th535, 3S-WMI-5th540, 3S-WMI-5th620, 3S-WMI-5th625, 3S-WMI-5th630, 3S-WMI-5th635, 3S-WMI-5th665 | CSD-LKO Calender (6 day + Holiday)-25 | Physical Progress [30790 h]; Testing & Commissioing [2442299 INR]; TATA Projects Ltd-25 | 2,442,299 |
| 3S-T&C-5th15 |  | Snagging & Desnagging | 30d | 2029-01-24 | 2029-03-03 | 3S-T&C-5th10 | CSD-LKO Calender (6 day + Holiday)-25 | Physical Progress [30790 h]; TATA Projects Ltd-25 |  |
| 3S-T&C-5th20 |  | Handing Over | 1d | 2029-03-03 | 2029-03-05 | 3S-T&C-5th15 | CSD-LKO Calender (6 day + Holiday)-25 | Physical Progress [680 h]; TATA Projects Ltd-25 |  |
|  | 8 | **Sixth Floor** |  | 2029-01-16 | 2029-04-02 |  |  |  |  |
| 3S-T&C-6th10 |  | Testing & Commissioning | 30d | 2029-01-16 | 2029-02-22 | 3S-WMI-6th285, 3S-WMI-6th520, 3S-WMI-6th350, 3S-WMI-6th555, 3S-WMI-6th355, 3S-WMI-6th435, 3S-WMI-6th460, 3S-WMI-6th360, 3S-WMI-6th365, 3S-WMI-6th560, 3S-WMI-6th465, 3S-WMI-6th470, 3S-WMI-6th475, 3S-WMI-6th480, 3S-WMI-6th565, 3S-WMI-6th570, 3S-WMI-6th575, 3S-WMI-6th580, 3S-WMI-6th650, 3S-WMI-6th305, 3S-WMI-6th450, 3S-WMI-6th405, 3S-WMI-6th615, 3S-WMI-6th410, 3S-WMI-6th455, 3S-WMI-6th525, 3S-WMI-6th415, 3S-WMI-6th420, 3S-WMI-6th620, 3S-WMI-6th530, 3S-WMI-6th535, 3S-WMI-6th540, 3S-WMI-6th545, 3S-WMI-6th625, 3S-WMI-6th630, 3S-WMI-6th635, 3S-WMI-6th640, 3S-WMI-6th665, 3S-WMI-6th295, 3S-WMI-6th440, 3S-WMI-6th375, 3S-WMI-6th585, 3S-WMI-6th380, 3S-WMI-6th445, 3S-WMI-6th490, 3S-WMI-6th385, 3S-WMI-6th390, 3S-WMI-6th590, 3S-WMI-6th495, 3S-WMI-6th500, 3S-WMI-6th505, 3S-WMI-6th510, 3S-WMI-6th595, 3S-WMI-6th600, 3S-WMI-6th605, 3S-WMI-6th610, 3S-WMI-6th660 | CSD-LKO Calender (6 day + Holiday)-25 | Physical Progress [30790 h]; Testing & Commissioing [2442299 INR]; TATA Projects Ltd-25 | 2,442,299 |
| 3S-T&C-6th15 |  | Snagging & Desnagging | 30d | 2029-02-22 | 2029-03-31 | 3S-T&C-6th10 | CSD-LKO Calender (6 day + Holiday)-25 | Physical Progress [30790 h]; TATA Projects Ltd-25 |  |
| 3S-T&C-6th20 |  | Handing Over | 1d | 2029-03-31 | 2029-04-02 | 3S-T&C-6th15 | CSD-LKO Calender (6 day + Holiday)-25 | Physical Progress [680 h]; TATA Projects Ltd-25 |  |
|  | 10 | **Seventh Floor** |  | 2029-03-20 | 2029-05-16 |  |  |  |  |
| 3S-T&C-7th10 |  | Testing & Commissioning | 25d | 2029-03-20 | 2029-04-19 | 3S-F-Terrace85, 3S-WMI-7th300, 3S-WMI-7th445, 3S-WMI-7th380, 3S-WMI-7th585, 3S-WMI-7th385, 3S-WMI-7th450, 3S-WMI-7th495, 3S-WMI-7th390, 3S-WMI-7th395, 3S-WMI-7th590, 3S-WMI-7th500, 3S-WMI-7th505, 3S-WMI-7th510, 3S-WMI-7th515, 3S-WMI-7th595, 3S-WMI-7th600, 3S-WMI-7th605, 3S-WMI-7th610, 3S-WMI-7th660, 3S-WMI-7th310, 3S-WMI-7th455, 3S-WMI-7th405, 3S-WMI-7th615, 3S-WMI-7th410, 3S-WMI-7th460, 3S-WMI-7th525, 3S-WMI-7th415, 3S-WMI-7th420, 3S-WMI-7th620, 3S-WMI-7th530, 3S-WMI-7th535, 3S-WMI-7th540, 3S-WMI-7th545, 3S-WMI-7th625, 3S-WMI-7th630, 3S-WMI-7th635, 3S-WMI-7th640, 3S-WMI-7th670, 3S-WMI-7th290, 3S-WMI-7th435, 3S-WMI-7th350, 3S-WMI-7th555, 3S-WMI-7th355, 3S-WMI-7th440, 3S-WMI-7th465, 3S-WMI-7th360, 3S-WMI-7th365, 3S-WMI-7th560, 3S-WMI-7th470, 3S-WMI-7th475, 3S-WMI-7th480, 3S-WMI-7th485, 3S-WMI-7th565, 3S-WMI-7th570, 3S-WMI-7th575, 3S-WMI-7th580, 3S-WMI-7th655 | CSD-LKO Calender (6 day + Holiday)-25 | Physical Progress [20530 h]; Testing & Commissioing [2442299 INR]; TATA Projects Ltd-25 | 2,442,299 |
| 3S-T&C-7th15 |  | Snagging & Desnagging | 20d | 2029-04-19 | 2029-05-15 | 3S-T&C-7th10 | CSD-LKO Calender (6 day + Holiday)-25 | Physical Progress [18470 h]; TATA Projects Ltd-25 |  |
| 3S-T&C-7th20 |  | Handing Over | 1d | 2029-05-15 | 2029-05-16 | 3S-T&C-7th15 | CSD-LKO Calender (6 day + Holiday)-25 | Physical Progress [680 h]; TATA Projects Ltd-25 |  |
|  | 9 | **Terrace Floor** |  | 2029-02-21 | 2029-04-20 |  |  |  |  |
| 3S-T&C-Terrace10 |  | Testing & Commissioning | 25d | 2029-02-21 | 2029-03-23 | 3S-Terrace20, 3S-F-Terrace85, 3S-VT30 |  | Physical Progress [30790 h]; Testing & Commissioing [1000000 INR]; TATA Projects Ltd-25 | 1,000,000 |
| 3S-T&C-Terrace15 |  | Snagging & Desnagging | 22d | 2029-03-23 | 2029-04-19 | 3S-T&C-Terrace10 |  | Physical Progress [30790 h]; TATA Projects Ltd-25 |  |
| 3S-T&C-Terrace20 |  | Handing Over | 1d | 2029-04-19 | 2029-04-20 | 3S-T&C-Terrace15 |  | Physical Progress [680 h]; TATA Projects Ltd-25 |  |
|  | 8 | **Retail Block 2** |  | 2026-07-25 | 2029-06-07 |  |  |  |  |
|  | 6 | **Substructure** |  | 2026-07-25 | 2027-06-09 |  |  |  |  |
|  | 4 | **Foundation** |  | 2026-07-25 | 2027-01-09 |  |  |  |  |
|  | 2 | **Pour 1** |  | 2026-07-25 | 2027-01-09 |  |  |  |  |
|  | 1 | **CF16B, CF16C** |  | 2026-11-06 | 2027-01-09 |  |  |  |  |
| RB2-SS-FN10 |  | Ramp Excavation | 12d | 2026-11-06 | 2026-11-19 | Milestones-130 SS |  | Physical Progress [14270 h]; Pocket Excavation; TATA Projects Ltd-25 |  |
| RB2-SS-FN15 |  | Pocket Excavation | 5d | 2026-11-20 | 2026-11-25 | Milestones-130, RB2-SS-FN10 |  | Physical Progress [1900 h]; Pocket Excavation; TATA Projects Ltd-25 |  |
| RB2-SS-FN20 |  | Surface dressing | 1d | 2026-11-26 | 2026-11-26 | RB2-SS-FN15 |  | Helper [30 h]; Physical Progress [950 h]; Surface Dressing [720 Sq m]; TATA Projects Ltd-25 | 32,400 |
| RB2-SS-FN25 |  | ATT | 1d | 2026-11-27 | 2026-11-27 | RB2-SS-FN20 |  | Physical Progress [950 h]; ATT [792 Sq m]; TATA Projects Ltd-25 | 108,504 |
| RB2-SS-FN30 |  | PCC | 1d | 2026-11-27 | 2026-11-27 | RB2-SS-FN25 FF, RB2-SS-FN20 |  | Mason [10 h]; Helper [10 h]; Physical Progress [950 h]; Concrete M10 [54 m3]; TATA Projects Ltd-25 | 466,506 |
| RB2-SS-FN35 |  | Shuttering | 9d | 2026-11-28 | 2026-12-08 | RB2-SS-FN30 |  | Carpenter [2220 h]; Helper [1110 h]; Physical Progress [1900 h]; Formwork [1327 Sq m]; TATA Projects Ltd-25 | 1,546,167.32 |
| RB2-SS-FN40 |  | Blockwork/Brickwork | 1d | 2026-11-28 | 2026-11-28 | RB2-SS-FN15, RB2-SS-FN30 |  | Brickwork for the footing [64 CuM]; Mason [430 h]; Helper [220 h]; Physical Progress [1900 h]; TATA Projects Ltd-25 | 531,200 |
| RB2-SS-FN45 |  | Waterproofing | 0d | 2026-12-09 | 2026-12-09 | RB2-SS-FN30, RB2-SS-FN35 |  | Waterproofing (Raft/Grade Slab); Waterprrofing Mason; Helper; Physical Progress; TATA Projects Ltd-25 |  |
| RB2-SS-FN90 |  | Reinforcement | 25d | 2026-12-09 | 2027-01-08 | RB2-SS-FN45 |  | Barbender [14400 h]; Helper [7200 h]; Physical Progress [1900 h]; Reinforcement Steel [216 MT1]; TATA Projects Ltd-25 | 20,846,700 |
| RB2-SS-FN110 |  | Concrete | 1d | 2027-01-09 | 2027-01-09 | RB2-SS-FN90 |  | Mason [50 h]; Helper [50 h]; Physical Progress [950 h]; Concrete M40 [1798 m3]; TATA Projects Ltd-25 | 17,740,866 |

| ID | WBS | Activity | Duration | Start | Finish | Predecessors | Complete | Resources | Cost |
| --- | --- | --- | --- | --- | --- | --- | --- | --- | --- |
|  | 4 | **Sump** |  | 2026-11-30 | 2026-12-11 |  |  |  |  |
| RB2-SS-FN55 |  | Pocket Excavation | 1d | 2026-11-30 | 2026-11-30 | RB2-SS-FN40 |  | Physical Progress [950 h]; Pocket Excavation; TATA Projects Ltd-25 |  |
| RB2-SS-FN60 |  | Surface dressing | 1d | 2026-12-01 | 2026-12-01 | RB2-SS-FN55 |  | Helper [30 h]; Physical Progress [950 h]; Surface Dressing [22 Sq m]; TATA Projects Ltd-25 | 990 |
| RB2-SS-FN80 |  | ATT | 1d | 2026-12-02 | 2026-12-02 | RB2-SS-FN60 |  | Physical Progress [950 h]; ATT [24 Sq m]; TATA Projects Ltd-25 | 3,288 |
| RB2-SS-FN85 |  | PCC | 1d | 2026-12-02 | 2026-12-02 | RB2-SS-FN80 FF |  | Mason [10 h]; Helper [10 h]; Physical Progress [950 h]; Concrete M10 [2 m3]; TATA Projects Ltd-25 | 17,278 |
| RB2-SS-FN100 |  | Shuttering | 2d | 2026-12-03 | 2026-12-04 | RB2-SS-FN85 |  | Carpenter [40 h]; Helper [20 h]; Physical Progress [1900 h]; Formwork [24 Sq m]; TATA Projects Ltd-25 | 27,963.84 |
| RB2-SS-FN115 |  | Waterproofing | 0d | 2026-12-05 | 2026-12-05 | RB2-SS-FN85, RB2-SS-FN100 |  | Waterproofing (Raft/Grade Slab); Waterprrofing Mason; Helper; Physical Progress; TATA Projects Ltd-25 |  |
| RB2-SS-FN140 |  | Reinforcement | 2d | 2026-12-05 | 2026-12-07 | RB2-SS-FN115 |  | Barbender [70 h]; Helper [40 h]; Physical Progress [1900 h]; Reinforcement Steel [1 MT1]; TATA Projects Ltd-25 | 96,512.5 |
| RB2-SS-FN155 |  | MEP Services | 3d | 2026-12-08 | 2026-12-10 | RB2-SS-FN140 |  | Physical Progress [2850 h]; TATA Projects Ltd-25 |  |
| RB2-SS-FN180 |  | Concrete | 1d | 2026-12-11 | 2026-12-11 | RB2-SS-FN140, RB2-SS-FN155 |  | Mason [50 h]; Helper [50 h]; Physical Progress [950 h]; Concrete M40 [8 m3]; TATA Projects Ltd-25 | 78,936 |
|  | 3 | **F9 - 3, F10 -2** |  | 2026-07-25 | 2026-10-14 |  |  |  |  |
| RB2-SS-FN50 |  | Pocket Excavation | 0d | 2026-07-25 A | 2026-07-25 A | Milestones-50 SS | 100% | Physical Progress; Pocket Excavation; TATA Projects Ltd-25 |  |
| RB2-SS-FN65 |  | Surface dressing | 1d | 2026-09-30 | 2026-10-01 | RB2-SS-FN50 |  | Helper [30 h]; Physical Progress [950 h]; Surface Dressing [136 Sq m]; TATA Projects Ltd-25 | 6,120 |
| RB2-SS-FN70 |  | ATT | 1d | 2026-09-30 | 2026-10-01 | RB2-SS-FN50 |  | Physical Progress [950 h]; ATT [150 Sq m]; TATA Projects Ltd-25 | 20,550 |
| RB2-SS-FN95 |  | PCC | 1d | 2026-10-01 | 2026-10-03 | RB2-SS-FN70 FF, RB2-SS-FN65 |  | Mason [10 h]; Helper [10 h]; Physical Progress [950 h]; Concrete M10 [10 m3]; TATA Projects Ltd-25 | 86,390 |
| RB2-SS-FN105 |  | Shuttering | 3d | 2026-10-03 | 2026-10-07 | RB2-SS-FN95 |  | Carpenter [230 h]; Helper [120 h]; Physical Progress [2850 h]; Formwork [133 Sq m]; TATA Projects Ltd-25 | 154,966.28 |
| RB2-SS-FN125 |  | Waterproofing | 0d | 2026-10-07 | 2026-10-07 | RB2-SS-FN95, RB2-SS-FN105 |  | Waterproofing (Raft/Grade Slab); Waterprrofing Mason; Helper; Physical Progress; TATA Projects Ltd-25 |  |
| RB2-SS-FN165 |  | Reinforcement | 5d | 2026-10-07 | 2026-10-13 | RB2-SS-FN125 |  | Barbender [1470 h]; Helper [740 h]; Physical Progress [2850 h]; Reinforcement Steel [22 MT1]; TATA Projects Ltd-25 | 2,123,275 |
| RB2-SS-FN205 |  | Concrete | 1d | 2026-10-13 | 2026-10-14 | RB2-SS-FN165 |  | Mason [50 h]; Helper [50 h]; Physical Progress [950 h]; Concrete M40 [180 m3]; TATA Projects Ltd-25 | 1,776,060 |
|  | 3 | **Pour 2** |  | 2026-09-30 | 2026-12-28 |  |  |  |  |
|  | 1 | **CF33, CF33A** |  | 2026-09-30 | 2026-12-28 |  |  |  |  |
| RB2-SS-FN75 |  | Pocket Excavation | 5d | 2026-09-30 | 2026-10-07 | RB2-SS-FN50 |  | Physical Progress [3810 h]; Pocket Excavation; TATA Projects Ltd-25 |  |
| RB2-SS-FN120 |  | Surface dressing | 1d | 2026-10-07 | 2026-10-08 | RB2-SS-FN75 |  | Helper [30 h]; Physical Progress [950 h]; Surface Dressing [1623 Sq m]; TATA Projects Ltd-25 | 73,035 |
| RB2-SS-FN130 |  | ATT | 1d | 2026-10-08 | 2026-10-09 | RB2-SS-FN120 |  | Physical Progress [950 h]; ATT [1785 Sq m]; TATA Projects Ltd-25 | 244,545 |
| RB2-SS-FN135 |  | PCC | 1d | 2026-10-08 | 2026-10-09 | RB2-SS-FN130 FF, RB2-SS-FN120 |  | Mason [10 h]; Helper [10 h]; Physical Progress [950 h]; Concrete M10 [122 m3]; TATA Projects Ltd-25 | 1,053,958 |
| RB2-SS-FN145 |  | Shuttering | 20d | 2026-10-09 | 2026-11-03 | RB2-SS-FN135 |  | Carpenter [4990 h]; Helper [2500 h]; Physical Progress [3810 h]; Formwork [2994 Sq m]; TATA Projects Ltd-25 | 3,488,489.04 |
| RB2-SS-FN150 |  | Blockwork/Brickwork | 1d | 2026-10-09 | 2026-10-10 | RB2-SS-FN75, RB2-SS-FN135 |  | Brickwork for the footing [64 CuM]; Mason [430 h]; Helper [220 h]; Physical Progress [2850 h]; TATA Projects Ltd-25 | 531,200 |
| RB2-SS-FN170 |  | Waterproofing | 0d | 2026-11-03 | 2026-11-03 | RB2-SS-FN135, RB2-SS-FN145 |  | Waterproofing (Raft/Grade Slab); Waterprrofing Mason; Helper; Physical Progress; TATA Projects Ltd-25 |  |
| RB2-SS-FN230 |  | Reinforcement | 45d | 2026-11-03 | 2026-12-26 | RB2-SS-FN170 |  | Barbender [32470 h]; Helper [16240 h]; Physical Progress [3810 h]; Reinforcement Steel [487 MT1]; TATA Projects Ltd-25 | 47,001,587.5 |
| RB2-SS-FN260 |  | Concrete | 1d | 2026-12-26 | 2026-12-28 | RB2-SS-FN230 |  | Mason [50 h]; Helper [50 h]; Physical Progress [950 h]; Concrete M40 [4057 m3]; TATA Projects Ltd-25 | 40,030,419 |

| ID | WBS | Activity | Duration | Start | Finish | Predecessors | Resources | Cost |
| --- | --- | --- | --- | --- | --- | --- | --- | --- |
|  | 4 | **CF9E** |  | 2026-10-10 | 2026-11-04 |  |  |  |
| RB2-SS-FN160 |  | Pocket Excavation | 1d | 2026-10-10 | 2026-10-12 | RB2-SS-FN150 | Physical Progress [950 h]; Pocket Excavation; TATA Projects Ltd-25 |  |
| RB2-SS-FN175 |  | Surface dressing | 1d | 2026-10-12 | 2026-10-13 | RB2-SS-FN160 | Helper [30 h]; Physical Progress [950 h]; Surface Dressing [262 Sq m]; TATA Projects Ltd-25 | 11,790 |
| RB2-SS-FN190 |  | ATT | 1d | 2026-10-13 | 2026-10-14 | RB2-SS-FN175 | Physical Progress [950 h]; ATT [288 Sq m]; TATA Projects Ltd-25 | 39,456 |
| RB2-SS-FN195 |  | PCC | 1d | 2026-10-13 | 2026-10-14 | RB2-SS-FN190 FF | Mason [10 h]; Helper [10 h]; Physical Progress [950 h]; Concrete M10 [20 m3]; TATA Projects Ltd-25 | 172,780 |
| RB2-SS-FN200 |  | Shuttering | 6d | 2026-10-14 | 2026-10-22 | RB2-SS-FN195 | Carpenter [580 h]; Helper [290 h]; Physical Progress [1900 h]; Formwork [348 Sq m]; TATA Projects Ltd-25 | 405,475.68 |
| RB2-SS-FN215 |  | Waterproofing | 0d | 2026-10-22 | 2026-10-22 | RB2-SS-FN195, RB2-SS-FN200 | Waterproofing (Raft/Grade Slab); Waterprrofing Mason; Helper; Physical Progress; TATA Projects Ltd-25 |  |
| RB2-SS-FN245 |  | Reinforcement | 10d | 2026-10-22 | 2026-11-03 | RB2-SS-FN215 | Barbender [3800 h]; Helper [1900 h]; Physical Progress [1900 h]; Reinforcement Steel [57 MT1]; TATA Projects Ltd-25 | 5,501,212.5 |
| RB2-SS-FN265 |  | Concrete | 1d | 2026-11-03 | 2026-11-04 | RB2-SS-FN245 | Mason [50 h]; Helper [50 h]; Physical Progress [950 h]; Concrete M40 [471 m3]; TATA Projects Ltd-25 | 4,647,357 |
|  | 1 | **Pour 3** |  | 2026-10-12 | 2026-12-07 |  |  |  |
|  | 1 | **CF16A** |  | 2026-10-12 | 2026-12-05 |  |  |  |
| RB2-SS-FN185 |  | Pocket Excavation | 3d | 2026-10-12 | 2026-10-15 | RB2-SS-FN160 | Physical Progress [2850 h]; Pocket Excavation; TATA Projects Ltd-25 |  |
| RB2-SS-FN210 |  | Surface dressing | 1d | 2026-10-15 | 2026-10-16 | RB2-SS-FN185 | Helper [30 h]; Physical Progress [950 h]; Surface Dressing [779 Sq m]; TATA Projects Ltd-25 | 35,055 |
| RB2-SS-FN220 |  | ATT | 1d | 2026-10-16 | 2026-10-17 | RB2-SS-FN210 | Physical Progress [950 h]; ATT [857 Sq m]; TATA Projects Ltd-25 | 117,409 |
| RB2-SS-FN225 |  | PCC | 1d | 2026-10-16 | 2026-10-17 | RB2-SS-FN220 FF, RB2-SS-FN210 | Mason [10 h]; Helper [10 h]; Physical Progress [950 h]; Concrete M10 [58 m3]; TATA Projects Ltd-25 | 501,062 |
| RB2-SS-FN235 |  | Shuttering | 10d | 2026-10-17 | 2026-10-30 | RB2-SS-FN225 | Carpenter [2400 h]; Helper [1200 h]; Physical Progress [2850 h]; Formwork [1437 Sq m]; TATA Projects Ltd-25 | 1,674,334.92 |
| RB2-SS-FN240 |  | Blockwork/Brickwork | 1d | 2026-10-17 | 2026-10-19 | RB2-SS-FN185, RB2-SS-FN225 | Brickwork for the footing [64 CuM]; Mason [430 h]; Helper [220 h]; Physical Progress [2850 h]; TATA Projects Ltd-25 | 531,200 |
| RB2-SS-FN250 |  | Waterproofing | 0d | 2026-10-30 | 2026-10-30 | RB2-SS-FN225, RB2-SS-FN235 | Waterproofing (Raft/Grade Slab); Waterprrofing Mason; Helper; Physical Progress; TATA Projects Ltd-25 |  |
| RB2-SS-FN285 |  | Reinforcement | 30d | 2026-10-30 | 2026-12-04 | RB2-SS-FN250 | Barbender [15600 h]; Helper [7800 h]; Physical Progress [2850 h]; Reinforcement Steel [234 MT1]; TATA Projects Ltd-25 | 22,583,925 |
| RB2-SS-FN300 |  | Concrete | 1d | 2026-12-04 | 2026-12-05 | RB2-SS-FN285 | Mason [50 h]; Helper [50 h]; Physical Progress [950 h]; Concrete M40 [1947 m3]; TATA Projects Ltd-25 | 19,211,049 |
|  | 2 | **CF50, CF35, CF16D, CF49** |  | 2026-10-19 | 2026-12-07 |  |  |  |
| RB2-SS-FN255 |  | Pocket Excavation | 3d | 2026-10-19 | 2026-10-23 | RB2-SS-FN240 | Physical Progress [2850 h]; Pocket Excavation; TATA Projects Ltd-25 |  |
| RB2-SS-FN270 |  | Surface dressing | 1d | 2026-10-23 | 2026-10-24 | RB2-SS-FN255 | Helper [30 h]; Physical Progress [950 h]; Surface Dressing [697 Sq m]; TATA Projects Ltd-25 | 31,365 |
| RB2-SS-FN275 |  | ATT | 1d | 2026-10-24 | 2026-10-26 | RB2-SS-FN270 | Physical Progress [950 h]; ATT [767 Sq m]; TATA Projects Ltd-25 | 105,079 |
| RB2-SS-FN280 |  | PCC | 1d | 2026-10-24 | 2026-10-26 | RB2-SS-FN275 FF, RB2-SS-FN270 | Mason [10 h]; Helper [10 h]; Physical Progress [950 h]; Concrete M10 [52 m3]; TATA Projects Ltd-25 | 449,228 |
| RB2-SS-FN290 |  | Blockwork/Brickwork | 1d | 2026-10-26 | 2026-10-27 | RB2-SS-FN255, RB2-SS-FN280 | Brickwork for the footing [64 CuM]; Mason [430 h]; Helper [220 h]; Physical Progress [2850 h]; TATA Projects Ltd-25 | 531,200 |
| RB2-SS-FN295 |  | Shuttering | 10d | 2026-10-26 | 2026-11-06 | RB2-SS-FN280 | Carpenter [1720 h]; Helper [860 h]; Physical Progress [2850 h]; Formwork [1029 Sq m]; TATA Projects Ltd-25 | 1,198,949.64 |
| RB2-SS-FN305 |  | Waterproofing | 0d | 2026-11-06 | 2026-11-06 | RB2-SS-FN280, RB2-SS-FN295 | Waterproofing (Raft/Grade Slab); Waterprrofing Mason; Helper; Physical Progress; TATA Projects Ltd-25 |  |
| RB2-SS-FN340 |  | Reinforcement | 25d | 2026-11-06 | 2026-12-05 | RB2-SS-FN305 | Barbender [11140 h]; Helper [5570 h]; Physical Progress [2850 h]; Reinforcement Steel [167 MT1]; TATA Projects Ltd-25 | 16,117,587.5 |
| RB2-SS-FN365 |  | Concrete | 1d | 2026-12-05 | 2026-12-07 | RB2-SS-FN290, RB2-SS-FN340 | Mason [50 h]; Helper [50 h]; Physical Progress [950 h]; Concrete M40 [1394 m3]; TATA Projects Ltd-25 | 13,754,598 |

| ID | WBS | Activity | Duration | Start | Finish | Predecessors | Resources | Cost |
| --- | --- | --- | --- | --- | --- | --- | --- | --- |
|  | 3 | **F15-2** |  | 2026-10-27 | 2026-11-14 |  |  |  |
| RB2-SS-FN310 |  | Pocket Excavation | 1d | 2026-10-27 | 2026-10-28 | RB2-SS-FN290 | Physical Progress [950 h]; Pocket Excavation; TATA Projects Ltd-25 |  |
| RB2-SS-FN315 |  | Surface dressing | 1d | 2026-10-28 | 2026-10-29 | RB2-SS-FN310 | Helper [30 h]; Physical Progress [950 h]; Surface Dressing [113 Sq m]; TATA Projects Ltd-25 | 5,085 |
| RB2-SS-FN320 |  | ATT | 1d | 2026-10-28 | 2026-10-29 | RB2-SS-FN310 | Physical Progress [950 h]; ATT [124 Sq m]; TATA Projects Ltd-25 | 16,988 |
| RB2-SS-FN325 |  | PCC | 1d | 2026-10-29 | 2026-10-30 | RB2-SS-FN320 FF, RB2-SS-FN315 | Mason [10 h]; Helper [10 h]; Physical Progress [950 h]; Concrete M10 [8 m3]; TATA Projects Ltd-25 | 69,112 |
| RB2-SS-FN330 |  | Blockwork/Brickwork | 1d | 2026-10-30 | 2026-10-31 | RB2-SS-FN310, RB2-SS-FN325 | Brickwork for the footing [64 CuM]; Mason [430 h]; Helper [220 h]; Physical Progress [2850 h]; TATA Projects Ltd-25 | 531,200 |
| RB2-SS-FN335 |  | Shuttering | 2d | 2026-10-30 | 2026-11-02 | RB2-SS-FN325 | Carpenter [250 h]; Helper [130 h]; Physical Progress [1900 h]; Formwork [149 Sq m]; TATA Projects Ltd-25 | 173,608.84 |
| RB2-SS-FN345 |  | Waterproofing | 0d | 2026-11-02 | 2026-11-02 | RB2-SS-FN325, RB2-SS-FN335 | Waterproofing (Raft/Grade Slab); Waterprrofing Mason; Helper; Physical Progress; TATA Projects Ltd-25 |  |
| RB2-SS-FN370 |  | Reinforcement | 10d | 2026-11-02 | 2026-11-13 | RB2-SS-FN345 | Barbender [1600 h]; Helper [800 h]; Physical Progress [1900 h]; Reinforcement Steel [24 MT1]; TATA Projects Ltd-25 | 2,316,300 |
| RB2-SS-FN390 |  | Concrete | 1d | 2026-11-13 | 2026-11-14 | RB2-SS-FN370 | Mason [50 h]; Helper [50 h]; Physical Progress [950 h]; Concrete M40 [202 m3]; TATA Projects Ltd-25 | 1,993,134 |
|  | 5 | **CF9, F10, F11** |  | 2026-10-31 | 2026-11-20 |  |  |  |
| RB2-SS-FN350 |  | Pocket Excavation | 1d | 2026-10-31 | 2026-11-02 | RB2-SS-FN330 | Physical Progress [950 h]; Pocket Excavation; TATA Projects Ltd-25 |  |
| RB2-SS-FN355 |  | Surface dressing | 1d | 2026-11-02 | 2026-11-03 | RB2-SS-FN350 | Helper [30 h]; Physical Progress [950 h]; Surface Dressing [281 Sq m]; TATA Projects Ltd-25 | 12,645 |
| RB2-SS-FN360 |  | ATT | 1d | 2026-11-02 | 2026-11-03 | RB2-SS-FN350 | Physical Progress [950 h]; ATT [309 Sq m]; TATA Projects Ltd-25 | 42,333 |
| RB2-SS-FN375 |  | PCC | 1d | 2026-11-03 | 2026-11-04 | RB2-SS-FN360 FF, RB2-SS-FN355 | Mason [10 h]; Helper [10 h]; Physical Progress [950 h]; Concrete M10 [21 m3]; TATA Projects Ltd-25 | 181,419 |
| RB2-SS-FN380 |  | Blockwork/Brickwork | 1d | 2026-11-04 | 2026-11-05 | RB2-SS-FN350, RB2-SS-FN375 | Brickwork for the footing [64 CuM]; Mason [430 h]; Helper [220 h]; Physical Progress [1900 h]; TATA Projects Ltd-25 | 531,200 |
| RB2-SS-FN385 |  | Shuttering | 3d | 2026-11-04 | 2026-11-07 | RB2-SS-FN375 | Carpenter [520 h]; Helper [260 h]; Physical Progress [2850 h]; Formwork [311 Sq m]; TATA Projects Ltd-25 | 362,364.76 |
| RB2-SS-FN410 |  | Waterproofing | 0d | 2026-11-07 | 2026-11-07 | RB2-SS-FN375, RB2-SS-FN385 | Waterproofing (Raft/Grade Slab); Waterprrofing Mason; Helper; Physical Progress; TATA Projects Ltd-25 |  |
| RB2-SS-FN435 |  | Reinforcement | 10d | 2026-11-07 | 2026-11-19 | RB2-SS-FN410 | Barbender [3400 h]; Helper [1700 h]; Physical Progress [2850 h]; Reinforcement Steel [51 MT1]; TATA Projects Ltd-25 | 4,922,137.5 |
| RB2-SS-FN465 |  | Concrete | 1d | 2026-11-19 | 2026-11-20 | RB2-SS-FN380, RB2-SS-FN435 | Mason [50 h]; Helper [50 h]; Physical Progress [950 h]; Concrete M40 [421 m3]; TATA Projects Ltd-25 | 4,154,007 |
|  | 4 | **F3 - 2, F2, F5** |  | 2026-11-05 | 2026-11-13 |  |  |  |
| RB2-SS-FN395 |  | Pocket Excavation | 1d | 2026-11-05 | 2026-11-06 | RB2-SS-FN380 | Physical Progress [950 h]; Pocket Excavation; TATA Projects Ltd-25 |  |
| RB2-SS-FN405 |  | Surface dressing | 1d | 2026-11-06 | 2026-11-07 | RB2-SS-FN395 | Helper [30 h]; Physical Progress [950 h]; Surface Dressing [67 Sq m]; TATA Projects Ltd-25 | 3,015 |
| RB2-SS-FN415 |  | ATT | 1d | 2026-11-07 | 2026-11-09 | RB2-SS-FN405 | Physical Progress [950 h]; ATT [74 Sq m]; TATA Projects Ltd-25 | 10,138 |
| RB2-SS-FN420 |  | PCC | 1d | 2026-11-07 | 2026-11-09 | RB2-SS-FN415 FF | Mason [10 h]; Helper [10 h]; Physical Progress [950 h]; Concrete M10 [5 m3]; TATA Projects Ltd-25 | 43,195 |
| RB2-SS-FN425 |  | Shuttering | 1d | 2026-11-09 | 2026-11-10 | RB2-SS-FN420 | Carpenter [80 h]; Helper [40 h]; Physical Progress [1900 h]; Formwork [44 Sq m]; TATA Projects Ltd-25 | 51,267.04 |
| RB2-SS-FN450 |  | Waterproofing | 0d | 2026-11-10 | 2026-11-10 | RB2-SS-FN420, RB2-SS-FN425 | Waterproofing (Raft/Grade Slab); Waterprrofing Mason; Helper; Physical Progress; TATA Projects Ltd-25 |  |
| RB2-SS-FN470 |  | Reinforcement | 2d | 2026-11-10 | 2026-11-12 | RB2-SS-FN450 | Barbender [470 h]; Helper [240 h]; Physical Progress [1900 h]; Reinforcement Steel [7 MT1]; TATA Projects Ltd-25 | 675,587.5 |
| RB2-SS-FN485 |  | Concrete | 1d | 2026-11-12 | 2026-11-13 | RB2-SS-FN470 | Mason [50 h]; Helper [50 h]; Physical Progress [950 h]; Concrete M40 [60 m3]; TATA Projects Ltd-25 | 592,020 |

| ID | WBS | Activity | Duration | Start | Finish | Predecessors | Resources | Cost |
| --- | --- | --- | --- | --- | --- | --- | --- | --- |
|  | 5 | **Pour 4** |  | 2026-11-06 | 2026-12-16 |  |  |  |
|  | 1 | **CF6** |  | 2026-11-06 | 2026-12-08 |  |  |  |
| RB2-SS-FN400 |  | Pocket Excavation | 4d | 2026-11-06 | 2026-11-11 | RB2-SS-FN395 | Physical Progress [2850 h]; Pocket Excavation; TATA Projects Ltd-25 |  |
| RB2-SS-FN430 |  | Surface dressing | 1d | 2026-11-11 | 2026-11-12 | RB2-SS-FN400 | Helper [30 h]; Physical Progress [950 h]; Surface Dressing [741 Sq m]; TATA Projects Ltd-25 | 33,345 |
| RB2-SS-FN440 |  | ATT | 1d | 2026-11-12 | 2026-11-13 | RB2-SS-FN430 | Physical Progress [950 h]; ATT [815 Sq m]; TATA Projects Ltd-25 | 111,655 |
| RB2-SS-FN445 |  | PCC | 1d | 2026-11-12 | 2026-11-13 | RB2-SS-FN440 FF, RB2-SS-FN430 | Mason [10 h]; Helper [10 h]; Physical Progress [950 h]; Concrete M10 [56 m3]; TATA Projects Ltd-25 | 483,784 |
| RB2-SS-FN455 |  | Shuttering | 5d | 2026-11-13 | 2026-11-19 | RB2-SS-FN445 | Carpenter [2280 h]; Helper [1140 h]; Physical Progress [2850 h]; Formwork [1366 Sq m]; TATA Projects Ltd-25 | 1,591,608.56 |
| RB2-SS-FN460 |  | Blockwork/Brickwork | 1d | 2026-11-13 | 2026-11-14 | RB2-SS-FN400, RB2-SS-FN445 | Brickwork for the footing [64 CuM]; Mason [430 h]; Helper [220 h]; Physical Progress [2850 h]; TATA Projects Ltd-25 | 531,200 |
| RB2-SS-FN475 |  | Waterproofing | 0d | 2026-11-19 | 2026-11-19 | RB2-SS-FN445, RB2-SS-FN455 | Waterproofing (Raft/Grade Slab); Waterprrofing Mason; Helper; Physical Progress; TATA Projects Ltd-25 |  |
| RB2-SS-FN505 |  | Reinforcement | 15d | 2026-11-19 | 2026-12-07 | RB2-SS-FN475 | Barbender [14800 h]; Helper [7400 h]; Physical Progress [2850 h]; Reinforcement Steel [222 MT1]; TATA Projects Ltd-25 | 21,425,775 |
| RB2-SS-FN520 |  | Concrete | 1d | 2026-12-07 | 2026-12-08 | RB2-SS-FN505 | Mason [50 h]; Helper [50 h]; Physical Progress [950 h]; Concrete M40 [1851 m3]; TATA Projects Ltd-25 | 18,263,817 |
|  | 2 | **CF6B, CF7B, CF6D** |  | 2026-11-14 | 2026-12-09 |  |  |  |
| RB2-SS-FN480 |  | Pocket Excavation | 3d | 2026-11-14 | 2026-11-18 | RB2-SS-FN460 | Physical Progress [2850 h]; Pocket Excavation; TATA Projects Ltd-25 |  |
| RB2-SS-FN490 |  | Surface dressing | 1d | 2026-11-18 | 2026-11-19 | RB2-SS-FN480 | Helper [30 h]; Physical Progress [950 h]; Surface Dressing [706 Sq m]; TATA Projects Ltd-25 | 31,770 |
| RB2-SS-FN495 |  | ATT | 1d | 2026-11-19 | 2026-11-20 | RB2-SS-FN490 | Physical Progress [950 h]; ATT [777 Sq m]; TATA Projects Ltd-25 | 106,449 |
| RB2-SS-FN500 |  | PCC | 1d | 2026-11-19 | 2026-11-20 | RB2-SS-FN495 FF, RB2-SS-FN490 | Mason [10 h]; Helper [10 h]; Physical Progress [950 h]; Concrete M10 [53 m3]; TATA Projects Ltd-25 | 457,867 |
| RB2-SS-FN510 |  | Shuttering | 5d | 2026-11-20 | 2026-11-26 | RB2-SS-FN500 | Carpenter [1810 h]; Helper [910 h]; Physical Progress [2850 h]; Formwork [1086 Sq m]; TATA Projects Ltd-25 | 1,265,363.76 |
| RB2-SS-FN515 |  | Blockwork/Brickwork | 1d | 2026-11-20 | 2026-11-21 | RB2-SS-FN480, RB2-SS-FN500 | Brickwork for the footing [64 CuM]; Mason [430 h]; Helper [220 h]; Physical Progress [2850 h]; TATA Projects Ltd-25 | 531,200 |
| RB2-SS-FN530 |  | Waterproofing | 0d | 2026-11-26 | 2026-11-26 | RB2-SS-FN500, RB2-SS-FN510 | Waterproofing (Raft/Grade Slab); Waterprrofing Mason; Helper; Physical Progress; TATA Projects Ltd-25 |  |
| RB2-SS-FN575 |  | Reinforcement | 10d | 2026-11-26 | 2026-12-08 | RB2-SS-FN530 | Barbender [11800 h]; Helper [5900 h]; Physical Progress [2850 h]; Reinforcement Steel [177 MT1]; TATA Projects Ltd-25 | 17,082,712.5 |
| RB2-SS-FN605 |  | Concrete | 1d | 2026-12-08 | 2026-12-09 | RB2-SS-FN575 | Mason [50 h]; Helper [50 h]; Physical Progress [950 h]; Concrete M40 [1471 m3]; TATA Projects Ltd-25 | 14,514,357 |
|  | 3 | **CF6A, CF6E, CF9D** |  | 2026-11-21 | 2026-12-16 |  |  |  |
| RB2-SS-FN525 |  | Pocket Excavation | 2d | 2026-11-21 | 2026-11-24 | RB2-SS-FN515, Mob-P&M-TC65 SS | Physical Progress [1900 h]; Pocket Excavation; TATA Projects Ltd-25 |  |
| RB2-SS-FN535 |  | Surface dressing | 1d | 2026-11-24 | 2026-11-25 | RB2-SS-FN525 | Helper [30 h]; Physical Progress [950 h]; Surface Dressing [253 Sq m]; TATA Projects Ltd-25 | 11,385 |
| RB2-SS-FN540 |  | ATT | 1d | 2026-11-24 | 2026-11-25 | RB2-SS-FN525 | Physical Progress [950 h]; ATT [278 Sq m]; TATA Projects Ltd-25 | 38,086 |
| RB2-SS-FN550 |  | PCC | 1d | 2026-11-25 | 2026-11-26 | RB2-SS-FN540 FF, RB2-SS-FN535 | Mason [10 h]; Helper [10 h]; Physical Progress [950 h]; Concrete M10 [19 m3]; TATA Projects Ltd-25 | 164,141 |
| RB2-SS-FN555 |  | Shuttering | 3d | 2026-11-26 | 2026-11-30 | RB2-SS-FN550 | Carpenter [370 h]; Helper [190 h]; Physical Progress [1900 h]; Formwork [221 Sq m]; TATA Projects Ltd-25 | 257,500.36 |
| RB2-SS-FN580 |  | Waterproofing | 0d | 2026-11-30 | 2026-11-30 | RB2-SS-FN550, RB2-SS-FN555 | Waterproofing (Raft/Grade Slab); Waterprrofing Mason; Helper; Physical Progress; TATA Projects Ltd-25 |  |
| RB2-SS-FN610 |  | Reinforcement | 13d | 2026-11-30 | 2026-12-15 | RB2-SS-FN580 | Barbender [2400 h]; Helper [1200 h]; Physical Progress [1900 h]; Reinforcement Steel [36 MT1]; TATA Projects Ltd-25 | 3,474,450 |
| RB2-SS-FN620 |  | Concrete | 1d | 2026-12-15 | 2026-12-16 | RB2-SS-FN610 | Mason [50 h]; Helper [50 h]; Physical Progress [950 h]; Concrete M40 [300 m3]; TATA Projects Ltd-25 | 2,960,100 |

| ID | WBS | Activity | Duration | Start | Finish | Predecessors | Resources | Cost |
| --- | --- | --- | --- | --- | --- | --- | --- | --- |
|  | 6 | **Pour 5** |  | 2026-11-24 | 2027-01-06 |  |  |  |
|  | 1 | **CF6C, F16 - 2** |  | 2026-11-24 | 2027-01-06 |  |  |  |
| RB2-SS-FN545 |  | Pocket Excavation | 2d | 2026-11-24 | 2026-11-26 | RB2-SS-FN525 | Physical Progress [1900 h]; Pocket Excavation; TATA Projects Ltd-25 |  |
| RB2-SS-FN560 |  | Surface dressing | 1d | 2026-11-26 | 2026-11-27 | RB2-SS-FN545 | Helper [30 h]; Physical Progress [950 h]; Surface Dressing [404 Sq m]; TATA Projects Ltd-25 | 18,180 |
| RB2-SS-FN565 |  | ATT | 1d | 2026-11-27 | 2026-11-28 | RB2-SS-FN560 | Physical Progress [950 h]; ATT [444 Sq m]; TATA Projects Ltd-25 | 60,828 |
| RB2-SS-FN570 |  | PCC | 1d | 2026-11-27 | 2026-11-28 | RB2-SS-FN565 FF, RB2-SS-FN560 | Mason [10 h]; Helper [10 h]; Physical Progress [950 h]; Concrete M10 [30 m3]; TATA Projects Ltd-25 | 259,170 |
| RB2-SS-FN585 |  | Shuttering | 10d | 2026-11-28 | 2026-12-10 | RB2-SS-FN570 | Carpenter [1000 h]; Helper [500 h]; Physical Progress [1900 h]; Formwork [596 Sq m]; TATA Projects Ltd-25 | 694,435.36 |
| RB2-SS-FN590 |  | Blockwork/Brickwork | 1d | 2026-11-28 | 2026-11-30 | RB2-SS-FN545, RB2-SS-FN570 | Brickwork for the footing [64 CuM]; Mason [430 h]; Helper [220 h]; Physical Progress [1900 h]; TATA Projects Ltd-25 | 531,200 |
| RB2-SS-FN595 |  | Waterproofing | 0d | 2026-12-10 | 2026-12-10 | RB2-SS-FN570, RB2-SS-FN585 | Waterproofing (Raft/Grade Slab); Waterprrofing Mason; Helper; Physical Progress; TATA Projects Ltd-25 |  |
| RB2-SS-FN625 |  | Reinforcement | 20d | 2026-12-10 | 2027-01-05 | RB2-SS-FN595 | Barbender [6470 h]; Helper [3240 h]; Physical Progress [1900 h]; Reinforcement Steel [97 MT1]; TATA Projects Ltd-25 | 9,361,712.5 |
| RB2-SS-FN650 |  | Concrete | 1d | 2027-01-05 | 2027-01-06 | RB2-SS-FN625 | Mason [50 h]; Helper [50 h]; Physical Progress [950 h]; Concrete M40 [807 m3]; TATA Projects Ltd-25 | 7,962,669 |
|  | 2 | **F14, F15 -3** |  | 2026-11-30 | 2026-12-19 |  |  |  |
| RB2-SS-FN600 |  | Pocket Excavation | 2d | 2026-11-30 | 2026-12-02 | RB2-SS-FN590 | Physical Progress [1900 h]; Pocket Excavation; TATA Projects Ltd-25 |  |
| RB2-SS-FN615 |  | Surface dressing | 1d | 2026-12-02 | 2026-12-03 | RB2-SS-FN600 | Helper [30 h]; Physical Progress [950 h]; Surface Dressing [211 Sq m]; TATA Projects Ltd-25 | 9,495 |
| RB2-SS-FN630 |  | ATT | 1d | 2026-12-03 | 2026-12-04 | RB2-SS-FN615 | Physical Progress [950 h]; ATT [232 Sq m]; TATA Projects Ltd-25 | 31,784 |
| RB2-SS-FN635 |  | PCC | 1d | 2026-12-03 | 2026-12-04 | RB2-SS-FN630 FF, RB2-SS-FN615 | Mason [10 h]; Helper [10 h]; Physical Progress [950 h]; Concrete M10 [16 m3]; TATA Projects Ltd-25 | 138,224 |
| RB2-SS-FN640 |  | Blockwork/Brickwork | 1d | 2026-12-04 | 2026-12-05 | RB2-SS-FN600, RB2-SS-FN635 | Brickwork for the footing [64 CuM]; Mason [430 h]; Helper [220 h]; Physical Progress [1900 h]; TATA Projects Ltd-25 | 531,200 |
| RB2-SS-FN645 |  | Shuttering | 2d | 2026-12-04 | 2026-12-07 | RB2-SS-FN635 | Carpenter [240 h]; Helper [120 h]; Physical Progress [1900 h]; Formwork [140 Sq m]; TATA Projects Ltd-25 | 163,122.4 |
| RB2-SS-FN655 |  | Waterproofing | 0d | 2026-12-07 | 2026-12-07 | RB2-SS-FN635, RB2-SS-FN645 | Waterproofing (Raft/Grade Slab); Waterprrofing Mason; Helper; Physical Progress; TATA Projects Ltd-25 |  |
| RB2-SS-FN690 |  | Reinforcement | 10d | 2026-12-07 | 2026-12-18 | RB2-SS-FN655 | Barbender [1540 h]; Helper [770 h]; Physical Progress [1900 h]; Reinforcement Steel [23 MT1]; TATA Projects Ltd-25 | 2,219,787.5 |
| RB2-SS-FN735 |  | Concrete | 1d | 2026-12-18 | 2026-12-19 | RB2-SS-FN640, RB2-SS-FN690 | Mason [50 h]; Helper [50 h]; Physical Progress [950 h]; Concrete M40 [190 m3]; TATA Projects Ltd-25 | 1,874,730 |
|  | 4 | **Sump** |  | 2026-12-05 | 2026-12-18 |  |  |  |
| RB2-SS-FN665 |  | Pocket Excavation | 1d | 2026-12-05 | 2026-12-07 | RB2-SS-FN640 | Physical Progress [950 h]; Pocket Excavation; TATA Projects Ltd-25 |  |
| RB2-SS-FN685 |  | Surface dressing | 1d | 2026-12-07 | 2026-12-08 | RB2-SS-FN665 | Helper [30 h]; Physical Progress [950 h]; Surface Dressing [22 Sq m]; TATA Projects Ltd-25 | 990 |
| RB2-SS-FN700 |  | ATT | 1d | 2026-12-08 | 2026-12-09 | RB2-SS-FN685 | Physical Progress [950 h]; ATT [24 Sq m]; TATA Projects Ltd-25 | 3,288 |
| RB2-SS-FN705 |  | PCC | 1d | 2026-12-08 | 2026-12-09 | RB2-SS-FN700 FF | Mason [10 h]; Helper [10 h]; Physical Progress [950 h]; Concrete M10 [2 m3]; TATA Projects Ltd-25 | 17,278 |
| RB2-SS-FN720 |  | Shuttering | 2d | 2026-12-09 | 2026-12-11 | RB2-SS-FN705 | Carpenter [40 h]; Helper [20 h]; Physical Progress [1900 h]; Formwork [24 Sq m]; TATA Projects Ltd-25 | 27,963.84 |
| RB2-SS-FN750 |  | Waterproofing | 0d | 2026-12-11 | 2026-12-11 | RB2-SS-FN705, RB2-SS-FN720 | Waterproofing (Raft/Grade Slab); Waterprrofing Mason; Helper; Physical Progress; TATA Projects Ltd-25 |  |
| RB2-SS-FN765 |  | Reinforcement | 2d | 2026-12-11 | 2026-12-14 | RB2-SS-FN750 | Barbender [70 h]; Helper [40 h]; Physical Progress [1900 h]; Reinforcement Steel [1 MT1]; TATA Projects Ltd-25 | 96,512.5 |
| RB2-SS-FN775 |  | MEP Services | 3d | 2026-12-14 | 2026-12-17 | RB2-SS-FN765 | Physical Progress [2850 h]; TATA Projects Ltd-25 |  |
| RB2-SS-FN780 |  | Concrete | 1d | 2026-12-17 | 2026-12-18 | RB2-SS-FN765, RB2-SS-FN775 | Mason [50 h]; Helper [50 h]; Physical Progress [950 h]; Concrete M40 [8 m3]; TATA Projects Ltd-25 | 78,936 |

| ID | WBS | Activity | Duration | Start | Finish | Predecessors | Resources | Cost |
| --- | --- | --- | --- | --- | --- | --- | --- | --- |
|  | 3 | **F6, F7** |  | 2026-12-05 | 2026-12-14 |  |  |  |
| RB2-SS-FN660 |  | Pocket Excavation | 1d | 2026-12-05 | 2026-12-07 | RB2-SS-FN640 | Physical Progress [950 h]; Pocket Excavation; TATA Projects Ltd-25 |  |
| RB2-SS-FN675 |  | Surface dressing | 1d | 2026-12-07 | 2026-12-08 | RB2-SS-FN660 | Helper [30 h]; Physical Progress [950 h]; Surface Dressing [41 Sq m]; TATA Projects Ltd-25 | 1,845 |
| RB2-SS-FN680 |  | ATT | 1d | 2026-12-07 | 2026-12-08 | RB2-SS-FN660 | Physical Progress [950 h]; ATT [45 Sq m]; TATA Projects Ltd-25 | 6,165 |
| RB2-SS-FN695 |  | PCC | 1d | 2026-12-08 | 2026-12-09 | RB2-SS-FN680 FF, RB2-SS-FN675 | Mason [10 h]; Helper [10 h]; Physical Progress [950 h]; Concrete M10 [3 m3]; TATA Projects Ltd-25 | 25,917 |
| RB2-SS-FN715 |  | Shuttering | 1d | 2026-12-09 | 2026-12-10 | RB2-SS-FN695 | Carpenter [60 h]; Helper [30 h]; Physical Progress [950 h]; Formwork [33 Sq m]; TATA Projects Ltd-25 | 38,450.28 |
| RB2-SS-FN740 |  | Waterproofing | 0d | 2026-12-10 | 2026-12-10 | RB2-SS-FN695, RB2-SS-FN715 | Waterproofing (Raft/Grade Slab); Waterprrofing Mason; Helper; Physical Progress; TATA Projects Ltd-25 |  |
| RB2-SS-FN755 |  | Reinforcement | 2d | 2026-12-10 | 2026-12-12 | RB2-SS-FN740 | Barbender [340 h]; Helper [170 h]; Physical Progress [950 h]; Reinforcement Steel [5 MT1]; TATA Projects Ltd-25 | 482,562.5 |
| RB2-SS-FN760 |  | Concrete | 1d | 2026-12-12 | 2026-12-14 | RB2-SS-FN755 | Mason [50 h]; Helper [50 h]; Physical Progress [950 h]; Concrete M40 [45 m3]; TATA Projects Ltd-25 | 444,015 |
|  | 4 | **Pour 6** |  | 2026-12-07 | 2026-12-29 |  |  |  |
|  | 4 | **CF1L, F1 - 2, F8 - 3, CF3 - 2, CF4, F1, F7, F4, F9** |  | 2026-12-07 | 2026-12-29 |  |  |  |
| RB2-SS-FN670 |  | Pocket Excavation | 2d | 2026-12-07 | 2026-12-09 | RB2-SS-FN660 | Physical Progress [1900 h]; Pocket Excavation; TATA Projects Ltd-25 |  |
| RB2-SS-FN710 |  | Surface dressing | 1d | 2026-12-09 | 2026-12-10 | RB2-SS-FN670 | Helper [30 h]; Physical Progress [950 h]; Surface Dressing [397 Sq m]; TATA Projects Ltd-25 | 17,865 |
| RB2-SS-FN725 |  | ATT | 1d | 2026-12-10 | 2026-12-11 | RB2-SS-FN710 | Physical Progress [950 h]; ATT [437 Sq m]; TATA Projects Ltd-25 | 59,869 |
| RB2-SS-FN730 |  | PCC | 1d | 2026-12-10 | 2026-12-11 | RB2-SS-FN725 FF | Mason [10 h]; Helper [10 h]; Physical Progress [950 h]; Concrete M10 [30 m3]; TATA Projects Ltd-25 | 259,170 |
| RB2-SS-FN745 |  | Shuttering | 3d | 2026-12-11 | 2026-12-15 | RB2-SS-FN730 | Carpenter [550 h]; Helper [280 h]; Physical Progress [2850 h]; Formwork [328 Sq m]; TATA Projects Ltd-25 | 382,172.48 |
| RB2-SS-FN770 |  | Waterproofing | 0d | 2026-12-15 | 2026-12-15 | RB2-SS-FN730, RB2-SS-FN745 | Waterproofing (Raft/Grade Slab); Waterprrofing Mason; Helper; Physical Progress; TATA Projects Ltd-25 |  |
| RB2-SS-FN785 |  | Reinforcement | 10d | 2026-12-15 | 2026-12-28 | RB2-SS-FN770 | Barbender [3540 h]; Helper [1770 h]; Physical Progress [2850 h]; Reinforcement Steel [53 MT1]; TATA Projects Ltd-25 | 5,115,162.5 |
| RB2-SS-FN790 |  | Concrete | 1d | 2026-12-28 | 2026-12-29 | RB2-SS-FN785 | Mason [50 h]; Helper [50 h]; Physical Progress [950 h]; Concrete M40 [444 m3]; TATA Projects Ltd-25 | 4,380,948 |
|  | 5 | **Basement 03(Grade Slab)** |  | 2027-04-06 | 2027-06-09 |  |  |  |
|  | 1 | **Pour 1** |  | 2027-04-06 | 2027-04-30 |  |  |  |
| RB2-SS-GS10 |  | Deshuttering | 4d | 2027-04-06 | 2027-04-09 | RB2-SS-B-02.175 | Physical Progress [3810 h]; TATA Projects Ltd-25 |  |
| RB2-SS-GS15 |  | Waterproofing | 5d | 2027-04-10 | 2027-04-15 | RB2-SS-GS10 | Waterproofing (Raft/Grade Slab) [1840 Sq m]; Waterprrofing Mason [1534.11 h]; Helper [767.06 h]; Physical Progress [14404.2 h]; TATA Projects Ltd-25 | 1,148,160 |
| RB2-SS-GS20 |  | Reinforcement | 10d | 2027-04-16 | 2027-04-27 | RB2-SS-GS15, RB2-SS-GS10 | Barbender [340 h]; Helper [170 h]; Physical Progress [9510 h]; Reinforcement Steel [5 MT1]; TATA Projects Ltd-25 | 482,562.5 |
| RB2-SS-GS25 |  | Shuttering | 2d | 2027-04-28 | 2027-04-29 | RB2-SS-GS20 | Carpenter [20 h]; Helper [10 h]; Physical Progress [1900 h]; Formwork [10 Sq m]; TATA Projects Ltd-25 | 11,651.6 |
| RB2-SS-GS30 |  | MEP Coordination | 2d | 2027-04-28 | 2027-04-29 | RB2-SS-GS20 | Physical Progress [1900 h]; TATA Projects Ltd-25 |  |
| RB2-SS-GS35 |  | Concrete | 1d | 2027-04-30 | 2027-04-30 | RB2-SS-GS30, RB2-SS-GS25 | Mason [50 h]; Helper [50 h]; Physical Progress [950 h]; Concrete M40 [279 m3]; TATA Projects Ltd-25 | 2,752,893 |

| ID | WBS | Activity | Duration | Start | Finish | Predecessors | Resources | Cost |
| --- | --- | --- | --- | --- | --- | --- | --- | --- |
|  | 2 | **Pour 2** |  | 2027-05-10 | 2027-06-04 |  |  |  |
| RB2-SS-GS40 |  | Deshuttering | 4d | 2027-05-10 | 2027-05-14 | RB2-SS-B-01.440 | Physical Progress [3810 h]; TATA Projects Ltd-25 |  |
| RB2-SS-GS45 |  | Waterproofing | 5d | 2027-05-14 | 2027-05-20 | RB2-SS-GS40 | Waterproofing (Raft/Grade Slab) [2594.97 Sq m]; Waterprrofing Mason [2162.48 h]; Helper [1081.24 h]; Physical Progress [14404.2 h]; TATA Projects Ltd-25 | 1,619,264.28 |
| RB2-SS-GS50 |  | Reinforcement | 10d | 2027-05-20 | 2027-06-01 | RB2-SS-GS45, RB2-SS-GS40 | Barbender [470 h]; Helper [240 h]; Physical Progress [9510 h]; Reinforcement Steel [7 MT1]; TATA Projects Ltd-25 | 675,587.5 |
| RB2-SS-GS55 |  | Shuttering | 2d | 2027-06-01 | 2027-06-03 | RB2-SS-GS50 | Carpenter [20 h]; Helper [10 h]; Physical Progress [1900 h]; Formwork [10 Sq m]; TATA Projects Ltd-25 | 11,651.6 |
| RB2-SS-GS60 |  | MEP Coordination | 2d | 2027-06-01 | 2027-06-03 | RB2-SS-GS50 | Physical Progress [1900 h]; TATA Projects Ltd-25 |  |
| RB2-SS-GS65 |  | Concrete | 1d | 2027-06-03 | 2027-06-04 | RB2-SS-GS60, RB2-SS-GS55 | Mason [50 h]; Helper [50 h]; Physical Progress [950 h]; Concrete M40 [394 m3]; TATA Projects Ltd-25 | 3,887,598 |
|  | 3 | **Pour 3** |  | 2027-04-22 | 2027-05-19 |  |  |  |
| RB2-SS-GS70 |  | Deshuttering | 4d | 2027-04-22 | 2027-04-27 | RB2-SS-B-01.750 | Physical Progress [3810 h]; TATA Projects Ltd-25 |  |
| RB2-SS-GS75 |  | Waterproofing | 5d | 2027-04-27 | 2027-05-04 | RB2-SS-GS70 | Waterproofing (Raft/Grade Slab) [3193.9 Sq m]; Waterprrofing Mason [2661.58 h]; Helper [1330.79 h]; Physical Progress [14404.2 h]; TATA Projects Ltd-25 | 1,992,992.35 |
| RB2-SS-GS80 |  | Reinforcement | 10d | 2027-05-04 | 2027-05-15 | RB2-SS-GS75, RB2-SS-GS70 | Barbender [540 h]; Helper [270 h]; Physical Progress [9510 h]; Reinforcement Steel [8 MT1]; TATA Projects Ltd-25 | 772,100 |
| RB2-SS-GS85 |  | Shuttering | 2d | 2027-05-15 | 2027-05-18 | RB2-SS-GS80 | Carpenter [20 h]; Helper [10 h]; Physical Progress [1900 h]; Formwork [10 Sq m]; TATA Projects Ltd-25 | 11,651.6 |
| RB2-SS-GS90 |  | MEP Coordination | 2d | 2027-05-15 | 2027-05-18 | RB2-SS-GS80 | Physical Progress [1900 h]; TATA Projects Ltd-25 |  |
| RB2-SS-GS100 |  | Concrete | 1d | 2027-05-18 | 2027-05-19 | RB2-SS-GS90, RB2-SS-GS85 | Mason [50 h]; Helper [50 h]; Physical Progress [950 h]; Concrete M40 [484 m3]; TATA Projects Ltd-25 | 4,775,628 |
|  | 4 | **Pour 4** |  | 2027-05-04 | 2027-05-29 |  |  |  |
| RB2-SS-GS95 |  | Deshuttering | 4d | 2027-05-04 | 2027-05-08 | RB2-SS-B-01.930 | Physical Progress [3810 h]; TATA Projects Ltd-25 |  |
| RB2-SS-GS105 |  | Waterproofing | 5d | 2027-05-08 | 2027-05-14 | RB2-SS-GS95 | Waterproofing (Raft/Grade Slab) [2778.1 Sq m]; Waterprrofing Mason [2315.08 h]; Helper [1157.54 h]; Physical Progress [14404.2 h]; TATA Projects Ltd-25 | 1,733,533.65 |
| RB2-SS-GS115 |  | Reinforcement | 10d | 2027-05-14 | 2027-05-26 | RB2-SS-GS105 | Barbender [470 h]; Helper [240 h]; Physical Progress [9510 h]; Reinforcement Steel [7 MT1]; TATA Projects Ltd-25 | 675,587.5 |
| RB2-SS-GS140 |  | Shuttering | 2d | 2027-05-26 | 2027-05-28 | RB2-SS-GS115 | Carpenter [20 h]; Helper [10 h]; Physical Progress [1900 h]; Formwork [10 Sq m]; TATA Projects Ltd-25 | 11,651.6 |
| RB2-SS-GS145 |  | MEP Coordination | 2d | 2027-05-26 | 2027-05-28 | RB2-SS-GS115 | Physical Progress [1900 h]; TATA Projects Ltd-25 |  |
| RB2-SS-GS150 |  | Concrete | 1d | 2027-05-28 | 2027-05-29 | RB2-SS-GS145, RB2-SS-GS140 | Mason [50 h]; Helper [50 h]; Physical Progress [950 h]; Concrete M40 [421 m3]; TATA Projects Ltd-25 | 4,154,007 |
|  | 5 | **Pour 5** |  | 2027-05-14 | 2027-06-09 |  |  |  |
| RB2-SS-GS110 |  | Deshuttering | 4d | 2027-05-14 | 2027-05-19 | RB2-SS-B-01.970 | Physical Progress [3810 h]; TATA Projects Ltd-25 |  |
| RB2-SS-GS120 |  | Waterproofing | 5d | 2027-05-19 | 2027-05-25 | RB2-SS-GS110 | Waterproofing (Raft/Grade Slab) [1625.49 Sq m]; Waterprrofing Mason [1354.58 h]; Helper [677.29 h]; Physical Progress [14404.2 h]; TATA Projects Ltd-25 | 1,014,308.76 |
| RB2-SS-GS135 |  | Reinforcement | 10d | 2027-05-25 | 2027-06-05 | RB2-SS-GS120, RB2-SS-GS110 | Barbender [270 h]; Helper [140 h]; Physical Progress [9510 h]; Reinforcement Steel [4 MT1]; TATA Projects Ltd-25 | 386,050 |
| RB2-SS-GS160 |  | Shuttering | 2d | 2027-06-05 | 2027-06-08 | RB2-SS-GS135 | Carpenter [20 h]; Helper [10 h]; Physical Progress [1900 h]; Formwork [10 Sq m]; TATA Projects Ltd-25 | 11,651.6 |
| RB2-SS-GS165 |  | MEP Coordination | 2d | 2027-06-05 | 2027-06-08 | RB2-SS-GS135 | Physical Progress [1900 h]; TATA Projects Ltd-25 |  |
| RB2-SS-GS170 |  | Concrete | 1d | 2027-06-08 | 2027-06-09 | RB2-SS-GS165, RB2-SS-GS160 | Mason [50 h]; Helper [50 h]; Physical Progress [950 h]; Concrete M40 [247 m3]; TATA Projects Ltd-25 | 2,437,149 |

| ID | WBS | Activity | Duration | Start | Finish | Predecessors | Resources | Cost |
| --- | --- | --- | --- | --- | --- | --- | --- | --- |
|  | 6 | **Pour 6** |  | 2027-05-07 | 2027-06-02 |  |  |  |
| RB2-SS-GS125 |  | Deshuttering | 4d | 2027-05-07 | 2027-05-12 | RB2-SS-B-01.995 | Physical Progress [3810 h]; TATA Projects Ltd-25 |  |
| RB2-SS-GS130 |  | Waterproofing | 5d | 2027-05-12 | 2027-05-18 | RB2-SS-GS125 | Waterproofing (Raft/Grade Slab) [1582.41 Sq m]; Waterprrofing Mason [1318.67 h]; Helper [659.34 h]; Physical Progress [14404.2 h]; TATA Projects Ltd-25 | 987,421.84 |
| RB2-SS-GS155 |  | Reinforcement | 10d | 2027-05-18 | 2027-05-29 | RB2-SS-GS130 | Barbender [270 h]; Helper [140 h]; Physical Progress [9510 h]; Reinforcement Steel [4 MT1]; TATA Projects Ltd-25 | 386,050 |
| RB2-SS-GS175 |  | Shuttering | 2d | 2027-05-29 | 2027-06-01 | RB2-SS-GS155 | Carpenter [20 h]; Helper [10 h]; Physical Progress [1900 h]; Formwork [10 Sq m]; TATA Projects Ltd-25 | 11,651.6 |
| RB2-SS-GS180 |  | MEP Coordination | 2d | 2027-05-29 | 2027-06-01 | RB2-SS-GS155 | Physical Progress [1900 h]; TATA Projects Ltd-25 |  |
| RB2-SS-GS185 |  | Concrete | 1d | 2027-06-01 | 2027-06-02 | RB2-SS-GS180, RB2-SS-GS175 | Mason [15824.1 h]; Helper [15824.1 h]; Physical Progress [15824.1 h]; Concrete M40 [240 m3]; TATA Projects Ltd-25 [15824.1 h] | 2,368,080 |
|  | 3 | **Basement 03** |  | 2026-11-13 | 2027-03-15 |  |  |  |
|  | 1 | **Pour 1** |  | 2027-01-11 | 2027-03-06 |  |  |  |
|  | 6 | **Soil Filling & PCC for Grade Slab** |  | 2027-01-19 | 2027-02-06 |  |  |  |
| RB2-SS-B-03.35 |  | LPS | 5d | 2027-01-19 | 2027-01-23 | RB2-SS-B-03.10 | LPS [866948 INR]; Physical Progress [4760 h]; TATA Projects Ltd-25 | 866,948 |
| RB2-SS-B-03.95 |  | Soil Filling/Plum Concrete | 6d | 2027-01-28 | 2027-02-03 | RB2-SS-FN205, RB2-SS-FN110, RB2-SS-FN180, RB2-SS-B-03.65, RB2-SS-B-03.35 | Physical Progress [5710 h]; Plum Concrete [154 m3]; Soil Filling [923 m3]; Sand Filling [684 m3]; TATA Projects Ltd-25 | 3,146,316 |
| RB2-SS-B-03.110 |  | Surface dressing | 4d | 2027-02-01 | 2027-02-04 | RB2-SS-B-03.95 FF+1d | Helper [120 h]; Physical Progress [3810 h]; Surface Dressing [660 Sq m]; TATA Projects Ltd-25 | 29,700 |
| RB2-SS-B-03.115 |  | ATT | 3d | 2027-02-03 | 2027-02-05 | RB2-SS-B-03.110 FF+1d | Physical Progress [2850 h]; ATT [730 Sq m]; TATA Projects Ltd-25 | 100,010 |
| RB2-SS-B-03.130 |  | PCC | 3d | 2027-02-04 | 2027-02-06 | RB2-SS-B-03.115 FF+1d | Mason [30 h]; Helper [30 h]; Physical Progress [2850 h]; Concrete M10 [166 m3]; TATA Projects Ltd-25 | 1,434,074 |
|  | 1 | **Column, Core Wall, Shear Wall** |  | 2027-01-11 | 2027-01-27 |  |  |  |
| RB2-SS-B-03.10 |  | Reinforcement | 7d | 2027-01-11 | 2027-01-18 | RB2-SS-FN205, RB2-SS-FN110, RB2-SS-FN180 | Barbender [4670 h]; Helper [2340 h]; Physical Progress [6660 h]; Reinforcement Steel [70 MT1]; TATA Projects Ltd-25 | 6,755,875 |
| RB2-SS-B-03.30 |  | LPS | 1d | 2027-01-19 | 2027-01-19 | RB2-SS-B-03.10 | LPS [36849 INR]; Physical Progress [950 h]; TATA Projects Ltd-25 | 36,849 |
| RB2-SS-B-03.40 |  | Shuttering | 5d | 2027-01-20 | 2027-01-25 | RB2-SS-B-03.10 FF+2d, RB2-SS-B-03.30 | Carpenter [2690 h]; Helper [1350 h]; Physical Progress [4760 h]; Formwork [1613 Sq m]; TATA Projects Ltd-25 | 1,879,403.08 |
| RB2-SS-B-03.65 |  | Concrete | 1d | 2027-01-27 | 2027-01-27 | RB2-SS-B-03.40 | Mason [50 h]; Helper [50 h]; Physical Progress [950 h]; Concrete M40 [433 m3]; TATA Projects Ltd-25 | 4,272,411 |
|  | 3 | **Slab** |  | 2027-02-08 | 2027-03-06 |  |  |  |
| RB2-SS-B-03.165 |  | Shuttering | 4d | 2027-02-08 | 2027-02-11 | RB2-SS-B-03.65, RB2-SS-B-03.130 | Carpenter [3720 h]; Helper [1860 h]; Physical Progress [3810 h]; Formwork [2228 Sq m]; TATA Projects Ltd-25 | 2,595,976.48 |
| RB2-SS-B-03.195 |  | Reinforcement Bottom Net with chairs | 3d | 2027-02-12 | 2027-02-15 | RB2-SS-B-03.165 | Barbender [940 h]; Helper [470 h]; Physical Progress [2850 h]; Reinforcement Steel [14 MT1]; TATA Projects Ltd-25 | 1,351,175 |
| RB2-SS-B-03.220 |  | Laying of PT Tendon | 3d | 2027-02-16 | 2027-02-18 | RB2-SS-B-03.195 | Physical Progress [2850 h]; TATA Projects Ltd-25 |  |
| RB2-SS-B-03.240 |  | Reinforcement Top Net | 3d | 2027-02-19 | 2027-02-22 | RB2-SS-B-03.220 | Barbender [940 h]; Helper [470 h]; Physical Progress [2850 h]; Reinforcement Steel [14 MT1]; TATA Projects Ltd-25 | 1,351,175 |
| RB2-SS-B-03.260 |  | MEP Coordination | 1d | 2027-02-23 | 2027-02-23 | RB2-SS-B-03.240 | Physical Progress [950 h]; TATA Projects Ltd-25 |  |
| RB2-SS-B-03.265 |  | Concrete of Slab | 1d | 2027-02-24 | 2027-02-24 | RB2-SS-B-03.260 | Mason [50 h]; Helper [50 h]; Physical Progress [950 h]; Concrete M40 [557 m3]; TATA Projects Ltd-25 | 5,495,919 |
| RB2-SS-B-03.275 |  | Wait for Strength Gain | 6d | 2027-02-25 | 2027-03-03 | RB2-SS-B-03.265 | Physical Progress [5710 h]; TATA Projects Ltd-25 |  |
| RB2-SS-B-03.285 |  | PT Work | 6d | 2027-03-01 | 2027-03-06 | RB2-SS-B-03.275 FF+3d | PT [7 MT1]; Helper [100 h]; PT Fitter [100 h]; Physical Progress [6660 h]; TATA Projects Ltd-25 | 1,330,000 |

| ID | WBS | Activity | Duration | Start | Finish | Predecessors | Resources | Cost |
| --- | --- | --- | --- | --- | --- | --- | --- | --- |
|  | 2 | **Pour 2** |  | 2026-12-28 | 2027-03-15 |  |  |  |
|  | 6 | **Soil Filling & PCC for Grade Slab** |  | 2027-01-06 | 2027-01-28 |  |  |  |
| RB2-SS-B-03.85 |  | LPS | 5d | 2027-01-06 | 2027-01-12 | RB2-SS-B-03.15 | LPS [1222047 INR]; Physical Progress [4760 h]; TATA Projects Ltd-25 | 1,222,047 |
| RB2-SS-B-03.160 |  | Soil Filling/Plum Concrete | 6d | 2027-01-16 | 2027-01-23 | RB2-SS-FN260, RB2-SS-FN265, RB2-SS-B-03.145, RB2-SS-B-03.85 | Physical Progress [5710 h]; Plum Concrete [217 m3]; Soil Filling [1301 m3]; Sand Filling [964 m3]; TATA Projects Ltd-25 | 4,434,036 |
| RB2-SS-B-03.180 |  | ATT | 5d | 2027-01-20 | 2027-01-27 | RB2-SS-B-03.185 FF+1d | Physical Progress [4760 h]; ATT [1030 Sq m]; TATA Projects Ltd-25 | 141,110 |
| RB2-SS-B-03.185 |  | Surface dressing | 4d | 2027-01-20 | 2027-01-25 | RB2-SS-B-03.160 FF+1d | Helper [120 h]; Physical Progress [3810 h]; Surface Dressing [930 Sq m]; TATA Projects Ltd-25 | 41,850 |
| RB2-SS-B-03.190 |  | PCC | 5d | 2027-01-21 | 2027-01-28 | RB2-SS-B-03.180 FF+1d | Mason [50 h]; Helper [50 h]; Physical Progress [4760 h]; Concrete M10 [235 m3]; TATA Projects Ltd-25 | 2,030,165 |
|  | 1 | **Column, Core Wall, Shear Wall** |  | 2026-12-28 | 2027-01-16 |  |  |  |
| RB2-SS-B-03.15 |  | Reinforcement | 7d | 2026-12-28 | 2027-01-06 | RB2-SS-FN260, RB2-SS-FN265 | Barbender [6540 h]; Helper [3270 h]; Physical Progress [6660 h]; Reinforcement Steel [98 MT1]; TATA Projects Ltd-25 | 9,458,225 |
| RB2-SS-B-03.70 |  | LPS | 1d | 2027-01-06 | 2027-01-07 | RB2-SS-B-03.15 | LPS [36849 INR]; Physical Progress [950 h]; TATA Projects Ltd-25 | 36,849 |
| RB2-SS-B-03.90 |  | Shuttering | 7d | 2027-01-07 | 2027-01-15 | RB2-SS-B-03.15, RB2-SS-B-03.70 | Carpenter [3790 h]; Helper [1900 h]; Physical Progress [6660 h]; Formwork [2274 Sq m]; TATA Projects Ltd-25 | 2,649,573.84 |
| RB2-SS-B-03.145 |  | Concrete | 1d | 2027-01-15 | 2027-01-16 | RB2-SS-B-03.90 | Mason [50 h]; Helper [50 h]; Physical Progress [950 h]; Concrete M40 [610 m3]; TATA Projects Ltd-25 | 6,018,870 |
|  | 2 | **Staircase-1** |  | 2026-12-28 | 2027-02-01 |  |  |  |
| RB2-SS-B-03.25 |  | Reinforcement of wall upto Flight 1 | 3d | 2026-12-28 | 2026-12-31 | RB2-SS-FN260 | Barbender [70 h]; Helper [40 h]; Physical Progress [2850 h]; Reinforcement Steel [1 MT1]; TATA Projects Ltd-25 | 96,512.5 |
| RB2-SS-B-03.50 |  | Shuttering of wall upto Flight 1 | 3d | 2026-12-31 | 2027-01-05 | RB2-SS-B-03.25 | Carpenter [20 h]; Helper [10 h]; Physical Progress [2850 h]; Formwork [10 Sq m]; TATA Projects Ltd-25 | 11,651.6 |
| RB2-SS-B-03.60 |  | Casting of wall upto Flight 1 | 1d | 2027-01-05 | 2027-01-06 | RB2-SS-B-03.50 | Mason; Helper; Physical Progress [950 h]; Concrete M40 [3 m3]; TATA Projects Ltd-25 | 29,601 |
| RB2-SS-B-03.80 |  | Shuttering of Staircase upto Flight 1 | 3d | 2027-01-06 | 2027-01-09 | RB2-SS-B-03.60 | Carpenter [20 h]; Helper [10 h]; Physical Progress [2850 h]; Formwork [10 Sq m]; TATA Projects Ltd-25 | 11,651.6 |
| RB2-SS-B-03.105 |  | Reinforcement of Staircase upto Flight 1 | 3d | 2027-01-09 | 2027-01-13 | RB2-SS-B-03.80 | Barbender [70 h]; Helper [40 h]; Physical Progress [2850 h]; Reinforcement Steel [1 MT1]; TATA Projects Ltd-25 | 96,512.5 |
| RB2-SS-B-03.125 |  | MEP coordination upto Flight 1 | 1d | 2027-01-13 | 2027-01-14 | RB2-SS-B-03.105 | Physical Progress [950 h]; TATA Projects Ltd-25 |  |
| RB2-SS-B-03.140 |  | Casting of Staircase upto Flight 1 | 1d | 2027-01-14 | 2027-01-15 | RB2-SS-B-03.125 | Mason; Helper; Physical Progress [950 h]; Concrete M40 [3 m3]; TATA Projects Ltd-25 | 29,601 |
| RB2-SS-B-03.155 |  | Reinforcement of wall upto Flight 2 | 3d | 2027-01-15 | 2027-01-19 | RB2-SS-B-03.140 | Barbender [70 h]; Helper [40 h]; Physical Progress [2850 h]; Reinforcement Steel [1 MT1]; TATA Projects Ltd-25 | 96,512.5 |
| RB2-SS-B-03.175 |  | Shuttering of wall upto Flight 2 | 3d | 2027-01-19 | 2027-01-22 | RB2-SS-B-03.155 | Carpenter [20 h]; Helper [10 h]; Physical Progress [2850 h]; Formwork [10 Sq m]; TATA Projects Ltd-25 | 11,651.6 |
| RB2-SS-B-03.205 |  | Casting of wall upto Flight 2 | 1d | 2027-01-22 | 2027-01-23 | RB2-SS-B-03.175 | Mason; Helper; Physical Progress [950 h]; Concrete M40 [3 m3]; TATA Projects Ltd-25 | 29,601 |
| RB2-SS-B-03.215 |  | Shuttering of Staircase upto Flight 2 | 3d | 2027-01-23 | 2027-01-28 | RB2-SS-B-03.205 | Carpenter [20 h]; Helper [10 h]; Physical Progress [2850 h]; Formwork [10 Sq m]; TATA Projects Ltd-25 | 11,651.6 |
| RB2-SS-B-03.235 |  | Reinforcement of Staircase upto Flight 2 | 3d | 2027-01-28 | 2027-02-01 | RB2-SS-B-03.215 | Barbender [70 h]; Helper [40 h]; Physical Progress [2850 h]; Reinforcement Steel [1 MT1]; TATA Projects Ltd-25 | 96,512.5 |

| ID | WBS | Activity | Duration | Start | Finish | Predecessors | Resources | Cost |
| --- | --- | --- | --- | --- | --- | --- | --- | --- |
|  | 4 | **Staircase-2** |  | 2026-12-28 | 2027-02-01 |  |  |  |
| RB2-SS-B-03.20 |  | Reinforcement of wall upto Flight 1 | 3d | 2026-12-28 | 2026-12-31 | RB2-SS-FN260 | Barbender [70 h]; Helper [40 h]; Physical Progress [2850 h]; Reinforcement Steel [1 MT1]; TATA Projects Ltd-25 | 96,512.5 |
| RB2-SS-B-03.45 |  | Shuttering of wall upto Flight 1 | 3d | 2026-12-31 | 2027-01-05 | RB2-SS-B-03.20 | Carpenter [20 h]; Helper [10 h]; Physical Progress [2850 h]; Formwork [10 Sq m]; TATA Projects Ltd-25 | 11,651.6 |
| RB2-SS-B-03.55 |  | Casting of wall upto Flight 1 | 1d | 2027-01-05 | 2027-01-06 | RB2-SS-B-03.45 | Mason; Helper; Physical Progress [950 h]; Concrete M40 [3 m3]; TATA Projects Ltd-25 | 29,601 |
| RB2-SS-B-03.75 |  | Shuttering of Staircase upto Flight 1 | 3d | 2027-01-06 | 2027-01-09 | RB2-SS-B-03.55 | Carpenter [20 h]; Helper [10 h]; Physical Progress [2850 h]; Formwork [10 Sq m]; TATA Projects Ltd-25 | 11,651.6 |
| RB2-SS-B-03.100 |  | Reinforcement of Staircase upto Flight 1 | 3d | 2027-01-09 | 2027-01-13 | RB2-SS-B-03.75 | Barbender [70 h]; Helper [40 h]; Physical Progress [2850 h]; Reinforcement Steel [1 MT1]; TATA Projects Ltd-25 | 96,512.5 |
| RB2-SS-B-03.120 |  | MEP coordination upto Flight 1 | 1d | 2027-01-13 | 2027-01-14 | RB2-SS-B-03.100 | Physical Progress [950 h]; TATA Projects Ltd-25 |  |
| RB2-SS-B-03.135 |  | Casting of Staircase upto Flight 1 | 1d | 2027-01-14 | 2027-01-15 | RB2-SS-B-03.120 | Mason; Helper; Physical Progress [950 h]; Concrete M40 [3 m3]; TATA Projects Ltd-25 | 29,601 |
| RB2-SS-B-03.150 |  | Reinforcement of wall upto Flight 2 | 3d | 2027-01-15 | 2027-01-19 | RB2-SS-B-03.135 | Barbender [70 h]; Helper [40 h]; Physical Progress [2850 h]; Reinforcement Steel [1 MT1]; TATA Projects Ltd-25 | 96,512.5 |
| RB2-SS-B-03.170 |  | Shuttering of wall upto Flight 2 | 3d | 2027-01-19 | 2027-01-22 | RB2-SS-B-03.150 | Carpenter [20 h]; Helper [10 h]; Physical Progress [2850 h]; Formwork [10 Sq m]; TATA Projects Ltd-25 | 11,651.6 |
| RB2-SS-B-03.200 |  | Casting of wall upto Flight 2 | 1d | 2027-01-22 | 2027-01-23 | RB2-SS-B-03.170 | Mason; Helper; Physical Progress [950 h]; Concrete M40 [3 m3]; TATA Projects Ltd-25 | 29,601 |
| RB2-SS-B-03.210 |  | Shuttering of Staircase upto Flight 2 | 3d | 2027-01-23 | 2027-01-28 | RB2-SS-B-03.200 | Carpenter [20 h]; Helper [10 h]; Physical Progress [2850 h]; Formwork [10 Sq m]; TATA Projects Ltd-25 | 11,651.6 |
| RB2-SS-B-03.230 |  | Reinforcement of Staircase upto Flight 2 | 3d | 2027-01-28 | 2027-02-01 | RB2-SS-B-03.210 | Barbender [70 h]; Helper [40 h]; Physical Progress [2850 h]; Reinforcement Steel [1 MT1]; TATA Projects Ltd-25 | 96,512.5 |
|  | 3 | **Slab** |  | 2027-01-28 | 2027-03-15 |  |  |  |
| RB2-SS-B-03.225 |  | Shuttering | 4d | 2027-01-28 | 2027-02-02 | RB2-SS-B-03.145, RB2-SS-B-03.190 | Carpenter [5240 h]; Helper [2620 h]; Physical Progress [3810 h]; Formwork [3140 Sq m]; TATA Projects Ltd-25 | 3,658,602.4 |
| RB2-SS-B-03.255 |  | Reinforcement Bottom Net with chairs | 3d | 2027-02-02 | 2027-02-05 | RB2-SS-B-03.225 | Barbender [1270 h]; Helper [640 h]; Physical Progress [2850 h]; Reinforcement Steel [19 MT1]; TATA Projects Ltd-25 | 1,833,737.5 |
| RB2-SS-B-03.280 |  | Laying of PT Tendon | 4d | 2027-02-05 | 2027-02-10 | RB2-SS-B-03.255 | Physical Progress [3810 h]; TATA Projects Ltd-25 |  |
| RB2-SS-B-03.310 |  | Reinforcement Top Net | 3d | 2027-02-10 | 2027-02-13 | RB2-SS-B-03.280 | Barbender [1270 h]; Helper [640 h]; Physical Progress [2850 h]; Reinforcement Steel [19 MT1]; TATA Projects Ltd-25 | 1,833,737.5 |
| RB2-SS-B-03.325 |  | MEP Coordination | 1d | 2027-02-13 | 2027-02-15 | RB2-SS-B-03.310, RB2-SS-B-03.230, RB2-SS-B-03.235 | Physical Progress [950 h]; TATA Projects Ltd-25 |  |
| RB2-SS-B-03.330 |  | Concrete of Slab | 1d | 2027-02-15 | 2027-02-16 | RB2-SS-B-03.325 | Mason [50 h]; Helper [50 h]; Physical Progress [950 h]; Concrete M40 [785 m3]; TATA Projects Ltd-25 | 7,745,595 |
| RB2-SS-B-03.335 |  | Wait for Strength Gain | 6d | 2027-02-16 | 2027-02-23 | RB2-SS-B-03.330 | Physical Progress [5710 h]; TATA Projects Ltd-25 |  |
| RB2-SS-B-03.350 |  | PT Work | 6d | 2027-03-08 | 2027-03-15 | RB2-SS-B-03.335 FF+3d, RB2-SS-B-03.285 | PT [11 MT1]; Helper [100 h]; PT Fitter [100 h]; Physical Progress [6660 h]; TATA Projects Ltd-25 | 2,090,000 |
|  | 3 | **Pour 3** |  | 2026-11-13 | 2027-02-08 |  |  |  |
|  | 6 | **Soil Filling & PCC for Grade Slab** |  | 2026-12-15 | 2027-01-07 |  |  |  |
| RB2-SS-B-03.305 |  | LPS | 5d | 2026-12-15 | 2026-12-21 | RB2-SS-B-03.245 | LPS [1504097 INR]; Physical Progress [4760 h]; TATA Projects Ltd-25 | 1,504,097 |
| RB2-SS-B-03.370 |  | Soil Filling/Plum Concrete | 6d | 2026-12-26 | 2027-01-04 | RB2-SS-FN485, RB2-SS-FN300, RB2-SS-FN365, RB2-SS-FN390, RB2-SS-FN465, RB2-SS-B-03.355, RB2-SS-B-03.305 | Physical Progress [5710 h]; Plum Concrete [267 m3]; Soil Filling [1601 m3]; Sand Filling [1186 m3]; TATA Projects Ltd-25 | 5,455,414 |
| RB2-SS-B-03.390 |  | Surface dressing | 4d | 2026-12-30 | 2027-01-05 | RB2-SS-B-03.370 FF+1d | Helper [120 h]; Physical Progress [3810 h]; Surface Dressing [1145 Sq m]; TATA Projects Ltd-25 | 51,525 |
| RB2-SS-B-03.395 |  | ATT | 4d | 2026-12-31 | 2027-01-06 | RB2-SS-B-03.390 FF+1d | Physical Progress [3810 h]; ATT [1267 Sq m]; TATA Projects Ltd-25 | 173,579 |
| RB2-SS-B-03.400 |  | PCC | 4d | 2027-01-02 | 2027-01-07 | RB2-SS-B-03.395 FF+1d | Mason [40 h]; Helper [40 h]; Physical Progress [3810 h]; Concrete M10 [289 m3]; TATA Projects Ltd-25 | 2,496,671 |

| ID | WBS | Activity | Duration | Start | Finish | Predecessors | Resources | Cost |
| --- | --- | --- | --- | --- | --- | --- | --- | --- |
|  | 1 | **Column, Core Wall, Shear Wall** |  | 2026-12-07 | 2026-12-26 |  |  |  |
| RB2-SS-B-03.245 |  | Reinforcement | 7d | 2026-12-07 | 2026-12-15 | RB2-SS-FN485, RB2-SS-FN300, RB2-SS-FN365, RB2-SS-FN390, RB2-SS-FN465 | Barbender [8070 h]; Helper [4040 h]; Physical Progress [6660 h]; Reinforcement Steel [121 MT1]; TATA Projects Ltd-25 | 11,678,012.5 |
| RB2-SS-B-03.295 |  | LPS | 1d | 2026-12-15 | 2026-12-16 | RB2-SS-B-03.245 | LPS [36849 INR]; Physical Progress [950 h]; TATA Projects Ltd-25 | 36,849 |
| RB2-SS-B-03.315 |  | Shuttering | 7d | 2026-12-16 | 2026-12-24 | RB2-SS-B-03.245, RB2-SS-B-03.295 | Carpenter [4670 h]; Helper [2340 h]; Physical Progress [6660 h]; Formwork [2799 Sq m]; TATA Projects Ltd-25 | 3,261,282.84 |
| RB2-SS-B-03.355 |  | Concrete | 1d | 2026-12-24 | 2026-12-26 | RB2-SS-B-03.315 | Mason [50 h]; Helper [50 h]; Physical Progress [950 h]; Concrete M40 [751 m3]; TATA Projects Ltd-25 | 7,410,117 |
|  | 4 | **Staircase** |  | 2026-11-13 | 2026-12-16 |  |  |  |
| RB2-SS-B-03.250 |  | Reinforcement of wall upto Flight 1 | 3d | 2026-11-13 | 2026-11-17 | RB2-SS-FN485 | Barbender [70 h]; Helper [40 h]; Physical Progress [2850 h]; Reinforcement Steel [1 MT1]; TATA Projects Ltd-25 | 96,512.5 |
| RB2-SS-B-03.270 |  | Shuttering of wall upto Flight 1 | 3d | 2026-11-17 | 2026-11-20 | RB2-SS-B-03.250 | Carpenter [20 h]; Helper [10 h]; Physical Progress [2850 h]; Formwork [10 Sq m]; TATA Projects Ltd-25 | 11,651.6 |
| RB2-SS-B-03.290 |  | Casting of wall upto Flight 1 | 1d | 2026-11-20 | 2026-11-21 | RB2-SS-B-03.270 | Mason; Helper; Physical Progress [950 h]; Concrete M40 [3 m3]; TATA Projects Ltd-25 | 29,601 |
| RB2-SS-B-03.300 |  | Shuttering of Staircase upto Flight 1 | 3d | 2026-11-21 | 2026-11-25 | RB2-SS-B-03.290 | Carpenter [20 h]; Helper [10 h]; Physical Progress [2850 h]; Formwork [10 Sq m]; TATA Projects Ltd-25 | 11,651.6 |
| RB2-SS-B-03.320 |  | Reinforcement of Staircase upto Flight 1 | 3d | 2026-11-25 | 2026-11-28 | RB2-SS-B-03.300 | Barbender [70 h]; Helper [40 h]; Physical Progress [2850 h]; Reinforcement Steel [1 MT1]; TATA Projects Ltd-25 | 96,512.5 |
| RB2-SS-B-03.340 |  | MEP coordination upto Flight 1 | 1d | 2026-11-28 | 2026-11-30 | RB2-SS-B-03.320 | Physical Progress [950 h]; TATA Projects Ltd-25 |  |
| RB2-SS-B-03.345 |  | Casting of Staircase upto Flight 1 | 1d | 2026-11-30 | 2026-12-01 | RB2-SS-B-03.340 | Mason; Helper; Physical Progress [950 h]; Concrete M40 [3 m3]; TATA Projects Ltd-25 | 29,601 |
| RB2-SS-B-03.360 |  | Reinforcement of wall upto Flight 2 | 3d | 2026-12-01 | 2026-12-04 | RB2-SS-B-03.345 | Barbender [70 h]; Helper [40 h]; Physical Progress [2850 h]; Reinforcement Steel [1 MT1]; TATA Projects Ltd-25 | 96,512.5 |
| RB2-SS-B-03.380 |  | Shuttering of wall upto Flight 2 | 3d | 2026-12-04 | 2026-12-08 | RB2-SS-B-03.360 | Carpenter [20 h]; Helper [10 h]; Physical Progress [2850 h]; Formwork [10 Sq m]; TATA Projects Ltd-25 | 11,651.6 |
| RB2-SS-B-03.405 |  | Casting of wall upto Flight 2 | 1d | 2026-12-08 | 2026-12-09 | RB2-SS-B-03.380 | Mason; Helper; Physical Progress [950 h]; Concrete M40 [3 m3]; TATA Projects Ltd-25 | 29,601 |
| RB2-SS-B-03.415 |  | Shuttering of Staircase upto Flight 2 | 3d | 2026-12-09 | 2026-12-12 | RB2-SS-B-03.405 | Carpenter [20 h]; Helper [10 h]; Physical Progress [2850 h]; Formwork [10 Sq m]; TATA Projects Ltd-25 | 11,651.6 |
| RB2-SS-B-03.435 |  | Reinforcement of Staircase upto Flight 2 | 3d | 2026-12-12 | 2026-12-16 | RB2-SS-B-03.415 | Barbender [70 h]; Helper [40 h]; Physical Progress [2850 h]; Reinforcement Steel [1 MT1]; TATA Projects Ltd-25 | 96,512.5 |
|  | 3 | **Slab** |  | 2027-01-07 | 2027-02-08 |  |  |  |
| RB2-SS-B-03.425 |  | Shuttering | 5d | 2027-01-07 | 2027-01-13 | RB2-SS-B-03.355, RB2-SS-B-03.400 | Carpenter [6450 h]; Helper [3230 h]; Physical Progress [4760 h]; Formwork [3865 Sq m]; TATA Projects Ltd-25 | 4,503,343.4 |
| RB2-SS-B-03.465 |  | Reinforcement Bottom Net with chairs | 3d | 2027-01-13 | 2027-01-16 | RB2-SS-B-03.425 | Barbender [1600 h]; Helper [800 h]; Physical Progress [2850 h]; Reinforcement Steel [24 MT1]; TATA Projects Ltd-25 | 2,316,300 |
| RB2-SS-B-03.475 |  | Laying of PT Tendon | 4d | 2027-01-16 | 2027-01-21 | RB2-SS-B-03.465 | Physical Progress [3810 h]; TATA Projects Ltd-25 |  |
| RB2-SS-B-03.505 |  | Reinforcement Top Net | 3d | 2027-01-21 | 2027-01-25 | RB2-SS-B-03.475 | Barbender [1600 h]; Helper [800 h]; Physical Progress [2850 h]; Reinforcement Steel [24 MT1]; TATA Projects Ltd-25 | 2,316,300 |
| RB2-SS-B-03.545 |  | MEP Coordination | 1d | 2027-01-25 | 2027-01-27 | RB2-SS-B-03.505, RB2-SS-B-03.435 | Physical Progress [950 h]; TATA Projects Ltd-25 |  |
| RB2-SS-B-03.560 |  | Concrete of Slab | 1d | 2027-01-27 | 2027-01-28 | RB2-SS-B-03.545 | Mason [50 h]; Helper [50 h]; Physical Progress [950 h]; Concrete M40 [966 m3]; TATA Projects Ltd-25 | 9,531,522 |
| RB2-SS-B-03.565 |  | Wait for Strength Gain | 6d | 2027-01-28 | 2027-02-04 | RB2-SS-B-03.560 | Physical Progress [5710 h]; TATA Projects Ltd-25 |  |
| RB2-SS-B-03.590 |  | PT Work | 6d | 2027-02-01 | 2027-02-08 | RB2-SS-B-03.565 FF+3d | PT [13 MT1]; Helper [100 h]; PT Fitter [100 h]; Physical Progress [6660 h]; TATA Projects Ltd-25 | 2,470,000 |

| ID | WBS | Activity | Duration | Start | Finish | Predecessors | Resources | Cost |
| --- | --- | --- | --- | --- | --- | --- | --- | --- |
|  | 4 | **Pour 4** |  | 2026-12-09 | 2027-02-17 |  |  |  |
|  | 6 | **Soil Filling & PCC for Grade Slab** |  | 2026-12-24 | 2027-01-16 |  |  |  |
| RB2-SS-B-03.445 |  | LPS | 5d | 2026-12-24 | 2026-12-31 | RB2-SS-B-03.375 | LPS [1308285 INR]; Physical Progress [4760 h]; TATA Projects Ltd-25 | 1,308,285 |
| RB2-SS-B-03.495 |  | Soil Filling/ Plum Concrete | 6d | 2027-01-06 | 2027-01-13 | RB2-SS-FN605, RB2-SS-FN620, RB2-SS-FN520, RB2-SS-B-03.480, RB2-SS-B-03.445 | Physical Progress [5710 h]; Plum Concrete [232 m3]; Soil Filling [1393 m3]; Sand Filling [1032 m3]; TATA Projects Ltd-25 | 4,744,768 |
| RB2-SS-B-03.525 |  | Surface dressing | 3d | 2027-01-11 | 2027-01-14 | RB2-SS-B-03.495 FF+1d | Helper [90 h]; Physical Progress [2850 h]; Surface Dressing [996 Sq m]; TATA Projects Ltd-25 | 44,820 |
| RB2-SS-B-03.535 |  | ATT | 3d | 2027-01-12 | 2027-01-15 | RB2-SS-B-03.525 FF+1d | Physical Progress [2850 h]; ATT [1102 Sq m]; TATA Projects Ltd-25 | 150,974 |
| RB2-SS-B-03.550 |  | PCC | 3d | 2027-01-13 | 2027-01-16 | RB2-SS-B-03.535 FF+1d | Mason [30 h]; Helper [30 h]; Physical Progress [2850 h]; Concrete M10 [251 m3]; TATA Projects Ltd-25 | 2,168,389 |
|  | 1 | **Column, Core Wall, Shear Wall** |  | 2026-12-16 | 2027-01-06 |  |  |  |
| RB2-SS-B-03.375 |  | Reinforcement | 7d | 2026-12-16 | 2026-12-24 | RB2-SS-FN605, RB2-SS-FN620, RB2-SS-FN520 | Barbender [7000 h]; Helper [3500 h]; Physical Progress [6660 h]; Reinforcement Steel [105 MT1]; TATA Projects Ltd-25 | 10,133,812.5 |
| RB2-SS-B-03.430 |  | LPS | 1d | 2026-12-24 | 2026-12-26 | RB2-SS-B-03.375 | LPS [36849 INR]; Physical Progress [950 h]; TATA Projects Ltd-25 | 36,849 |
| RB2-SS-B-03.450 |  | Shuttering | 7d | 2026-12-26 | 2027-01-05 | RB2-SS-B-03.375, RB2-SS-B-03.430 | Carpenter [4060 h]; Helper [2030 h]; Physical Progress [6660 h]; Formwork [2435 Sq m]; TATA Projects Ltd-25 | 2,837,164.6 |
| RB2-SS-B-03.480 |  | Concrete | 1d | 2027-01-05 | 2027-01-06 | RB2-SS-B-03.450 | Mason [50 h]; Helper [50 h]; Physical Progress [950 h]; Concrete M40 [653 m3]; TATA Projects Ltd-25 | 6,443,151 |
|  | 4 | **Staircase** |  | 2026-12-09 | 2027-01-13 |  |  |  |
| RB2-SS-B-03.365 |  | Reinforcement of wall upto Flight 1 | 3d | 2026-12-09 | 2026-12-12 | RB2-SS-FN605 | Barbender [70 h]; Helper [40 h]; Physical Progress [2850 h]; Reinforcement Steel [1 MT1]; TATA Projects Ltd-25 | 96,512.5 |
| RB2-SS-B-03.385 |  | Shuttering of wall upto Flight 1 | 3d | 2026-12-12 | 2026-12-16 | RB2-SS-B-03.365 | Carpenter [20 h]; Helper [10 h]; Physical Progress [2850 h]; Formwork [10 Sq m]; TATA Projects Ltd-25 | 11,651.6 |
| RB2-SS-B-03.410 |  | Casting of wall upto Flight 1 | 1d | 2026-12-16 | 2026-12-17 | RB2-SS-B-03.385 | Mason; Helper; Physical Progress [950 h]; Concrete M40 [3 m3]; TATA Projects Ltd-25 | 29,601 |
| RB2-SS-B-03.420 |  | Shuttering of Staircase upto Flight 1 | 3d | 2026-12-17 | 2026-12-21 | RB2-SS-B-03.410 | Carpenter [20 h]; Helper [10 h]; Physical Progress [2850 h]; Formwork [10 Sq m]; TATA Projects Ltd-25 | 11,651.6 |
| RB2-SS-B-03.440 |  | Reinforcement of Staircase upto Flight 1 | 3d | 2026-12-21 | 2026-12-24 | RB2-SS-B-03.420 | Barbender [70 h]; Helper [40 h]; Physical Progress [2850 h]; Reinforcement Steel [1 MT1]; TATA Projects Ltd-25 | 96,512.5 |
| RB2-SS-B-03.455 |  | MEP coordination upto Flight 1 | 1d | 2026-12-24 | 2026-12-26 | RB2-SS-B-03.440 | Physical Progress [950 h]; TATA Projects Ltd-25 |  |
| RB2-SS-B-03.460 |  | Casting of Staircase upto Flight 1 | 1d | 2026-12-26 | 2026-12-28 | RB2-SS-B-03.455 | Mason; Helper; Physical Progress [950 h]; Concrete M40 [3 m3]; TATA Projects Ltd-25 | 29,601 |
| RB2-SS-B-03.470 |  | Reinforcement of wall upto Flight 2 | 3d | 2026-12-28 | 2026-12-31 | RB2-SS-B-03.460 | Barbender [70 h]; Helper [40 h]; Physical Progress [2850 h]; Reinforcement Steel [1 MT1]; TATA Projects Ltd-25 | 96,512.5 |
| RB2-SS-B-03.490 |  | Shuttering of wall upto Flight 2 | 3d | 2026-12-31 | 2027-01-05 | RB2-SS-B-03.470 | Carpenter [20 h]; Helper [10 h]; Physical Progress [2850 h]; Formwork [10 Sq m]; TATA Projects Ltd-25 | 11,651.6 |
| RB2-SS-B-03.500 |  | Casting of wall upto Flight 2 | 1d | 2027-01-05 | 2027-01-06 | RB2-SS-B-03.490 | Mason; Helper; Physical Progress [950 h]; Concrete M40 [3 m3]; TATA Projects Ltd-25 | 29,601 |
| RB2-SS-B-03.515 |  | Shuttering of Staircase upto Flight 2 | 3d | 2027-01-06 | 2027-01-09 | RB2-SS-B-03.500 | Carpenter [20 h]; Helper [10 h]; Physical Progress [2850 h]; Formwork [10 Sq m]; TATA Projects Ltd-25 | 11,651.6 |
| RB2-SS-B-03.555 |  | Reinforcement of Staircase upto Flight 2 | 3d | 2027-01-09 | 2027-01-13 | RB2-SS-B-03.515 | Barbender [70 h]; Helper [40 h]; Physical Progress [2850 h]; Reinforcement Steel [1 MT1]; TATA Projects Ltd-25 | 96,512.5 |

| ID | WBS | Activity | Duration | Start | Finish | Predecessors | Resources | Cost |
| --- | --- | --- | --- | --- | --- | --- | --- | --- |
|  | 3 | **Slab** |  | 2027-01-16 | 2027-02-17 |  |  |  |
| RB2-SS-B-03.580 |  | Shuttering | 5d | 2027-01-16 | 2027-01-22 | RB2-SS-B-03.480, RB2-SS-B-03.550 | Carpenter [5610 h]; Helper [2810 h]; Physical Progress [4760 h]; Formwork [3362 Sq m]; TATA Projects Ltd-25 | 3,917,267.92 |
| RB2-SS-B-03.605 |  | Reinforcement Bottom Net with chairs | 3d | 2027-01-22 | 2027-01-27 | RB2-SS-B-03.580 | Barbender [1400 h]; Helper [700 h]; Physical Progress [2850 h]; Reinforcement Steel [21 MT1]; TATA Projects Ltd-25 | 2,026,762.5 |
| RB2-SS-B-03.630 |  | Laying of PT Tendon | 4d | 2027-01-27 | 2027-02-01 | RB2-SS-B-03.605 | Physical Progress [3810 h]; TATA Projects Ltd-25 |  |
| RB2-SS-B-03.655 |  | Reinforcement Top Net | 3d | 2027-02-01 | 2027-02-04 | RB2-SS-B-03.630 | Barbender [1400 h]; Helper [700 h]; Physical Progress [2850 h]; Reinforcement Steel [21 MT1]; TATA Projects Ltd-25 | 2,026,762.5 |
| RB2-SS-B-03.665 |  | MEP Coordination | 1d | 2027-02-04 | 2027-02-05 | RB2-SS-B-03.655, RB2-SS-B-03.555 | Physical Progress [950 h]; TATA Projects Ltd-25 |  |
| RB2-SS-B-03.675 |  | Concrete of Slab | 1d | 2027-02-05 | 2027-02-06 | RB2-SS-B-03.665 | Mason [50 h]; Helper [50 h]; Physical Progress [950 h]; Concrete M40 [840 m3]; TATA Projects Ltd-25 | 8,288,280 |
| RB2-SS-B-03.685 |  | Wait for Strength Gain | 6d | 2027-02-06 | 2027-02-13 | RB2-SS-B-03.675 | Physical Progress [5710 h]; TATA Projects Ltd-25 |  |
| RB2-SS-B-03.690 |  | PT Work | 6d | 2027-02-10 | 2027-02-17 | RB2-SS-B-03.685 FF+3d | PT [11 MT1]; Helper [100 h]; PT Fitter [100 h]; Physical Progress [6660 h]; TATA Projects Ltd-25 | 2,090,000 |
|  | 5 | **Pour 5** |  | 2027-01-06 | 2027-03-02 |  |  |  |
|  | 6 | **Soil Filling & PCC for Grade Slab** |  | 2027-01-12 | 2027-02-01 |  |  |  |
| RB2-SS-B-03.530 |  | LPS | 5d | 2027-01-12 | 2027-01-18 | RB2-SS-B-03.485 | LPS [765491 INR]; Physical Progress [4760 h]; TATA Projects Ltd-25 | 765,491 |
| RB2-SS-B-03.600 |  | Soil Filling/ Plum Concrete | 6d | 2027-01-20 | 2027-01-28 | RB2-SS-FN735, RB2-SS-FN760, RB2-SS-FN650, RB2-SS-FN780, RB2-SS-B-03.595, RB2-SS-B-03.530 | Physical Progress [5710 h]; Plum Concrete [136 m3]; Soil Filling [815 m3]; Sand Filling [604 m3]; TATA Projects Ltd-25 | 2,778,396 |
| RB2-SS-B-03.620 |  | Surface dressing | 3d | 2027-01-25 | 2027-01-29 | RB2-SS-B-03.600 FF+1d | Helper [90 h]; Physical Progress [2850 h]; Surface Dressing [583 Sq m]; TATA Projects Ltd-25 | 26,235 |
| RB2-SS-B-03.625 |  | ATT | 3d | 2027-01-27 | 2027-01-30 | RB2-SS-B-03.620 FF+1d | Physical Progress [2850 h]; ATT [645 Sq m]; TATA Projects Ltd-25 | 88,365 |
| RB2-SS-B-03.635 |  | PCC | 3d | 2027-01-28 | 2027-02-01 | RB2-SS-B-03.625 FF+1d | Mason [30 h]; Helper [30 h]; Physical Progress [2850 h]; Concrete M10 [147 m3]; TATA Projects Ltd-25 | 1,269,933 |
|  | 1 | **Column, Core Wall, Shear Wall** |  | 2027-01-06 | 2027-01-20 |  |  |  |
| RB2-SS-B-03.485 |  | Reinforcement | 5d | 2027-01-06 | 2027-01-12 | RB2-SS-FN735, RB2-SS-FN760, RB2-SS-FN650, RB2-SS-FN780 | Barbender [4140 h]; Helper [2070 h]; Physical Progress [4760 h]; Reinforcement Steel [62 MT1]; TATA Projects Ltd-25 | 5,983,775 |
| RB2-SS-B-03.520 |  | LPS | 1d | 2027-01-12 | 2027-01-13 | RB2-SS-B-03.485 | LPS [36849 INR]; Physical Progress [950 h]; TATA Projects Ltd-25 | 36,849 |
| RB2-SS-B-03.540 |  | Shuttering | 5d | 2027-01-13 | 2027-01-19 | RB2-SS-B-03.485, RB2-SS-B-03.520 | Carpenter [2380 h]; Helper [1190 h]; Physical Progress [4760 h]; Formwork [1425 Sq m]; TATA Projects Ltd-25 | 1,660,353 |
| RB2-SS-B-03.595 |  | Concrete | 1d | 2027-01-19 | 2027-01-20 | RB2-SS-B-03.540 | Mason [50 h]; Helper [50 h]; Physical Progress [950 h]; Concrete M40 [382 m3]; TATA Projects Ltd-25 | 3,769,194 |
|  | 3 | **Slab** |  | 2027-02-01 | 2027-03-02 |  |  |  |
| RB2-SS-B-03.645 |  | Shuttering | 5d | 2027-02-01 | 2027-02-06 | RB2-SS-B-03.595, RB2-SS-B-03.635 | Carpenter [3280 h]; Helper [1640 h]; Physical Progress [4760 h]; Formwork [1967 Sq m]; TATA Projects Ltd-25 | 2,291,869.72 |
| RB2-SS-B-03.680 |  | Reinforcement Bottom Net with chairs | 3d | 2027-02-06 | 2027-02-10 | RB2-SS-B-03.645 | Barbender [800 h]; Helper [400 h]; Physical Progress [2850 h]; Reinforcement Steel [12 MT1]; TATA Projects Ltd-25 | 1,158,150 |
| RB2-SS-B-03.695 |  | Laying of PT Tendon | 4d | 2027-02-10 | 2027-02-15 | RB2-SS-B-03.680 | Physical Progress [3810 h]; TATA Projects Ltd-25 |  |
| RB2-SS-B-03.705 |  | Reinforcement Top Net | 2d | 2027-02-15 | 2027-02-17 | RB2-SS-B-03.695 | Barbender [800 h]; Helper [400 h]; Physical Progress [1900 h]; Reinforcement Steel [12 MT1]; TATA Projects Ltd-25 | 1,158,150 |
| RB2-SS-B-03.715 |  | MEP Coordination | 1d | 2027-02-17 | 2027-02-18 | RB2-SS-B-03.705 | Physical Progress [950 h]; TATA Projects Ltd-25 |  |
| RB2-SS-B-03.720 |  | Concrete of Slab | 1d | 2027-02-18 | 2027-02-19 | RB2-SS-B-03.715 | Mason [50 h]; Helper [50 h]; Physical Progress [950 h]; Concrete M40 [492 m3]; TATA Projects Ltd-25 | 4,854,564 |
| RB2-SS-B-03.725 |  | Wait for Strength Gain | 6d | 2027-02-19 | 2027-02-26 | RB2-SS-B-03.720 | Physical Progress [5710 h]; TATA Projects Ltd-25 |  |
| RB2-SS-B-03.735 |  | PT Work | 6d | 2027-02-23 | 2027-03-02 | RB2-SS-B-03.725 FF+3d | PT [7 MT1]; Helper [100 h]; PT Fitter [100 h]; Physical Progress [6660 h]; TATA Projects Ltd-25 | 1,330,000 |

| ID | WBS | Activity | Duration | Start | Finish | Predecessors | Resources | Cost |
| --- | --- | --- | --- | --- | --- | --- | --- | --- |
|  | 6 | **Pour 6** |  | 2026-12-29 | 2027-02-23 |  |  |  |
|  | 6 | **Soil Filling & PCC for Grade Slab** |  | 2027-01-05 | 2027-01-23 |  |  |  |
| RB2-SS-B-03.575 |  | LPS | 5d | 2027-01-05 | 2027-01-11 | RB2-SS-B-03.510 | LPS [745200 INR]; Physical Progress [4760 h]; TATA Projects Ltd-25 | 745,200 |
| RB2-SS-B-03.615 |  | Soil Filling/ Plum Concrete | 6d | 2027-01-13 | 2027-01-20 | RB2-SS-FN790, RB2-SS-B-03.610, RB2-SS-B-03.575 | Physical Progress [5710 h]; Plum Concrete [132 m3]; Soil Filling [793 m3]; Sand Filling [588 m3]; TATA Projects Ltd-25 | 2,702,012 |
| RB2-SS-B-03.640 |  | Surface dressing | 3d | 2027-01-18 | 2027-01-21 | RB2-SS-B-03.615 FF+1d | Helper [90 h]; Physical Progress [2850 h]; Surface Dressing [567 Sq m]; TATA Projects Ltd-25 | 25,515 |
| RB2-SS-B-03.650 |  | ATT | 3d | 2027-01-19 | 2027-01-22 | RB2-SS-B-03.640 FF+1d | Physical Progress [2850 h]; ATT [628 Sq m]; TATA Projects Ltd-25 | 86,036 |
| RB2-SS-B-03.660 |  | PCC | 3d | 2027-01-20 | 2027-01-23 | RB2-SS-B-03.650 FF+1d | Mason [30 h]; Helper [30 h]; Physical Progress [2850 h]; Concrete M10 [143 m3]; TATA Projects Ltd-25 | 1,235,377 |
|  | 1 | **Column, Core Wall, Shear Wall** |  | 2026-12-29 | 2027-01-13 |  |  |  |
| RB2-SS-B-03.510 |  | Reinforcement | 5d | 2026-12-29 | 2027-01-05 | RB2-SS-FN790 | Barbender [4000 h]; Helper [2000 h]; Physical Progress [4760 h]; Reinforcement Steel [60 MT1]; TATA Projects Ltd-25 | 5,790,750 |
| RB2-SS-B-03.570 |  | LPS | 1d | 2027-01-05 | 2027-01-06 | RB2-SS-B-03.510 | LPS [36849 INR]; Physical Progress [950 h]; TATA Projects Ltd-25 | 36,849 |
| RB2-SS-B-03.585 |  | Shuttering | 5d | 2027-01-06 | 2027-01-12 | RB2-SS-B-03.510, RB2-SS-B-03.570 | Carpenter [2320 h]; Helper [1160 h]; Physical Progress [4760 h]; Formwork [1387 Sq m]; TATA Projects Ltd-25 | 1,616,076.92 |
| RB2-SS-B-03.610 |  | Concrete | 1d | 2027-01-12 | 2027-01-13 | RB2-SS-B-03.585 | Mason [50 h]; Helper [50 h]; Physical Progress [950 h]; Concrete M40 [372 m3]; TATA Projects Ltd-25 | 3,670,524 |
|  | 3 | **Slab** |  | 2027-01-23 | 2027-02-23 |  |  |  |
| RB2-SS-B-03.670 |  | Shuttering | 5d | 2027-01-23 | 2027-01-30 | RB2-SS-B-03.610, RB2-SS-B-03.660 | Carpenter [3200 h]; Helper [1600 h]; Physical Progress [4760 h]; Formwork [1915 Sq m]; TATA Projects Ltd-25 | 2,231,281.4 |
| RB2-SS-B-03.700 |  | Reinforcement Bottom Net with chairs | 3d | 2027-01-30 | 2027-02-03 | RB2-SS-B-03.670 | Barbender [800 h]; Helper [400 h]; Physical Progress [2850 h]; Reinforcement Steel [12 MT1]; TATA Projects Ltd-25 | 1,158,150 |
| RB2-SS-B-03.710 |  | Laying of PT Tendon | 4d | 2027-02-03 | 2027-02-08 | RB2-SS-B-03.700 | Physical Progress [3810 h]; TATA Projects Ltd-25 |  |
| RB2-SS-B-03.730 |  | Reinforcement Top Net | 2d | 2027-02-08 | 2027-02-10 | RB2-SS-B-03.710 | Barbender [800 h]; Helper [400 h]; Physical Progress [1900 h]; Reinforcement Steel [12 MT1]; TATA Projects Ltd-25 | 1,158,150 |
| RB2-SS-B-03.740 |  | MEP Coordination | 1d | 2027-02-10 | 2027-02-11 | RB2-SS-B-03.730 | Physical Progress [950 h]; TATA Projects Ltd-25 |  |
| RB2-SS-B-03.745 |  | Concrete of Slab | 1d | 2027-02-11 | 2027-02-12 | RB2-SS-B-03.740 | Mason [50 h]; Helper [50 h]; Physical Progress [950 h]; Concrete M40 [479 m3]; TATA Projects Ltd-25 | 4,726,293 |
| RB2-SS-B-03.750 |  | Wait for Strength Gain | 6d | 2027-02-12 | 2027-02-19 | RB2-SS-B-03.745 | Physical Progress [5710 h]; TATA Projects Ltd-25 |  |
| RB2-SS-B-03.755 |  | PT Work | 6d | 2027-02-16 | 2027-02-23 | RB2-SS-B-03.750 FF+3d | PT [6 MT1]; Helper [100 h]; PT Fitter [100 h]; Physical Progress [6660 h]; TATA Projects Ltd-25 | 1,140,000 |
|  | 1 | **Basement 02** |  | 2027-01-28 | 2027-04-19 |  |  |  |
|  | 1 | **Pour 1** |  | 2027-02-25 | 2027-04-19 |  |  |  |
|  | 1 | **Column, Core Wall, Shear Wall** |  | 2027-02-25 | 2027-03-15 |  |  |  |
| RB2-SS-B-02.10 |  | Reinforcement | 6d | 2027-02-25 | 2027-03-03 | RB2-SS-B-03.265 | Barbender [3940 h]; Helper [1970 h]; Physical Progress [5710 h]; Reinforcement Steel [59 MT1]; TATA Projects Ltd-25 | 5,694,237.5 |
| RB2-SS-B-02.15 |  | LPS | 1d | 2027-03-04 | 2027-03-04 | RB2-SS-B-02.10 | LPS [36849 INR]; Physical Progress [950 h]; TATA Projects Ltd-25 | 36,849 |
| RB2-SS-B-02.20 |  | Shuttering | 7d | 2027-03-05 | 2027-03-13 | RB2-SS-B-02.10, RB2-SS-B-02.15 | Carpenter [1880 h]; Helper [940 h]; Physical Progress [6660 h]; Formwork [1126 Sq m]; TATA Projects Ltd-25 | 1,311,970.16 |
| RB2-SS-B-02.50 |  | Concrete | 1d | 2027-03-15 | 2027-03-15 | RB2-SS-B-02.20 | Mason [50 h]; Helper [50 h]; Physical Progress [950 h]; Concrete M40 [282 m3]; TATA Projects Ltd-25 | 2,782,494 |

| ID | WBS | Activity | Duration | Start | Finish | Predecessors | Resources | Cost |
| --- | --- | --- | --- | --- | --- | --- | --- | --- |
|  | 2 | **Slab** |  | 2027-03-16 | 2027-04-19 |  |  |  |
| RB2-SS-B-02.55 |  | Shuttering | 5d | 2027-03-16 | 2027-03-20 | RB2-SS-B-02.50 | Carpenter [4830 h]; Helper [2420 h]; Physical Progress [4760 h]; Formwork [2897 Sq m]; TATA Projects Ltd-25 | 3,375,468.52 |
| RB2-SS-B-02.100 |  | Reinforcement Bottom Net with chairs | 3d | 2027-03-23 | 2027-03-25 | RB2-SS-B-02.55 | Barbender [1070 h]; Helper [540 h]; Physical Progress [2850 h]; Reinforcement Steel [16 MT1]; TATA Projects Ltd-25 | 1,544,200 |
| RB2-SS-B-02.125 |  | Laying of PT Tendon | 3d | 2027-03-27 | 2027-03-30 | RB2-SS-B-02.100 | Physical Progress [2850 h]; TATA Projects Ltd-25 |  |
| RB2-SS-B-02.150 |  | Reinforcement Top Net | 3d | 2027-03-31 | 2027-04-02 | RB2-SS-B-02.125 | Barbender [1070 h]; Helper [540 h]; Physical Progress [2850 h]; Reinforcement Steel [16 MT1]; TATA Projects Ltd-25 | 1,544,200 |
| RB2-SS-B-02.170 |  | MEP Coordination | 1d | 2027-04-03 | 2027-04-03 | RB2-SS-B-02.100, RB2-SS-B-02.150 | Physical Progress [950 h]; TATA Projects Ltd-25 |  |
| RB2-SS-B-02.175 |  | Concrete of Slab | 1d | 2027-04-05 | 2027-04-05 | RB2-SS-B-02.170 | Mason [50 h]; Helper [50 h]; Physical Progress [950 h]; Concrete M40 [724 m3]; TATA Projects Ltd-25 | 7,143,708 |
| RB2-SS-B-02.195 |  | Wait for Strength Gain | 6d | 2027-04-06 | 2027-04-12 | RB2-SS-B-02.175 | Physical Progress [5710 h]; TATA Projects Ltd-25 |  |
| RB2-SS-B-02.225 |  | PT Work | 6d | 2027-04-13 | 2027-04-19 | RB2-SS-B-02.195 | PT [8 MT1]; Helper [100 h]; PT Fitter [100 h]; Physical Progress [5710 h]; TATA Projects Ltd-25 | 1,520,000 |
|  | 2 | **Pour 2** |  | 2027-02-16 | 2027-04-05 |  |  |  |
|  | 1 | **Column, Core Wall, Shear Wall** |  | 2027-02-16 | 2027-03-04 |  |  |  |
| RB2-SS-B-02.25 |  | Reinforcement | 6d | 2027-02-16 | 2027-02-23 | RB2-SS-B-03.330 | Barbender [5600 h]; Helper [2800 h]; Physical Progress [5710 h]; Reinforcement Steel [84 MT1]; TATA Projects Ltd-25 | 8,107,050 |
| RB2-SS-B-02.60 |  | LPS | 1d | 2027-02-23 | 2027-02-24 | RB2-SS-B-02.25 | LPS [36849 INR]; Physical Progress [950 h]; TATA Projects Ltd-25 | 36,849 |
| RB2-SS-B-02.75 |  | Shuttering | 6d | 2027-02-24 | 2027-03-03 | RB2-SS-B-02.25, RB2-SS-B-02.60 | Carpenter [2650 h]; Helper [1330 h]; Physical Progress [5710 h]; Formwork [1587 Sq m]; TATA Projects Ltd-25 | 1,849,108.92 |
| RB2-SS-B-02.105 |  | Concrete | 1d | 2027-03-03 | 2027-03-04 | RB2-SS-B-02.75 | Mason [50 h]; Helper [50 h]; Physical Progress [950 h]; Concrete M40 [397 m3]; TATA Projects Ltd-25 | 3,917,199 |
|  | 4 | **Staircase-1** |  | 2027-02-16 | 2027-03-23 |  |  |  |
| RB2-SS-B-02.35 |  | Reinforcement of wall upto Flight 1 | 3d | 2027-02-16 | 2027-02-19 | RB2-SS-B-03.330 | Barbender [70 h]; Helper [40 h]; Physical Progress [2850 h]; Reinforcement Steel [1 MT1]; TATA Projects Ltd-25 | 96,512.5 |
| RB2-SS-B-02.45 |  | Shuttering of wall upto Flight 1 | 3d | 2027-02-19 | 2027-02-23 | RB2-SS-B-02.35 | Carpenter [20 h]; Helper [10 h]; Physical Progress [2850 h]; Formwork [10 Sq m]; TATA Projects Ltd-25 | 11,651.6 |
| RB2-SS-B-02.70 |  | Casting of wall upto Flight 1 | 1d | 2027-02-23 | 2027-02-24 | RB2-SS-B-02.45 | Mason; Helper; Physical Progress [950 h]; Concrete M40 [3 m3]; TATA Projects Ltd-25 | 29,601 |
| RB2-SS-B-02.85 |  | Shuttering of Staircase upto Flight 1 | 3d | 2027-02-24 | 2027-02-27 | RB2-SS-B-02.70 | Carpenter [20 h]; Helper [10 h]; Physical Progress [2850 h]; Formwork [10 Sq m]; TATA Projects Ltd-25 | 11,651.6 |
| RB2-SS-B-02.95 |  | Reinforcement of Staircase upto Flight 1 | 3d | 2027-02-27 | 2027-03-03 | RB2-SS-B-02.85 | Barbender [70 h]; Helper [40 h]; Physical Progress [2850 h]; Reinforcement Steel [1 MT1]; TATA Projects Ltd-25 | 96,512.5 |
| RB2-SS-B-02.115 |  | MEP coordination upto Flight 1 | 1d | 2027-03-03 | 2027-03-04 | RB2-SS-B-02.95 | Physical Progress [950 h]; TATA Projects Ltd-25 |  |
| RB2-SS-B-02.135 |  | Casting of Staircase upto Flight 1 | 1d | 2027-03-04 | 2027-03-05 | RB2-SS-B-02.115 | Mason; Helper; Physical Progress [950 h]; Concrete M40 [3 m3]; TATA Projects Ltd-25 | 29,601 |
| RB2-SS-B-02.145 |  | Reinforcement of wall upto Flight 2 | 3d | 2027-03-05 | 2027-03-09 | RB2-SS-B-02.135 | Barbender [70 h]; Helper [40 h]; Physical Progress [2850 h]; Reinforcement Steel [1 MT1]; TATA Projects Ltd-25 | 96,512.5 |
| RB2-SS-B-02.165 |  | Shuttering of wall upto Flight 2 | 3d | 2027-03-09 | 2027-03-13 | RB2-SS-B-02.145 | Carpenter [20 h]; Helper [10 h]; Physical Progress [2850 h]; Formwork [10 Sq m]; TATA Projects Ltd-25 | 11,651.6 |
| RB2-SS-B-02.190 |  | Casting of wall upto Flight 2 | 1d | 2027-03-13 | 2027-03-15 | RB2-SS-B-02.165 | Mason; Helper; Physical Progress [950 h]; Concrete M40 [3 m3]; TATA Projects Ltd-25 | 29,601 |
| RB2-SS-B-02.205 |  | Shuttering of Staircase upto Flight 2 | 3d | 2027-03-15 | 2027-03-18 | RB2-SS-B-02.190 | Carpenter [20 h]; Helper [10 h]; Physical Progress [2850 h]; Formwork [10 Sq m]; TATA Projects Ltd-25 | 11,651.6 |
| RB2-SS-B-02.220 |  | Reinforcement of Staircase upto Flight 2 | 3d | 2027-03-18 | 2027-03-23 | RB2-SS-B-02.205 | Barbender [70 h]; Helper [40 h]; Physical Progress [2850 h]; Reinforcement Steel [1 MT1]; TATA Projects Ltd-25 | 96,512.5 |

| ID | WBS | Activity | Duration | Start | Finish | Predecessors | Resources | Cost |
| --- | --- | --- | --- | --- | --- | --- | --- | --- |
|  | 3 | **Staircase -2** |  | 2027-02-16 | 2027-03-23 |  |  |  |
| RB2-SS-B-02.30 |  | Reinforcement of wall upto Flight 1 | 3d | 2027-02-16 | 2027-02-19 | RB2-SS-B-03.330 | Barbender [70 h]; Helper [40 h]; Physical Progress [2850 h]; Reinforcement Steel [1 MT1]; TATA Projects Ltd-25 | 96,512.5 |
| RB2-SS-B-02.40 |  | Shuttering of wall upto Flight 1 | 3d | 2027-02-19 | 2027-02-23 | RB2-SS-B-02.30 | Carpenter [20 h]; Helper [10 h]; Physical Progress [2850 h]; Formwork [10 Sq m]; TATA Projects Ltd-25 | 11,651.6 |
| RB2-SS-B-02.65 |  | Casting of wall upto Flight 1 | 1d | 2027-02-23 | 2027-02-24 | RB2-SS-B-02.40 | Mason; Helper; Physical Progress [950 h]; Concrete M40 [3 m3]; TATA Projects Ltd-25 | 29,601 |
| RB2-SS-B-02.80 |  | Shuttering of Staircase upto Flight 1 | 3d | 2027-02-24 | 2027-02-27 | RB2-SS-B-02.65 | Carpenter [20 h]; Helper [10 h]; Physical Progress [2850 h]; Formwork [10 Sq m]; TATA Projects Ltd-25 | 11,651.6 |
| RB2-SS-B-02.90 |  | Reinforcement of Staircase upto Flight 1 | 3d | 2027-02-27 | 2027-03-03 | RB2-SS-B-02.80 | Barbender [70 h]; Helper [40 h]; Physical Progress [2850 h]; Reinforcement Steel [1 MT1]; TATA Projects Ltd-25 | 96,512.5 |
| RB2-SS-B-02.110 |  | MEP coordination upto Flight 1 | 1d | 2027-03-03 | 2027-03-04 | RB2-SS-B-02.90 | Physical Progress [950 h]; TATA Projects Ltd-25 |  |
| RB2-SS-B-02.130 |  | Casting of Staircase upto Flight 1 | 1d | 2027-03-04 | 2027-03-05 | RB2-SS-B-02.110 | Mason; Helper; Physical Progress [950 h]; Concrete M40 [3 m3]; TATA Projects Ltd-25 | 29,601 |
| RB2-SS-B-02.140 |  | Reinforcement of wall upto Flight 2 | 3d | 2027-03-05 | 2027-03-09 | RB2-SS-B-02.130 | Barbender [70 h]; Helper [40 h]; Physical Progress [2850 h]; Reinforcement Steel [1 MT1]; TATA Projects Ltd-25 | 96,512.5 |
| RB2-SS-B-02.160 |  | Shuttering of wall upto Flight 2 | 3d | 2027-03-09 | 2027-03-13 | RB2-SS-B-02.140 | Carpenter [20 h]; Helper [10 h]; Physical Progress [2850 h]; Formwork [10 Sq m]; TATA Projects Ltd-25 | 11,651.6 |
| RB2-SS-B-02.185 |  | Casting of wall upto Flight 2 | 1d | 2027-03-13 | 2027-03-15 | RB2-SS-B-02.160 | Mason; Helper; Physical Progress [950 h]; Concrete M40 [3 m3]; TATA Projects Ltd-25 | 29,601 |
| RB2-SS-B-02.200 |  | Shuttering of Staircase upto Flight 2 | 3d | 2027-03-15 | 2027-03-18 | RB2-SS-B-02.185 | Carpenter [20 h]; Helper [10 h]; Physical Progress [2850 h]; Formwork [10 Sq m]; TATA Projects Ltd-25 | 11,651.6 |
| RB2-SS-B-02.215 |  | Reinforcement of Staircase upto Flight 2 | 3d | 2027-03-18 | 2027-03-23 | RB2-SS-B-02.200 | Barbender [70 h]; Helper [40 h]; Physical Progress [2850 h]; Reinforcement Steel [1 MT1]; TATA Projects Ltd-25 | 96,512.5 |
|  | 2 | **Slab** |  | 2027-03-04 | 2027-04-05 |  |  |  |
| RB2-SS-B-02.120 |  | Shuttering | 4d | 2027-03-04 | 2027-03-09 | RB2-SS-B-02.105 | Carpenter [6810 h]; Helper [3410 h]; Physical Progress [3810 h]; Formwork [4083 Sq m]; TATA Projects Ltd-25 | 4,757,348.28 |
| RB2-SS-B-02.155 |  | Reinforcement Bottom Net with chairs | 3d | 2027-03-09 | 2027-03-13 | RB2-SS-B-02.120 | Barbender [1540 h]; Helper [770 h]; Physical Progress [2850 h]; Reinforcement Steel [23 MT1]; TATA Projects Ltd-25 | 2,219,787.5 |
| RB2-SS-B-02.180 |  | Laying of PT Tendon | 4d | 2027-03-13 | 2027-03-18 | RB2-SS-B-02.155 | Physical Progress [3810 h]; TATA Projects Ltd-25 |  |
| RB2-SS-B-02.210 |  | Reinforcement Top Net | 3d | 2027-03-18 | 2027-03-23 | RB2-SS-B-02.180 | Barbender [1540 h]; Helper [770 h]; Physical Progress [2850 h]; Reinforcement Steel [23 MT1]; TATA Projects Ltd-25 | 2,219,787.5 |
| RB2-SS-B-02.230 |  | MEP Coordination | 1d | 2027-03-23 | 2027-03-24 | RB2-SS-B-02.155, RB2-SS-B-02.210, RB2-SS-B-02.215, RB2-SS-B-02.220 | Physical Progress [950 h]; TATA Projects Ltd-25 |  |
| RB2-SS-B-02.235 |  | Concrete of Slab | 1d | 2027-03-24 | 2027-03-25 | RB2-SS-B-02.230 | Mason [50 h]; Helper [50 h]; Physical Progress [950 h]; Concrete M40 [1021 m3]; TATA Projects Ltd-25 | 10,074,207 |
| RB2-SS-B-02.250 |  | Wait for Strength Gain | 6d | 2027-03-25 | 2027-04-02 | RB2-SS-B-02.235 | Physical Progress [5710 h]; TATA Projects Ltd-25 |  |
| RB2-SS-B-02.255 |  | PT Work | 6d | 2027-03-29 | 2027-04-05 | RB2-SS-B-02.250 FF+2d, RB2-SS-B-03.350 | PT [11 MT1]; Helper [100 h]; PT Fitter [100 h]; Physical Progress [5710 h]; TATA Projects Ltd-25 | 2,090,000 |
|  | 3 | **Pour 3** |  | 2027-01-28 | 2027-03-17 |  |  |  |
|  | 1 | **Column, Core Wall, Shear Wall** |  | 2027-01-28 | 2027-02-16 |  |  |  |
| RB2-SS-B-02.240 |  | Reinforcement | 7d | 2027-01-28 | 2027-02-05 | RB2-SS-B-03.560 | Barbender [6870 h]; Helper [3440 h]; Physical Progress [6660 h]; Reinforcement Steel [103 MT1]; TATA Projects Ltd-25 | 9,940,787.5 |
| RB2-SS-B-02.270 |  | LPS | 1d | 2027-02-05 | 2027-02-06 | RB2-SS-B-02.240 | LPS [36849 INR]; Physical Progress [950 h]; TATA Projects Ltd-25 | 36,849 |
| RB2-SS-B-02.280 |  | Shuttering | 7d | 2027-02-06 | 2027-02-15 | RB2-SS-B-02.240, RB2-SS-B-02.270 | Carpenter [3260 h]; Helper [1630 h]; Physical Progress [6660 h]; Formwork [1954 Sq m]; TATA Projects Ltd-25 | 2,276,722.64 |
| RB2-SS-B-02.300 |  | Concrete | 1d | 2027-02-15 | 2027-02-16 | RB2-SS-B-02.280 | Mason [50 h]; Helper [50 h]; Physical Progress [950 h]; Concrete M40 [489 m3]; TATA Projects Ltd-25 | 4,824,963 |

| ID | WBS | Activity | Duration | Start | Finish | Predecessors | Resources | Cost |
| --- | --- | --- | --- | --- | --- | --- | --- | --- |
|  | 3 | **Staircase** |  | 2027-01-28 | 2027-03-02 |  |  |  |
| RB2-SS-B-02.245 |  | Reinforcement of wall upto Flight 1 | 3d | 2027-01-28 | 2027-02-01 | RB2-SS-B-03.560 | Barbender [70 h]; Helper [40 h]; Physical Progress [2850 h]; Reinforcement Steel [1 MT1]; TATA Projects Ltd-25 | 96,512.5 |
| RB2-SS-B-02.260 |  | Shuttering of wall upto Flight 1 | 3d | 2027-02-01 | 2027-02-04 | RB2-SS-B-02.245 | Carpenter [20 h]; Helper [10 h]; Physical Progress [2850 h]; Formwork [10 Sq m]; TATA Projects Ltd-25 | 11,651.6 |
| RB2-SS-B-02.265 |  | Casting of wall upto Flight 1 | 1d | 2027-02-04 | 2027-02-05 | RB2-SS-B-02.260 | Mason; Helper; Physical Progress [950 h]; Concrete M40 [3 m3]; TATA Projects Ltd-25 | 29,601 |
| RB2-SS-B-02.275 |  | Shuttering of Staircase upto Flight 1 | 3d | 2027-02-05 | 2027-02-09 | RB2-SS-B-02.265 | Carpenter [20 h]; Helper [10 h]; Physical Progress [2850 h]; Formwork [10 Sq m]; TATA Projects Ltd-25 | 11,651.6 |
| RB2-SS-B-02.285 |  | Reinforcement of Staircase upto Flight 1 | 3d | 2027-02-09 | 2027-02-12 | RB2-SS-B-02.275 | Barbender [70 h]; Helper [40 h]; Physical Progress [2850 h]; Reinforcement Steel [1 MT1]; TATA Projects Ltd-25 | 96,512.5 |
| RB2-SS-B-02.290 |  | MEP coordination upto Flight 1 | 1d | 2027-02-12 | 2027-02-13 | RB2-SS-B-02.285 | Physical Progress [950 h]; TATA Projects Ltd-25 |  |
| RB2-SS-B-02.295 |  | Casting of Staircase upto Flight 1 | 1d | 2027-02-13 | 2027-02-15 | RB2-SS-B-02.290 | Mason; Helper; Physical Progress [950 h]; Concrete M40 [3 m3]; TATA Projects Ltd-25 | 29,601 |
| RB2-SS-B-02.305 |  | Reinforcement of wall upto Flight 2 | 3d | 2027-02-15 | 2027-02-18 | RB2-SS-B-02.295 | Barbender [70 h]; Helper [40 h]; Physical Progress [2850 h]; Reinforcement Steel [1 MT1]; TATA Projects Ltd-25 | 96,512.5 |
| RB2-SS-B-02.320 |  | Shuttering of wall upto Flight 2 | 3d | 2027-02-18 | 2027-02-22 | RB2-SS-B-02.305 | Carpenter [20 h]; Helper [10 h]; Physical Progress [2850 h]; Formwork [10 Sq m]; TATA Projects Ltd-25 | 11,651.6 |
| RB2-SS-B-02.335 |  | Casting of wall upto Flight 2 | 1d | 2027-02-22 | 2027-02-23 | RB2-SS-B-02.320 | Mason; Helper; Physical Progress [950 h]; Concrete M40 [3 m3]; TATA Projects Ltd-25 | 29,601 |
| RB2-SS-B-02.345 |  | Shuttering of Staircase upto Flight 2 | 3d | 2027-02-23 | 2027-02-26 | RB2-SS-B-02.335 | Carpenter [20 h]; Helper [10 h]; Physical Progress [2850 h]; Formwork [10 Sq m]; TATA Projects Ltd-25 | 11,651.6 |
| RB2-SS-B-02.365 |  | Reinforcement of Staircase upto Flight 2 | 3d | 2027-02-26 | 2027-03-02 | RB2-SS-B-02.345 | Barbender [70 h]; Helper [40 h]; Physical Progress [2850 h]; Reinforcement Steel [1 MT1]; TATA Projects Ltd-25 | 96,512.5 |
|  | 2 | **Slab** |  | 2027-02-16 | 2027-03-17 |  |  |  |
| RB2-SS-B-02.310 |  | Shuttering | 4d | 2027-02-16 | 2027-02-20 | RB2-SS-B-02.300 | Carpenter [8380 h]; Helper [4190 h]; Physical Progress [3810 h]; Formwork [5026 Sq m]; TATA Projects Ltd-25 | 5,856,094.16 |
| RB2-SS-B-02.330 |  | Reinforcement Bottom Net with chairs | 3d | 2027-02-20 | 2027-02-24 | RB2-SS-B-02.310 | Barbender [1870 h]; Helper [940 h]; Physical Progress [2850 h]; Reinforcement Steel [28 MT1]; TATA Projects Ltd-25 | 2,702,350 |
| RB2-SS-B-02.350 |  | Laying of PT Tendon | 4d | 2027-02-24 | 2027-03-01 | RB2-SS-B-02.330 | Physical Progress [3810 h]; TATA Projects Ltd-25 |  |
| RB2-SS-B-02.380 |  | Reinforcement Top Net | 3d | 2027-03-01 | 2027-03-04 | RB2-SS-B-02.350 | Barbender [1870 h]; Helper [940 h]; Physical Progress [2850 h]; Reinforcement Steel [28 MT1]; TATA Projects Ltd-25 | 2,702,350 |
| RB2-SS-B-02.395 |  | MEP Coordination | 1d | 2027-03-04 | 2027-03-05 | RB2-SS-B-02.330, RB2-SS-B-02.380, RB2-SS-B-02.365 | Physical Progress [950 h]; TATA Projects Ltd-25 |  |
| RB2-SS-B-02.400 |  | Concrete of Slab | 1d | 2027-03-05 | 2027-03-06 | RB2-SS-B-02.395 | Mason [50 h]; Helper [50 h]; Physical Progress [950 h]; Concrete M40 [1256 m3]; TATA Projects Ltd-25 | 12,392,952 |
| RB2-SS-B-02.410 |  | Wait for Strength Gain | 6d | 2027-03-06 | 2027-03-15 | RB2-SS-B-02.400 | Physical Progress [5710 h]; TATA Projects Ltd-25 |  |
| RB2-SS-B-02.440 |  | PT Work | 6d | 2027-03-09 | 2027-03-17 | RB2-SS-B-02.410 FF+2d, RB2-SS-B-03.590 | PT [14 MT1]; Helper [100 h]; PT Fitter [100 h]; Physical Progress [5710 h]; TATA Projects Ltd-25 | 2,660,000 |
|  | 4 | **Pour 4** |  | 2027-02-06 | 2027-03-30 |  |  |  |
|  | 1 | **Column, Core Wall, Shear Wall** |  | 2027-02-06 | 2027-02-25 |  |  |  |
| RB2-SS-B-02.315 |  | Reinforcement | 7d | 2027-02-06 | 2027-02-15 | RB2-SS-B-03.675 | Barbender [5940 h]; Helper [2970 h]; Physical Progress [6660 h]; Reinforcement Steel [89 MT1]; TATA Projects Ltd-25 | 8,589,612.5 |
| RB2-SS-B-02.360 |  | LPS | 1d | 2027-02-15 | 2027-02-16 | RB2-SS-B-02.315 | LPS [36849 INR]; Physical Progress [950 h]; TATA Projects Ltd-25 | 36,849 |
| RB2-SS-B-02.375 |  | Shuttering | 7d | 2027-02-16 | 2027-02-24 | RB2-SS-B-02.315, RB2-SS-B-02.360 | Carpenter [2840 h]; Helper [1420 h]; Physical Progress [6660 h]; Formwork [1699 Sq m]; TATA Projects Ltd-25 | 1,979,606.84 |
| RB2-SS-B-02.425 |  | Concrete | 1d | 2027-02-24 | 2027-02-25 | RB2-SS-B-02.375 | Mason [50 h]; Helper [50 h]; Physical Progress [950 h]; Concrete M40 [425 m3]; TATA Projects Ltd-25 | 4,193,475 |

| ID | WBS | Activity | Duration | Start | Finish | Predecessors | Resources | Cost |
| --- | --- | --- | --- | --- | --- | --- | --- | --- |
|  | 3 | **Staircase** |  | 2027-02-06 | 2027-03-12 |  |  |  |
| RB2-SS-B-02.325 |  | Reinforcement of wall upto Flight 1 | 3d | 2027-02-06 | 2027-02-10 | RB2-SS-B-03.675 | Barbender [70 h]; Helper [40 h]; Physical Progress [2850 h]; Reinforcement Steel [1 MT1]; TATA Projects Ltd-25 | 96,512.5 |
| RB2-SS-B-02.340 |  | Shuttering of wall upto Flight 1 | 3d | 2027-02-10 | 2027-02-13 | RB2-SS-B-02.325 | Carpenter [20 h]; Helper [10 h]; Physical Progress [2850 h]; Formwork [10 Sq m]; TATA Projects Ltd-25 | 11,651.6 |
| RB2-SS-B-02.355 |  | Casting of wall upto Flight 1 | 1d | 2027-02-13 | 2027-02-15 | RB2-SS-B-02.340 | Mason; Helper; Physical Progress [950 h]; Concrete M40 [3 m3]; TATA Projects Ltd-25 | 29,601 |
| RB2-SS-B-02.370 |  | Shuttering of Staircase upto Flight 1 | 3d | 2027-02-15 | 2027-02-18 | RB2-SS-B-02.355 | Carpenter [20 h]; Helper [10 h]; Physical Progress [2850 h]; Formwork [10 Sq m]; TATA Projects Ltd-25 | 11,651.6 |
| RB2-SS-B-02.390 |  | Reinforcement of Staircase upto Flight 1 | 3d | 2027-02-18 | 2027-02-22 | RB2-SS-B-02.370 | Barbender [70 h]; Helper [40 h]; Physical Progress [2850 h]; Reinforcement Steel [1 MT1]; TATA Projects Ltd-25 | 96,512.5 |
| RB2-SS-B-02.405 |  | MEP coordination upto Flight 1 | 1d | 2027-02-22 | 2027-02-23 | RB2-SS-B-02.390 | Physical Progress [950 h]; TATA Projects Ltd-25 |  |
| RB2-SS-B-02.420 |  | Casting of Staircase upto Flight 1 | 1d | 2027-02-23 | 2027-02-24 | RB2-SS-B-02.405 | Mason; Helper; Physical Progress [950 h]; Concrete M40 [3 m3]; TATA Projects Ltd-25 | 29,601 |
| RB2-SS-B-02.435 |  | Reinforcement of wall upto Flight 2 | 3d | 2027-02-24 | 2027-02-27 | RB2-SS-B-02.420 | Barbender [70 h]; Helper [40 h]; Physical Progress [2850 h]; Reinforcement Steel [1 MT1]; TATA Projects Ltd-25 | 96,512.5 |
| RB2-SS-B-02.455 |  | Shuttering of wall upto Flight 2 | 3d | 2027-02-27 | 2027-03-03 | RB2-SS-B-02.435 | Carpenter [20 h]; Helper [10 h]; Physical Progress [2850 h]; Formwork [10 Sq m]; TATA Projects Ltd-25 | 11,651.6 |
| RB2-SS-B-02.480 |  | Casting of wall upto Flight 2 | 1d | 2027-03-03 | 2027-03-04 | RB2-SS-B-02.455 | Mason; Helper; Physical Progress [950 h]; Concrete M40 [3 m3]; TATA Projects Ltd-25 | 29,601 |
| RB2-SS-B-02.490 |  | Shuttering of Staircase upto Flight 2 | 3d | 2027-03-04 | 2027-03-08 | RB2-SS-B-02.480 | Carpenter [20 h]; Helper [10 h]; Physical Progress [2850 h]; Formwork [10 Sq m]; TATA Projects Ltd-25 | 11,651.6 |
| RB2-SS-B-02.505 |  | Reinforcement of Staircase upto Flight 2 | 3d | 2027-03-08 | 2027-03-12 | RB2-SS-B-02.490 | Barbender [70 h]; Helper [40 h]; Physical Progress [2850 h]; Reinforcement Steel [1 MT1]; TATA Projects Ltd-25 | 96,512.5 |
|  | 2 | **Slab** |  | 2027-02-25 | 2027-03-30 |  |  |  |
| RB2-SS-B-02.445 |  | Shuttering | 5d | 2027-02-25 | 2027-03-03 | RB2-SS-B-02.425 | Carpenter [7290 h]; Helper [3650 h]; Physical Progress [4760 h]; Formwork [4372 Sq m]; TATA Projects Ltd-25 | 5,094,079.52 |
| RB2-SS-B-02.470 |  | Reinforcement Bottom Net with chairs | 3d | 2027-03-03 | 2027-03-06 | RB2-SS-B-02.445 | Barbender [1600 h]; Helper [800 h]; Physical Progress [2850 h]; Reinforcement Steel [24 MT1]; TATA Projects Ltd-25 | 2,316,300 |
| RB2-SS-B-02.495 |  | Laying of PT Tendon | 4d | 2027-03-06 | 2027-03-12 | RB2-SS-B-02.470 | Physical Progress [3810 h]; TATA Projects Ltd-25 |  |
| RB2-SS-B-02.520 |  | Reinforcement Top Net | 3d | 2027-03-12 | 2027-03-16 | RB2-SS-B-02.495 | Barbender [1600 h]; Helper [800 h]; Physical Progress [2850 h]; Reinforcement Steel [24 MT1]; TATA Projects Ltd-25 | 2,316,300 |
| RB2-SS-B-02.530 |  | MEP Coordination | 1d | 2027-03-16 | 2027-03-17 | RB2-SS-B-02.470, RB2-SS-B-02.520, RB2-SS-B-02.505 | Physical Progress [950 h]; TATA Projects Ltd-25 |  |
| RB2-SS-B-02.540 |  | Concrete of Slab | 1d | 2027-03-17 | 2027-03-18 | RB2-SS-B-02.530 | Mason [50 h]; Helper [50 h]; Physical Progress [950 h]; Concrete M40 [1093 m3]; TATA Projects Ltd-25 | 10,784,631 |
| RB2-SS-B-02.545 |  | Wait for Strength Gain | 6d | 2027-03-18 | 2027-03-27 | RB2-SS-B-02.540 | Physical Progress [5710 h]; TATA Projects Ltd-25 |  |
| RB2-SS-B-02.560 |  | PT Work | 6d | 2027-03-20 | 2027-03-30 | RB2-SS-B-02.545 FF+2d, RB2-SS-B-03.690 | PT [12 MT1]; Helper [100 h]; PT Fitter [100 h]; Physical Progress [5710 h]; TATA Projects Ltd-25 | 2,280,000 |
|  | 5 | **Pour 5** |  | 2027-02-19 | 2027-04-06 |  |  |  |
|  | 1 | **Column, Core Wall, Shear Wall** |  | 2027-02-19 | 2027-03-05 |  |  |  |
| RB2-SS-B-02.385 |  | Reinforcement | 5d | 2027-02-19 | 2027-02-25 | RB2-SS-B-03.720 | Barbender [3470 h]; Helper [1740 h]; Physical Progress [4760 h]; Reinforcement Steel [52 MT1]; TATA Projects Ltd-25 | 5,018,650 |
| RB2-SS-B-02.430 |  | LPS | 1d | 2027-02-25 | 2027-02-26 | RB2-SS-B-02.385 | LPS [36849 INR]; Physical Progress [950 h]; TATA Projects Ltd-25 | 36,849 |
| RB2-SS-B-02.450 |  | Shuttering | 5d | 2027-02-26 | 2027-03-04 | RB2-SS-B-02.385, RB2-SS-B-02.430 | Carpenter [1660 h]; Helper [830 h]; Physical Progress [4760 h]; Formwork [994 Sq m]; TATA Projects Ltd-25 | 1,158,169.04 |
| RB2-SS-B-02.475 |  | Concrete | 1d | 2027-03-04 | 2027-03-05 | RB2-SS-B-02.450 | Mason [50 h]; Helper [50 h]; Physical Progress [950 h]; Concrete M40 [249 m3]; TATA Projects Ltd-25 | 2,456,883 |

| ID | WBS | Activity | Duration | Start | Finish | Predecessors | Resources | Cost |
| --- | --- | --- | --- | --- | --- | --- | --- | --- |
|  | 2 | **Slab** |  | 2027-03-05 | 2027-04-06 |  |  |  |
| RB2-SS-B-02.485 |  | Shuttering | 5d | 2027-03-05 | 2027-03-12 | RB2-SS-B-02.475 | Carpenter [4270 h]; Helper [2140 h]; Physical Progress [4760 h]; Formwork [2558 Sq m]; TATA Projects Ltd-25 | 2,980,479.28 |
| RB2-SS-B-02.515 |  | Reinforcement Bottom Net with chairs | 3d | 2027-03-12 | 2027-03-16 | RB2-SS-B-02.485 | Barbender [940 h]; Helper [470 h]; Physical Progress [2850 h]; Reinforcement Steel [14 MT1]; TATA Projects Ltd-25 | 1,351,175 |
| RB2-SS-B-02.525 |  | Laying of PT Tendon | 4d | 2027-03-16 | 2027-03-20 | RB2-SS-B-02.515 | Physical Progress [3810 h]; TATA Projects Ltd-25 |  |
| RB2-SS-B-02.550 |  | Reinforcement Top Net | 2d | 2027-03-20 | 2027-03-24 | RB2-SS-B-02.525 | Barbender [940 h]; Helper [470 h]; Physical Progress [1900 h]; Reinforcement Steel [14 MT1]; TATA Projects Ltd-25 | 1,351,175 |
| RB2-SS-B-02.565 |  | MEP Coordination | 1d | 2027-03-24 | 2027-03-25 | RB2-SS-B-02.515, RB2-SS-B-02.550 | Physical Progress [950 h]; TATA Projects Ltd-25 |  |
| RB2-SS-B-02.570 |  | Concrete of Slab | 1d | 2027-03-25 | 2027-03-27 | RB2-SS-B-02.565 | Mason [50 h]; Helper [50 h]; Physical Progress [950 h]; Concrete M40 [639 m3]; TATA Projects Ltd-25 | 6,305,013 |
| RB2-SS-B-02.575 |  | Wait for Strength Gain | 6d | 2027-03-27 | 2027-04-03 | RB2-SS-B-02.570 | Physical Progress [5710 h]; TATA Projects Ltd-25 |  |
| RB2-SS-B-02.585 |  | PT Work | 6d | 2027-03-30 | 2027-04-06 | RB2-SS-B-02.575 FF+2d, RB2-SS-B-03.735 | PT [7 MT1]; Helper [100 h]; PT Fitter [100 h]; Physical Progress [5710 h]; TATA Projects Ltd-25 | 1,330,000 |
|  | 6 | **Pour 6** |  | 2027-02-12 | 2027-03-30 |  |  |  |
|  | 1 | **Column, Core Wall, Shear Wall** |  | 2027-02-12 | 2027-02-26 |  |  |  |
| RB2-SS-B-02.415 |  | Reinforcement | 5d | 2027-02-12 | 2027-02-18 | RB2-SS-B-03.745 | Barbender [3400 h]; Helper [1700 h]; Physical Progress [4760 h]; Reinforcement Steel [51 MT1]; TATA Projects Ltd-25 | 4,922,137.5 |
| RB2-SS-B-02.460 |  | LPS | 1d | 2027-02-18 | 2027-02-19 | RB2-SS-B-02.415 | LPS [36849 INR]; Physical Progress [950 h]; TATA Projects Ltd-25 | 36,849 |
| RB2-SS-B-02.465 |  | Shuttering | 5d | 2027-02-19 | 2027-02-25 | RB2-SS-B-02.415, RB2-SS-B-02.460 | Carpenter [1620 h]; Helper [810 h]; Physical Progress [4760 h]; Formwork [968 Sq m]; TATA Projects Ltd-25 | 1,127,874.88 |
| RB2-SS-B-02.500 |  | Concrete | 1d | 2027-02-25 | 2027-02-26 | RB2-SS-B-02.465 | Mason [50 h]; Helper [50 h]; Physical Progress [950 h]; Concrete M40 [242 m3]; TATA Projects Ltd-25 | 2,387,814 |
|  | 2 | **Slab** |  | 2027-02-26 | 2027-03-30 |  |  |  |
| RB2-SS-B-02.510 |  | Shuttering | 5d | 2027-02-26 | 2027-03-04 | RB2-SS-B-02.500 | Carpenter [4150 h]; Helper [2080 h]; Physical Progress [4760 h]; Formwork [2490 Sq m]; TATA Projects Ltd-25 | 2,901,248.4 |
| RB2-SS-B-02.535 |  | Reinforcement Bottom Net with chairs | 3d | 2027-03-04 | 2027-03-08 | RB2-SS-B-02.510 | Barbender [940 h]; Helper [470 h]; Physical Progress [2850 h]; Reinforcement Steel [14 MT1]; TATA Projects Ltd-25 | 1,351,175 |
| RB2-SS-B-02.555 |  | Laying of PT Tendon | 4d | 2027-03-08 | 2027-03-13 | RB2-SS-B-02.535 | Physical Progress [3810 h]; TATA Projects Ltd-25 |  |
| RB2-SS-B-02.580 |  | Reinforcement Top Net | 2d | 2027-03-13 | 2027-03-16 | RB2-SS-B-02.555 | Barbender [940 h]; Helper [470 h]; Physical Progress [1900 h]; Reinforcement Steel [14 MT1]; TATA Projects Ltd-25 | 1,351,175 |
| RB2-SS-B-02.590 |  | MEP Coordination | 1d | 2027-03-16 | 2027-03-17 | RB2-SS-B-02.535, RB2-SS-B-02.580 | Physical Progress [950 h]; TATA Projects Ltd-25 |  |
| RB2-SS-B-02.595 |  | Concrete of Slab | 1d | 2027-03-17 | 2027-03-18 | RB2-SS-B-02.590 | Mason [50 h]; Helper [50 h]; Physical Progress [950 h]; Concrete M40 [623 m3]; TATA Projects Ltd-25 | 6,147,141 |
| RB2-SS-B-02.600 |  | Wait for Strength Gain | 6d | 2027-03-18 | 2027-03-27 | RB2-SS-B-02.595 | Physical Progress [5710 h]; TATA Projects Ltd-25 |  |
| RB2-SS-B-02.605 |  | PT Work | 6d | 2027-03-20 | 2027-03-30 | RB2-SS-B-02.600 FF+2d, RB2-SS-B-03.755 | PT [7 MT1]; Helper [100 h]; PT Fitter [100 h]; Physical Progress [5710 h]; TATA Projects Ltd-25 | 1,330,000 |

| ID | WBS | Activity | Duration | Start | Finish | Predecessors | Resources | Cost |
| --- | --- | --- | --- | --- | --- | --- | --- | --- |
|  | 2 | **Basement 01** |  | 2027-03-06 | 2027-05-28 |  |  |  |
|  | 1 | **Pour 1** |  | 2027-04-06 | 2027-05-28 |  |  |  |
|  | 1 | **Column, Core Wall, Shear Wall - First Lift** |  | 2027-04-06 | 2027-04-16 |  |  |  |
| RB2-SS-B-01.10 |  | Reinforcement | 4d | 2027-04-06 | 2027-04-09 | RB2-SS-B-02.175 | Barbender [2000 h]; Helper [1000 h]; Physical Progress [3810 h]; Reinforcement Steel [30 MT1]; TATA Projects Ltd-25 | 2,895,375 |
| RB2-SS-B-01.15 |  | LPS | 1d | 2027-04-10 | 2027-04-10 | RB2-SS-B-01.10 | LPS [36849 INR]; Physical Progress [950 h]; TATA Projects Ltd-25 | 36,849 |
| RB2-SS-B-01.20 |  | Shuttering | 4d | 2027-04-12 | 2027-04-15 | RB2-SS-B-01.10, RB2-SS-B-01.15 | Carpenter [940 h]; Helper [470 h]; Physical Progress [3810 h]; Formwork [563 Sq m]; TATA Projects Ltd-25 | 655,985.08 |
| RB2-SS-B-01.40 |  | Concrete | 1d | 2027-04-16 | 2027-04-16 | RB2-SS-B-01.20 | Mason [50 h]; Helper [50 h]; Physical Progress [950 h]; Concrete M40 [141 m3]; TATA Projects Ltd-25 | 1,391,247 |
|  | 4 | **Column, Core Wall, Shear Wall - Second Lift** |  | 2027-04-17 | 2027-04-28 |  |  |  |
| RB2-SS-B-01.45 |  | Reinforcement | 4d | 2027-04-17 | 2027-04-21 | RB2-SS-B-01.40 | Barbender [2000 h]; Helper [1000 h]; Physical Progress [3810 h]; Reinforcement Steel [30 MT1]; TATA Projects Ltd-25 | 2,895,375 |
| RB2-SS-B-01.90 |  | LPS | 1d | 2027-04-22 | 2027-04-22 | RB2-SS-B-01.45 | LPS [36849 INR]; Physical Progress [950 h]; TATA Projects Ltd-25 | 36,849 |
| RB2-SS-B-01.105 |  | Shuttering | 4d | 2027-04-23 | 2027-04-27 | RB2-SS-B-01.45, RB2-SS-B-01.90 | Carpenter [940 h]; Helper [470 h]; Physical Progress [3810 h]; Formwork [563 Sq m]; TATA Projects Ltd-25 | 655,985.08 |
| RB2-SS-B-01.150 |  | Concrete | 1d | 2027-04-28 | 2027-04-28 | RB2-SS-B-01.105 | Mason [50 h]; Helper [50 h]; Physical Progress [950 h]; Concrete M40 [141 m3]; TATA Projects Ltd-25 | 1,391,247 |
|  | 2 | **Slab** |  | 2027-04-29 | 2027-05-28 |  |  |  |
| RB2-SS-B-01.165 |  | Shuttering | 5d | 2027-04-29 | 2027-05-05 | RB2-SS-B-01.150 | Carpenter [5860 h]; Helper [2930 h]; Physical Progress [4760 h]; Formwork [3515 Sq m]; TATA Projects Ltd-25 | 4,095,537.4 |
| RB2-SS-B-01.220 |  | Reinforcement Bottom Net with chairs | 3d | 2027-05-06 | 2027-05-08 | RB2-SS-B-01.165 | Barbender [1400 h]; Helper [700 h]; Physical Progress [2850 h]; Reinforcement Steel [21 MT1]; TATA Projects Ltd-25 | 2,026,762.5 |
| RB2-SS-B-01.255 |  | Laying of PT Tendon | 4d | 2027-05-10 | 2027-05-13 | RB2-SS-B-01.220 | Physical Progress [3810 h]; TATA Projects Ltd-25 |  |
| RB2-SS-B-01.290 |  | Reinforcement Top Net | 3d | 2027-05-14 | 2027-05-17 | RB2-SS-B-01.255 | Barbender [1400 h]; Helper [700 h]; Physical Progress [2850 h]; Reinforcement Steel [21 MT1]; TATA Projects Ltd-25 | 2,026,762.5 |
| RB2-SS-B-01.330 |  | MEP Coordination | 1d | 2027-05-18 | 2027-05-18 | RB2-SS-B-01.220, RB2-SS-B-01.290 | Physical Progress [950 h]; TATA Projects Ltd-25 |  |
| RB2-SS-B-01.345 |  | Concrete of Slab | 1d | 2027-05-19 | 2027-05-19 | RB2-SS-B-01.330 | Mason [50 h]; Helper [50 h]; Physical Progress [950 h]; Concrete M40 [879 m3]; TATA Projects Ltd-25 | 8,673,093 |
| RB2-SS-B-01.355 |  | Wait for Strength Gain | 6d | 2027-05-20 | 2027-05-26 | RB2-SS-B-01.345 | Physical Progress [5710 h]; TATA Projects Ltd-25 |  |
| RB2-SS-B-01.360 |  | PT Work | 6d | 2027-05-22 | 2027-05-28 | RB2-SS-B-01.355 FF+2d, RB2-SS-B-02.225 | PT [9 MT1]; Helper [100 h]; PT Fitter [100 h]; Physical Progress [7610 h]; TATA Projects Ltd-25 | 1,710,000 |
|  | 2 | **Pour 2** |  | 2027-03-25 | 2027-05-19 |  |  |  |
|  | 1 | **Column, Core Wall, Shear Wall - First Lift** |  | 2027-03-25 | 2027-04-07 |  |  |  |
| RB2-SS-B-01.25 |  | Reinforcement | 4d | 2027-03-25 | 2027-03-31 | RB2-SS-B-02.235 | Barbender [2800 h]; Helper [1400 h]; Physical Progress [3810 h]; Reinforcement Steel [42 MT1]; TATA Projects Ltd-25 | 4,053,525 |
| RB2-SS-B-01.60 |  | LPS | 1d | 2027-03-31 | 2027-04-01 | RB2-SS-B-01.25 | LPS [36849 INR]; Physical Progress [950 h]; TATA Projects Ltd-25 | 36,849 |
| RB2-SS-B-01.75 |  | Shuttering | 4d | 2027-04-01 | 2027-04-06 | RB2-SS-B-01.25, RB2-SS-B-01.60 | Carpenter [1330 h]; Helper [670 h]; Physical Progress [3810 h]; Formwork [794 Sq m]; TATA Projects Ltd-25 | 925,137.04 |
| RB2-SS-B-01.130 |  | Concrete | 1d | 2027-04-06 | 2027-04-07 | RB2-SS-B-01.75 | Mason [50 h]; Helper [50 h]; Physical Progress [950 h]; Concrete M40 [198 m3]; TATA Projects Ltd-25 | 1,953,666 |

| ID | WBS | Activity | Duration | Start | Finish | Predecessors | Resources | Cost |
| --- | --- | --- | --- | --- | --- | --- | --- | --- |
|  | 3 | **Staircase - 1** |  | 2027-03-25 | 2027-05-06 |  |  |  |
| RB2-SS-B-01.30 |  | Reinforcement of wall upto Flight 1 | 2d | 2027-03-25 | 2027-03-29 | RB2-SS-B-02.235 | Barbender [70 h]; Helper [40 h]; Physical Progress [1900 h]; Reinforcement Steel [1 MT1]; TATA Projects Ltd-25 | 96,512.5 |
| RB2-SS-B-01.50 |  | Shuttering of wall upto Flight 1 | 2d | 2027-03-29 | 2027-03-31 | RB2-SS-B-01.30 | Carpenter [20 h]; Helper [10 h]; Physical Progress [1900 h]; Formwork [10 Sq m]; TATA Projects Ltd-25 | 11,651.6 |
| RB2-SS-B-01.65 |  | Casting of wall upto Flight 1 | 1d | 2027-03-31 | 2027-04-01 | RB2-SS-B-01.50 | Mason; Helper; Physical Progress [950 h]; Concrete M40 [3 m3]; TATA Projects Ltd-25 | 29,601 |
| RB2-SS-B-01.80 |  | Shuttering of Staircase upto Flight 1 | 1d | 2027-04-01 | 2027-04-02 | RB2-SS-B-01.65 | Carpenter [20 h]; Helper [10 h]; Physical Progress [950 h]; Formwork [10 Sq m]; TATA Projects Ltd-25 | 11,651.6 |
| RB2-SS-B-01.95 |  | Reinforcement of Staircase upto Flight 1 | 1d | 2027-04-02 | 2027-04-03 | RB2-SS-B-01.80 | Barbender [70 h]; Helper [40 h]; Physical Progress [950 h]; Reinforcement Steel [1 MT1]; TATA Projects Ltd-25 | 96,512.5 |
| RB2-SS-B-01.110 |  | MEP coordination upto Flight 1 | 1d | 2027-04-03 | 2027-04-05 | RB2-SS-B-01.95 | Physical Progress [950 h]; TATA Projects Ltd-25 |  |
| RB2-SS-B-01.120 |  | Casting of Staircase upto Flight 1 | 1d | 2027-04-05 | 2027-04-06 | RB2-SS-B-01.110 | Mason; Helper; Physical Progress [950 h]; Concrete M40 [3 m3]; TATA Projects Ltd-25 | 29,601 |
| RB2-SS-B-01.135 |  | Reinforcement of wall upto Flight 2 | 2d | 2027-04-06 | 2027-04-08 | RB2-SS-B-01.120 | Barbender [70 h]; Helper [40 h]; Physical Progress [1900 h]; Reinforcement Steel [1 MT1]; TATA Projects Ltd-25 | 96,512.5 |
| RB2-SS-B-01.155 |  | Shuttering of wall upto Flight 2 | 2d | 2027-04-08 | 2027-04-10 | RB2-SS-B-01.135 | Carpenter [20 h]; Helper [10 h]; Physical Progress [1900 h]; Formwork [10 Sq m]; TATA Projects Ltd-25 | 11,651.6 |
| RB2-SS-B-01.170 |  | Casting of wall upto Flight 2 | 1d | 2027-04-10 | 2027-04-12 | RB2-SS-B-01.155 | Mason; Helper; Physical Progress [950 h]; Concrete M40 [3 m3]; TATA Projects Ltd-25 | 29,601 |
| RB2-SS-B-01.185 |  | Shuttering of Staircase upto Flight 2 | 1d | 2027-04-12 | 2027-04-13 | RB2-SS-B-01.170 | Carpenter [20 h]; Helper [10 h]; Physical Progress [950 h]; Formwork [10 Sq m]; TATA Projects Ltd-25 | 11,651.6 |
| RB2-SS-B-01.200 |  | Reinforcement of Staircase upto Flight 2 | 1d | 2027-04-13 | 2027-04-14 | RB2-SS-B-01.185 | Barbender [70 h]; Helper [40 h]; Physical Progress [950 h]; Reinforcement Steel [1 MT1]; TATA Projects Ltd-25 | 96,512.5 |
| RB2-SS-B-01.210 |  | MEP coordination upto Flight 2 | 1d | 2027-04-14 | 2027-04-15 | RB2-SS-B-01.200 | Physical Progress [950 h]; TATA Projects Ltd-25 |  |
| RB2-SS-B-01.225 |  | Casting of Staircase upto Flight 2 | 1d | 2027-04-15 | 2027-04-16 | RB2-SS-B-01.210 | Mason; Helper; Physical Progress [950 h]; Concrete M40 [3 m3]; TATA Projects Ltd-25 | 29,601 |
| RB2-SS-B-01.235 |  | Reinforcement of wall upto Flight 3 | 2d | 2027-04-16 | 2027-04-19 | RB2-SS-B-01.225 | Barbender [70 h]; Helper [40 h]; Physical Progress [1900 h]; Reinforcement Steel [1 MT1]; TATA Projects Ltd-25 | 96,512.5 |
| RB2-SS-B-01.260 |  | Shuttering of wall upto Flight 3 | 2d | 2027-04-19 | 2027-04-21 | RB2-SS-B-01.235 | Carpenter [20 h]; Helper [10 h]; Physical Progress [1900 h]; Formwork [10 Sq m]; TATA Projects Ltd-25 | 11,651.6 |
| RB2-SS-B-01.270 |  | Casting of wall upto Flight 3 | 1d | 2027-04-21 | 2027-04-22 | RB2-SS-B-01.260 | Mason; Helper; Physical Progress [950 h]; Concrete M40 [3 m3]; TATA Projects Ltd-25 | 29,601 |
| RB2-SS-B-01.280 |  | Shuttering of Staircase upto Flight 3 | 1d | 2027-04-22 | 2027-04-23 | RB2-SS-B-01.270 | Carpenter [20 h]; Helper [10 h]; Physical Progress [950 h]; Formwork [10 Sq m]; TATA Projects Ltd-25 | 11,651.6 |
| RB2-SS-B-01.295 |  | Reinforcement of Staircase upto Flight 3 | 1d | 2027-04-23 | 2027-04-24 | RB2-SS-B-01.280 | Barbender [70 h]; Helper [40 h]; Physical Progress [950 h]; Reinforcement Steel [1 MT1]; TATA Projects Ltd-25 | 96,512.5 |
| RB2-SS-B-01.310 |  | MEP coordination upto Flight 3 | 1d | 2027-04-24 | 2027-04-26 | RB2-SS-B-01.295 | Physical Progress [950 h]; TATA Projects Ltd-25 |  |
| RB2-SS-B-01.320 |  | Casting of Staircase upto Flight 3 | 1d | 2027-04-26 | 2027-04-27 | RB2-SS-B-01.310 | Mason; Helper; Physical Progress [950 h]; Concrete M40 [3 m3]; TATA Projects Ltd-25 | 29,601 |
| RB2-SS-B-01.335 |  | Reinforcement of wall upto Flight 4 | 2d | 2027-04-27 | 2027-04-29 | RB2-SS-B-01.320 | Barbender [70 h]; Helper [40 h]; Physical Progress [1900 h]; Reinforcement Steel [1 MT1]; TATA Projects Ltd-25 | 96,512.5 |
| RB2-SS-B-01.365 |  | Shuttering of wall upto Flight 4 | 2d | 2027-04-29 | 2027-05-03 | RB2-SS-B-01.335 | Carpenter [20 h]; Helper [10 h]; Physical Progress [1900 h]; Formwork [10 Sq m]; TATA Projects Ltd-25 | 11,651.6 |
| RB2-SS-B-01.380 |  | Casting of wall upto Flight 4 | 1d | 2027-05-03 | 2027-05-04 | RB2-SS-B-01.365 | Mason; Helper; Physical Progress [950 h]; Concrete M40 [3 m3]; TATA Projects Ltd-25 | 29,601 |
| RB2-SS-B-01.400 |  | Shuttering of Staircase upto Flight 4 | 1d | 2027-05-04 | 2027-05-05 | RB2-SS-B-01.380 | Carpenter [20 h]; Helper [10 h]; Physical Progress [950 h]; Formwork [10 Sq m]; TATA Projects Ltd-25 | 11,651.6 |
| RB2-SS-B-01.410 |  | Reinforcement of Staircase upto Flight 4 | 1d | 2027-05-05 | 2027-05-06 | RB2-SS-B-01.400 | Barbender [70 h]; Helper [40 h]; Physical Progress [950 h]; Reinforcement Steel [1 MT1]; TATA Projects Ltd-25 | 96,512.5 |

| ID | WBS | Activity | Duration | Start | Finish | Predecessors | Resources | Cost |
| --- | --- | --- | --- | --- | --- | --- | --- | --- |
|  | 4 | **Column, Core Wall, Shear Wall - Second Lift** |  | 2027-04-07 | 2027-04-19 |  |  |  |
| RB2-SS-B-01.145 |  | Reinforcement | 4d | 2027-04-07 | 2027-04-12 | RB2-SS-B-01.130 | Barbender [2800 h]; Helper [1400 h]; Physical Progress [3810 h]; Reinforcement Steel [42 MT1]; TATA Projects Ltd-25 | 4,053,525 |
| RB2-SS-B-01.180 |  | LPS | 1d | 2027-04-12 | 2027-04-13 | RB2-SS-B-01.145 | LPS [36849 INR]; Physical Progress [950 h]; TATA Projects Ltd-25 | 36,849 |
| RB2-SS-B-01.195 |  | Shuttering | 4d | 2027-04-13 | 2027-04-17 | RB2-SS-B-01.145, RB2-SS-B-01.180 | Carpenter [1330 h]; Helper [670 h]; Physical Progress [3810 h]; Formwork [794 Sq m]; TATA Projects Ltd-25 | 925,137.04 |
| RB2-SS-B-01.245 |  | Concrete | 1d | 2027-04-17 | 2027-04-19 | RB2-SS-B-01.195 | Mason [50 h]; Helper [50 h]; Physical Progress [950 h]; Concrete M40 [198 m3]; TATA Projects Ltd-25 | 1,953,666 |
|  | 5 | **Staircase - 2** |  | 2027-03-25 | 2027-05-06 |  |  |  |
| RB2-SS-B-01.35 |  | Reinforcement of wall upto Flight 1 | 2d | 2027-03-25 | 2027-03-29 | RB2-SS-B-02.235 | Barbender [70 h]; Helper [40 h]; Physical Progress [1900 h]; Reinforcement Steel [1 MT1]; TATA Projects Ltd-25 | 96,512.5 |
| RB2-SS-B-01.55 |  | Shuttering of wall upto Flight 1 | 2d | 2027-03-29 | 2027-03-31 | RB2-SS-B-01.35 | Carpenter [20 h]; Helper [10 h]; Physical Progress [1900 h]; Formwork [10 Sq m]; TATA Projects Ltd-25 | 11,651.6 |
| RB2-SS-B-01.70 |  | Casting of wall upto Flight 1 | 1d | 2027-03-31 | 2027-04-01 | RB2-SS-B-01.55 | Mason; Helper; Physical Progress [950 h]; Concrete M40 [3 m3]; TATA Projects Ltd-25 | 29,601 |
| RB2-SS-B-01.85 |  | Shuttering of Staircase upto Flight 1 | 1d | 2027-04-01 | 2027-04-02 | RB2-SS-B-01.70 | Carpenter [20 h]; Helper [10 h]; Physical Progress [950 h]; Formwork [10 Sq m]; TATA Projects Ltd-25 | 11,651.6 |
| RB2-SS-B-01.100 |  | Reinforcement of Staircase upto Flight 1 | 1d | 2027-04-02 | 2027-04-03 | RB2-SS-B-01.85 | Barbender [70 h]; Helper [40 h]; Physical Progress [950 h]; Reinforcement Steel [1 MT1]; TATA Projects Ltd-25 | 96,512.5 |
| RB2-SS-B-01.115 |  | MEP coordination upto Flight 1 | 1d | 2027-04-03 | 2027-04-05 | RB2-SS-B-01.100 | Physical Progress [950 h]; TATA Projects Ltd-25 |  |
| RB2-SS-B-01.125 |  | Casting of Staircase upto Flight 1 | 1d | 2027-04-05 | 2027-04-06 | RB2-SS-B-01.115 | Mason; Helper; Physical Progress [950 h]; Concrete M40 [3 m3]; TATA Projects Ltd-25 | 29,601 |
| RB2-SS-B-01.140 |  | Reinforcement of wall upto Flight 2 | 2d | 2027-04-06 | 2027-04-08 | RB2-SS-B-01.125 | Barbender [70 h]; Helper [40 h]; Physical Progress [1900 h]; Reinforcement Steel [1 MT1]; TATA Projects Ltd-25 | 96,512.5 |
| RB2-SS-B-01.160 |  | Shuttering of wall upto Flight 2 | 2d | 2027-04-08 | 2027-04-10 | RB2-SS-B-01.140 | Carpenter [20 h]; Helper [10 h]; Physical Progress [1900 h]; Formwork [10 Sq m]; TATA Projects Ltd-25 | 11,651.6 |
| RB2-SS-B-01.175 |  | Casting of wall upto Flight 2 | 1d | 2027-04-10 | 2027-04-12 | RB2-SS-B-01.160 | Mason; Helper; Physical Progress [950 h]; Concrete M40 [3 m3]; TATA Projects Ltd-25 | 29,601 |
| RB2-SS-B-01.190 |  | Shuttering of Staircase upto Flight 2 | 1d | 2027-04-12 | 2027-04-13 | RB2-SS-B-01.175 | Carpenter [20 h]; Helper [10 h]; Physical Progress [950 h]; Formwork [10 Sq m]; TATA Projects Ltd-25 | 11,651.6 |
| RB2-SS-B-01.205 |  | Reinforcement of Staircase upto Flight 2 | 1d | 2027-04-13 | 2027-04-14 | RB2-SS-B-01.190 | Barbender [70 h]; Helper [40 h]; Physical Progress [950 h]; Reinforcement Steel [1 MT1]; TATA Projects Ltd-25 | 96,512.5 |
| RB2-SS-B-01.215 |  | MEP coordination upto Flight 2 | 1d | 2027-04-14 | 2027-04-15 | RB2-SS-B-01.205 | Physical Progress [950 h]; TATA Projects Ltd-25 |  |
| RB2-SS-B-01.230 |  | Casting of Staircase upto Flight 2 | 1d | 2027-04-15 | 2027-04-16 | RB2-SS-B-01.215 | Mason; Helper; Physical Progress [950 h]; Concrete M40 [3 m3]; TATA Projects Ltd-25 | 29,601 |
| RB2-SS-B-01.240 |  | Reinforcement of wall upto Flight 3 | 2d | 2027-04-16 | 2027-04-19 | RB2-SS-B-01.230 | Barbender [70 h]; Helper [40 h]; Physical Progress [1900 h]; Reinforcement Steel [1 MT1]; TATA Projects Ltd-25 | 96,512.5 |
| RB2-SS-B-01.265 |  | Shuttering of wall upto Flight 3 | 2d | 2027-04-19 | 2027-04-21 | RB2-SS-B-01.240 | Carpenter [20 h]; Helper [10 h]; Physical Progress [1900 h]; Formwork [10 Sq m]; TATA Projects Ltd-25 | 11,651.6 |
| RB2-SS-B-01.275 |  | Casting of wall upto Flight 3 | 1d | 2027-04-21 | 2027-04-22 | RB2-SS-B-01.265 | Mason; Helper; Physical Progress [950 h]; Concrete M40 [3 m3]; TATA Projects Ltd-25 | 29,601 |
| RB2-SS-B-01.285 |  | Shuttering of Staircase upto Flight 3 | 1d | 2027-04-22 | 2027-04-23 | RB2-SS-B-01.275 | Carpenter [20 h]; Helper [10 h]; Physical Progress [950 h]; Formwork [10 Sq m]; TATA Projects Ltd-25 | 11,651.6 |
| RB2-SS-B-01.300 |  | Reinforcement of Staircase upto Flight 3 | 1d | 2027-04-23 | 2027-04-24 | RB2-SS-B-01.285 | Barbender [70 h]; Helper [40 h]; Physical Progress [950 h]; Reinforcement Steel [1 MT1]; TATA Projects Ltd-25 | 96,512.5 |
| RB2-SS-B-01.315 |  | MEP coordination upto Flight 3 | 1d | 2027-04-24 | 2027-04-26 | RB2-SS-B-01.300 | Physical Progress [950 h]; TATA Projects Ltd-25 |  |
| RB2-SS-B-01.325 |  | Casting of Staircase upto Flight 3 | 1d | 2027-04-26 | 2027-04-27 | RB2-SS-B-01.315 | Mason; Helper; Physical Progress [950 h]; Concrete M40 [3 m3]; TATA Projects Ltd-25 | 29,601 |
| RB2-SS-B-01.340 |  | Reinforcement of wall upto Flight 4 | 2d | 2027-04-27 | 2027-04-29 | RB2-SS-B-01.325 | Barbender [70 h]; Helper [40 h]; Physical Progress [1900 h]; Reinforcement Steel [1 MT1]; TATA Projects Ltd-25 | 96,512.5 |
| RB2-SS-B-01.370 |  | Shuttering of wall upto Flight 4 | 2d | 2027-04-29 | 2027-05-03 | RB2-SS-B-01.340 | Carpenter [20 h]; Helper [10 h]; Physical Progress [1900 h]; Formwork [10 Sq m]; TATA Projects Ltd-25 | 11,651.6 |
| RB2-SS-B-01.385 |  | Casting of wall upto Flight 4 | 1d | 2027-05-03 | 2027-05-04 | RB2-SS-B-01.370 | Mason; Helper; Physical Progress [950 h]; Concrete M40 [3 m3]; TATA Projects Ltd-25 | 29,601 |
| RB2-SS-B-01.405 |  | Shuttering of Staircase upto Flight 4 | 1d | 2027-05-04 | 2027-05-05 | RB2-SS-B-01.385 | Carpenter [20 h]; Helper [10 h]; Physical Progress [950 h]; Formwork [10 Sq m]; TATA Projects Ltd-25 | 11,651.6 |
| RB2-SS-B-01.415 |  | Reinforcement of Staircase upto Flight 4 | 1d | 2027-05-05 | 2027-05-06 | RB2-SS-B-01.405 | Barbender [70 h]; Helper [40 h]; Physical Progress [950 h]; Reinforcement Steel [1 MT1]; TATA Projects Ltd-25 | 96,512.5 |

| ID | WBS | Activity | Duration | Start | Finish | Predecessors | Resources | Cost |
| --- | --- | --- | --- | --- | --- | --- | --- | --- |
|  | 2 | **Slab** |  | 2027-04-19 | 2027-05-19 |  |  |  |
| RB2-SS-B-01.250 |  | Shuttering | 5d | 2027-04-19 | 2027-04-24 | RB2-SS-B-01.245 | Carpenter [8260 h]; Helper [4130 h]; Physical Progress [4760 h]; Formwork [4955 Sq m]; TATA Projects Ltd-25 | 5,773,367.8 |
| RB2-SS-B-01.305 |  | Reinforcement Bottom Net with chairs | 3d | 2027-04-24 | 2027-04-28 | RB2-SS-B-01.250 | Barbender [2000 h]; Helper [1000 h]; Physical Progress [2850 h]; Reinforcement Steel [30 MT1]; TATA Projects Ltd-25 | 2,895,375 |
| RB2-SS-B-01.350 |  | Laying of PT Tendon | 4d | 2027-04-28 | 2027-05-04 | RB2-SS-B-01.305 | Physical Progress [3810 h]; TATA Projects Ltd-25 |  |
| RB2-SS-B-01.395 |  | Reinforcement Top Net | 3d | 2027-05-04 | 2027-05-07 | RB2-SS-B-01.350 | Barbender [2000 h]; Helper [1000 h]; Physical Progress [2850 h]; Reinforcement Steel [30 MT1]; TATA Projects Ltd-25 | 2,895,375 |
| RB2-SS-B-01.425 |  | MEP Coordination | 1d | 2027-05-07 | 2027-05-08 | RB2-SS-B-01.305, RB2-SS-B-01.395, RB2-SS-B-01.415, RB2-SS-B-01.410 | Physical Progress [950 h]; TATA Projects Ltd-25 |  |
| RB2-SS-B-01.440 |  | Concrete of Slab | 1d | 2027-05-08 | 2027-05-10 | RB2-SS-B-01.425 | Mason [50 h]; Helper [50 h]; Physical Progress [950 h]; Concrete M40 [1239 m3]; TATA Projects Ltd-25 | 12,225,213 |
| RB2-SS-B-01.455 |  | Wait for Strength Gain | 6d | 2027-05-10 | 2027-05-17 | RB2-SS-B-01.440 | Physical Progress [5710 h]; TATA Projects Ltd-25 |  |
| RB2-SS-B-01.460 |  | PT Work | 6d | 2027-05-12 | 2027-05-19 | RB2-SS-B-01.455 FF+2d, RB2-SS-B-02.255 | PT [13 MT1]; Helper [100 h]; PT Fitter [100 h]; Physical Progress [7610 h]; TATA Projects Ltd-25 | 2,470,000 |
|  | 3 | **Pour 3** |  | 2027-03-06 | 2027-05-03 |  |  |  |
|  | 1 | **Column, Core Wall, Shear Wall - First Lift** |  | 2027-03-06 | 2027-03-19 |  |  |  |
| RB2-SS-B-01.375 |  | Reinforcement | 4d | 2027-03-06 | 2027-03-12 | RB2-SS-B-02.400 | Barbender [3400 h]; Helper [1700 h]; Physical Progress [3810 h]; Reinforcement Steel [51 MT1]; TATA Projects Ltd-25 | 4,922,137.5 |
| RB2-SS-B-01.430 |  | LPS | 1d | 2027-03-12 | 2027-03-13 | RB2-SS-B-01.375 | LPS [36849 INR]; Physical Progress [950 h]; TATA Projects Ltd-25 | 36,849 |
| RB2-SS-B-01.445 |  | Shuttering | 4d | 2027-03-13 | 2027-03-18 | RB2-SS-B-01.375, RB2-SS-B-01.430 | Carpenter [1630 h]; Helper [820 h]; Physical Progress [3810 h]; Formwork [977 Sq m]; TATA Projects Ltd-25 | 1,138,361.32 |
| RB2-SS-B-01.480 |  | Concrete | 1d | 2027-03-18 | 2027-03-19 | RB2-SS-B-01.445 | Mason [50 h]; Helper [50 h]; Physical Progress [950 h]; Concrete M40 [244 m3]; TATA Projects Ltd-25 | 2,407,548 |
|  | 4 | **Column, Core Wall, Shear Wall - Second Lift** |  | 2027-03-19 | 2027-04-02 |  |  |  |
| RB2-SS-B-01.490 |  | Reinforcement | 4d | 2027-03-19 | 2027-03-25 | RB2-SS-B-01.480 | Barbender [3400 h]; Helper [1700 h]; Physical Progress [3810 h]; Reinforcement Steel [51 MT1]; TATA Projects Ltd-25 | 4,922,137.5 |
| RB2-SS-B-01.505 |  | LPS | 1d | 2027-03-25 | 2027-03-27 | RB2-SS-B-01.490 | LPS [36849 INR]; Physical Progress [950 h]; TATA Projects Ltd-25 | 36,849 |
| RB2-SS-B-01.515 |  | Shuttering | 4d | 2027-03-27 | 2027-04-01 | RB2-SS-B-01.490, RB2-SS-B-01.505 | Carpenter [1630 h]; Helper [820 h]; Physical Progress [3810 h]; Formwork [977 Sq m]; TATA Projects Ltd-25 | 1,138,361.32 |
| RB2-SS-B-01.540 |  | Concrete | 1d | 2027-04-01 | 2027-04-02 | RB2-SS-B-01.515 | Mason [50 h]; Helper [50 h]; Physical Progress [950 h]; Concrete M40 [244 m3]; TATA Projects Ltd-25 | 2,407,548 |
|  | 3 | **Staircase** |  | 2027-03-06 | 2027-04-19 |  |  |  |
| RB2-SS-B-01.390 |  | Reinforcement of wall upto Flight 1 | 2d | 2027-03-06 | 2027-03-09 | RB2-SS-B-02.400 | Barbender [70 h]; Helper [40 h]; Physical Progress [1900 h]; Reinforcement Steel [1 MT1]; TATA Projects Ltd-25 | 96,512.5 |
| RB2-SS-B-01.420 |  | Shuttering of wall upto Flight 1 | 2d | 2027-03-09 | 2027-03-12 | RB2-SS-B-01.390 | Carpenter [20 h]; Helper [10 h]; Physical Progress [1900 h]; Formwork [10 Sq m]; TATA Projects Ltd-25 | 11,651.6 |
| RB2-SS-B-01.435 |  | Casting of wall upto Flight 1 | 1d | 2027-03-12 | 2027-03-13 | RB2-SS-B-01.420 | Mason; Helper; Physical Progress [950 h]; Concrete M40 [3 m3]; TATA Projects Ltd-25 | 29,601 |
| RB2-SS-B-01.450 |  | Shuttering of Staircase upto Flight 1 | 1d | 2027-03-13 | 2027-03-15 | RB2-SS-B-01.435 | Carpenter [20 h]; Helper [10 h]; Physical Progress [950 h]; Formwork [10 Sq m]; TATA Projects Ltd-25 | 11,651.6 |
| RB2-SS-B-01.465 |  | Reinforcement of Staircase upto Flight 1 | 1d | 2027-03-15 | 2027-03-16 | RB2-SS-B-01.450 | Barbender [70 h]; Helper [40 h]; Physical Progress [950 h]; Reinforcement Steel [1 MT1]; TATA Projects Ltd-25 | 96,512.5 |
| RB2-SS-B-01.470 |  | MEP coordination upto Flight 1 | 1d | 2027-03-16 | 2027-03-17 | RB2-SS-B-01.465 | Physical Progress [950 h]; TATA Projects Ltd-25 |  |
| RB2-SS-B-01.475 |  | Casting of Staircase upto Flight 1 | 1d | 2027-03-17 | 2027-03-18 | RB2-SS-B-01.470 | Mason; Helper; Physical Progress [950 h]; Concrete M40 [3 m3]; TATA Projects Ltd-25 | 29,601 |
| RB2-SS-B-01.485 |  | Reinforcement of wall upto Flight 2 | 2d | 2027-03-18 | 2027-03-20 | RB2-SS-B-01.475 | Barbender [70 h]; Helper [40 h]; Physical Progress [1900 h]; Reinforcement Steel [1 MT1]; TATA Projects Ltd-25 | 96,512.5 |
| RB2-SS-B-01.495 |  | Shuttering of wall upto Flight 2 | 2d | 2027-03-20 | 2027-03-24 | RB2-SS-B-01.485 | Carpenter [20 h]; Helper [10 h]; Physical Progress [1900 h]; Formwork [10 Sq m]; TATA Projects Ltd-25 | 11,651.6 |
| RB2-SS-B-01.500 |  | Casting of wall upto Flight 2 | 1d | 2027-03-24 | 2027-03-25 | RB2-SS-B-01.495 | Mason; Helper; Physical Progress [950 h]; Concrete M40 [3 m3]; TATA Projects Ltd-25 | 29,601 |
| RB2-SS-B-01.510 |  | Shuttering of Staircase upto Flight 2 | 1d | 2027-03-25 | 2027-03-27 | RB2-SS-B-01.500 | Carpenter [20 h]; Helper [10 h]; Physical Progress [950 h]; Formwork [10 Sq m]; TATA Projects Ltd-25 | 11,651.6 |
| RB2-SS-B-01.520 |  | Reinforcement of Staircase upto Flight 2 | 1d | 2027-03-27 | 2027-03-29 | RB2-SS-B-01.510 | Barbender [70 h]; Helper [40 h]; Physical Progress [950 h]; Reinforcement Steel [1 MT1]; TATA Projects Ltd-25 | 96,512.5 |
| RB2-SS-B-01.525 |  | MEP coordination upto Flight 2 | 1d | 2027-03-29 | 2027-03-30 | RB2-SS-B-01.520 | Physical Progress [950 h]; TATA Projects Ltd-25 |  |
| RB2-SS-B-01.530 |  | Casting of Staircase upto Flight 2 | 1d | 2027-03-30 | 2027-03-31 | RB2-SS-B-01.525 | Mason; Helper; Physical Progress [950 h]; Concrete M40 [3 m3]; TATA Projects Ltd-25 | 29,601 |
| RB2-SS-B-01.535 |  | Reinforcement of wall upto Flight 3 | 2d | 2027-03-31 | 2027-04-02 | RB2-SS-B-01.530 | Barbender [70 h]; Helper [40 h]; Physical Progress [1900 h]; Reinforcement Steel [1 MT1]; TATA Projects Ltd-25 | 96,512.5 |
| RB2-SS-B-01.560 |  | Shuttering of wall upto Flight 3 | 2d | 2027-04-02 | 2027-04-05 | RB2-SS-B-01.535 | Carpenter [20 h]; Helper [10 h]; Physical Progress [1900 h]; Formwork [10 Sq m]; TATA Projects Ltd-25 | 11,651.6 |
| RB2-SS-B-01.570 |  | Casting of wall upto Flight 3 | 1d | 2027-04-05 | 2027-04-06 | RB2-SS-B-01.560 | Mason; Helper; Physical Progress [950 h]; Concrete M40 [3 m3]; TATA Projects Ltd-25 | 29,601 |
| RB2-SS-B-01.580 |  | Shuttering of Staircase upto Flight 3 | 1d | 2027-04-06 | 2027-04-07 | RB2-SS-B-01.570 | Carpenter [20 h]; Helper [10 h]; Physical Progress [950 h]; Formwork [10 Sq m]; TATA Projects Ltd-25 | 11,651.6 |
| RB2-SS-B-01.600 |  | Reinforcement of Staircase upto Flight 3 | 1d | 2027-04-07 | 2027-04-08 | RB2-SS-B-01.580 | Barbender [70 h]; Helper [40 h]; Physical Progress [950 h]; Reinforcement Steel [1 MT1]; TATA Projects Ltd-25 | 96,512.5 |
| RB2-SS-B-01.615 |  | MEP coordination upto Flight 3 | 1d | 2027-04-08 | 2027-04-09 | RB2-SS-B-01.600 | Physical Progress [950 h]; TATA Projects Ltd-25 |  |
| RB2-SS-B-01.625 |  | Casting of Staircase upto Flight 3 | 1d | 2027-04-09 | 2027-04-10 | RB2-SS-B-01.615 | Mason; Helper; Physical Progress [950 h]; Concrete M40 [3 m3]; TATA Projects Ltd-25 | 29,601 |
| RB2-SS-B-01.635 |  | Reinforcement of wall upto Flight 4 | 2d | 2027-04-10 | 2027-04-13 | RB2-SS-B-01.625 | Barbender [70 h]; Helper [40 h]; Physical Progress [1900 h]; Reinforcement Steel [1 MT1]; TATA Projects Ltd-25 | 96,512.5 |
| RB2-SS-B-01.670 |  | Shuttering of wall upto Flight 4 | 2d | 2027-04-13 | 2027-04-15 | RB2-SS-B-01.635 | Carpenter [20 h]; Helper [10 h]; Physical Progress [1900 h]; Formwork [10 Sq m]; TATA Projects Ltd-25 | 11,651.6 |
| RB2-SS-B-01.685 |  | Casting of wall upto Flight 4 | 1d | 2027-04-15 | 2027-04-16 | RB2-SS-B-01.670 | Mason; Helper; Physical Progress [950 h]; Concrete M40 [3 m3]; TATA Projects Ltd-25 | 29,601 |
| RB2-SS-B-01.700 |  | Shuttering of Staircase upto Flight 4 | 1d | 2027-04-16 | 2027-04-17 | RB2-SS-B-01.685 | Carpenter [20 h]; Helper [10 h]; Physical Progress [950 h]; Formwork [10 Sq m]; TATA Projects Ltd-25 | 11,651.6 |
| RB2-SS-B-01.715 |  | Reinforcement of Staircase upto Flight 4 | 1d | 2027-04-17 | 2027-04-19 | RB2-SS-B-01.700 | Barbender [70 h]; Helper [40 h]; Physical Progress [950 h]; Reinforcement Steel [1 MT1]; TATA Projects Ltd-25 | 96,512.5 |

| ID | WBS | Activity | Duration | Start | Finish | Predecessors | Resources | Cost |
| --- | --- | --- | --- | --- | --- | --- | --- | --- |
|  | 2 | **Slab** |  | 2027-04-02 | 2027-05-03 |  |  |  |
| RB2-SS-B-01.555 |  | Shuttering | 5d | 2027-04-02 | 2027-04-08 | RB2-SS-B-01.540 | Carpenter [10170 h]; Helper [5090 h]; Physical Progress [4760 h]; Formwork [6099 Sq m]; TATA Projects Ltd-25 | 7,106,310.84 |
| RB2-SS-B-01.610 |  | Reinforcement Bottom Net with chairs | 3d | 2027-04-08 | 2027-04-12 | RB2-SS-B-01.555 | Barbender [2470 h]; Helper [1240 h]; Physical Progress [2850 h]; Reinforcement Steel [37 MT1]; TATA Projects Ltd-25 | 3,570,962.5 |
| RB2-SS-B-01.645 |  | Laying of PT Tendon | 4d | 2027-04-12 | 2027-04-16 | RB2-SS-B-01.610 | Physical Progress [3810 h]; TATA Projects Ltd-25 |  |
| RB2-SS-B-01.690 |  | Reinforcement Top Net | 3d | 2027-04-16 | 2027-04-20 | RB2-SS-B-01.645 | Barbender [2470 h]; Helper [1240 h]; Physical Progress [2850 h]; Reinforcement Steel [37 MT1]; TATA Projects Ltd-25 | 3,570,962.5 |
| RB2-SS-B-01.735 |  | MEP Coordination | 1d | 2027-04-20 | 2027-04-21 | RB2-SS-B-01.610, RB2-SS-B-01.690, RB2-SS-B-01.715 | Physical Progress [950 h]; TATA Projects Ltd-25 |  |
| RB2-SS-B-01.750 |  | Concrete of Slab | 1d | 2027-04-21 | 2027-04-22 | RB2-SS-B-01.735 | Mason [50 h]; Helper [50 h]; Physical Progress [950 h]; Concrete M40 [1525 m3]; TATA Projects Ltd-25 | 15,047,175 |
| RB2-SS-B-01.765 |  | Wait for Strength Gain | 6d | 2027-04-22 | 2027-04-29 | RB2-SS-B-01.750 | Physical Progress [5710 h]; TATA Projects Ltd-25 |  |
| RB2-SS-B-01.770 |  | PT Work | 6d | 2027-04-24 | 2027-05-03 | RB2-SS-B-01.765 FF+2d, RB2-SS-B-02.440 | PT [16 MT1]; Helper [100 h]; PT Fitter [100 h]; Physical Progress [7610 h]; TATA Projects Ltd-25 | 3,040,000 |
|  | 4 | **Pour 4** |  | 2027-03-18 | 2027-05-13 |  |  |  |
|  | 1 | **Column, Core Wall, Shear Wall - First Lift** |  | 2027-03-18 | 2027-04-01 |  |  |  |
| RB2-SS-B-01.545 |  | Reinforcement | 4d | 2027-03-18 | 2027-03-24 | RB2-SS-B-02.540 | Barbender [3000 h]; Helper [1500 h]; Physical Progress [3810 h]; Reinforcement Steel [45 MT1]; TATA Projects Ltd-25 | 4,343,062.5 |
| RB2-SS-B-01.575 |  | LPS | 1d | 2027-03-24 | 2027-03-25 | RB2-SS-B-01.545 | LPS [36849 INR]; Physical Progress [950 h]; TATA Projects Ltd-25 | 36,849 |
| RB2-SS-B-01.590 |  | Shuttering | 4d | 2027-03-25 | 2027-03-31 | RB2-SS-B-01.545, RB2-SS-B-01.575 | Carpenter [1420 h]; Helper [710 h]; Physical Progress [3810 h]; Formwork [850 Sq m]; TATA Projects Ltd-25 | 990,386 |
| RB2-SS-B-01.650 |  | Concrete | 1d | 2027-03-31 | 2027-04-01 | RB2-SS-B-01.590 | Mason [50 h]; Helper [50 h]; Physical Progress [950 h]; Concrete M40 [212 m3]; TATA Projects Ltd-25 | 2,091,804 |
|  | 4 | **Column, Core Wall, Shear Wall - Second Lift** |  | 2027-04-01 | 2027-04-13 |  |  |  |
| RB2-SS-B-01.665 |  | Reinforcement | 4d | 2027-04-01 | 2027-04-06 | RB2-SS-B-01.650 | Barbender [3000 h]; Helper [1500 h]; Physical Progress [3810 h]; Reinforcement Steel [45 MT1]; TATA Projects Ltd-25 | 4,343,062.5 |
| RB2-SS-B-01.710 |  | LPS | 1d | 2027-04-06 | 2027-04-07 | RB2-SS-B-01.665 | LPS [36849 INR]; Physical Progress [950 h]; TATA Projects Ltd-25 | 36,849 |
| RB2-SS-B-01.725 |  | Shuttering | 4d | 2027-04-07 | 2027-04-12 | RB2-SS-B-01.665, RB2-SS-B-01.710 | Carpenter [1420 h]; Helper [710 h]; Physical Progress [3810 h]; Formwork [850 Sq m]; TATA Projects Ltd-25 | 990,386 |
| RB2-SS-B-01.780 |  | Concrete | 1d | 2027-04-12 | 2027-04-13 | RB2-SS-B-01.725 | Mason [50 h]; Helper [50 h]; Physical Progress [950 h]; Concrete M40 [212 m3]; TATA Projects Ltd-25 | 2,091,804 |
|  | 3 | **Staircase** |  | 2027-03-18 | 2027-04-29 |  |  |  |
| RB2-SS-B-01.550 |  | Reinforcement of wall upto Flight 1 | 2d | 2027-03-18 | 2027-03-20 | RB2-SS-B-02.540 | Barbender [70 h]; Helper [40 h]; Physical Progress [1900 h]; Reinforcement Steel [1 MT1]; TATA Projects Ltd-25 | 96,512.5 |
| RB2-SS-B-01.565 |  | Shuttering of wall upto Flight 1 | 2d | 2027-03-20 | 2027-03-24 | RB2-SS-B-01.550 | Carpenter [20 h]; Helper [10 h]; Physical Progress [1900 h]; Formwork [10 Sq m]; TATA Projects Ltd-25 | 11,651.6 |
| RB2-SS-B-01.585 |  | Casting of wall upto Flight 1 | 1d | 2027-03-24 | 2027-03-25 | RB2-SS-B-01.565 | Mason; Helper; Physical Progress [950 h]; Concrete M40 [3 m3]; TATA Projects Ltd-25 | 29,601 |
| RB2-SS-B-01.605 |  | Shuttering of Staircase upto Flight 1 | 1d | 2027-03-25 | 2027-03-27 | RB2-SS-B-01.585 | Carpenter [20 h]; Helper [10 h]; Physical Progress [950 h]; Formwork [10 Sq m]; TATA Projects Ltd-25 | 11,651.6 |
| RB2-SS-B-01.620 |  | Reinforcement of Staircase upto Flight 1 | 1d | 2027-03-27 | 2027-03-29 | RB2-SS-B-01.605 | Barbender [70 h]; Helper [40 h]; Physical Progress [950 h]; Reinforcement Steel [1 MT1]; TATA Projects Ltd-25 | 96,512.5 |
| RB2-SS-B-01.630 |  | MEP coordination upto Flight 1 | 1d | 2027-03-29 | 2027-03-30 | RB2-SS-B-01.620 | Physical Progress [950 h]; TATA Projects Ltd-25 |  |
| RB2-SS-B-01.640 |  | Casting of Staircase upto Flight 1 | 1d | 2027-03-30 | 2027-03-31 | RB2-SS-B-01.630 | Mason; Helper; Physical Progress [950 h]; Concrete M40 [3 m3]; TATA Projects Ltd-25 | 29,601 |
| RB2-SS-B-01.660 |  | Reinforcement of wall upto Flight 2 | 2d | 2027-03-31 | 2027-04-02 | RB2-SS-B-01.640 | Barbender [70 h]; Helper [40 h]; Physical Progress [1900 h]; Reinforcement Steel [1 MT1]; TATA Projects Ltd-25 | 96,512.5 |
| RB2-SS-B-01.675 |  | Shuttering of wall upto Flight 2 | 2d | 2027-04-02 | 2027-04-05 | RB2-SS-B-01.660 | Carpenter [20 h]; Helper [10 h]; Physical Progress [1900 h]; Formwork [10 Sq m]; TATA Projects Ltd-25 | 11,651.6 |
| RB2-SS-B-01.705 |  | Casting of wall upto Flight 2 | 1d | 2027-04-05 | 2027-04-06 | RB2-SS-B-01.675 | Mason; Helper; Physical Progress [950 h]; Concrete M40 [3 m3]; TATA Projects Ltd-25 | 29,601 |
| RB2-SS-B-01.720 |  | Shuttering of Staircase upto Flight 2 | 1d | 2027-04-06 | 2027-04-07 | RB2-SS-B-01.705 | Carpenter [20 h]; Helper [10 h]; Physical Progress [950 h]; Formwork [10 Sq m]; TATA Projects Ltd-25 | 11,651.6 |
| RB2-SS-B-01.730 |  | Reinforcement of Staircase upto Flight 2 | 1d | 2027-04-07 | 2027-04-08 | RB2-SS-B-01.720 | Barbender [70 h]; Helper [40 h]; Physical Progress [950 h]; Reinforcement Steel [1 MT1]; TATA Projects Ltd-25 | 96,512.5 |
| RB2-SS-B-01.745 |  | MEP coordination upto Flight 2 | 1d | 2027-04-08 | 2027-04-09 | RB2-SS-B-01.730 | Physical Progress [950 h]; TATA Projects Ltd-25 |  |
| RB2-SS-B-01.760 |  | Casting of Staircase upto Flight 2 | 1d | 2027-04-09 | 2027-04-10 | RB2-SS-B-01.745 | Mason; Helper; Physical Progress [950 h]; Concrete M40 [3 m3]; TATA Projects Ltd-25 | 29,601 |
| RB2-SS-B-01.775 |  | Reinforcement of wall upto Flight 3 | 2d | 2027-04-10 | 2027-04-13 | RB2-SS-B-01.760 | Barbender [70 h]; Helper [40 h]; Physical Progress [1900 h]; Reinforcement Steel [1 MT1]; TATA Projects Ltd-25 | 96,512.5 |
| RB2-SS-B-01.795 |  | Shuttering of wall upto Flight 3 | 2d | 2027-04-13 | 2027-04-15 | RB2-SS-B-01.775 | Carpenter [20 h]; Helper [10 h]; Physical Progress [1900 h]; Formwork [10 Sq m]; TATA Projects Ltd-25 | 11,651.6 |
| RB2-SS-B-01.805 |  | Casting of wall upto Flight 3 | 1d | 2027-04-15 | 2027-04-16 | RB2-SS-B-01.795 | Mason; Helper; Physical Progress [950 h]; Concrete M40 [3 m3]; TATA Projects Ltd-25 | 29,601 |
| RB2-SS-B-01.810 |  | Shuttering of Staircase upto Flight 3 | 1d | 2027-04-16 | 2027-04-17 | RB2-SS-B-01.805 | Carpenter [20 h]; Helper [10 h]; Physical Progress [950 h]; Formwork [10 Sq m]; TATA Projects Ltd-25 | 11,651.6 |
| RB2-SS-B-01.825 |  | Reinforcement of Staircase upto Flight 3 | 1d | 2027-04-17 | 2027-04-19 | RB2-SS-B-01.810 | Barbender [70 h]; Helper [40 h]; Physical Progress [950 h]; Reinforcement Steel [1 MT1]; TATA Projects Ltd-25 | 96,512.5 |
| RB2-SS-B-01.845 |  | MEP coordination upto Flight 3 | 1d | 2027-04-19 | 2027-04-20 | RB2-SS-B-01.825 | Physical Progress [950 h]; TATA Projects Ltd-25 |  |
| RB2-SS-B-01.850 |  | Casting of Staircase upto Flight 3 | 1d | 2027-04-20 | 2027-04-21 | RB2-SS-B-01.845 | Mason; Helper; Physical Progress [950 h]; Concrete M40 [3 m3]; TATA Projects Ltd-25 | 29,601 |
| RB2-SS-B-01.855 |  | Reinforcement of wall upto Flight 4 | 2d | 2027-04-21 | 2027-04-23 | RB2-SS-B-01.850 | Barbender [70 h]; Helper [40 h]; Physical Progress [1900 h]; Reinforcement Steel [1 MT1]; TATA Projects Ltd-25 | 96,512.5 |
| RB2-SS-B-01.885 |  | Shuttering of wall upto Flight 4 | 2d | 2027-04-23 | 2027-04-26 | RB2-SS-B-01.855 | Carpenter [20 h]; Helper [10 h]; Physical Progress [1900 h]; Formwork [10 Sq m]; TATA Projects Ltd-25 | 11,651.6 |
| RB2-SS-B-01.890 |  | Casting of wall upto Flight 4 | 1d | 2027-04-26 | 2027-04-27 | RB2-SS-B-01.885 | Mason; Helper; Physical Progress [950 h]; Concrete M40 [3 m3]; TATA Projects Ltd-25 | 29,601 |
| RB2-SS-B-01.905 |  | Shuttering of Staircase upto Flight 4 | 1d | 2027-04-27 | 2027-04-28 | RB2-SS-B-01.890 | Carpenter [20 h]; Helper [10 h]; Physical Progress [950 h]; Formwork [10 Sq m]; TATA Projects Ltd-25 | 11,651.6 |
| RB2-SS-B-01.915 |  | Reinforcement of Staircase upto Flight 4 | 1d | 2027-04-28 | 2027-04-29 | RB2-SS-B-01.905 | Barbender [70 h]; Helper [40 h]; Physical Progress [950 h]; Reinforcement Steel [1 MT1]; TATA Projects Ltd-25 | 96,512.5 |

| ID | WBS | Activity | Duration | Start | Finish | Predecessors | Resources | Cost |
| --- | --- | --- | --- | --- | --- | --- | --- | --- |
|  | 2 | **Slab** |  | 2027-04-13 | 2027-05-13 |  |  |  |
| RB2-SS-B-01.785 |  | Shuttering | 5d | 2027-04-13 | 2027-04-19 | RB2-SS-B-01.780 | Carpenter [8850 h]; Helper [4430 h]; Physical Progress [4760 h]; Formwork [5305 Sq m]; TATA Projects Ltd-25 | 6,181,173.8 |
| RB2-SS-B-01.830 |  | Reinforcement Bottom Net with chairs | 3d | 2027-04-19 | 2027-04-22 | RB2-SS-B-01.785 | Barbender [2140 h]; Helper [1070 h]; Physical Progress [2850 h]; Reinforcement Steel [32 MT1]; TATA Projects Ltd-25 | 3,088,400 |
| RB2-SS-B-01.860 |  | Laying of PT Tendon | 4d | 2027-04-22 | 2027-04-27 | RB2-SS-B-01.830 | Physical Progress [3810 h]; TATA Projects Ltd-25 |  |
| RB2-SS-B-01.895 |  | Reinforcement Top Net | 3d | 2027-04-27 | 2027-04-30 | RB2-SS-B-01.860 | Barbender [2140 h]; Helper [1070 h]; Physical Progress [2850 h]; Reinforcement Steel [32 MT1]; TATA Projects Ltd-25 | 3,088,400 |
| RB2-SS-B-01.925 |  | MEP Coordination | 1d | 2027-04-30 | 2027-05-03 | RB2-SS-B-01.830, RB2-SS-B-01.895, RB2-SS-B-01.915 | Physical Progress [950 h]; TATA Projects Ltd-25 |  |
| RB2-SS-B-01.930 |  | Concrete of Slab | 1d | 2027-05-03 | 2027-05-04 | RB2-SS-B-01.925 | Mason [50 h]; Helper [50 h]; Physical Progress [950 h]; Concrete M40 [1326 m3]; TATA Projects Ltd-25 | 13,083,642 |
| RB2-SS-B-01.935 |  | Wait for Strength Gain | 6d | 2027-05-04 | 2027-05-11 | RB2-SS-B-01.930 | Physical Progress [5710 h]; TATA Projects Ltd-25 |  |
| RB2-SS-B-01.940 |  | PT Work | 6d | 2027-05-06 | 2027-05-13 | RB2-SS-B-01.935 FF+2d, RB2-SS-B-02.560 | PT [14 MT1]; Helper [100 h]; PT Fitter [100 h]; Physical Progress [7610 h]; TATA Projects Ltd-25 | 2,660,000 |
|  | 5 | **Pour 5** |  | 2027-03-27 | 2027-05-24 |  |  |  |
|  | 1 | **Column, Core Wall, Shear Wall - First Lift** |  | 2027-03-27 | 2027-04-15 |  |  |  |
| RB2-SS-B-01.595 |  | Reinforcement | 7d | 2027-03-27 | 2027-04-05 | RB2-SS-B-02.570 | Barbender [1740 h]; Helper [870 h]; Physical Progress [6660 h]; Reinforcement Steel [26 MT1]; TATA Projects Ltd-25 | 2,509,325 |
| RB2-SS-B-01.680 |  | LPS | 1d | 2027-04-05 | 2027-04-06 | RB2-SS-B-01.595 | LPS [36849 INR]; Physical Progress [950 h]; TATA Projects Ltd-25 | 36,849 |
| RB2-SS-B-01.695 |  | Shuttering | 7d | 2027-04-06 | 2027-04-14 | RB2-SS-B-01.595, RB2-SS-B-01.680 | Carpenter [830 h]; Helper [420 h]; Physical Progress [6660 h]; Formwork [497 Sq m]; TATA Projects Ltd-25 | 579,084.52 |
| RB2-SS-B-01.790 |  | Concrete | 1d | 2027-04-14 | 2027-04-15 | RB2-SS-B-01.695 | Mason [50 h]; Helper [50 h]; Physical Progress [950 h]; Concrete M40 [124 m3]; TATA Projects Ltd-25 | 1,223,508 |
|  | 4 | **Column, Core Wall, Shear Wall - Second Lift** |  | 2027-04-15 | 2027-04-24 |  |  |  |
| RB2-SS-B-01.800 |  | Reinforcement | 3d | 2027-04-15 | 2027-04-19 | RB2-SS-B-01.790 | Barbender [1740 h]; Helper [870 h]; Physical Progress [2850 h]; Reinforcement Steel [26 MT1]; TATA Projects Ltd-25 | 2,509,325 |
| RB2-SS-B-01.815 |  | LPS | 1d | 2027-04-19 | 2027-04-20 | RB2-SS-B-01.800 | LPS [36849 INR]; Physical Progress [950 h]; TATA Projects Ltd-25 | 36,849 |
| RB2-SS-B-01.835 |  | Shuttering | 3d | 2027-04-20 | 2027-04-23 | RB2-SS-B-01.800, RB2-SS-B-01.815 | Carpenter [830 h]; Helper [420 h]; Physical Progress [2850 h]; Formwork [497 Sq m]; TATA Projects Ltd-25 | 579,084.52 |
| RB2-SS-B-01.865 |  | Concrete | 1d | 2027-04-23 | 2027-04-24 | RB2-SS-B-01.835 | Mason [50 h]; Helper [50 h]; Physical Progress [950 h]; Concrete M40 [124 m3]; TATA Projects Ltd-25 | 1,223,508 |
|  | 2 | **Slab** |  | 2027-04-24 | 2027-05-24 |  |  |  |
| RB2-SS-B-01.875 |  | Shuttering | 5d | 2027-04-24 | 2027-04-30 | RB2-SS-B-01.865 | Carpenter [5180 h]; Helper [2590 h]; Physical Progress [4760 h]; Formwork [3104 Sq m]; TATA Projects Ltd-25 | 3,616,656.64 |
| RB2-SS-B-01.920 |  | Reinforcement Bottom Net with chairs | 3d | 2027-04-30 | 2027-05-05 | RB2-SS-B-01.875 | Barbender [1270 h]; Helper [640 h]; Physical Progress [2850 h]; Reinforcement Steel [19 MT1]; TATA Projects Ltd-25 | 1,833,737.5 |
| RB2-SS-B-01.945 |  | Laying of PT Tendon | 4d | 2027-05-05 | 2027-05-10 | RB2-SS-B-01.920 | Physical Progress [3810 h]; TATA Projects Ltd-25 |  |
| RB2-SS-B-01.955 |  | Reinforcement Top Net | 2d | 2027-05-10 | 2027-05-12 | RB2-SS-B-01.945 | Barbender [1270 h]; Helper [640 h]; Physical Progress [1900 h]; Reinforcement Steel [19 MT1]; TATA Projects Ltd-25 | 1,833,737.5 |
| RB2-SS-B-01.965 |  | MEP Coordination | 1d | 2027-05-12 | 2027-05-13 | RB2-SS-B-01.920, RB2-SS-B-01.955 | Physical Progress [950 h]; TATA Projects Ltd-25 |  |
| RB2-SS-B-01.970 |  | Concrete of Slab | 1d | 2027-05-13 | 2027-05-14 | RB2-SS-B-01.965 | Mason [50 h]; Helper [50 h]; Physical Progress [950 h]; Concrete M40 [776 m3]; TATA Projects Ltd-25 | 7,656,792 |
| RB2-SS-B-01.975 |  | Wait for Strength Gain | 6d | 2027-05-14 | 2027-05-21 | RB2-SS-B-01.970 | Physical Progress [5710 h]; TATA Projects Ltd-25 |  |
| RB2-SS-B-01.980 |  | PT Work | 6d | 2027-05-17 | 2027-05-24 | RB2-SS-B-01.975 FF+2d, RB2-SS-B-02.585 | PT [8 MT1]; Helper [100 h]; PT Fitter [100 h]; Physical Progress [7610 h]; TATA Projects Ltd-25 | 1,520,000 |

| ID | WBS | Activity | Duration | Start | Finish | Predecessors | Resources | Cost |
| --- | --- | --- | --- | --- | --- | --- | --- | --- |
|  | 6 | **Pour 6** |  | 2027-03-18 | 2027-05-17 |  |  |  |
|  | 1 | **Column, Core Wall, Shear Wall - First Lift** |  | 2027-03-18 | 2027-04-08 |  |  |  |
| RB2-SS-B-01.655 |  | Reinforcement | 7d | 2027-03-18 | 2027-03-29 | RB2-SS-B-02.595 | Barbender [1670 h]; Helper [840 h]; Physical Progress [6660 h]; Reinforcement Steel [25 MT1]; TATA Projects Ltd-25 | 2,412,812.5 |
| RB2-SS-B-01.740 |  | LPS | 1d | 2027-03-29 | 2027-03-30 | RB2-SS-B-01.655 | LPS [36849 INR]; Physical Progress [950 h]; TATA Projects Ltd-25 | 36,849 |
| RB2-SS-B-01.755 |  | Shuttering | 7d | 2027-03-30 | 2027-04-07 | RB2-SS-B-01.655, RB2-SS-B-01.740 | Carpenter [810 h]; Helper [410 h]; Physical Progress [6660 h]; Formwork [484 Sq m]; TATA Projects Ltd-25 | 563,937.44 |
| RB2-SS-B-01.820 |  | Concrete | 1d | 2027-04-07 | 2027-04-08 | RB2-SS-B-01.755 | Mason [50 h]; Helper [50 h]; Physical Progress [950 h]; Concrete M40 [121 m3]; TATA Projects Ltd-25 | 1,193,907 |
|  | 4 | **Column, Core Wall, Shear Wall - Second Lift** |  | 2027-04-08 | 2027-04-17 |  |  |  |
| RB2-SS-B-01.840 |  | Reinforcement | 3d | 2027-04-08 | 2027-04-12 | RB2-SS-B-01.820 | Barbender [1670 h]; Helper [840 h]; Physical Progress [2850 h]; Reinforcement Steel [25 MT1]; TATA Projects Ltd-25 | 2,412,812.5 |
| RB2-SS-B-01.870 |  | LPS | 1d | 2027-04-12 | 2027-04-13 | RB2-SS-B-01.840 | LPS [36849 INR]; Physical Progress [950 h]; TATA Projects Ltd-25 | 36,849 |
| RB2-SS-B-01.880 |  | Shuttering | 3d | 2027-04-13 | 2027-04-16 | RB2-SS-B-01.840, RB2-SS-B-01.870 | Carpenter [810 h]; Helper [410 h]; Physical Progress [2850 h]; Formwork [484 Sq m]; TATA Projects Ltd-25 | 563,937.44 |
| RB2-SS-B-01.900 |  | Concrete | 1d | 2027-04-16 | 2027-04-17 | RB2-SS-B-01.880 | Mason [50 h]; Helper [50 h]; Physical Progress [950 h]; Concrete M40 [121 m3]; TATA Projects Ltd-25 | 1,193,907 |
|  | 2 | **Slab** |  | 2027-04-17 | 2027-05-17 |  |  |  |
| RB2-SS-B-01.910 |  | Shuttering | 5d | 2027-04-17 | 2027-04-23 | RB2-SS-B-01.900 | Carpenter [5040 h]; Helper [2520 h]; Physical Progress [4760 h]; Formwork [3022 Sq m]; TATA Projects Ltd-25 | 3,521,113.52 |
| RB2-SS-B-01.950 |  | Reinforcement Bottom Net with chairs | 3d | 2027-04-23 | 2027-04-27 | RB2-SS-B-01.910 | Barbender [1200 h]; Helper [600 h]; Physical Progress [2850 h]; Reinforcement Steel [18 MT1]; TATA Projects Ltd-25 | 1,737,225 |
| RB2-SS-B-01.960 |  | Laying of PT Tendon | 4d | 2027-04-27 | 2027-05-03 | RB2-SS-B-01.950 | Physical Progress [3810 h]; TATA Projects Ltd-25 |  |
| RB2-SS-B-01.985 |  | Reinforcement Top Net | 2d | 2027-05-03 | 2027-05-05 | RB2-SS-B-01.960 | Barbender [1200 h]; Helper [600 h]; Physical Progress [1900 h]; Reinforcement Steel [18 MT1]; TATA Projects Ltd-25 | 1,737,225 |
| RB2-SS-B-01.990 |  | MEP Coordination | 1d | 2027-05-05 | 2027-05-06 | RB2-SS-B-01.950, RB2-SS-B-01.985 | Physical Progress [950 h]; TATA Projects Ltd-25 |  |
| RB2-SS-B-01.995 |  | Concrete of Slab | 1d | 2027-05-06 | 2027-05-07 | RB2-SS-B-01.990 | Mason [50 h]; Helper [50 h]; Physical Progress [950 h]; Concrete M40 [755 m3]; TATA Projects Ltd-25 | 7,449,585 |
| RB2-SS-B-01.1000 |  | Wait for Strength Gain | 6d | 2027-05-07 | 2027-05-14 | RB2-SS-B-01.995 | Physical Progress [5710 h]; TATA Projects Ltd-25 |  |
| RB2-SS-B-01.1005 |  | PT Work | 6d | 2027-05-10 | 2027-05-17 | RB2-SS-B-01.1000 FF+2d, RB2-SS-B-02.605 | PT [8 MT1]; Helper [100 h]; PT Fitter [100 h]; Physical Progress [7610 h]; TATA Projects Ltd-25 | 1,520,000 |
|  | 1 | **Superstructure** |  | 2027-04-22 | 2028-01-22 |  |  |  |
|  | 1 | **Ground Floor** |  | 2027-04-22 | 2027-06-28 |  |  |  |
|  | 1 | **Pour 1** |  | 2027-05-20 | 2027-06-28 |  |  |  |
|  | 1 | **Column** |  | 2027-05-20 | 2027-05-31 |  |  |  |
| RB2-SS-GF.10 |  | Reinforcement | 4d | 2027-05-20 | 2027-05-24 | RB2-SS-B-01.345, E-GFC-ST-RB2-110 | Barbender [4140 h]; Helper [2070 h]; Physical Progress [5650 h]; Reinforcement Steel [62 MT1]; TATA Projects Ltd-25 | 5,983,775 |
| RB2-SS-GF.15 |  | LPS | 1d | 2027-05-25 | 2027-05-25 | RB2-SS-GF.10 | LPS [36849 INR]; Physical Progress [1410 h]; TATA Projects Ltd-25 | 36,849 |
| RB2-SS-GF.20 |  | Shuttering | 4d | 2027-05-26 | 2027-05-29 | RB2-SS-GF.10, RB2-SS-GF.15 | Carpenter [2020 h]; Helper [1010 h]; Physical Progress [5650 h]; Formwork [1209 Sq m]; TATA Projects Ltd-25 | 1,408,678.44 |
| RB2-SS-GF.40 |  | Concrete | 1d | 2027-05-31 | 2027-05-31 | RB2-SS-GF.20 | Mason [50 h]; Helper [50 h]; Physical Progress [1410 h]; Concrete M40 [302 m3]; TATA Projects Ltd-25 | 2,979,834 |

| ID | WBS | Activity | Duration | Start | Finish | Predecessors | Resources | Cost |
| --- | --- | --- | --- | --- | --- | --- | --- | --- |
|  | 2 | **Slab** |  | 2027-06-01 | 2027-06-28 |  |  |  |
| RB2-SS-GF.45 |  | Shuttering | 5d | 2027-06-01 | 2027-06-05 | RB2-SS-GF.40 | Carpenter [4030 h]; Helper [2020 h]; Physical Progress [7060 h]; Formwork [2415 Sq m]; TATA Projects Ltd-25 | 2,813,861.4 |
| RB2-SS-GF.95 |  | Reinforcement Bottom Net with chairs | 3d | 2027-06-07 | 2027-06-09 | RB2-SS-GF.45 | Barbender [1470 h]; Helper [740 h]; Physical Progress [4240 h]; Reinforcement Steel [22 MT1]; TATA Projects Ltd-25 | 2,123,275 |
| RB2-SS-GF.135 |  | Laying of PT Tendon | 4d | 2027-06-10 | 2027-06-14 | RB2-SS-GF.95 | Physical Progress [5650 h]; TATA Projects Ltd-25 |  |
| RB2-SS-GF.165 |  | Reinforcement Top Net | 2d | 2027-06-15 | 2027-06-16 | RB2-SS-GF.135 | Barbender [1470 h]; Helper [740 h]; Physical Progress [2820 h]; Reinforcement Steel [22 MT1]; TATA Projects Ltd-25 | 2,123,275 |
| RB2-SS-GF.195 |  | MEP Coordination | 1d | 2027-06-17 | 2027-06-17 | RB2-SS-GF.95, RB2-SS-GF.165 | Physical Progress [1410 h]; TATA Projects Ltd-25 |  |
| RB2-SS-GF.200 |  | Concrete of Slab | 1d | 2027-06-18 | 2027-06-18 | RB2-SS-GF.195 | Mason [50 h]; Helper [50 h]; Physical Progress [1410 h]; Concrete M40 [587 m3]; TATA Projects Ltd-25 | 5,791,929 |
| RB2-SS-GF.205 |  | Wait for Strength Gain | 6d | 2027-06-19 | 2027-06-25 | RB2-SS-GF.200 | Physical Progress [8470 h]; TATA Projects Ltd-25 |  |
| RB2-SS-GF.215 |  | PT Work | 6d | 2027-06-22 | 2027-06-28 | RB2-SS-GF.205 FF+2d, RB2-SS-B-01.360 FF+2d | PT [13 MT1]; Helper [100 h]; PT Fitter [100 h]; Physical Progress [8470 h]; TATA Projects Ltd-25 | 2,470,000 |
|  | 2 | **Pour 2** |  | 2027-05-10 | 2027-06-22 |  |  |  |
|  | 1 | **Column, Core Wall, Shear Wall** |  | 2027-05-10 | 2027-05-26 |  |  |  |
| RB2-SS-GF.25 |  | Reinforcement | 6d | 2027-05-10 | 2027-05-17 | RB2-SS-B-01.440 | Barbender [3670 h]; Helper [1840 h]; Physical Progress [8470 h]; Reinforcement Steel [55 MT1]; TATA Projects Ltd-25 | 5,308,187.5 |
| RB2-SS-GF.80 |  | LPS | 1d | 2027-05-17 | 2027-05-18 | RB2-SS-GF.25 | LPS [36849 INR]; Physical Progress [1410 h]; TATA Projects Ltd-25 | 36,849 |
| RB2-SS-GF.100 |  | Shuttering | 6d | 2027-05-18 | 2027-05-25 | RB2-SS-GF.25, RB2-SS-GF.80 | Carpenter [1790 h]; Helper [900 h]; Physical Progress [8470 h]; Formwork [1069 Sq m]; TATA Projects Ltd-25 | 1,245,556.04 |
| RB2-SS-GF.150 |  | Concrete | 1d | 2027-05-25 | 2027-05-26 | RB2-SS-GF.100 | Mason [50 h]; Helper [50 h]; Physical Progress [1410 h]; Concrete M40 [267 m3]; TATA Projects Ltd-25 | 2,634,489 |
|  | 3 | **Staircase - 1** |  | 2027-05-10 | 2027-05-28 |  |  |  |
| RB2-SS-GF.30 |  | Reinforcement of wall upto Flight 1 | 2d | 2027-05-10 | 2027-05-12 | RB2-SS-B-01.440 | Barbender [70 h]; Helper [40 h]; Physical Progress [2820 h]; Reinforcement Steel [1 MT1]; TATA Projects Ltd-25 | 96,512.5 |
| RB2-SS-GF.50 |  | Shuttering of wall upto Flight 1 | 2d | 2027-05-12 | 2027-05-14 | RB2-SS-GF.30 | Carpenter [20 h]; Helper [10 h]; Physical Progress [2820 h]; Formwork [10 Sq m]; TATA Projects Ltd-25 | 11,651.6 |
| RB2-SS-GF.60 |  | Casting of wall upto Flight 1 | 1d | 2027-05-14 | 2027-05-15 | RB2-SS-GF.50 | Mason; Helper; Physical Progress [1410 h]; Concrete M40 [3 m3]; TATA Projects Ltd-25 | 29,601 |
| RB2-SS-GF.70 |  | Shuttering of Staircase upto Flight 1 | 1d | 2027-05-15 | 2027-05-17 | RB2-SS-GF.60 | Carpenter [20 h]; Helper [10 h]; Physical Progress [1420 h]; Formwork [10 Sq m]; TATA Projects Ltd-25 | 11,651.6 |
| RB2-SS-GF.85 |  | Reinforcement of Staircase upto Flight 1 | 1d | 2027-05-17 | 2027-05-18 | RB2-SS-GF.70 | Barbender [70 h]; Helper [40 h]; Physical Progress [1410 h]; Reinforcement Steel [1 MT1]; TATA Projects Ltd-25 | 96,512.5 |
| RB2-SS-GF.105 |  | MEP coordination upto Flight 1 | 1d | 2027-05-18 | 2027-05-19 | RB2-SS-GF.85 | Physical Progress [1420 h]; TATA Projects Ltd-25 |  |
| RB2-SS-GF.115 |  | Casting of Staircase upto Flight 1 | 1d | 2027-05-19 | 2027-05-20 | RB2-SS-GF.105 | Mason; Helper; Physical Progress [1420 h]; Concrete M40 [3 m3]; TATA Projects Ltd-25 | 29,601 |
| RB2-SS-GF.125 |  | Reinforcement of wall upto Flight 2 | 2d | 2027-05-20 | 2027-05-22 | RB2-SS-GF.115 | Barbender [70 h]; Helper [40 h]; Physical Progress [2820 h]; Reinforcement Steel [1 MT1]; TATA Projects Ltd-25 | 96,512.5 |
| RB2-SS-GF.140 |  | Shuttering of wall upto Flight 2 | 2d | 2027-05-22 | 2027-05-25 | RB2-SS-GF.125 | Carpenter [20 h]; Helper [10 h]; Physical Progress [2820 h]; Formwork [10 Sq m]; TATA Projects Ltd-25 | 11,651.6 |
| RB2-SS-GF.155 |  | Casting of wall upto Flight 2 | 1d | 2027-05-25 | 2027-05-26 | RB2-SS-GF.140 | Mason; Helper; Physical Progress [1420 h]; Concrete M40 [3 m3]; TATA Projects Ltd-25 | 29,601 |
| RB2-SS-GF.175 |  | Shuttering of Staircase upto Flight 2 | 1d | 2027-05-26 | 2027-05-27 | RB2-SS-GF.155 | Carpenter [20 h]; Helper [10 h]; Physical Progress [1420 h]; Formwork [10 Sq m]; TATA Projects Ltd-25 | 11,651.6 |
| RB2-SS-GF.185 |  | Reinforcement of Staircase upto Flight 2 | 1d | 2027-05-27 | 2027-05-28 | RB2-SS-GF.175 | Barbender [70 h]; Helper [40 h]; Physical Progress [1420 h]; Reinforcement Steel [1 MT1]; TATA Projects Ltd-25 | 96,512.5 |

| ID | WBS | Activity | Duration | Start | Finish | Predecessors | Resources | Cost |
| --- | --- | --- | --- | --- | --- | --- | --- | --- |
|  | 4 | **Staircase - 2** |  | 2027-05-10 | 2027-05-28 |  |  |  |
| RB2-SS-GF.35 |  | Reinforcement of wall upto Flight 1 | 2d | 2027-05-10 | 2027-05-12 | RB2-SS-B-01.440 | Barbender [70 h]; Helper [40 h]; Physical Progress [2820 h]; Reinforcement Steel [1 MT1]; TATA Projects Ltd-25 | 96,512.5 |
| RB2-SS-GF.55 |  | Shuttering of wall upto Flight 1 | 2d | 2027-05-12 | 2027-05-14 | RB2-SS-GF.35 | Carpenter [20 h]; Helper [10 h]; Physical Progress [2820 h]; Formwork [10 Sq m]; TATA Projects Ltd-25 | 11,651.6 |
| RB2-SS-GF.65 |  | Casting of wall upto Flight 1 | 1d | 2027-05-14 | 2027-05-15 | RB2-SS-GF.55 | Mason; Helper; Physical Progress [1420 h]; Concrete M40 [3 m3]; TATA Projects Ltd-25 | 29,601 |
| RB2-SS-GF.75 |  | Shuttering of Staircase upto Flight 1 | 1d | 2027-05-15 | 2027-05-17 | RB2-SS-GF.65 | Carpenter [20 h]; Helper [10 h]; Physical Progress [1420 h]; Formwork [10 Sq m]; TATA Projects Ltd-25 | 11,651.6 |
| RB2-SS-GF.90 |  | Reinforcement of Staircase upto Flight 1 | 1d | 2027-05-17 | 2027-05-18 | RB2-SS-GF.75 | Barbender [70 h]; Helper [40 h]; Physical Progress [1420 h]; Reinforcement Steel [1 MT1]; TATA Projects Ltd-25 | 96,512.5 |
| RB2-SS-GF.110 |  | MEP coordination upto Flight 1 | 1d | 2027-05-18 | 2027-05-19 | RB2-SS-GF.90 | Physical Progress [1420 h]; TATA Projects Ltd-25 |  |
| RB2-SS-GF.120 |  | Casting of Staircase upto Flight 1 | 1d | 2027-05-19 | 2027-05-20 | RB2-SS-GF.110 | Mason; Helper; Physical Progress [1420 h]; Concrete M40 [3 m3]; TATA Projects Ltd-25 | 29,601 |
| RB2-SS-GF.130 |  | Reinforcement of wall upto Flight 2 | 2d | 2027-05-20 | 2027-05-22 | RB2-SS-GF.120 | Barbender [70 h]; Helper [40 h]; Physical Progress [2820 h]; Reinforcement Steel [1 MT1]; TATA Projects Ltd-25 | 96,512.5 |
| RB2-SS-GF.145 |  | Shuttering of wall upto Flight 2 | 2d | 2027-05-22 | 2027-05-25 | RB2-SS-GF.130 | Carpenter [20 h]; Helper [10 h]; Physical Progress [2820 h]; Formwork [10 Sq m]; TATA Projects Ltd-25 | 11,651.6 |
| RB2-SS-GF.160 |  | Casting of wall upto Flight 2 | 1d | 2027-05-25 | 2027-05-26 | RB2-SS-GF.145 | Mason; Helper; Physical Progress [1420 h]; Concrete M40 [3 m3]; TATA Projects Ltd-25 | 29,601 |
| RB2-SS-GF.180 |  | Shuttering of Staircase upto Flight 2 | 1d | 2027-05-26 | 2027-05-27 | RB2-SS-GF.160 | Carpenter [20 h]; Helper [10 h]; Physical Progress [1420 h]; Formwork [10 Sq m]; TATA Projects Ltd-25 | 11,651.6 |
| RB2-SS-GF.190 |  | Reinforcement of Staircase upto Flight 2 | 1d | 2027-05-27 | 2027-05-28 | RB2-SS-GF.180 | Barbender [70 h]; Helper [40 h]; Physical Progress [1420 h]; Reinforcement Steel [1 MT1]; TATA Projects Ltd-25 | 96,512.5 |
|  | 2 | **Slab** |  | 2027-05-26 | 2027-06-22 |  |  |  |
| RB2-SS-GF.170 |  | Shuttering | 5d | 2027-05-26 | 2027-06-01 | RB2-SS-GF.150 | Carpenter [3560 h]; Helper [1780 h]; Physical Progress [7060 h]; Formwork [2135 Sq m]; TATA Projects Ltd-25 | 2,487,616.6 |
| RB2-SS-GF.210 |  | Reinforcement Bottom Net with chairs | 3d | 2027-06-01 | 2027-06-04 | RB2-SS-GF.170 | Barbender [1270 h]; Helper [640 h]; Physical Progress [4240 h]; Reinforcement Steel [19 MT1]; TATA Projects Ltd-25 | 1,833,737.5 |
| RB2-SS-GF.220 |  | Laying of PT Tendon | 3d | 2027-06-04 | 2027-06-08 | RB2-SS-GF.210 | Physical Progress [5650 h]; TATA Projects Ltd-25 |  |
| RB2-SS-GF.225 |  | Reinforcement Top Net | 2d | 2027-06-08 | 2027-06-10 | RB2-SS-GF.220 | Barbender [1270 h]; Helper [640 h]; Physical Progress [2820 h]; Reinforcement Steel [19 MT1]; TATA Projects Ltd-25 | 1,833,737.5 |
| RB2-SS-GF.230 |  | MEP Coordination | 1d | 2027-06-10 | 2027-06-11 | RB2-SS-GF.210, RB2-SS-GF.185, RB2-SS-GF.225, RB2-SS-GF.190 | Physical Progress [1410 h]; TATA Projects Ltd-25 |  |
| RB2-SS-GF.235 |  | Concrete of Slab | 1d | 2027-06-11 | 2027-06-12 | RB2-SS-GF.230 | Mason [50 h]; Helper [50 h]; Physical Progress [1410 h]; Concrete M40 [519 m3]; TATA Projects Ltd-25 | 5,120,973 |
| RB2-SS-GF.240 |  | Wait for Strength Gain | 6d | 2027-06-12 | 2027-06-19 | RB2-SS-GF.235 | Physical Progress [8470 h]; TATA Projects Ltd-25 |  |
| RB2-SS-GF.245 |  | PT Work | 5d | 2027-06-16 | 2027-06-22 | RB2-SS-GF.240 FF+2d, RB2-SS-B-01.460 | PT [11 MT1]; Helper [100 h]; PT Fitter [100 h]; Physical Progress [11300 h]; TATA Projects Ltd-25 | 2,090,000 |
|  | 4 | **Pour 3** |  | 2027-04-22 | 2027-06-07 |  |  |  |
|  | 1 | **Column, Core Wall, Shear Wall** |  | 2027-04-22 | 2027-05-10 |  |  |  |
| RB2-SS-GF.250 |  | Reinforcement | 6d | 2027-04-22 | 2027-04-29 | RB2-SS-B-01.750 | Barbender [4470 h]; Helper [2240 h]; Physical Progress [8470 h]; Reinforcement Steel [67 MT1]; TATA Projects Ltd-25 | 6,466,337.5 |
| RB2-SS-GF.275 |  | LPS | 1d | 2027-04-29 | 2027-04-30 | RB2-SS-GF.250 | LPS [36849 INR]; Physical Progress [1420 h]; TATA Projects Ltd-25 | 36,849 |
| RB2-SS-GF.285 |  | Shuttering | 6d | 2027-04-30 | 2027-05-08 | RB2-SS-GF.250, RB2-SS-GF.275 | Carpenter [2190 h]; Helper [1100 h]; Physical Progress [8470 h]; Formwork [1309 Sq m]; TATA Projects Ltd-25 | 1,525,194.44 |
| RB2-SS-GF.310 |  | Concrete | 1d | 2027-05-08 | 2027-05-10 | RB2-SS-GF.285 | Mason [50 h]; Helper [50 h]; Physical Progress [1420 h]; Concrete M40 [327 m3]; TATA Projects Ltd-25 | 3,226,509 |

| ID | WBS | Activity | Duration | Start | Finish | Predecessors | Resources | Cost |
| --- | --- | --- | --- | --- | --- | --- | --- | --- |
|  | 3 | **Staircase** |  | 2027-04-22 | 2027-05-12 |  |  |  |
| RB2-SS-GF.255 |  | Reinforcement of wall upto Flight 1 | 2d | 2027-04-22 | 2027-04-24 | RB2-SS-B-01.750 | Barbender [70 h]; Helper [40 h]; Physical Progress [2820 h]; Reinforcement Steel [1 MT1]; TATA Projects Ltd-25 | 96,512.5 |
| RB2-SS-GF.260 |  | Shuttering of wall upto Flight 1 | 2d | 2027-04-24 | 2027-04-27 | RB2-SS-GF.255 | Carpenter [20 h]; Helper [10 h]; Physical Progress [2820 h]; Formwork [10 Sq m]; TATA Projects Ltd-25 | 11,651.6 |
| RB2-SS-GF.265 |  | Casting of wall upto Flight 1 | 1d | 2027-04-27 | 2027-04-28 | RB2-SS-GF.260 | Mason; Helper; Physical Progress [1420 h]; Concrete M40 [3 m3]; TATA Projects Ltd-25 | 29,601 |
| RB2-SS-GF.270 |  | Shuttering of Staircase upto Flight 1 | 1d | 2027-04-28 | 2027-04-29 | RB2-SS-GF.265 | Carpenter [20 h]; Helper [10 h]; Physical Progress [1420 h]; Formwork [10 Sq m]; TATA Projects Ltd-25 | 11,651.6 |
| RB2-SS-GF.280 |  | Reinforcement of Staircase upto Flight 1 | 1d | 2027-04-29 | 2027-04-30 | RB2-SS-GF.270 | Barbender [70 h]; Helper [40 h]; Physical Progress [1420 h]; Reinforcement Steel [1 MT1]; TATA Projects Ltd-25 | 96,512.5 |
| RB2-SS-GF.290 |  | MEP coordination upto Flight 1 | 1d | 2027-04-30 | 2027-05-03 | RB2-SS-GF.280 | Physical Progress [1420 h]; TATA Projects Ltd-25 |  |
| RB2-SS-GF.295 |  | Casting of Staircase upto Flight 1 | 1d | 2027-05-03 | 2027-05-04 | RB2-SS-GF.290 | Mason; Helper; Physical Progress [1420 h]; Concrete M40 [3 m3]; TATA Projects Ltd-25 | 29,601 |
| RB2-SS-GF.300 |  | Reinforcement of wall upto Flight 2 | 2d | 2027-05-04 | 2027-05-06 | RB2-SS-GF.295 | Barbender [70 h]; Helper [40 h]; Physical Progress [2820 h]; Reinforcement Steel [1 MT1]; TATA Projects Ltd-25 | 96,512.5 |
| RB2-SS-GF.305 |  | Shuttering of wall upto Flight 2 | 2d | 2027-05-06 | 2027-05-08 | RB2-SS-GF.300 | Carpenter [20 h]; Helper [10 h]; Physical Progress [2820 h]; Formwork [10 Sq m]; TATA Projects Ltd-25 | 11,651.6 |
| RB2-SS-GF.315 |  | Casting of wall upto Flight 2 | 1d | 2027-05-08 | 2027-05-10 | RB2-SS-GF.305 | Mason; Helper; Physical Progress [1420 h]; Concrete M40 [3 m3]; TATA Projects Ltd-25 | 29,601 |
| RB2-SS-GF.325 |  | Shuttering of Staircase upto Flight 2 | 1d | 2027-05-10 | 2027-05-11 | RB2-SS-GF.315 | Carpenter [20 h]; Helper [10 h]; Physical Progress [1420 h]; Formwork [10 Sq m]; TATA Projects Ltd-25 | 11,651.6 |
| RB2-SS-GF.330 |  | Reinforcement of Staircase upto Flight 2 | 1d | 2027-05-11 | 2027-05-12 | RB2-SS-GF.325 | Barbender [70 h]; Helper [40 h]; Physical Progress [1420 h]; Reinforcement Steel [1 MT1]; TATA Projects Ltd-25 | 96,512.5 |
|  | 2 | **Slab** |  | 2027-05-10 | 2027-06-07 |  |  |  |
| RB2-SS-GF.320 |  | Shuttering | 5d | 2027-05-10 | 2027-05-15 | RB2-SS-GF.310 | Carpenter [4360 h]; Helper [2180 h]; Physical Progress [7060 h]; Formwork [2615 Sq m]; TATA Projects Ltd-25 | 3,046,893.4 |
| RB2-SS-GF.335 |  | Reinforcement Bottom Net with chairs | 3d | 2027-05-15 | 2027-05-19 | RB2-SS-GF.320 | Barbender [1600 h]; Helper [800 h]; Physical Progress [4240 h]; Reinforcement Steel [24 MT1]; TATA Projects Ltd-25 | 2,316,300 |
| RB2-SS-GF.355 |  | Laying of PT Tendon | 4d | 2027-05-19 | 2027-05-24 | RB2-SS-GF.335 | Physical Progress [5650 h]; TATA Projects Ltd-25 |  |
| RB2-SS-GF.380 |  | Reinforcement Top Net | 2d | 2027-05-24 | 2027-05-26 | RB2-SS-GF.355 | Barbender [1600 h]; Helper [800 h]; Physical Progress [2820 h]; Reinforcement Steel [24 MT1]; TATA Projects Ltd-25 | 2,316,300 |
| RB2-SS-GF.405 |  | MEP Coordination | 1d | 2027-05-26 | 2027-05-27 | RB2-SS-GF.335, RB2-SS-GF.380, RB2-SS-GF.330 | Physical Progress [1420 h]; TATA Projects Ltd-25 |  |
| RB2-SS-GF.415 |  | Concrete of Slab | 1d | 2027-05-27 | 2027-05-28 | RB2-SS-GF.405 | Mason [50 h]; Helper [50 h]; Physical Progress [1420 h]; Concrete M40 [635 m3]; TATA Projects Ltd-25 | 6,265,545 |
| RB2-SS-GF.420 |  | Wait for Strength Gain | 6d | 2027-05-28 | 2027-06-04 | RB2-SS-GF.415 | Physical Progress [8470 h]; TATA Projects Ltd-25 |  |
| RB2-SS-GF.425 |  | PT Work | 6d | 2027-05-31 | 2027-06-07 | RB2-SS-GF.420 FF+2d, RB2-SS-B-01.770 | PT [14 MT1]; Helper [100 h]; PT Fitter [100 h]; Physical Progress [11300 h]; TATA Projects Ltd-25 | 2,660,000 |
|  | 3 | **Pour 4** |  | 2027-05-04 | 2027-06-17 |  |  |  |
|  | 1 | **Column, Core Wall, Shear Wall** |  | 2027-05-04 | 2027-05-20 |  |  |  |
| RB2-SS-GF.340 |  | Reinforcement | 6d | 2027-05-04 | 2027-05-11 | RB2-SS-B-01.930 | Barbender [5000 h]; Helper [2500 h]; Physical Progress [8470 h]; Reinforcement Steel [75 MT1]; TATA Projects Ltd-25 | 7,238,437.5 |
| RB2-SS-GF.370 |  | LPS | 1d | 2027-05-11 | 2027-05-12 | RB2-SS-GF.340 | LPS [36849 INR]; Physical Progress [1420 h]; TATA Projects Ltd-25 | 36,849 |
| RB2-SS-GF.385 |  | Shuttering | 6d | 2027-05-12 | 2027-05-19 | RB2-SS-GF.340, RB2-SS-GF.370 | Carpenter [2440 h]; Helper [1220 h]; Physical Progress [8470 h]; Formwork [1464 Sq m]; TATA Projects Ltd-25 | 1,705,794.24 |
| RB2-SS-GF.435 |  | Concrete | 1d | 2027-05-19 | 2027-05-20 | RB2-SS-GF.385 | Mason [50 h]; Helper [50 h]; Physical Progress [1420 h]; Concrete M40 [366 m3]; TATA Projects Ltd-25 | 3,611,322 |

| ID | WBS | Activity | Duration | Start | Finish | Predecessors | Resources | Cost |
| --- | --- | --- | --- | --- | --- | --- | --- | --- |
|  | 4 | **Staircase** |  | 2027-05-04 | 2027-05-22 |  |  |  |
| RB2-SS-GF.345 |  | Reinforcement of wall upto Flight 1 | 2d | 2027-05-04 | 2027-05-06 | RB2-SS-B-01.930 | Barbender [70 h]; Helper [40 h]; Physical Progress [2820 h]; Reinforcement Steel [1 MT1]; TATA Projects Ltd-25 | 96,512.5 |
| RB2-SS-GF.350 |  | Shuttering of wall upto Flight 1 | 2d | 2027-05-06 | 2027-05-08 | RB2-SS-GF.345 | Carpenter [20 h]; Helper [10 h]; Physical Progress [2820 h]; Formwork [10 Sq m]; TATA Projects Ltd-25 | 11,651.6 |
| RB2-SS-GF.360 |  | Casting of wall upto Flight 1 | 1d | 2027-05-08 | 2027-05-10 | RB2-SS-GF.350 | Mason; Helper; Physical Progress [1420 h]; Concrete M40 [3 m3]; TATA Projects Ltd-25 | 29,601 |
| RB2-SS-GF.365 |  | Shuttering of Staircase upto Flight 1 | 1d | 2027-05-10 | 2027-05-11 | RB2-SS-GF.360 | Carpenter [20 h]; Helper [10 h]; Physical Progress [1420 h]; Formwork [10 Sq m]; TATA Projects Ltd-25 | 11,651.6 |
| RB2-SS-GF.375 |  | Reinforcement of Staircase upto Flight 1 | 1d | 2027-05-11 | 2027-05-12 | RB2-SS-GF.365 | Barbender [70 h]; Helper [40 h]; Physical Progress [1420 h]; Reinforcement Steel [1 MT1]; TATA Projects Ltd-25 | 96,512.5 |
| RB2-SS-GF.390 |  | MEP coordination upto Flight 1 | 1d | 2027-05-12 | 2027-05-13 | RB2-SS-GF.375 | Physical Progress [1420 h]; TATA Projects Ltd-25 |  |
| RB2-SS-GF.400 |  | Casting of Staircase upto Flight 1 | 1d | 2027-05-13 | 2027-05-14 | RB2-SS-GF.390 | Mason; Helper; Physical Progress [1420 h]; Concrete M40 [3 m3]; TATA Projects Ltd-25 | 29,601 |
| RB2-SS-GF.410 |  | Reinforcement of wall upto Flight 2 | 2d | 2027-05-14 | 2027-05-17 | RB2-SS-GF.400 | Barbender [70 h]; Helper [40 h]; Physical Progress [2820 h]; Reinforcement Steel [1 MT1]; TATA Projects Ltd-25 | 96,512.5 |
| RB2-SS-GF.430 |  | Shuttering of wall upto Flight 2 | 2d | 2027-05-17 | 2027-05-19 | RB2-SS-GF.410 | Carpenter [20 h]; Helper [10 h]; Physical Progress [2820 h]; Formwork [10 Sq m]; TATA Projects Ltd-25 | 11,651.6 |
| RB2-SS-GF.440 |  | Casting of wall upto Flight 2 | 1d | 2027-05-19 | 2027-05-20 | RB2-SS-GF.430 | Mason; Helper; Physical Progress [1420 h]; Concrete M40 [3 m3]; TATA Projects Ltd-25 | 29,601 |
| RB2-SS-GF.450 |  | Shuttering of Staircase upto Flight 2 | 1d | 2027-05-20 | 2027-05-21 | RB2-SS-GF.440 | Carpenter [20 h]; Helper [10 h]; Physical Progress [1420 h]; Formwork [10 Sq m]; TATA Projects Ltd-25 | 11,651.6 |
| RB2-SS-GF.460 |  | Reinforcement of Staircase upto Flight 2 | 1d | 2027-05-21 | 2027-05-22 | RB2-SS-GF.450 | Barbender [70 h]; Helper [40 h]; Physical Progress [1420 h]; Reinforcement Steel [1 MT1]; TATA Projects Ltd-25 | 96,512.5 |
|  | 2 | **Slab** |  | 2027-05-20 | 2027-06-17 |  |  |  |
| RB2-SS-GF.445 |  | Shuttering | 5d | 2027-05-20 | 2027-05-26 | RB2-SS-GF.435 | Carpenter [4880 h]; Helper [2440 h]; Physical Progress [7060 h]; Formwork [2924 Sq m]; TATA Projects Ltd-25 | 3,406,927.84 |
| RB2-SS-GF.470 |  | Reinforcement Bottom Net with chairs | 3d | 2027-05-26 | 2027-05-29 | RB2-SS-GF.445 | Barbender [1800 h]; Helper [900 h]; Physical Progress [4240 h]; Reinforcement Steel [27 MT1]; TATA Projects Ltd-25 | 2,605,837.5 |
| RB2-SS-GF.480 |  | Laying of PT Tendon | 4d | 2027-05-29 | 2027-06-03 | RB2-SS-GF.470 | Physical Progress [5650 h]; TATA Projects Ltd-25 |  |
| RB2-SS-GF.495 |  | Reinforcement Top Net | 2d | 2027-06-03 | 2027-06-05 | RB2-SS-GF.480 | Barbender [1800 h]; Helper [900 h]; Physical Progress [2820 h]; Reinforcement Steel [27 MT1]; TATA Projects Ltd-25 | 2,605,837.5 |
| RB2-SS-GF.500 |  | MEP Coordination | 1d | 2027-06-05 | 2027-06-07 | RB2-SS-GF.470, RB2-SS-GF.495, RB2-SS-GF.460 | Physical Progress [1420 h]; TATA Projects Ltd-25 |  |
| RB2-SS-GF.505 |  | Concrete of Slab | 1d | 2027-06-07 | 2027-06-08 | RB2-SS-GF.500 | Mason [50 h]; Helper [50 h]; Physical Progress [1420 h]; Concrete M40 [710 m3]; TATA Projects Ltd-25 | 7,005,570 |
| RB2-SS-GF.515 |  | Wait for Strength Gain | 6d | 2027-06-08 | 2027-06-15 | RB2-SS-GF.505 | Physical Progress [8470 h]; TATA Projects Ltd-25 |  |
| RB2-SS-GF.520 |  | PT Work | 6d | 2027-06-10 | 2027-06-17 | RB2-SS-GF.515 FF+2d, RB2-SS-B-01.940 | PT [15 MT1]; Helper [100 h]; PT Fitter [100 h]; Physical Progress [11300 h]; TATA Projects Ltd-25 | 2,850,000 |
|  | 5 | **Pour 5** |  | 2027-05-14 | 2027-06-22 |  |  |  |
|  | 1 | **Column** |  | 2027-05-14 | 2027-05-26 |  |  |  |
| RB2-SS-GF.395 |  | Reinforcement | 4d | 2027-05-14 | 2027-05-19 | RB2-SS-B-01.970 | Barbender [3800 h]; Helper [1900 h]; Physical Progress [9880 h]; Reinforcement Steel [57 MT1]; TATA Projects Ltd-25 | 5,501,212.5 |
| RB2-SS-GF.455 |  | LPS | 1d | 2027-05-19 | 2027-05-20 | RB2-SS-GF.395 | LPS [36849 INR]; Physical Progress [1420 h]; TATA Projects Ltd-25 | 36,849 |
| RB2-SS-GF.465 |  | Shuttering | 4d | 2027-05-20 | 2027-05-25 | RB2-SS-GF.395, RB2-SS-GF.455 | Carpenter [1860 h]; Helper [930 h]; Physical Progress [9880 h]; Formwork [1113 Sq m]; TATA Projects Ltd-25 | 1,296,823.08 |
| RB2-SS-GF.485 |  | Concrete | 1d | 2027-05-25 | 2027-05-26 | RB2-SS-GF.465 | Mason [50 h]; Helper [50 h]; Physical Progress [1420 h]; Concrete M40 [278 m3]; TATA Projects Ltd-25 | 2,743,026 |

| ID | WBS | Activity | Duration | Start | Finish | Predecessors | Resources | Cost |
| --- | --- | --- | --- | --- | --- | --- | --- | --- |
|  | 2 | **Slab** |  | 2027-05-26 | 2027-06-22 |  |  |  |
| RB2-SS-GF.490 |  | Shuttering | 5d | 2027-05-26 | 2027-06-01 | RB2-SS-GF.485 | Carpenter [3710 h]; Helper [1860 h]; Physical Progress [7060 h]; Formwork [2223 Sq m]; TATA Projects Ltd-25 | 2,590,150.68 |
| RB2-SS-GF.510 |  | Reinforcement Bottom Net with chairs | 3d | 2027-06-01 | 2027-06-04 | RB2-SS-GF.490 | Barbender [1340 h]; Helper [670 h]; Physical Progress [4240 h]; Reinforcement Steel [20 MT1]; TATA Projects Ltd-25 | 1,930,250 |
| RB2-SS-GF.525 |  | Laying of PT Tendon | 3d | 2027-06-04 | 2027-06-08 | RB2-SS-GF.510 | Physical Progress [5650 h]; TATA Projects Ltd-25 |  |
| RB2-SS-GF.530 |  | Reinforcement Top Net | 2d | 2027-06-08 | 2027-06-10 | RB2-SS-GF.525 | Barbender [1340 h]; Helper [670 h]; Physical Progress [2820 h]; Reinforcement Steel [20 MT1]; TATA Projects Ltd-25 | 1,930,250 |
| RB2-SS-GF.535 |  | MEP Coordination | 1d | 2027-06-10 | 2027-06-11 | RB2-SS-GF.510, RB2-SS-GF.530 | Physical Progress [1420 h]; TATA Projects Ltd-25 |  |
| RB2-SS-GF.540 |  | Concrete of Slab | 1d | 2027-06-11 | 2027-06-12 | RB2-SS-GF.535 | Mason [50 h]; Helper [50 h]; Physical Progress [1420 h]; Concrete M40 [540 m3]; TATA Projects Ltd-25 | 5,328,180 |
| RB2-SS-GF.545 |  | Wait for Strength Gain | 6d | 2027-06-12 | 2027-06-19 | RB2-SS-GF.540 | Physical Progress [8470 h]; TATA Projects Ltd-25 |  |
| RB2-SS-GF.550 |  | PT Work | 5d | 2027-06-16 | 2027-06-22 | RB2-SS-GF.545 FF+2d, RB2-SS-B-01.980 | PT [12 MT1]; Helper [100 h]; PT Fitter [100 h]; Physical Progress [8470 h]; TATA Projects Ltd-25 | 2,280,000 |
|  | 2 | **First Floor** |  | 2027-05-28 | 2027-08-09 |  |  |  |
|  | 1 | **Pour 1** |  | 2027-06-19 | 2027-08-09 |  |  |  |
|  | 1 | **Column** |  | 2027-06-19 | 2027-06-28 |  |  |  |
| RB2-SS-1st.10 |  | Reinforcement | 3d | 2027-06-19 | 2027-06-22 | RB2-SS-GF.200, E-GFC-ST-RB2-115 | Barbender [4070 h]; Helper [2040 h]; Physical Progress [4240 h]; Reinforcement Steel [61 MT1]; TATA Projects Ltd-25 | 5,887,262.5 |
| RB2-SS-1st.15 |  | LPS | 1d | 2027-06-23 | 2027-06-23 | RB2-SS-1st.10 | LPS [36849 INR]; Physical Progress [1420 h]; TATA Projects Ltd-25 | 36,849 |
| RB2-SS-1st.20 |  | Shuttering | 3d | 2027-06-24 | 2027-06-26 | RB2-SS-1st.10, RB2-SS-1st.15 | Carpenter [1970 h]; Helper [990 h]; Physical Progress [4240 h]; Formwork [1181 Sq m]; TATA Projects Ltd-25 | 1,376,053.96 |
| RB2-SS-1st.25 |  | Concrete | 1d | 2027-06-28 | 2027-06-28 | RB2-SS-1st.20 | Mason [50 h]; Helper [50 h]; Physical Progress [1420 h]; Concrete M40 [295 m3]; TATA Projects Ltd-25 | 2,910,765 |
|  | 2 | **Slab** |  | 2027-06-29 | 2027-08-09 |  |  |  |
| RB2-SS-1st.30 |  | Shuttering | 4d | 2027-06-29 | 2027-07-02 | RB2-SS-1st.25 | Carpenter [3810 h]; Helper [1910 h]; Physical Progress [5650 h]; Formwork [2282 Sq m]; TATA Projects Ltd-25 | 2,658,895.12 |
| RB2-SS-1st.35 |  | Reinforcement Bottom Net with chairs | 3d | 2027-07-03 | 2027-07-07 | RB2-SS-1st.30 | Barbender [1400 h]; Helper [700 h]; Physical Progress [4240 h]; Reinforcement Steel [21 MT1]; TATA Projects Ltd-25 | 2,026,762.5 |
| RB2-SS-1st.65 |  | Laying of PT Tendon | 4d | 2027-07-09 | 2027-07-14 | RB2-SS-1st.35, E-ShopD-Civil-PT-RB2-15 | Physical Progress [5650 h]; TATA Projects Ltd-25 |  |
| RB2-SS-1st.110 |  | Reinforcement Top Net | 2d | 2027-07-16 | 2027-07-17 | RB2-SS-1st.65 | Barbender [1400 h]; Helper [700 h]; Physical Progress [2820 h]; Reinforcement Steel [21 MT1]; TATA Projects Ltd-25 | 2,026,762.5 |
| RB2-SS-1st.135 |  | MEP Coordination | 1d | 2027-07-19 | 2027-07-19 | RB2-SS-1st.35, RB2-SS-1st.110 | Physical Progress [1420 h]; TATA Projects Ltd-25 |  |
| RB2-SS-1st.155 |  | Concrete of Slab | 1d | 2027-07-21 | 2027-07-21 | RB2-SS-1st.135 | Mason [50 h]; Helper [50 h]; Physical Progress [1420 h]; Concrete M40 [555 m3]; TATA Projects Ltd-25 | 5,476,185 |
| RB2-SS-1st.165 |  | Wait for Strength Gain | 6d | 2027-07-23 | 2027-07-31 | RB2-SS-1st.155 | Physical Progress [8470 h]; TATA Projects Ltd-25 |  |
| RB2-SS-1st.190 |  | PT Work | 5d | 2027-08-02 | 2027-08-09 | RB2-SS-1st.165, RB2-SS-GF.215 | PT [12 MT1]; Helper [100 h]; PT Fitter [100 h]; Physical Progress [7060 h]; TATA Projects Ltd-25 | 2,280,000 |

| ID | WBS | Activity | Duration | Start | Finish | Predecessors | Resources | Cost |
| --- | --- | --- | --- | --- | --- | --- | --- | --- |
|  | 2 | **Pour 2** |  | 2027-06-12 | 2027-08-02 |  |  |  |
|  | 1 | **Column, Core Wall, Shear Wall** |  | 2027-06-12 | 2027-06-24 |  |  |  |
| RB2-SS-1st.40 |  | Reinforcement | 4d | 2027-06-12 | 2027-06-17 | RB2-SS-GF.235 | Barbender [3600 h]; Helper [1800 h]; Physical Progress [5650 h]; Reinforcement Steel [54 MT1]; TATA Projects Ltd-25 | 5,211,675 |
| RB2-SS-1st.70 |  | LPS | 1d | 2027-06-17 | 2027-06-18 | RB2-SS-1st.40 | LPS [36849 INR]; Physical Progress [1420 h]; TATA Projects Ltd-25 | 36,849 |
| RB2-SS-1st.85 |  | Shuttering | 4d | 2027-06-18 | 2027-06-23 | RB2-SS-1st.40, RB2-SS-1st.70 | Carpenter [1740 h]; Helper [870 h]; Physical Progress [5650 h]; Formwork [1044 Sq m]; TATA Projects Ltd-25 | 1,216,427.04 |
| RB2-SS-1st.140 |  | Concrete | 1d | 2027-06-23 | 2027-06-24 | RB2-SS-1st.85 | Mason [50 h]; Helper [50 h]; Physical Progress [1420 h]; Concrete M40 [261 m3]; TATA Projects Ltd-25 | 2,575,287 |
|  | 3 | **Staircase - 1** |  | 2027-06-12 | 2027-07-01 |  |  |  |
| RB2-SS-1st.45 |  | Reinforcement of wall upto Flight 1 | 2d | 2027-06-12 | 2027-06-15 | RB2-SS-GF.235 | Barbender [70 h]; Helper [40 h]; Physical Progress [2820 h]; Reinforcement Steel [1 MT1]; TATA Projects Ltd-25 | 96,512.5 |
| RB2-SS-1st.55 |  | Shuttering of wall upto Flight 1 | 2d | 2027-06-15 | 2027-06-17 | RB2-SS-1st.45 | Carpenter [20 h]; Helper [10 h]; Physical Progress [2820 h]; Formwork [10 Sq m]; TATA Projects Ltd-25 | 11,651.6 |
| RB2-SS-1st.75 |  | Casting of wall upto Flight 1 | 1d | 2027-06-17 | 2027-06-18 | RB2-SS-1st.55 | Mason; Helper; Physical Progress [1420 h]; Concrete M40 [3 m3]; TATA Projects Ltd-25 | 29,601 |
| RB2-SS-1st.90 |  | Shuttering of Staircase upto Flight 1 | 1d | 2027-06-18 | 2027-06-19 | RB2-SS-1st.75 | Carpenter [20 h]; Helper [10 h]; Physical Progress [1420 h]; Formwork [10 Sq m]; TATA Projects Ltd-25 | 11,651.6 |
| RB2-SS-1st.100 |  | Reinforcement of Staircase upto Flight 1 | 1d | 2027-06-19 | 2027-06-21 | RB2-SS-1st.90 | Barbender [70 h]; Helper [40 h]; Physical Progress [1420 h]; Reinforcement Steel [1 MT1]; TATA Projects Ltd-25 | 96,512.5 |
| RB2-SS-1st.115 |  | MEP coordination upto Flight 1 | 1d | 2027-06-21 | 2027-06-22 | RB2-SS-1st.100 | Physical Progress [1420 h]; TATA Projects Ltd-25 |  |
| RB2-SS-1st.125 |  | Casting of Staircase upto Flight 1 | 1d | 2027-06-22 | 2027-06-23 | RB2-SS-1st.115 | Mason; Helper; Physical Progress [1420 h]; Concrete M40 [3 m3]; TATA Projects Ltd-25 | 29,601 |
| RB2-SS-1st.145 |  | Reinforcement of wall upto Flight 2 | 2d | 2027-06-23 | 2027-06-25 | RB2-SS-1st.125 | Barbender [70 h]; Helper [40 h]; Physical Progress [2820 h]; Reinforcement Steel [1 MT1]; TATA Projects Ltd-25 | 96,512.5 |
| RB2-SS-1st.170 |  | Shuttering of wall upto Flight 2 | 2d | 2027-06-25 | 2027-06-28 | RB2-SS-1st.145 | Carpenter [20 h]; Helper [10 h]; Physical Progress [2820 h]; Formwork [10 Sq m]; TATA Projects Ltd-25 | 11,651.6 |
| RB2-SS-1st.180 |  | Casting of wall upto Flight 2 | 1d | 2027-06-28 | 2027-06-29 | RB2-SS-1st.170 | Mason; Helper; Physical Progress [1420 h]; Concrete M40 [3 m3]; TATA Projects Ltd-25 | 29,601 |
| RB2-SS-1st.200 |  | Shuttering of Staircase upto Flight 2 | 1d | 2027-06-29 | 2027-06-30 | RB2-SS-1st.180 | Carpenter [20 h]; Helper [10 h]; Physical Progress [1420 h]; Formwork [10 Sq m]; TATA Projects Ltd-25 | 11,651.6 |
| RB2-SS-1st.210 |  | Reinforcement of Staircase upto Flight 2 | 1d | 2027-06-30 | 2027-07-01 | RB2-SS-1st.200 | Barbender [70 h]; Helper [40 h]; Physical Progress [1420 h]; Reinforcement Steel [1 MT1]; TATA Projects Ltd-25 | 96,512.5 |
|  | 4 | **Staircase - 2** |  | 2027-06-12 | 2027-07-01 |  |  |  |
| RB2-SS-1st.50 |  | Reinforcement of wall upto Flight 1 | 2d | 2027-06-12 | 2027-06-15 | RB2-SS-GF.235 | Barbender [70 h]; Helper [40 h]; Physical Progress [2820 h]; Reinforcement Steel [1 MT1]; TATA Projects Ltd-25 | 96,512.5 |
| RB2-SS-1st.60 |  | Shuttering of wall upto Flight 1 | 2d | 2027-06-15 | 2027-06-17 | RB2-SS-1st.50 | Carpenter [20 h]; Helper [10 h]; Physical Progress [2820 h]; Formwork [10 Sq m]; TATA Projects Ltd-25 | 11,651.6 |
| RB2-SS-1st.80 |  | Casting of wall upto Flight 1 | 1d | 2027-06-17 | 2027-06-18 | RB2-SS-1st.60 | Mason; Helper; Physical Progress [1420 h]; Concrete M40 [3 m3]; TATA Projects Ltd-25 | 29,601 |
| RB2-SS-1st.95 |  | Shuttering of Staircase upto Flight 1 | 1d | 2027-06-18 | 2027-06-19 | RB2-SS-1st.80 | Carpenter [20 h]; Helper [10 h]; Physical Progress [1420 h]; Formwork [10 Sq m]; TATA Projects Ltd-25 | 11,651.6 |
| RB2-SS-1st.105 |  | Reinforcement of Staircase upto Flight 1 | 1d | 2027-06-19 | 2027-06-21 | RB2-SS-1st.95 | Barbender [70 h]; Helper [40 h]; Physical Progress [1420 h]; Reinforcement Steel [1 MT1]; TATA Projects Ltd-25 | 96,512.5 |
| RB2-SS-1st.120 |  | MEP coordination upto Flight 1 | 1d | 2027-06-21 | 2027-06-22 | RB2-SS-1st.105 | Physical Progress [1420 h]; TATA Projects Ltd-25 |  |
| RB2-SS-1st.130 |  | Casting of Staircase upto Flight 1 | 1d | 2027-06-22 | 2027-06-23 | RB2-SS-1st.120 | Mason; Helper; Physical Progress [1420 h]; Concrete M40 [3 m3]; TATA Projects Ltd-25 | 29,601 |
| RB2-SS-1st.150 |  | Reinforcement of wall upto Flight 2 | 2d | 2027-06-23 | 2027-06-25 | RB2-SS-1st.130 | Barbender [70 h]; Helper [40 h]; Physical Progress [2820 h]; Reinforcement Steel [1 MT1]; TATA Projects Ltd-25 | 96,512.5 |
| RB2-SS-1st.175 |  | Shuttering of wall upto Flight 2 | 2d | 2027-06-25 | 2027-06-28 | RB2-SS-1st.150 | Carpenter [20 h]; Helper [10 h]; Physical Progress [2820 h]; Formwork [10 Sq m]; TATA Projects Ltd-25 | 11,651.6 |
| RB2-SS-1st.185 |  | Casting of wall upto Flight 2 | 1d | 2027-06-28 | 2027-06-29 | RB2-SS-1st.175 | Mason; Helper; Physical Progress [1420 h]; Concrete M40 [3 m3]; TATA Projects Ltd-25 | 29,601 |
| RB2-SS-1st.205 |  | Shuttering of Staircase upto Flight 2 | 1d | 2027-06-29 | 2027-06-30 | RB2-SS-1st.185 | Carpenter [20 h]; Helper [10 h]; Physical Progress [1420 h]; Formwork [10 Sq m]; TATA Projects Ltd-25 | 11,651.6 |
| RB2-SS-1st.215 |  | Reinforcement of Staircase upto Flight 2 | 1d | 2027-06-30 | 2027-07-01 | RB2-SS-1st.205 | Barbender [70 h]; Helper [40 h]; Physical Progress [1420 h]; Reinforcement Steel [1 MT1]; TATA Projects Ltd-25 | 96,512.5 |

| ID | WBS | Activity | Duration | Start | Finish | Predecessors | Resources | Cost |
| --- | --- | --- | --- | --- | --- | --- | --- | --- |
|  | 2 | **Slab** |  | 2027-06-24 | 2027-08-02 |  |  |  |
| RB2-SS-1st.160 |  | Shuttering | 4d | 2027-06-24 | 2027-06-29 | RB2-SS-1st.140 | Carpenter [3370 h]; Helper [1690 h]; Physical Progress [5650 h]; Formwork [2017 Sq m]; TATA Projects Ltd-25 | 2,350,127.72 |
| RB2-SS-1st.195 |  | Reinforcement Bottom Net with chairs | 3d | 2027-06-29 | 2027-07-02 | RB2-SS-1st.160 | Barbender [1200 h]; Helper [600 h]; Physical Progress [4240 h]; Reinforcement Steel [18 MT1]; TATA Projects Ltd-25 | 1,737,225 |
| RB2-SS-1st.220 |  | Laying of PT Tendon | 3d | 2027-07-02 | 2027-07-07 | RB2-SS-1st.195 | Physical Progress [5650 h]; TATA Projects Ltd-25 |  |
| RB2-SS-1st.225 |  | Reinforcement Top Net | 2d | 2027-07-07 | 2027-07-10 | RB2-SS-1st.220 | Barbender [1200 h]; Helper [600 h]; Physical Progress [2820 h]; Reinforcement Steel [18 MT1]; TATA Projects Ltd-25 | 1,737,225 |
| RB2-SS-1st.230 |  | MEP Coordination | 1d | 2027-07-10 | 2027-07-12 | RB2-SS-1st.195, RB2-SS-1st.210, RB2-SS-1st.225, RB2-SS-1st.215 | Physical Progress [1420 h]; TATA Projects Ltd-25 |  |
| RB2-SS-1st.235 |  | Concrete of Slab | 1d | 2027-07-12 | 2027-07-14 | RB2-SS-1st.230 | Mason [50 h]; Helper [50 h]; Physical Progress [1420 h]; Concrete M40 [490 m3]; TATA Projects Ltd-25 | 4,834,830 |
| RB2-SS-1st.240 |  | Wait for Strength Gain | 6d | 2027-07-14 | 2027-07-24 | RB2-SS-1st.235 | Physical Progress [8470 h]; TATA Projects Ltd-25 |  |
| RB2-SS-1st.245 |  | PT Work | 5d | 2027-07-24 | 2027-08-02 | RB2-SS-1st.240, RB2-SS-GF.245 | PT [11 MT1]; Helper [100 h]; PT Fitter [100 h]; Physical Progress [7060 h]; TATA Projects Ltd-25 | 2,090,000 |
|  | 4 | **Pour 3** |  | 2027-05-28 | 2027-07-12 |  |  |  |
|  | 1 | **Column, Core Wall, Shear Wall** |  | 2027-05-28 | 2027-06-09 |  |  |  |
| RB2-SS-1st.250 |  | Reinforcement | 4d | 2027-05-28 | 2027-06-02 | RB2-SS-GF.415 | Barbender [4400 h]; Helper [2200 h]; Physical Progress [5650 h]; Reinforcement Steel [66 MT1]; TATA Projects Ltd-25 | 6,369,825 |
| RB2-SS-1st.265 |  | LPS | 1d | 2027-06-02 | 2027-06-03 | RB2-SS-1st.250 | LPS [36849 INR]; Physical Progress [1420 h]; TATA Projects Ltd-25 | 36,849 |
| RB2-SS-1st.275 |  | Shuttering | 4d | 2027-06-03 | 2027-06-08 | RB2-SS-1st.250, RB2-SS-1st.265 | Carpenter [2130 h]; Helper [1070 h]; Physical Progress [5650 h]; Formwork [1278 Sq m]; TATA Projects Ltd-25 | 1,489,074.48 |
| RB2-SS-1st.300 |  | Concrete | 1d | 2027-06-08 | 2027-06-09 | RB2-SS-1st.275 | Mason [50 h]; Helper [50 h]; Physical Progress [1420 h]; Concrete M40 [320 m3]; TATA Projects Ltd-25 | 3,157,440 |
|  | 3 | **Staircase** |  | 2027-05-28 | 2027-06-16 |  |  |  |
| RB2-SS-1st.255 |  | Reinforcement of wall upto Flight 1 | 2d | 2027-05-28 | 2027-05-31 | RB2-SS-GF.415 | Barbender [70 h]; Helper [40 h]; Physical Progress [2820 h]; Reinforcement Steel [1 MT1]; TATA Projects Ltd-25 | 96,512.5 |
| RB2-SS-1st.260 |  | Shuttering of wall upto Flight 1 | 2d | 2027-05-31 | 2027-06-02 | RB2-SS-1st.255 | Carpenter [20 h]; Helper [10 h]; Physical Progress [2820 h]; Formwork [10 Sq m]; TATA Projects Ltd-25 | 11,651.6 |
| RB2-SS-1st.270 |  | Casting of wall upto Flight 1 | 1d | 2027-06-02 | 2027-06-03 | RB2-SS-1st.260 | Mason; Helper; Physical Progress [1420 h]; Concrete M40 [3 m3]; TATA Projects Ltd-25 | 29,601 |
| RB2-SS-1st.280 |  | Shuttering of Staircase upto Flight 1 | 1d | 2027-06-03 | 2027-06-04 | RB2-SS-1st.270 | Carpenter [20 h]; Helper [10 h]; Physical Progress [1420 h]; Formwork [10 Sq m]; TATA Projects Ltd-25 | 11,651.6 |
| RB2-SS-1st.285 |  | Reinforcement of Staircase upto Flight 1 | 1d | 2027-06-04 | 2027-06-05 | RB2-SS-1st.280 | Barbender [70 h]; Helper [40 h]; Physical Progress [1420 h]; Reinforcement Steel [1 MT1]; TATA Projects Ltd-25 | 96,512.5 |
| RB2-SS-1st.290 |  | MEP coordination upto Flight 1 | 1d | 2027-06-05 | 2027-06-07 | RB2-SS-1st.285 | Physical Progress [1420 h]; TATA Projects Ltd-25 |  |
| RB2-SS-1st.295 |  | Casting of Staircase upto Flight 1 | 1d | 2027-06-07 | 2027-06-08 | RB2-SS-1st.290 | Mason; Helper; Physical Progress [1420 h]; Concrete M40 [3 m3]; TATA Projects Ltd-25 | 29,601 |
| RB2-SS-1st.305 |  | Reinforcement of wall upto Flight 2 | 2d | 2027-06-08 | 2027-06-10 | RB2-SS-1st.295 | Barbender [70 h]; Helper [40 h]; Physical Progress [2820 h]; Reinforcement Steel [1 MT1]; TATA Projects Ltd-25 | 96,512.5 |
| RB2-SS-1st.315 |  | Shuttering of wall upto Flight 2 | 2d | 2027-06-10 | 2027-06-12 | RB2-SS-1st.305 | Carpenter [20 h]; Helper [10 h]; Physical Progress [2820 h]; Formwork [10 Sq m]; TATA Projects Ltd-25 | 11,651.6 |
| RB2-SS-1st.320 |  | Casting of wall upto Flight 2 | 1d | 2027-06-12 | 2027-06-14 | RB2-SS-1st.315 | Mason; Helper; Physical Progress [1420 h]; Concrete M40 [3 m3]; TATA Projects Ltd-25 | 29,601 |
| RB2-SS-1st.330 |  | Shuttering of Staircase upto Flight 2 | 1d | 2027-06-14 | 2027-06-15 | RB2-SS-1st.320 | Carpenter [20 h]; Helper [10 h]; Physical Progress [1420 h]; Formwork [10 Sq m]; TATA Projects Ltd-25 | 11,651.6 |
| RB2-SS-1st.335 |  | Reinforcement of Staircase upto Flight 2 | 1d | 2027-06-15 | 2027-06-16 | RB2-SS-1st.330 | Barbender [70 h]; Helper [40 h]; Physical Progress [1420 h]; Reinforcement Steel [1 MT1]; TATA Projects Ltd-25 | 96,512.5 |

| ID | WBS | Activity | Duration | Start | Finish | Predecessors | Resources | Cost |
| --- | --- | --- | --- | --- | --- | --- | --- | --- |
|  | 2 | **Slab** |  | 2027-06-09 | 2027-07-12 |  |  |  |
| RB2-SS-1st.310 |  | Shuttering | 4d | 2027-06-09 | 2027-06-14 | RB2-SS-1st.300 | Carpenter [4120 h]; Helper [2060 h]; Physical Progress [5650 h]; Formwork [2471 Sq m]; TATA Projects Ltd-25 | 2,879,110.36 |
| RB2-SS-1st.325 |  | Reinforcement Bottom Net with chairs | 3d | 2027-06-14 | 2027-06-17 | RB2-SS-1st.310 | Barbender [1540 h]; Helper [770 h]; Physical Progress [4240 h]; Reinforcement Steel [23 MT1]; TATA Projects Ltd-25 | 2,219,787.5 |
| RB2-SS-1st.340 |  | Laying of PT Tendon | 4d | 2027-06-17 | 2027-06-22 | RB2-SS-1st.325 | Physical Progress [5650 h]; TATA Projects Ltd-25 |  |
| RB2-SS-1st.355 |  | Reinforcement Top Net | 2d | 2027-06-22 | 2027-06-24 | RB2-SS-1st.340 | Barbender [1540 h]; Helper [770 h]; Physical Progress [2820 h]; Reinforcement Steel [23 MT1]; TATA Projects Ltd-25 | 2,219,787.5 |
| RB2-SS-1st.365 |  | MEP Coordination | 1d | 2027-06-24 | 2027-06-25 | RB2-SS-1st.325, RB2-SS-1st.355, RB2-SS-1st.335 | Physical Progress [1420 h]; TATA Projects Ltd-25 |  |
| RB2-SS-1st.380 |  | Concrete of Slab | 1d | 2027-06-25 | 2027-06-26 | RB2-SS-1st.365 | Mason [50 h]; Helper [50 h]; Physical Progress [1420 h]; Concrete M40 [601 m3]; TATA Projects Ltd-25 | 5,930,067 |
| RB2-SS-1st.395 |  | Wait for Strength Gain | 6d | 2027-06-26 | 2027-07-03 | RB2-SS-1st.380 | Physical Progress [8470 h]; TATA Projects Ltd-25 |  |
| RB2-SS-1st.415 |  | PT Work | 5d | 2027-07-03 | 2027-07-12 | RB2-SS-1st.395, RB2-SS-GF.425 | PT [13 MT1]; Helper [100 h]; PT Fitter [100 h]; Physical Progress [7060 h]; TATA Projects Ltd-25 | 2,470,000 |
|  | 3 | **Pour 4** |  | 2027-06-08 | 2027-07-28 |  |  |  |
|  | 1 | **Column, Core Wall, Shear Wall** |  | 2027-06-08 | 2027-06-19 |  |  |  |
| RB2-SS-1st.345 |  | Reinforcement | 4d | 2027-06-08 | 2027-06-12 | RB2-SS-GF.505 | Barbender [5200 h]; Helper [2600 h]; Physical Progress [5650 h]; Reinforcement Steel [78 MT1]; TATA Projects Ltd-25 | 7,527,975 |
| RB2-SS-1st.370 |  | LPS | 1d | 2027-06-12 | 2027-06-14 | RB2-SS-1st.345 | LPS [36849 INR]; Physical Progress [1420 h]; TATA Projects Ltd-25 | 36,849 |
| RB2-SS-1st.385 |  | Shuttering | 4d | 2027-06-14 | 2027-06-18 | RB2-SS-1st.345, RB2-SS-1st.370 | Carpenter [2530 h]; Helper [1270 h]; Physical Progress [5650 h]; Formwork [1516 Sq m]; TATA Projects Ltd-25 | 1,766,382.56 |
| RB2-SS-1st.420 |  | Concrete | 1d | 2027-06-18 | 2027-06-19 | RB2-SS-1st.385 | Mason [50 h]; Helper [50 h]; Physical Progress [1420 h]; Concrete M40 [379 m3]; TATA Projects Ltd-25 | 3,739,593 |
|  | 4 | **Staircase** |  | 2027-06-08 | 2027-06-26 |  |  |  |
| RB2-SS-1st.350 |  | Reinforcement of wall upto Flight 1 | 2d | 2027-06-08 | 2027-06-10 | RB2-SS-GF.505 | Barbender [70 h]; Helper [40 h]; Physical Progress [2820 h]; Reinforcement Steel [1 MT1]; TATA Projects Ltd-25 | 96,512.5 |
| RB2-SS-1st.360 |  | Shuttering of wall upto Flight 1 | 2d | 2027-06-10 | 2027-06-12 | RB2-SS-1st.350 | Carpenter [20 h]; Helper [10 h]; Physical Progress [2820 h]; Formwork [10 Sq m]; TATA Projects Ltd-25 | 11,651.6 |
| RB2-SS-1st.375 |  | Casting of wall upto Flight 1 | 1d | 2027-06-12 | 2027-06-14 | RB2-SS-1st.360 | Mason; Helper; Physical Progress [1420 h]; Concrete M40 [3 m3]; TATA Projects Ltd-25 | 29,601 |
| RB2-SS-1st.390 |  | Shuttering of Staircase upto Flight 1 | 1d | 2027-06-14 | 2027-06-15 | RB2-SS-1st.375 | Carpenter [20 h]; Helper [10 h]; Physical Progress [1420 h]; Formwork [10 Sq m]; TATA Projects Ltd-25 | 11,651.6 |
| RB2-SS-1st.400 |  | Reinforcement of Staircase upto Flight 1 | 1d | 2027-06-15 | 2027-06-16 | RB2-SS-1st.390 | Barbender [70 h]; Helper [40 h]; Physical Progress [1420 h]; Reinforcement Steel [1 MT1]; TATA Projects Ltd-25 | 96,512.5 |
| RB2-SS-1st.405 |  | MEP coordination upto Flight 1 | 1d | 2027-06-16 | 2027-06-17 | RB2-SS-1st.400 | Physical Progress [1420 h]; TATA Projects Ltd-25 |  |
| RB2-SS-1st.410 |  | Casting of Staircase upto Flight 1 | 1d | 2027-06-17 | 2027-06-18 | RB2-SS-1st.405 | Mason; Helper; Physical Progress [1420 h]; Concrete M40 [3 m3]; TATA Projects Ltd-25 | 29,601 |
| RB2-SS-1st.425 |  | Reinforcement of wall upto Flight 2 | 2d | 2027-06-18 | 2027-06-21 | RB2-SS-1st.410 | Barbender [70 h]; Helper [40 h]; Physical Progress [2820 h]; Reinforcement Steel [1 MT1]; TATA Projects Ltd-25 | 96,512.5 |
| RB2-SS-1st.440 |  | Shuttering of wall upto Flight 2 | 2d | 2027-06-21 | 2027-06-23 | RB2-SS-1st.425 | Carpenter [20 h]; Helper [10 h]; Physical Progress [2820 h]; Formwork [10 Sq m]; TATA Projects Ltd-25 | 11,651.6 |
| RB2-SS-1st.445 |  | Casting of wall upto Flight 2 | 1d | 2027-06-23 | 2027-06-24 | RB2-SS-1st.440 | Mason; Helper; Physical Progress [1420 h]; Concrete M40 [3 m3]; TATA Projects Ltd-25 | 29,601 |
| RB2-SS-1st.455 |  | Shuttering of Staircase upto Flight 2 | 1d | 2027-06-24 | 2027-06-25 | RB2-SS-1st.445 | Carpenter [20 h]; Helper [10 h]; Physical Progress [1420 h]; Formwork [10 Sq m]; TATA Projects Ltd-25 | 11,651.6 |
| RB2-SS-1st.465 |  | Reinforcement of Staircase upto Flight 2 | 1d | 2027-06-25 | 2027-06-26 | RB2-SS-1st.455 | Barbender [70 h]; Helper [40 h]; Physical Progress [1420 h]; Reinforcement Steel [1 MT1]; TATA Projects Ltd-25 | 96,512.5 |

| ID | WBS | Activity | Duration | Start | Finish | Predecessors | Resources | Cost |
| --- | --- | --- | --- | --- | --- | --- | --- | --- |
|  | 2 | **Slab** |  | 2027-06-19 | 2027-07-28 |  |  |  |
| RB2-SS-1st.430 |  | Shuttering | 4d | 2027-06-19 | 2027-06-24 | RB2-SS-1st.420 | Carpenter [4890 h]; Helper [2450 h]; Physical Progress [5650 h]; Formwork [2930 Sq m]; TATA Projects Ltd-25 | 3,413,918.8 |
| RB2-SS-1st.450 |  | Reinforcement Bottom Net with chairs | 3d | 2027-06-24 | 2027-06-28 | RB2-SS-1st.430 | Barbender [1800 h]; Helper [900 h]; Physical Progress [4240 h]; Reinforcement Steel [27 MT1]; TATA Projects Ltd-25 | 2,605,837.5 |
| RB2-SS-1st.475 |  | Laying of PT Tendon | 4d | 2027-06-28 | 2027-07-02 | RB2-SS-1st.450 | Physical Progress [5650 h]; TATA Projects Ltd-25 |  |
| RB2-SS-1st.490 |  | Reinforcement Top Net | 2d | 2027-07-02 | 2027-07-05 | RB2-SS-1st.475 | Barbender [1800 h]; Helper [900 h]; Physical Progress [2820 h]; Reinforcement Steel [27 MT1]; TATA Projects Ltd-25 | 2,605,837.5 |
| RB2-SS-1st.495 |  | MEP Coordination | 1d | 2027-07-05 | 2027-07-07 | RB2-SS-1st.450, RB2-SS-1st.490, RB2-SS-1st.465 | Physical Progress [1420 h]; TATA Projects Ltd-25 |  |
| RB2-SS-1st.500 |  | Concrete of Slab | 1d | 2027-07-07 | 2027-07-09 | RB2-SS-1st.495 | Mason [50 h]; Helper [50 h]; Physical Progress [1420 h]; Concrete M40 [712 m3]; TATA Projects Ltd-25 | 7,025,304 |
| RB2-SS-1st.510 |  | Wait for Strength Gain | 6d | 2027-07-09 | 2027-07-19 | RB2-SS-1st.500 | Physical Progress [8470 h]; TATA Projects Ltd-25 |  |
| RB2-SS-1st.520 |  | PT Work | 5d | 2027-07-19 | 2027-07-28 | RB2-SS-1st.510 | PT [16 MT1]; Helper [100 h]; PT Fitter [100 h]; Physical Progress [7060 h]; TATA Projects Ltd-25 | 3,040,000 |
|  | 5 | **Pour 5** |  | 2027-06-12 | 2027-08-02 |  |  |  |
|  | 1 | **Column** |  | 2027-06-12 | 2027-06-24 |  |  |  |
| RB2-SS-1st.435 |  | Reinforcement | 4d | 2027-06-12 | 2027-06-17 | RB2-SS-GF.540 | Barbender [3740 h]; Helper [1870 h]; Physical Progress [7060 h]; Reinforcement Steel [56 MT1]; TATA Projects Ltd-25 | 5,404,700 |
| RB2-SS-1st.460 |  | LPS | 1d | 2027-06-17 | 2027-06-18 | RB2-SS-1st.435 | LPS [36849 INR]; Physical Progress [1420 h]; TATA Projects Ltd-25 | 36,849 |
| RB2-SS-1st.470 |  | Shuttering | 4d | 2027-06-18 | 2027-06-23 | RB2-SS-1st.435, RB2-SS-1st.460 | Carpenter [1820 h]; Helper [910 h]; Physical Progress [4240 h]; Formwork [1087 Sq m]; TATA Projects Ltd-25 | 1,266,528.92 |
| RB2-SS-1st.480 |  | Concrete | 1d | 2027-06-23 | 2027-06-24 | RB2-SS-1st.470 | Mason [50 h]; Helper [50 h]; Physical Progress [1420 h]; Concrete M40 [272 m3]; TATA Projects Ltd-25 | 2,683,824 |
|  | 2 | **Slab** |  | 2027-06-24 | 2027-08-02 |  |  |  |
| RB2-SS-1st.485 |  | Shuttering | 4d | 2027-06-24 | 2027-06-29 | RB2-SS-1st.480 | Carpenter [3510 h]; Helper [1760 h]; Physical Progress [5650 h]; Formwork [2101 Sq m]; TATA Projects Ltd-25 | 2,448,001.16 |
| RB2-SS-1st.505 |  | Reinforcement Bottom Net with chairs | 3d | 2027-06-29 | 2027-07-02 | RB2-SS-1st.485 | Barbender [1270 h]; Helper [640 h]; Physical Progress [4240 h]; Reinforcement Steel [19 MT1]; TATA Projects Ltd-25 | 1,833,737.5 |
| RB2-SS-1st.515 |  | Laying of PT Tendon | 3d | 2027-07-02 | 2027-07-07 | RB2-SS-1st.505 | Physical Progress [5650 h]; TATA Projects Ltd-25 |  |
| RB2-SS-1st.525 |  | Reinforcement Top Net | 2d | 2027-07-07 | 2027-07-10 | RB2-SS-1st.515 | Barbender [1270 h]; Helper [640 h]; Physical Progress [2820 h]; Reinforcement Steel [19 MT1]; TATA Projects Ltd-25 | 1,833,737.5 |
| RB2-SS-1st.530 |  | MEP Coordination | 1d | 2027-07-10 | 2027-07-12 | RB2-SS-1st.505, RB2-SS-1st.525 | Physical Progress [1420 h]; TATA Projects Ltd-25 |  |
| RB2-SS-1st.535 |  | Concrete of Slab | 1d | 2027-07-12 | 2027-07-14 | RB2-SS-1st.530 | Mason [50 h]; Helper [50 h]; Physical Progress [1420 h]; Concrete M40 [511 m3]; TATA Projects Ltd-25 | 5,042,037 |
| RB2-SS-1st.540 |  | Wait for Strength Gain | 6d | 2027-07-14 | 2027-07-24 | RB2-SS-1st.535 | Physical Progress [8470 h]; TATA Projects Ltd-25 |  |
| RB2-SS-1st.545 |  | PT Work | 5d | 2027-07-24 | 2027-08-02 | RB2-SS-1st.540, RB2-SS-GF.550 | PT [11 MT1]; Helper [100 h]; PT Fitter [100 h]; Physical Progress [7060 h]; TATA Projects Ltd-25 | 2,090,000 |

| ID | WBS | Activity | Duration | Start | Finish | Predecessors | Resources | Cost |
| --- | --- | --- | --- | --- | --- | --- | --- | --- |
|  | 3 | **Second Floor** |  | 2027-06-26 | 2027-09-16 |  |  |  |
|  | 1 | **Pour 1** |  | 2027-07-23 | 2027-09-16 |  |  |  |
|  | 1 | **Column** |  | 2027-07-23 | 2027-08-04 |  |  |  |
| RB2-SS-2nd.10 |  | Reinforcement | 3d | 2027-07-23 | 2027-07-26 | RB2-SS-1st.155, E-GFC-ST-RB2-120 | Barbender [4000 h]; Helper [2000 h]; Physical Progress [4240 h]; Reinforcement Steel [60 MT1]; TATA Projects Ltd-25 | 5,790,750 |
| RB2-SS-2nd.15 |  | LPS | 1d | 2027-07-28 | 2027-07-28 | RB2-SS-2nd.10 | LPS [36849 INR]; Physical Progress [1420 h]; TATA Projects Ltd-25 | 36,849 |
| RB2-SS-2nd.20 |  | Shuttering | 3d | 2027-07-30 | 2027-08-02 | RB2-SS-2nd.10, RB2-SS-2nd.15 | Carpenter [1860 h]; Helper [930 h]; Physical Progress [4240 h]; Formwork [1115 Sq m]; TATA Projects Ltd-25 | 1,299,153.4 |
| RB2-SS-2nd.25 |  | Concrete | 1d | 2027-08-04 | 2027-08-04 | RB2-SS-2nd.20 | Mason [50 h]; Helper [50 h]; Physical Progress [1420 h]; Concrete M40 [279 m3]; TATA Projects Ltd-25 | 2,752,893 |
|  | 2 | **Slab** |  | 2027-08-06 | 2027-09-16 |  |  |  |
| RB2-SS-2nd.30 |  | Shuttering | 4d | 2027-08-06 | 2027-08-11 | RB2-SS-2nd.25 | Carpenter [3750 h]; Helper [1880 h]; Physical Progress [5650 h]; Formwork [2246 Sq m]; TATA Projects Ltd-25 | 2,616,949.36 |
| RB2-SS-2nd.35 |  | Reinforcement Bottom Net with chairs | 3d | 2027-08-13 | 2027-08-16 | RB2-SS-2nd.30 | Barbender [1340 h]; Helper [670 h]; Physical Progress [4240 h]; Reinforcement Steel [20 MT1]; TATA Projects Ltd-25 | 1,930,250 |
| RB2-SS-2nd.55 |  | Laying of PT Tendon | 4d | 2027-08-18 | 2027-08-23 | RB2-SS-2nd.35 | Physical Progress [5650 h]; TATA Projects Ltd-25 |  |
| RB2-SS-2nd.85 |  | Reinforcement Top Net | 2d | 2027-08-25 | 2027-08-27 | RB2-SS-2nd.55 | Barbender [1340 h]; Helper [670 h]; Physical Progress [2820 h]; Reinforcement Steel [20 MT1]; TATA Projects Ltd-25 | 1,930,250 |
| RB2-SS-2nd.115 |  | MEP Coordination | 1d | 2027-08-28 | 2027-08-28 | RB2-SS-2nd.35, RB2-SS-2nd.85 | Physical Progress [1420 h]; TATA Projects Ltd-25 |  |
| RB2-SS-2nd.130 |  | Concrete of Slab | 1d | 2027-08-30 | 2027-08-30 | RB2-SS-2nd.115 | Mason [50 h]; Helper [50 h]; Physical Progress [1420 h]; Concrete M40 [546 m3]; TATA Projects Ltd-25 | 5,387,382 |
| RB2-SS-2nd.145 |  | Wait for Strength Gain | 6d | 2027-09-02 | 2027-09-09 | RB2-SS-2nd.130 | Physical Progress [8470 h]; TATA Projects Ltd-25 |  |
| RB2-SS-2nd.205 |  | PT Work | 5d | 2027-09-10 | 2027-09-16 | RB2-SS-2nd.145, RB2-SS-1st.190 | PT [10 MT1]; Helper [100 h]; PT Fitter [100 h]; Physical Progress [7060 h]; TATA Projects Ltd-25 | 1,900,000 |
|  | 2 | **Pour 2** |  | 2027-07-14 | 2027-09-11 |  |  |  |
|  | 1 | **Column, Core Wall, Shear Wall** |  | 2027-07-14 | 2027-07-31 |  |  |  |
| RB2-SS-2nd.40 |  | Reinforcement | 4d | 2027-07-14 | 2027-07-21 | RB2-SS-1st.235 | Barbender [3540 h]; Helper [1770 h]; Physical Progress [5650 h]; Reinforcement Steel [53 MT1]; TATA Projects Ltd-25 | 5,115,162.5 |
| RB2-SS-2nd.70 |  | LPS | 1d | 2027-07-21 | 2027-07-23 | RB2-SS-2nd.40 | LPS [36849 INR]; Physical Progress [1420 h]; TATA Projects Ltd-25 | 36,849 |
| RB2-SS-2nd.90 |  | Shuttering | 4d | 2027-07-23 | 2027-07-30 | RB2-SS-2nd.40, RB2-SS-2nd.70 | Carpenter [1650 h]; Helper [830 h]; Physical Progress [5650 h]; Formwork [986 Sq m]; TATA Projects Ltd-25 | 1,148,847.76 |
| RB2-SS-2nd.150 |  | Concrete | 1d | 2027-07-30 | 2027-07-31 | RB2-SS-2nd.90 | Mason [50 h]; Helper [50 h]; Physical Progress [1420 h]; Concrete M40 [246 m3]; TATA Projects Ltd-25 | 2,427,282 |
|  | 3 | **Staircase - 1** |  | 2027-07-14 | 2027-08-11 |  |  |  |
| RB2-SS-2nd.45 |  | Reinforcement of wall upto Flight 1 | 2d | 2027-07-14 | 2027-07-17 | RB2-SS-1st.235 | Barbender [70 h]; Helper [40 h]; Physical Progress [2820 h]; Reinforcement Steel [1 MT1]; TATA Projects Ltd-25 | 96,512.5 |
| RB2-SS-2nd.60 |  | Shuttering of wall upto Flight 1 | 2d | 2027-07-17 | 2027-07-21 | RB2-SS-2nd.45 | Carpenter [20 h]; Helper [10 h]; Physical Progress [2820 h]; Formwork [10 Sq m]; TATA Projects Ltd-25 | 11,651.6 |
| RB2-SS-2nd.75 |  | Casting of wall upto Flight 1 | 1d | 2027-07-21 | 2027-07-23 | RB2-SS-2nd.60 | Mason; Helper; Physical Progress [1420 h]; Concrete M40 [3 m3]; TATA Projects Ltd-25 | 29,601 |
| RB2-SS-2nd.95 |  | Shuttering of Staircase upto Flight 1 | 1d | 2027-07-23 | 2027-07-24 | RB2-SS-2nd.75 | Carpenter [20 h]; Helper [10 h]; Physical Progress [1420 h]; Formwork [10 Sq m]; TATA Projects Ltd-25 | 11,651.6 |
| RB2-SS-2nd.105 |  | Reinforcement of Staircase upto Flight 1 | 1d | 2027-07-24 | 2027-07-26 | RB2-SS-2nd.95 | Barbender [70 h]; Helper [40 h]; Physical Progress [1420 h]; Reinforcement Steel [1 MT1]; TATA Projects Ltd-25 | 96,512.5 |
| RB2-SS-2nd.120 |  | MEP coordination upto Flight 1 | 1d | 2027-07-26 | 2027-07-28 | RB2-SS-2nd.105 | Physical Progress [1420 h]; TATA Projects Ltd-25 |  |
| RB2-SS-2nd.135 |  | Casting of Staircase upto Flight 1 | 1d | 2027-07-28 | 2027-07-30 | RB2-SS-2nd.120 | Mason; Helper; Physical Progress [1420 h]; Concrete M40 [3 m3]; TATA Projects Ltd-25 | 29,601 |
| RB2-SS-2nd.155 |  | Reinforcement of wall upto Flight 2 | 2d | 2027-07-30 | 2027-08-02 | RB2-SS-2nd.135 | Barbender [70 h]; Helper [40 h]; Physical Progress [2820 h]; Reinforcement Steel [1 MT1]; TATA Projects Ltd-25 | 96,512.5 |
| RB2-SS-2nd.170 |  | Shuttering of wall upto Flight 2 | 2d | 2027-08-02 | 2027-08-06 | RB2-SS-2nd.155 | Carpenter [20 h]; Helper [10 h]; Physical Progress [2820 h]; Formwork [10 Sq m]; TATA Projects Ltd-25 | 11,651.6 |
| RB2-SS-2nd.180 |  | Casting of wall upto Flight 2 | 1d | 2027-08-06 | 2027-08-07 | RB2-SS-2nd.170 | Mason; Helper; Physical Progress [1420 h]; Concrete M40 [3 m3]; TATA Projects Ltd-25 | 29,601 |
| RB2-SS-2nd.195 |  | Shuttering of Staircase upto Flight 2 | 1d | 2027-08-07 | 2027-08-09 | RB2-SS-2nd.180 | Carpenter [20 h]; Helper [10 h]; Physical Progress [1420 h]; Formwork [10 Sq m]; TATA Projects Ltd-25 | 11,651.6 |
| RB2-SS-2nd.210 |  | Reinforcement of Staircase upto Flight 2 | 1d | 2027-08-09 | 2027-08-11 | RB2-SS-2nd.195 | Barbender [70 h]; Helper [40 h]; Physical Progress [1420 h]; Reinforcement Steel [1 MT1]; TATA Projects Ltd-25 | 96,512.5 |

| ID | WBS | Activity | Duration | Start | Finish | Predecessors | Resources | Cost |
| --- | --- | --- | --- | --- | --- | --- | --- | --- |
|  | 4 | **Staircase - 2** |  | 2027-07-14 | 2027-08-11 |  |  |  |
| RB2-SS-2nd.50 |  | Reinforcement of wall upto Flight 1 | 2d | 2027-07-14 | 2027-07-17 | RB2-SS-1st.235 | Barbender [70 h]; Helper [40 h]; Physical Progress [2820 h]; Reinforcement Steel [1 MT1]; TATA Projects Ltd-25 | 96,512.5 |
| RB2-SS-2nd.65 |  | Shuttering of wall upto Flight 1 | 2d | 2027-07-17 | 2027-07-21 | RB2-SS-2nd.50 | Carpenter [20 h]; Helper [10 h]; Physical Progress [2820 h]; Formwork [10 Sq m]; TATA Projects Ltd-25 | 11,651.6 |
| RB2-SS-2nd.80 |  | Casting of wall upto Flight 1 | 1d | 2027-07-21 | 2027-07-23 | RB2-SS-2nd.65 | Mason; Helper; Physical Progress [1420 h]; Concrete M40 [3 m3]; TATA Projects Ltd-25 | 29,601 |
| RB2-SS-2nd.100 |  | Shuttering of Staircase upto Flight 1 | 1d | 2027-07-23 | 2027-07-24 | RB2-SS-2nd.80 | Carpenter [20 h]; Helper [10 h]; Physical Progress [1420 h]; Formwork [10 Sq m]; TATA Projects Ltd-25 | 11,651.6 |
| RB2-SS-2nd.110 |  | Reinforcement of Staircase upto Flight 1 | 1d | 2027-07-24 | 2027-07-26 | RB2-SS-2nd.100 | Barbender [70 h]; Helper [40 h]; Physical Progress [1420 h]; Reinforcement Steel [1 MT1]; TATA Projects Ltd-25 | 96,512.5 |
| RB2-SS-2nd.125 |  | MEP coordination upto Flight 1 | 1d | 2027-07-26 | 2027-07-28 | RB2-SS-2nd.110 | Physical Progress [1420 h]; TATA Projects Ltd-25 |  |
| RB2-SS-2nd.140 |  | Casting of Staircase upto Flight 1 | 1d | 2027-07-28 | 2027-07-30 | RB2-SS-2nd.125 | Mason; Helper; Physical Progress [1420 h]; Concrete M40 [3 m3]; TATA Projects Ltd-25 | 29,601 |
| RB2-SS-2nd.160 |  | Reinforcement of wall upto Flight 2 | 2d | 2027-07-30 | 2027-08-02 | RB2-SS-2nd.140 | Barbender [70 h]; Helper [40 h]; Physical Progress [2820 h]; Reinforcement Steel [1 MT1]; TATA Projects Ltd-25 | 96,512.5 |
| RB2-SS-2nd.175 |  | Shuttering of wall upto Flight 2 | 2d | 2027-08-02 | 2027-08-06 | RB2-SS-2nd.160 | Carpenter [20 h]; Helper [10 h]; Physical Progress [2820 h]; Formwork [10 Sq m]; TATA Projects Ltd-25 | 11,651.6 |
| RB2-SS-2nd.185 |  | Casting of wall upto Flight 2 | 1d | 2027-08-06 | 2027-08-07 | RB2-SS-2nd.175 | Mason; Helper; Physical Progress [1420 h]; Concrete M40 [3 m3]; TATA Projects Ltd-25 | 29,601 |
| RB2-SS-2nd.200 |  | Shuttering of Staircase upto Flight 2 | 1d | 2027-08-07 | 2027-08-09 | RB2-SS-2nd.185 | Carpenter [20 h]; Helper [10 h]; Physical Progress [1420 h]; Formwork [10 Sq m]; TATA Projects Ltd-25 | 11,651.6 |
| RB2-SS-2nd.215 |  | Reinforcement of Staircase upto Flight 2 | 1d | 2027-08-09 | 2027-08-11 | RB2-SS-2nd.200 | Barbender [70 h]; Helper [40 h]; Physical Progress [1420 h]; Reinforcement Steel [1 MT1]; TATA Projects Ltd-25 | 96,512.5 |
|  | 2 | **Slab** |  | 2027-07-31 | 2027-09-11 |  |  |  |
| RB2-SS-2nd.165 |  | Shuttering | 4d | 2027-07-31 | 2027-08-07 | RB2-SS-2nd.150 | Carpenter [3310 h]; Helper [1660 h]; Physical Progress [5650 h]; Formwork [1985 Sq m]; TATA Projects Ltd-25 | 2,312,842.6 |
| RB2-SS-2nd.190 |  | Reinforcement Bottom Net with chairs | 3d | 2027-08-07 | 2027-08-13 | RB2-SS-2nd.165 | Barbender [1200 h]; Helper [600 h]; Physical Progress [4240 h]; Reinforcement Steel [18 MT1]; TATA Projects Ltd-25 | 1,737,225 |
| RB2-SS-2nd.220 |  | Laying of PT Tendon | 3d | 2027-08-13 | 2027-08-18 | RB2-SS-2nd.190 | Physical Progress [5650 h]; TATA Projects Ltd-25 |  |
| RB2-SS-2nd.225 |  | Reinforcement Top Net | 2d | 2027-08-18 | 2027-08-21 | RB2-SS-2nd.220 | Barbender [1200 h]; Helper [600 h]; Physical Progress [2820 h]; Reinforcement Steel [18 MT1]; TATA Projects Ltd-25 | 1,737,225 |
| RB2-SS-2nd.230 |  | MEP Coordination | 1d | 2027-08-21 | 2027-08-23 | RB2-SS-2nd.190, RB2-SS-2nd.210, RB2-SS-2nd.225, RB2-SS-2nd.215 | Physical Progress [1420 h]; TATA Projects Ltd-25 |  |
| RB2-SS-2nd.235 |  | Concrete of Slab | 1d | 2027-08-23 | 2027-08-25 | RB2-SS-2nd.230 | Mason [50 h]; Helper [50 h]; Physical Progress [1420 h]; Concrete M40 [483 m3]; TATA Projects Ltd-25 | 4,765,761 |
| RB2-SS-2nd.240 |  | Wait for Strength Gain | 6d | 2027-08-25 | 2027-09-04 | RB2-SS-2nd.235 | Physical Progress [8470 h]; TATA Projects Ltd-25 |  |
| RB2-SS-2nd.245 |  | PT Work | 5d | 2027-09-04 | 2027-09-11 | RB2-SS-2nd.240, RB2-SS-1st.245 | PT [9 MT1]; Helper [100 h]; PT Fitter [100 h]; Physical Progress [7060 h]; TATA Projects Ltd-25 | 1,710,000 |
|  | 4 | **Pour 3** |  | 2027-06-26 | 2027-08-25 |  |  |  |
|  | 1 | **Column, Core Wall, Shear Wall** |  | 2027-06-26 | 2027-07-10 |  |  |  |
| RB2-SS-2nd.250 |  | Reinforcement | 4d | 2027-06-26 | 2027-07-01 | RB2-SS-1st.380 | Barbender [4340 h]; Helper [2170 h]; Physical Progress [5650 h]; Reinforcement Steel [65 MT1]; TATA Projects Ltd-25 | 6,273,312.5 |
| RB2-SS-2nd.265 |  | LPS | 1d | 2027-07-01 | 2027-07-02 | RB2-SS-2nd.250 | LPS [36849 INR]; Physical Progress [1420 h]; TATA Projects Ltd-25 | 36,849 |
| RB2-SS-2nd.275 |  | Shuttering | 4d | 2027-07-02 | 2027-07-09 | RB2-SS-2nd.250, RB2-SS-2nd.265 | Carpenter [2020 h]; Helper [1010 h]; Physical Progress [5650 h]; Formwork [1207 Sq m]; TATA Projects Ltd-25 | 1,406,348.12 |
| RB2-SS-2nd.300 |  | Concrete | 1d | 2027-07-09 | 2027-07-10 | RB2-SS-2nd.275 | Mason [50 h]; Helper [50 h]; Physical Progress [1420 h]; Concrete M40 [302 m3]; TATA Projects Ltd-25 | 2,979,834 |

| ID | WBS | Activity | Duration | Start | Finish | Predecessors | Resources | Cost |
| --- | --- | --- | --- | --- | --- | --- | --- | --- |
|  | 3 | **Staircase** |  | 2027-06-26 | 2027-07-21 |  |  |  |
| RB2-SS-2nd.255 |  | Reinforcement of wall upto Flight 1 | 2d | 2027-06-26 | 2027-06-29 | RB2-SS-1st.380 | Barbender [70 h]; Helper [40 h]; Physical Progress [2820 h]; Reinforcement Steel [1 MT1]; TATA Projects Ltd-25 | 96,512.5 |
| RB2-SS-2nd.260 |  | Shuttering of wall upto Flight 1 | 2d | 2027-06-29 | 2027-07-01 | RB2-SS-2nd.255 | Carpenter [20 h]; Helper [10 h]; Physical Progress [2820 h]; Formwork [10 Sq m]; TATA Projects Ltd-25 | 11,651.6 |
| RB2-SS-2nd.270 |  | Casting of wall upto Flight 1 | 1d | 2027-07-01 | 2027-07-02 | RB2-SS-2nd.260 | Mason; Helper; Physical Progress [1420 h]; Concrete M40 [3 m3]; TATA Projects Ltd-25 | 29,601 |
| RB2-SS-2nd.280 |  | Shuttering of Staircase upto Flight 1 | 1d | 2027-07-02 | 2027-07-03 | RB2-SS-2nd.270 | Carpenter [20 h]; Helper [10 h]; Physical Progress [1420 h]; Formwork [10 Sq m]; TATA Projects Ltd-25 | 11,651.6 |
| RB2-SS-2nd.285 |  | Reinforcement of Staircase upto Flight 1 | 1d | 2027-07-03 | 2027-07-05 | RB2-SS-2nd.280 | Barbender [70 h]; Helper [40 h]; Physical Progress [1420 h]; Reinforcement Steel [1 MT1]; TATA Projects Ltd-25 | 96,512.5 |
| RB2-SS-2nd.290 |  | MEP coordination upto Flight 1 | 1d | 2027-07-05 | 2027-07-07 | RB2-SS-2nd.285 | Physical Progress [1420 h]; TATA Projects Ltd-25 |  |
| RB2-SS-2nd.295 |  | Casting of Staircase upto Flight 1 | 1d | 2027-07-07 | 2027-07-09 | RB2-SS-2nd.290 | Mason; Helper; Physical Progress [1420 h]; Concrete M40 [3 m3]; TATA Projects Ltd-25 | 29,601 |
| RB2-SS-2nd.305 |  | Reinforcement of wall upto Flight 2 | 2d | 2027-07-09 | 2027-07-12 | RB2-SS-2nd.295 | Barbender [70 h]; Helper [40 h]; Physical Progress [2820 h]; Reinforcement Steel [1 MT1]; TATA Projects Ltd-25 | 96,512.5 |
| RB2-SS-2nd.315 |  | Shuttering of wall upto Flight 2 | 2d | 2027-07-12 | 2027-07-16 | RB2-SS-2nd.305 | Carpenter [20 h]; Helper [10 h]; Physical Progress [2820 h]; Formwork [10 Sq m]; TATA Projects Ltd-25 | 11,651.6 |
| RB2-SS-2nd.320 |  | Casting of wall upto Flight 2 | 1d | 2027-07-16 | 2027-07-17 | RB2-SS-2nd.315 | Mason; Helper; Physical Progress [1420 h]; Concrete M40 [3 m3]; TATA Projects Ltd-25 | 29,601 |
| RB2-SS-2nd.330 |  | Shuttering of Staircase upto Flight 2 | 1d | 2027-07-17 | 2027-07-19 | RB2-SS-2nd.320 | Carpenter [20 h]; Helper [10 h]; Physical Progress [1420 h]; Formwork [10 Sq m]; TATA Projects Ltd-25 | 11,651.6 |
| RB2-SS-2nd.335 |  | Reinforcement of Staircase upto Flight 2 | 1d | 2027-07-19 | 2027-07-21 | RB2-SS-2nd.330 | Barbender [70 h]; Helper [40 h]; Physical Progress [1420 h]; Reinforcement Steel [1 MT1]; TATA Projects Ltd-25 | 96,512.5 |
|  | 2 | **Slab** |  | 2027-07-10 | 2027-08-25 |  |  |  |
| RB2-SS-2nd.310 |  | Shuttering | 4d | 2027-07-10 | 2027-07-17 | RB2-SS-2nd.300 | Carpenter [4060 h]; Helper [2030 h]; Physical Progress [5650 h]; Formwork [2431 Sq m]; TATA Projects Ltd-25 | 2,832,503.96 |
| RB2-SS-2nd.325 |  | Reinforcement Bottom Net with chairs | 3d | 2027-07-17 | 2027-07-23 | RB2-SS-2nd.310 | Barbender [1470 h]; Helper [740 h]; Physical Progress [4240 h]; Reinforcement Steel [22 MT1]; TATA Projects Ltd-25 | 2,123,275 |
| RB2-SS-2nd.340 |  | Laying of PT Tendon | 4d | 2027-07-23 | 2027-07-30 | RB2-SS-2nd.325 | Physical Progress [5650 h]; TATA Projects Ltd-25 |  |
| RB2-SS-2nd.355 |  | Reinforcement Top Net | 2d | 2027-07-30 | 2027-08-02 | RB2-SS-2nd.340 | Barbender [1470 h]; Helper [740 h]; Physical Progress [2820 h]; Reinforcement Steel [22 MT1]; TATA Projects Ltd-25 | 2,123,275 |
| RB2-SS-2nd.365 |  | MEP Coordination | 1d | 2027-08-02 | 2027-08-04 | RB2-SS-2nd.325, RB2-SS-2nd.355, RB2-SS-2nd.335 | Physical Progress [1420 h]; TATA Projects Ltd-25 |  |
| RB2-SS-2nd.380 |  | Concrete of Slab | 1d | 2027-08-04 | 2027-08-06 | RB2-SS-2nd.365 | Mason [50 h]; Helper [50 h]; Physical Progress [1420 h]; Concrete M40 [591 m3]; TATA Projects Ltd-25 | 5,831,397 |
| RB2-SS-2nd.395 |  | Wait for Strength Gain | 6d | 2027-08-06 | 2027-08-16 | RB2-SS-2nd.380 | Physical Progress [8470 h]; TATA Projects Ltd-25 |  |
| RB2-SS-2nd.440 |  | PT Work | 5d | 2027-08-16 | 2027-08-25 | RB2-SS-2nd.395, RB2-SS-1st.415 | PT [11 MT1]; Helper [100 h]; PT Fitter [100 h]; Physical Progress [7060 h]; TATA Projects Ltd-25 | 2,090,000 |
|  | 3 | **Pour 4** |  | 2027-07-09 | 2027-09-09 |  |  |  |
|  | 1 | **Column, Core Wall, Shear Wall** |  | 2027-07-09 | 2027-07-26 |  |  |  |
| RB2-SS-2nd.345 |  | Reinforcement | 4d | 2027-07-09 | 2027-07-16 | RB2-SS-1st.500 | Barbender [5140 h]; Helper [2570 h]; Physical Progress [5650 h]; Reinforcement Steel [77 MT1]; TATA Projects Ltd-25 | 7,431,462.5 |
| RB2-SS-2nd.370 |  | LPS | 1d | 2027-07-16 | 2027-07-17 | RB2-SS-2nd.345 | LPS [36849 INR]; Physical Progress [1420 h]; TATA Projects Ltd-25 | 36,849 |
| RB2-SS-2nd.385 |  | Shuttering | 4d | 2027-07-17 | 2027-07-24 | RB2-SS-2nd.345, RB2-SS-2nd.370 | Carpenter [2390 h]; Helper [1200 h]; Physical Progress [5650 h]; Formwork [1431 Sq m]; TATA Projects Ltd-25 | 1,667,343.96 |
| RB2-SS-2nd.415 |  | Concrete | 1d | 2027-07-24 | 2027-07-26 | RB2-SS-2nd.385 | Mason [50 h]; Helper [50 h]; Physical Progress [1420 h]; Concrete M40 [358 m3]; TATA Projects Ltd-25 | 3,532,386 |

| ID | WBS | Activity | Duration | Start | Finish | Predecessors | Resources | Cost |
| --- | --- | --- | --- | --- | --- | --- | --- | --- |
|  | 4 | **Staircase** |  | 2027-07-09 | 2027-08-06 |  |  |  |
| RB2-SS-2nd.350 |  | Reinforcement of wall upto Flight 1 | 2d | 2027-07-09 | 2027-07-12 | RB2-SS-1st.500 | Barbender [70 h]; Helper [40 h]; Physical Progress [2820 h]; Reinforcement Steel [1 MT1]; TATA Projects Ltd-25 | 96,512.5 |
| RB2-SS-2nd.360 |  | Shuttering of wall upto Flight 1 | 2d | 2027-07-12 | 2027-07-16 | RB2-SS-2nd.350 | Carpenter [20 h]; Helper [10 h]; Physical Progress [2820 h]; Formwork [10 Sq m]; TATA Projects Ltd-25 | 11,651.6 |
| RB2-SS-2nd.375 |  | Casting of wall upto Flight 1 | 1d | 2027-07-16 | 2027-07-17 | RB2-SS-2nd.360 | Mason; Helper; Physical Progress [1420 h]; Concrete M40 [3 m3]; TATA Projects Ltd-25 | 29,601 |
| RB2-SS-2nd.390 |  | Shuttering of Staircase upto Flight 1 | 1d | 2027-07-17 | 2027-07-19 | RB2-SS-2nd.375 | Carpenter [20 h]; Helper [10 h]; Physical Progress [1420 h]; Formwork [10 Sq m]; TATA Projects Ltd-25 | 11,651.6 |
| RB2-SS-2nd.400 |  | Reinforcement of Staircase upto Flight 1 | 1d | 2027-07-19 | 2027-07-21 | RB2-SS-2nd.390 | Barbender [70 h]; Helper [40 h]; Physical Progress [1420 h]; Reinforcement Steel [1 MT1]; TATA Projects Ltd-25 | 96,512.5 |
| RB2-SS-2nd.405 |  | MEP coordination upto Flight 1 | 1d | 2027-07-21 | 2027-07-23 | RB2-SS-2nd.400 | Physical Progress [1420 h]; TATA Projects Ltd-25 |  |
| RB2-SS-2nd.410 |  | Casting of Staircase upto Flight 1 | 1d | 2027-07-23 | 2027-07-24 | RB2-SS-2nd.405 | Mason; Helper; Physical Progress [1420 h]; Concrete M40 [3 m3]; TATA Projects Ltd-25 | 29,601 |
| RB2-SS-2nd.420 |  | Reinforcement of wall upto Flight 2 | 2d | 2027-07-24 | 2027-07-28 | RB2-SS-2nd.410 | Barbender [70 h]; Helper [40 h]; Physical Progress [2820 h]; Reinforcement Steel [1 MT1]; TATA Projects Ltd-25 | 96,512.5 |
| RB2-SS-2nd.435 |  | Shuttering of wall upto Flight 2 | 2d | 2027-07-28 | 2027-07-31 | RB2-SS-2nd.420 | Carpenter [20 h]; Helper [10 h]; Physical Progress [2820 h]; Formwork [10 Sq m]; TATA Projects Ltd-25 | 11,651.6 |
| RB2-SS-2nd.450 |  | Casting of wall upto Flight 2 | 1d | 2027-07-31 | 2027-08-02 | RB2-SS-2nd.435 | Mason; Helper; Physical Progress [1420 h]; Concrete M40 [3 m3]; TATA Projects Ltd-25 | 29,601 |
| RB2-SS-2nd.465 |  | Shuttering of Staircase upto Flight 2 | 1d | 2027-08-02 | 2027-08-04 | RB2-SS-2nd.450 | Carpenter [20 h]; Helper [10 h]; Physical Progress [1420 h]; Formwork [10 Sq m]; TATA Projects Ltd-25 | 11,651.6 |
| RB2-SS-2nd.470 |  | Reinforcement of Staircase upto Flight 2 | 1d | 2027-08-04 | 2027-08-06 | RB2-SS-2nd.465 | Barbender [70 h]; Helper [40 h]; Physical Progress [1420 h]; Reinforcement Steel [1 MT1]; TATA Projects Ltd-25 | 96,512.5 |
|  | 2 | **Slab** |  | 2027-07-26 | 2027-09-09 |  |  |  |
| RB2-SS-2nd.425 |  | Shuttering | 4d | 2027-07-26 | 2027-08-02 | RB2-SS-2nd.415 | Carpenter [4810 h]; Helper [2410 h]; Physical Progress [5650 h]; Formwork [2884 Sq m]; TATA Projects Ltd-25 | 3,360,321.44 |
| RB2-SS-2nd.455 |  | Reinforcement Bottom Net with chairs | 3d | 2027-08-02 | 2027-08-07 | RB2-SS-2nd.425 | Barbender [1740 h]; Helper [870 h]; Physical Progress [4240 h]; Reinforcement Steel [26 MT1]; TATA Projects Ltd-25 | 2,509,325 |
| RB2-SS-2nd.475 |  | Laying of PT Tendon | 4d | 2027-08-07 | 2027-08-14 | RB2-SS-2nd.455 | Physical Progress [5650 h]; TATA Projects Ltd-25 |  |
| RB2-SS-2nd.490 |  | Reinforcement Top Net | 2d | 2027-08-14 | 2027-08-18 | RB2-SS-2nd.475 | Barbender [1740 h]; Helper [870 h]; Physical Progress [2820 h]; Reinforcement Steel [26 MT1]; TATA Projects Ltd-25 | 2,509,325 |
| RB2-SS-2nd.500 |  | MEP Coordination | 1d | 2027-08-18 | 2027-08-20 | RB2-SS-2nd.455, RB2-SS-2nd.490, RB2-SS-2nd.470 | Physical Progress [1420 h]; TATA Projects Ltd-25 |  |
| RB2-SS-2nd.505 |  | Concrete of Slab | 1d | 2027-08-20 | 2027-08-21 | RB2-SS-2nd.500 | Mason [50 h]; Helper [50 h]; Physical Progress [1420 h]; Concrete M40 [701 m3]; TATA Projects Ltd-25 | 6,916,767 |
| RB2-SS-2nd.510 |  | Wait for Strength Gain | 6d | 2027-08-21 | 2027-09-02 | RB2-SS-2nd.505 | Physical Progress [8470 h]; TATA Projects Ltd-25 |  |
| RB2-SS-2nd.525 |  | PT Work | 5d | 2027-09-02 | 2027-09-09 | RB2-SS-2nd.510 | PT [13 MT1]; Helper [100 h]; PT Fitter [100 h]; Physical Progress [7060 h]; TATA Projects Ltd-25 | 2,470,000 |
|  | 5 | **Pour 5** |  | 2027-07-14 | 2027-09-09 |  |  |  |
|  | 1 | **Column** |  | 2027-07-14 | 2027-07-28 |  |  |  |
| RB2-SS-2nd.430 |  | Reinforcement | 3d | 2027-07-14 | 2027-07-19 | RB2-SS-1st.535 | Barbender [3670 h]; Helper [1840 h]; Physical Progress [4240 h]; Reinforcement Steel [55 MT1]; TATA Projects Ltd-25 | 5,308,187.5 |
| RB2-SS-2nd.445 |  | LPS | 1d | 2027-07-19 | 2027-07-21 | RB2-SS-2nd.430 | LPS [36849 INR]; Physical Progress [1420 h]; TATA Projects Ltd-25 | 36,849 |
| RB2-SS-2nd.460 |  | Shuttering | 3d | 2027-07-21 | 2027-07-26 | RB2-SS-2nd.430, RB2-SS-2nd.445 | Carpenter [1710 h]; Helper [860 h]; Physical Progress [4240 h]; Formwork [1026 Sq m]; TATA Projects Ltd-25 | 1,195,454.16 |
| RB2-SS-2nd.480 |  | Concrete | 1d | 2027-07-26 | 2027-07-28 | RB2-SS-2nd.460 | Mason [50 h]; Helper [50 h]; Physical Progress [1420 h]; Concrete M40 [257 m3]; TATA Projects Ltd-25 | 2,535,819 |

| ID | WBS | Activity | Duration | Start | Finish | Predecessors | Resources | Cost |
| --- | --- | --- | --- | --- | --- | --- | --- | --- |
|  | 2 | **Slab** |  | 2027-07-28 | 2027-09-09 |  |  |  |
| RB2-SS-2nd.485 |  | Shuttering | 4d | 2027-07-28 | 2027-08-04 | RB2-SS-2nd.480 | Carpenter [3450 h]; Helper [1730 h]; Physical Progress [5650 h]; Formwork [2068 Sq m]; TATA Projects Ltd-25 | 2,409,550.88 |
| RB2-SS-2nd.495 |  | Reinforcement Bottom Net with chairs | 3d | 2027-08-04 | 2027-08-09 | RB2-SS-2nd.485 | Barbender [1270 h]; Helper [640 h]; Physical Progress [4240 h]; Reinforcement Steel [19 MT1]; TATA Projects Ltd-25 | 1,833,737.5 |
| RB2-SS-2nd.515 |  | Laying of PT Tendon | 3d | 2027-08-09 | 2027-08-14 | RB2-SS-2nd.495 | Physical Progress [5650 h]; TATA Projects Ltd-25 |  |
| RB2-SS-2nd.520 |  | Reinforcement Top Net | 2d | 2027-08-14 | 2027-08-18 | RB2-SS-2nd.515 | Barbender [1270 h]; Helper [640 h]; Physical Progress [2820 h]; Reinforcement Steel [19 MT1]; TATA Projects Ltd-25 | 1,833,737.5 |
| RB2-SS-2nd.530 |  | MEP Coordination | 1d | 2027-08-18 | 2027-08-20 | RB2-SS-2nd.495, RB2-SS-2nd.520 | Physical Progress [1420 h]; TATA Projects Ltd-25 |  |
| RB2-SS-2nd.535 |  | Concrete of Slab | 1d | 2027-08-20 | 2027-08-21 | RB2-SS-2nd.530 | Mason [50 h]; Helper [50 h]; Physical Progress [1420 h]; Concrete M40 [503 m3]; TATA Projects Ltd-25 | 4,963,101 |
| RB2-SS-2nd.540 |  | Wait for Strength Gain | 6d | 2027-08-21 | 2027-09-02 | RB2-SS-2nd.535 | Physical Progress [8470 h]; TATA Projects Ltd-25 |  |
| RB2-SS-2nd.545 |  | PT Work | 5d | 2027-09-02 | 2027-09-09 | RB2-SS-2nd.540, RB2-SS-1st.545 | PT [9 MT1]; Helper [100 h]; PT Fitter [100 h]; Physical Progress [7060 h]; TATA Projects Ltd-25 | 1,710,000 |
|  | 4 | **Third Floor** |  | 2027-08-06 | 2027-10-18 |  |  |  |
|  | 1 | **Pour 1** |  | 2027-09-02 | 2027-10-18 |  |  |  |
|  | 1 | **Column** |  | 2027-09-02 | 2027-09-11 |  |  |  |
| RB2-SS-3rd.10 |  | Reinforcement | 3d | 2027-09-02 | 2027-09-04 | RB2-SS-2nd.130, E-GFC-ST-RB2-230 | Barbender; Helper; Physical Progress [4240 h]; Reinforcement Steel; TATA Projects Ltd-25 |  |
| RB2-SS-3rd.15 |  | LPS | 1d | 2027-09-06 | 2027-09-06 | RB2-SS-3rd.10 | LPS [36849 INR]; Physical Progress [1420 h]; TATA Projects Ltd-25 | 36,849 |
| RB2-SS-3rd.20 |  | Shuttering | 3d | 2027-09-07 | 2027-09-10 | RB2-SS-3rd.10, RB2-SS-3rd.15 | Carpenter; Helper; Physical Progress [4240 h]; Formwork; TATA Projects Ltd-25 |  |
| RB2-SS-3rd.25 |  | Concrete | 1d | 2027-09-11 | 2027-09-11 | RB2-SS-3rd.20 | Mason [50 h]; Helper [50 h]; Physical Progress [1420 h]; Concrete M40; TATA Projects Ltd-25 |  |
|  | 2 | **Slab** |  | 2027-09-13 | 2027-10-18 |  |  |  |
| RB2-SS-3rd.30 |  | Shuttering | 4d | 2027-09-13 | 2027-09-17 | RB2-SS-3rd.25 | Carpenter; Helper; Physical Progress [5650 h]; Formwork; TATA Projects Ltd-25 |  |
| RB2-SS-3rd.35 |  | Reinforcement Bottom Net with chairs | 3d | 2027-09-18 | 2027-09-21 | RB2-SS-3rd.30 | Barbender; Helper; Physical Progress [4240 h]; Reinforcement Steel; TATA Projects Ltd-25 |  |
| RB2-SS-3rd.40 |  | Laying of PT Tendon | 4d | 2027-09-23 | 2027-09-27 | RB2-SS-3rd.35 | Physical Progress [5650 h]; TATA Projects Ltd-25 |  |
| RB2-SS-3rd.70 |  | Reinforcement Top Net | 2d | 2027-09-28 | 2027-09-30 | RB2-SS-3rd.40 | Barbender; Helper; Physical Progress [2820 h]; Reinforcement Steel; TATA Projects Ltd-25 |  |
| RB2-SS-3rd.90 |  | MEP Coordination | 1d | 2027-10-01 | 2027-10-01 | RB2-SS-3rd.35, RB2-SS-3rd.70 | Physical Progress [1420 h]; TATA Projects Ltd-25 |  |
| RB2-SS-3rd.110 |  | Concrete of Slab | 1d | 2027-10-04 | 2027-10-04 | RB2-SS-3rd.90 | Mason [50 h]; Helper [50 h]; Physical Progress [1420 h]; Concrete M40; TATA Projects Ltd-25 |  |
| RB2-SS-3rd.125 |  | Wait for Strength Gain | 6d | 2027-10-05 | 2027-10-12 | RB2-SS-3rd.110 | Physical Progress [8470 h]; TATA Projects Ltd-25 |  |
| RB2-SS-3rd.180 |  | PT Work | 5d | 2027-10-13 | 2027-10-18 | RB2-SS-3rd.125, RB2-SS-2nd.205 | PT; Helper [100 h]; PT Fitter [100 h]; Physical Progress [7060 h]; TATA Projects Ltd-25 |  |

| ID | WBS | Activity | Duration | Start | Finish | Predecessors | Resources | Cost |
| --- | --- | --- | --- | --- | --- | --- | --- | --- |
|  | 2 | **Pour 2** |  | 2027-08-25 | 2027-10-15 |  |  |  |
|  | 1 | **Column, Core Wall, Shear Wall** |  | 2027-08-25 | 2027-09-10 |  |  |  |
| RB2-SS-3rd.45 |  | Reinforcement | 4d | 2027-08-25 | 2027-09-02 | RB2-SS-2nd.235 | Barbender [4470 h]; Helper [2240 h]; Physical Progress [5650 h]; Reinforcement Steel [67 MT1]; TATA Projects Ltd-25 | 6,466,337.5 |
| RB2-SS-3rd.75 |  | LPS | 1d | 2027-09-02 | 2027-09-03 | RB2-SS-3rd.45 | LPS [36849 INR]; Physical Progress [1420 h]; TATA Projects Ltd-25 | 36,849 |
| RB2-SS-3rd.95 |  | Shuttering | 4d | 2027-09-03 | 2027-09-09 | RB2-SS-3rd.45, RB2-SS-3rd.75 | Carpenter [2110 h]; Helper [1060 h]; Physical Progress [5650 h]; Formwork [1266 Sq m]; TATA Projects Ltd-25 | 1,475,092.56 |
| RB2-SS-3rd.150 |  | Concrete | 1d | 2027-09-09 | 2027-09-10 | RB2-SS-3rd.95 | Mason [50 h]; Helper [50 h]; Physical Progress [1420 h]; Concrete M40 [316 m3]; TATA Projects Ltd-25 | 3,117,972 |
|  | 3 | **Staircase - 1** |  | 2027-08-25 | 2027-09-18 |  |  |  |
| RB2-SS-3rd.50 |  | Reinforcement of wall upto Flight 1 | 2d | 2027-08-25 | 2027-08-28 | RB2-SS-2nd.235 | Barbender [70 h]; Helper [40 h]; Physical Progress [2820 h]; Reinforcement Steel [1 MT1]; TATA Projects Ltd-25 | 96,512.5 |
| RB2-SS-3rd.60 |  | Shuttering of wall upto Flight 1 | 2d | 2027-08-28 | 2027-09-02 | RB2-SS-3rd.50 | Carpenter [20 h]; Helper [10 h]; Physical Progress [2820 h]; Formwork [10 Sq m]; TATA Projects Ltd-25 | 11,651.6 |
| RB2-SS-3rd.80 |  | Casting of wall upto Flight 1 | 1d | 2027-09-02 | 2027-09-03 | RB2-SS-3rd.60 | Mason; Helper; Physical Progress [1420 h]; Concrete M40 [3 m3]; TATA Projects Ltd-25 | 29,601 |
| RB2-SS-3rd.100 |  | Shuttering of Staircase upto Flight 1 | 1d | 2027-09-03 | 2027-09-04 | RB2-SS-3rd.80 | Carpenter [20 h]; Helper [10 h]; Physical Progress [1420 h]; Formwork [10 Sq m]; TATA Projects Ltd-25 | 11,651.6 |
| RB2-SS-3rd.115 |  | Reinforcement of Staircase upto Flight 1 | 1d | 2027-09-04 | 2027-09-06 | RB2-SS-3rd.100 | Barbender [70 h]; Helper [40 h]; Physical Progress [1420 h]; Reinforcement Steel [1 MT1]; TATA Projects Ltd-25 | 96,512.5 |
| RB2-SS-3rd.130 |  | MEP coordination upto Flight 1 | 1d | 2027-09-06 | 2027-09-07 | RB2-SS-3rd.115 | Physical Progress [1410 h]; TATA Projects Ltd-25 |  |
| RB2-SS-3rd.140 |  | Casting of Staircase upto Flight 1 | 1d | 2027-09-07 | 2027-09-09 | RB2-SS-3rd.130 | Mason; Helper; Physical Progress [1410 h]; Concrete M40 [3 m3]; TATA Projects Ltd-25 | 29,601 |
| RB2-SS-3rd.155 |  | Reinforcement of wall upto Flight 2 | 2d | 2027-09-09 | 2027-09-11 | RB2-SS-3rd.140 | Barbender [70 h]; Helper [40 h]; Physical Progress [2820 h]; Reinforcement Steel [1 MT1]; TATA Projects Ltd-25 | 96,512.5 |
| RB2-SS-3rd.170 |  | Shuttering of wall upto Flight 2 | 2d | 2027-09-11 | 2027-09-14 | RB2-SS-3rd.155 | Carpenter [20 h]; Helper [10 h]; Physical Progress [2820 h]; Formwork [10 Sq m]; TATA Projects Ltd-25 | 11,651.6 |
| RB2-SS-3rd.185 |  | Casting of wall upto Flight 2 | 1d | 2027-09-14 | 2027-09-16 | RB2-SS-3rd.170 | Mason; Helper; Physical Progress [1410 h]; Concrete M40 [3 m3]; TATA Projects Ltd-25 | 29,601 |
| RB2-SS-3rd.200 |  | Shuttering of Staircase upto Flight 2 | 1d | 2027-09-16 | 2027-09-17 | RB2-SS-3rd.185 | Carpenter [20 h]; Helper [10 h]; Physical Progress [1410 h]; Formwork [10 Sq m]; TATA Projects Ltd-25 | 11,651.6 |
| RB2-SS-3rd.210 |  | Reinforcement of Staircase upto Flight 2 | 1d | 2027-09-17 | 2027-09-18 | RB2-SS-3rd.200 | Barbender [70 h]; Helper [40 h]; Physical Progress [1410 h]; Reinforcement Steel [1 MT1]; TATA Projects Ltd-25 | 96,512.5 |
|  | 4 | **Staircase - 2** |  | 2027-08-25 | 2027-09-18 |  |  |  |
| RB2-SS-3rd.55 |  | Reinforcement of wall upto Flight 1 | 2d | 2027-08-25 | 2027-08-28 | RB2-SS-2nd.235 | Barbender [70 h]; Helper [40 h]; Physical Progress [2820 h]; Reinforcement Steel [1 MT1]; TATA Projects Ltd-25 | 96,512.5 |
| RB2-SS-3rd.65 |  | Shuttering of wall upto Flight 1 | 2d | 2027-08-28 | 2027-09-02 | RB2-SS-3rd.55 | Carpenter [20 h]; Helper [10 h]; Physical Progress [2820 h]; Formwork [10 Sq m]; TATA Projects Ltd-25 | 11,651.6 |
| RB2-SS-3rd.85 |  | Casting of wall upto Flight 1 | 1d | 2027-09-02 | 2027-09-03 | RB2-SS-3rd.65 | Mason; Helper; Physical Progress [1410 h]; Concrete M40 [3 m3]; TATA Projects Ltd-25 | 29,601 |
| RB2-SS-3rd.105 |  | Shuttering of Staircase upto Flight 1 | 1d | 2027-09-03 | 2027-09-04 | RB2-SS-3rd.85 | Carpenter [20 h]; Helper [10 h]; Physical Progress [1410 h]; Formwork [10 Sq m]; TATA Projects Ltd-25 | 11,651.6 |
| RB2-SS-3rd.120 |  | Reinforcement of Staircase upto Flight 1 | 1d | 2027-09-04 | 2027-09-06 | RB2-SS-3rd.105 | Barbender [70 h]; Helper [40 h]; Physical Progress [1410 h]; Reinforcement Steel [1 MT1]; TATA Projects Ltd-25 | 96,512.5 |
| RB2-SS-3rd.135 |  | MEP coordination upto Flight 1 | 1d | 2027-09-06 | 2027-09-07 | RB2-SS-3rd.120 | Physical Progress [1410 h]; TATA Projects Ltd-25 |  |
| RB2-SS-3rd.145 |  | Casting of Staircase upto Flight 1 | 1d | 2027-09-07 | 2027-09-09 | RB2-SS-3rd.135 | Mason; Helper; Physical Progress [1410 h]; Concrete M40 [3 m3]; TATA Projects Ltd-25 | 29,601 |
| RB2-SS-3rd.160 |  | Reinforcement of wall upto Flight 2 | 2d | 2027-09-09 | 2027-09-11 | RB2-SS-3rd.145 | Barbender [70 h]; Helper [40 h]; Physical Progress [2820 h]; Reinforcement Steel [1 MT1]; TATA Projects Ltd-25 | 96,512.5 |
| RB2-SS-3rd.175 |  | Shuttering of wall upto Flight 2 | 2d | 2027-09-11 | 2027-09-14 | RB2-SS-3rd.160 | Carpenter [20 h]; Helper [10 h]; Physical Progress [2820 h]; Formwork [10 Sq m]; TATA Projects Ltd-25 | 11,651.6 |
| RB2-SS-3rd.190 |  | Casting of wall upto Flight 2 | 1d | 2027-09-14 | 2027-09-16 | RB2-SS-3rd.175 | Mason; Helper; Physical Progress [1410 h]; Concrete M40 [3 m3]; TATA Projects Ltd-25 | 29,601 |
| RB2-SS-3rd.205 |  | Shuttering of Staircase upto Flight 2 | 1d | 2027-09-16 | 2027-09-17 | RB2-SS-3rd.190 | Carpenter [20 h]; Helper [10 h]; Physical Progress [1410 h]; Formwork [10 Sq m]; TATA Projects Ltd-25 | 11,651.6 |
| RB2-SS-3rd.215 |  | Reinforcement of Staircase upto Flight 2 | 1d | 2027-09-17 | 2027-09-18 | RB2-SS-3rd.205 | Barbender [70 h]; Helper [40 h]; Physical Progress [1410 h]; Reinforcement Steel [1 MT1]; TATA Projects Ltd-25 | 96,512.5 |

| ID | WBS | Activity | Duration | Start | Finish | Predecessors | Resources | Cost |
| --- | --- | --- | --- | --- | --- | --- | --- | --- |
|  | 2 | **Slab** |  | 2027-09-10 | 2027-10-15 |  |  |  |
| RB2-SS-3rd.165 |  | Shuttering | 4d | 2027-09-10 | 2027-09-16 | RB2-SS-3rd.150 | Carpenter [4580 h]; Helper [2290 h]; Physical Progress [5650 h]; Formwork [2745 Sq m]; TATA Projects Ltd-25 | 3,198,364.2 |
| RB2-SS-3rd.195 |  | Reinforcement Bottom Net with chairs | 3d | 2027-09-16 | 2027-09-20 | RB2-SS-3rd.165 | Barbender [1670 h]; Helper [840 h]; Physical Progress [4240 h]; Reinforcement Steel [25 MT1]; TATA Projects Ltd-25 | 2,412,812.5 |
| RB2-SS-3rd.220 |  | Laying of PT Tendon | 3d | 2027-09-20 | 2027-09-24 | RB2-SS-3rd.195 | Physical Progress [5650 h]; TATA Projects Ltd-25 |  |
| RB2-SS-3rd.225 |  | Reinforcement Top Net | 2d | 2027-09-24 | 2027-09-27 | RB2-SS-3rd.220 | Barbender [1670 h]; Helper [840 h]; Physical Progress [2820 h]; Reinforcement Steel [25 MT1]; TATA Projects Ltd-25 | 2,412,812.5 |
| RB2-SS-3rd.230 |  | MEP Coordination | 1d | 2027-09-27 | 2027-09-28 | RB2-SS-3rd.195, RB2-SS-3rd.210, RB2-SS-3rd.225, RB2-SS-3rd.215 | Physical Progress [1420 h]; TATA Projects Ltd-25 |  |
| RB2-SS-3rd.235 |  | Concrete of Slab | 1d | 2027-09-28 | 2027-09-30 | RB2-SS-3rd.230 | Mason [50 h]; Helper [50 h]; Physical Progress [1420 h]; Concrete M40 [665 m3]; TATA Projects Ltd-25 | 6,561,555 |
| RB2-SS-3rd.240 |  | Wait for Strength Gain | 6d | 2027-09-30 | 2027-10-08 | RB2-SS-3rd.235 | Physical Progress [8470 h]; TATA Projects Ltd-25 |  |
| RB2-SS-3rd.245 |  | PT Work | 5d | 2027-10-08 | 2027-10-15 | RB2-SS-3rd.240, RB2-SS-2nd.245 | PT [11 MT1]; Helper [100 h]; PT Fitter [100 h]; Physical Progress [7060 h]; TATA Projects Ltd-25 | 2,090,000 |
|  | 4 | **Pour 3** |  | 2027-08-06 | 2027-10-01 |  |  |  |
|  | 1 | **Column, Core Wall, Shear Wall** |  | 2027-08-06 | 2027-08-23 |  |  |  |
| RB2-SS-3rd.250 |  | Reinforcement | 4d | 2027-08-06 | 2027-08-13 | RB2-SS-2nd.380 | Barbender [5270 h]; Helper [2640 h]; Physical Progress [5650 h]; Reinforcement Steel [79 MT1]; TATA Projects Ltd-25 | 7,624,487.5 |
| RB2-SS-3rd.265 |  | LPS | 1d | 2027-08-13 | 2027-08-14 | RB2-SS-3rd.250 | LPS [36849 INR]; Physical Progress [1410 h]; TATA Projects Ltd-25 | 36,849 |
| RB2-SS-3rd.275 |  | Shuttering | 4d | 2027-08-14 | 2027-08-21 | RB2-SS-3rd.250, RB2-SS-3rd.265 | Carpenter [2480 h]; Helper [1240 h]; Physical Progress [5650 h]; Formwork [1486 Sq m]; TATA Projects Ltd-25 | 1,731,427.76 |
| RB2-SS-3rd.300 |  | Concrete | 1d | 2027-08-21 | 2027-08-23 | RB2-SS-3rd.275 | Mason [50 h]; Helper [50 h]; Physical Progress [1410 h]; Concrete M40 [372 m3]; TATA Projects Ltd-25 | 3,670,524 |
|  | 3 | **Staircase** |  | 2027-08-06 | 2027-09-03 |  |  |  |
| RB2-SS-3rd.255 |  | Reinforcement of wall upto Flight 1 | 2d | 2027-08-06 | 2027-08-09 | RB2-SS-2nd.380 | Barbender [70 h]; Helper [40 h]; Physical Progress [2820 h]; Reinforcement Steel [1 MT1]; TATA Projects Ltd-25 | 96,512.5 |
| RB2-SS-3rd.260 |  | Shuttering of wall upto Flight 1 | 2d | 2027-08-09 | 2027-08-13 | RB2-SS-3rd.255 | Carpenter [20 h]; Helper [10 h]; Physical Progress [2820 h]; Formwork [10 Sq m]; TATA Projects Ltd-25 | 11,651.6 |
| RB2-SS-3rd.270 |  | Casting of wall upto Flight 1 | 1d | 2027-08-13 | 2027-08-14 | RB2-SS-3rd.260 | Mason; Helper; Physical Progress [1410 h]; Concrete M40 [3 m3]; TATA Projects Ltd-25 | 29,601 |
| RB2-SS-3rd.280 |  | Shuttering of Staircase upto Flight 1 | 1d | 2027-08-14 | 2027-08-16 | RB2-SS-3rd.270 | Carpenter [20 h]; Helper [10 h]; Physical Progress [1410 h]; Formwork [10 Sq m]; TATA Projects Ltd-25 | 11,651.6 |
| RB2-SS-3rd.285 |  | Reinforcement of Staircase upto Flight 1 | 1d | 2027-08-16 | 2027-08-18 | RB2-SS-3rd.280 | Barbender [70 h]; Helper [40 h]; Physical Progress [1410 h]; Reinforcement Steel [1 MT1]; TATA Projects Ltd-25 | 96,512.5 |
| RB2-SS-3rd.290 |  | MEP coordination upto Flight 1 | 1d | 2027-08-18 | 2027-08-20 | RB2-SS-3rd.285 | Physical Progress [1410 h]; TATA Projects Ltd-25 |  |
| RB2-SS-3rd.295 |  | Casting of Staircase upto Flight 1 | 1d | 2027-08-20 | 2027-08-21 | RB2-SS-3rd.290 | Mason; Helper; Physical Progress [1410 h]; Concrete M40 [3 m3]; TATA Projects Ltd-25 | 29,601 |
| RB2-SS-3rd.305 |  | Reinforcement of wall upto Flight 2 | 2d | 2027-08-21 | 2027-08-25 | RB2-SS-3rd.295 | Barbender [70 h]; Helper [40 h]; Physical Progress [2820 h]; Reinforcement Steel [1 MT1]; TATA Projects Ltd-25 | 96,512.5 |
| RB2-SS-3rd.315 |  | Shuttering of wall upto Flight 2 | 2d | 2027-08-25 | 2027-08-28 | RB2-SS-3rd.305 | Carpenter [20 h]; Helper [10 h]; Physical Progress [2820 h]; Formwork [10 Sq m]; TATA Projects Ltd-25 | 11,651.6 |
| RB2-SS-3rd.320 |  | Casting of wall upto Flight 2 | 1d | 2027-08-28 | 2027-08-30 | RB2-SS-3rd.315 | Mason; Helper; Physical Progress [1410 h]; Concrete M40 [3 m3]; TATA Projects Ltd-25 | 29,601 |
| RB2-SS-3rd.330 |  | Shuttering of Staircase upto Flight 2 | 1d | 2027-08-30 | 2027-09-02 | RB2-SS-3rd.320 | Carpenter [20 h]; Helper [10 h]; Physical Progress [1410 h]; Formwork [10 Sq m]; TATA Projects Ltd-25 | 11,651.6 |
| RB2-SS-3rd.335 |  | Reinforcement of Staircase upto Flight 2 | 1d | 2027-09-02 | 2027-09-03 | RB2-SS-3rd.330 | Barbender [70 h]; Helper [40 h]; Physical Progress [1410 h]; Reinforcement Steel [1 MT1]; TATA Projects Ltd-25 | 96,512.5 |

| ID | WBS | Activity | Duration | Start | Finish | Predecessors | Resources | Cost |
| --- | --- | --- | --- | --- | --- | --- | --- | --- |
|  | 2 | **Slab** |  | 2027-08-23 | 2027-10-01 |  |  |  |
| RB2-SS-3rd.310 |  | Shuttering | 4d | 2027-08-23 | 2027-08-30 | RB2-SS-3rd.300 | Carpenter [5380 h]; Helper [2690 h]; Physical Progress [5650 h]; Formwork [3224 Sq m]; TATA Projects Ltd-25 | 3,756,475.84 |
| RB2-SS-3rd.325 |  | Reinforcement Bottom Net with chairs | 3d | 2027-08-30 | 2027-09-04 | RB2-SS-3rd.310 | Barbender [1940 h]; Helper [970 h]; Physical Progress [4240 h]; Reinforcement Steel [29 MT1]; TATA Projects Ltd-25 | 2,798,862.5 |
| RB2-SS-3rd.340 |  | Laying of PT Tendon | 4d | 2027-09-04 | 2027-09-10 | RB2-SS-3rd.325 | Physical Progress [5650 h]; TATA Projects Ltd-25 |  |
| RB2-SS-3rd.355 |  | Reinforcement Top Net | 2d | 2027-09-10 | 2027-09-13 | RB2-SS-3rd.340 | Barbender [1940 h]; Helper [970 h]; Physical Progress [2820 h]; Reinforcement Steel [29 MT1]; TATA Projects Ltd-25 | 2,798,862.5 |
| RB2-SS-3rd.365 |  | MEP Coordination | 1d | 2027-09-13 | 2027-09-14 | RB2-SS-3rd.325, RB2-SS-3rd.355, RB2-SS-3rd.335 | Physical Progress [1410 h]; TATA Projects Ltd-25 |  |
| RB2-SS-3rd.380 |  | Concrete of Slab | 1d | 2027-09-14 | 2027-09-16 | RB2-SS-3rd.365 | Mason [50 h]; Helper [50 h]; Physical Progress [1410 h]; Concrete M40 [781 m3]; TATA Projects Ltd-25 | 7,706,127 |
| RB2-SS-3rd.395 |  | Wait for Strength Gain | 6d | 2027-09-16 | 2027-09-24 | RB2-SS-3rd.380 | Physical Progress [8470 h]; TATA Projects Ltd-25 |  |
| RB2-SS-3rd.445 |  | PT Work | 5d | 2027-09-24 | 2027-10-01 | RB2-SS-3rd.395, RB2-SS-2nd.440 | PT [13 MT1]; Helper [100 h]; PT Fitter [100 h]; Physical Progress [7060 h]; TATA Projects Ltd-25 | 2,470,000 |
|  | 3 | **Pour 4** |  | 2027-08-21 | 2027-10-14 |  |  |  |
|  | 1 | **Column, Core Wall, Shear Wall** |  | 2027-08-21 | 2027-09-07 |  |  |  |
| RB2-SS-3rd.345 |  | Reinforcement | 4d | 2027-08-21 | 2027-08-28 | RB2-SS-2nd.505 | Barbender [6600 h]; Helper [3300 h]; Physical Progress [5650 h]; Reinforcement Steel [99 MT1]; TATA Projects Ltd-25 | 9,554,737.5 |
| RB2-SS-3rd.370 |  | LPS | 1d | 2027-08-28 | 2027-08-30 | RB2-SS-3rd.345 | LPS [36849 INR]; Physical Progress [1410 h]; TATA Projects Ltd-25 | 36,849 |
| RB2-SS-3rd.385 |  | Shuttering | 4d | 2027-08-30 | 2027-09-06 | RB2-SS-3rd.345, RB2-SS-3rd.370 | Carpenter [3120 h]; Helper [1560 h]; Physical Progress [5650 h]; Formwork [1870 Sq m]; TATA Projects Ltd-25 | 2,178,849.2 |
| RB2-SS-3rd.420 |  | Concrete | 1d | 2027-09-06 | 2027-09-07 | RB2-SS-3rd.385 | Mason [50 h]; Helper [50 h]; Physical Progress [1410 h]; Concrete M40 [467 m3]; TATA Projects Ltd-25 | 4,607,889 |
|  | 4 | **Staircase** |  | 2027-08-21 | 2027-09-16 |  |  |  |
| RB2-SS-3rd.350 |  | Reinforcement of wall upto Flight 1 | 2d | 2027-08-21 | 2027-08-25 | RB2-SS-2nd.505 | Barbender [70 h]; Helper [40 h]; Physical Progress [2820 h]; Reinforcement Steel [1 MT1]; TATA Projects Ltd-25 | 96,512.5 |
| RB2-SS-3rd.360 |  | Shuttering of wall upto Flight 1 | 2d | 2027-08-25 | 2027-08-28 | RB2-SS-3rd.350 | Carpenter [20 h]; Helper [10 h]; Physical Progress [2820 h]; Formwork [10 Sq m]; TATA Projects Ltd-25 | 11,651.6 |
| RB2-SS-3rd.375 |  | Casting of wall upto Flight 1 | 1d | 2027-08-28 | 2027-08-30 | RB2-SS-3rd.360 | Mason; Helper; Physical Progress [1410 h]; Concrete M40 [3 m3]; TATA Projects Ltd-25 | 29,601 |
| RB2-SS-3rd.390 |  | Shuttering of Staircase upto Flight 1 | 1d | 2027-08-30 | 2027-09-02 | RB2-SS-3rd.375 | Carpenter [20 h]; Helper [10 h]; Physical Progress [1410 h]; Formwork [10 Sq m]; TATA Projects Ltd-25 | 11,651.6 |
| RB2-SS-3rd.400 |  | Reinforcement of Staircase upto Flight 1 | 1d | 2027-09-02 | 2027-09-03 | RB2-SS-3rd.390 | Barbender [70 h]; Helper [40 h]; Physical Progress [1410 h]; Reinforcement Steel [1 MT1]; TATA Projects Ltd-25 | 96,512.5 |
| RB2-SS-3rd.405 |  | MEP coordination upto Flight 1 | 1d | 2027-09-03 | 2027-09-04 | RB2-SS-3rd.400 | Physical Progress [1410 h]; TATA Projects Ltd-25 |  |
| RB2-SS-3rd.415 |  | Casting of Staircase upto Flight 1 | 1d | 2027-09-04 | 2027-09-06 | RB2-SS-3rd.405 | Mason; Helper; Physical Progress [1410 h]; Concrete M40 [3 m3]; TATA Projects Ltd-25 | 29,601 |
| RB2-SS-3rd.425 |  | Reinforcement of wall upto Flight 2 | 2d | 2027-09-06 | 2027-09-09 | RB2-SS-3rd.415 | Barbender [70 h]; Helper [40 h]; Physical Progress [2820 h]; Reinforcement Steel [1 MT1]; TATA Projects Ltd-25 | 96,512.5 |
| RB2-SS-3rd.440 |  | Shuttering of wall upto Flight 2 | 2d | 2027-09-09 | 2027-09-11 | RB2-SS-3rd.425 | Carpenter [20 h]; Helper [10 h]; Physical Progress [2820 h]; Formwork [10 Sq m]; TATA Projects Ltd-25 | 11,651.6 |
| RB2-SS-3rd.455 |  | Casting of wall upto Flight 2 | 1d | 2027-09-11 | 2027-09-13 | RB2-SS-3rd.440 | Mason; Helper; Physical Progress [1410 h]; Concrete M40 [3 m3]; TATA Projects Ltd-25 | 29,601 |
| RB2-SS-3rd.465 |  | Shuttering of Staircase upto Flight 2 | 1d | 2027-09-13 | 2027-09-14 | RB2-SS-3rd.455 | Carpenter [20 h]; Helper [10 h]; Physical Progress [1410 h]; Formwork [10 Sq m]; TATA Projects Ltd-25 | 11,651.6 |
| RB2-SS-3rd.475 |  | Reinforcement of Staircase upto Flight 2 | 1d | 2027-09-14 | 2027-09-16 | RB2-SS-3rd.465 | Barbender [70 h]; Helper [40 h]; Physical Progress [1410 h]; Reinforcement Steel [1 MT1]; TATA Projects Ltd-25 | 96,512.5 |

| ID | WBS | Activity | Duration | Start | Finish | Predecessors | Resources | Cost |
| --- | --- | --- | --- | --- | --- | --- | --- | --- |
|  | 2 | **Slab** |  | 2027-09-07 | 2027-10-14 |  |  |  |
| RB2-SS-3rd.430 |  | Shuttering | 4d | 2027-09-07 | 2027-09-13 | RB2-SS-3rd.420 | Carpenter [6760 h]; Helper [3380 h]; Physical Progress [5650 h]; Formwork [4056 Sq m]; TATA Projects Ltd-25 | 4,725,888.96 |
| RB2-SS-3rd.460 |  | Reinforcement Bottom Net with chairs | 3d | 2027-09-13 | 2027-09-17 | RB2-SS-3rd.430 | Barbender [2470 h]; Helper [1240 h]; Physical Progress [4240 h]; Reinforcement Steel [37 MT1]; TATA Projects Ltd-25 | 3,570,962.5 |
| RB2-SS-3rd.485 |  | Laying of PT Tendon | 4d | 2027-09-17 | 2027-09-23 | RB2-SS-3rd.460 | Physical Progress [5650 h]; TATA Projects Ltd-25 |  |
| RB2-SS-3rd.495 |  | Reinforcement Top Net | 2d | 2027-09-23 | 2027-09-25 | RB2-SS-3rd.485 | Barbender [2470 h]; Helper [1240 h]; Physical Progress [2820 h]; Reinforcement Steel [37 MT1]; TATA Projects Ltd-25 | 3,570,962.5 |
| RB2-SS-3rd.500 |  | MEP Coordination | 1d | 2027-09-25 | 2027-09-27 | RB2-SS-3rd.460, RB2-SS-3rd.495, RB2-SS-3rd.475 | Physical Progress [1410 h]; TATA Projects Ltd-25 |  |
| RB2-SS-3rd.510 |  | Concrete of Slab | 1d | 2027-09-27 | 2027-09-28 | RB2-SS-3rd.500 | Mason [50 h]; Helper [50 h]; Physical Progress [1410 h]; Concrete M40 [982 m3]; TATA Projects Ltd-25 | 9,689,394 |
| RB2-SS-3rd.515 |  | Wait for Strength Gain | 6d | 2027-09-28 | 2027-10-07 | RB2-SS-3rd.510 | Physical Progress [8470 h]; TATA Projects Ltd-25 |  |
| RB2-SS-3rd.535 |  | PT Work | 5d | 2027-10-07 | 2027-10-14 | RB2-SS-3rd.515 | PT [17 MT1]; Helper [100 h]; PT Fitter [100 h]; Physical Progress [7060 h]; TATA Projects Ltd-25 | 3,230,000 |
|  | 5 | **Pour 5** |  | 2027-08-21 | 2027-10-11 |  |  |  |
|  | 1 | **Column** |  | 2027-08-21 | 2027-09-04 |  |  |  |
| RB2-SS-3rd.410 |  | Reinforcement | 3d | 2027-08-21 | 2027-08-27 | RB2-SS-2nd.535 | Barbender [4200 h]; Helper [2100 h]; Physical Progress [4240 h]; Reinforcement Steel [63 MT1]; TATA Projects Ltd-25 | 6,080,287.5 |
| RB2-SS-3rd.435 |  | LPS | 1d | 2027-08-27 | 2027-08-28 | RB2-SS-3rd.410 | LPS [36849 INR]; Physical Progress [1410 h]; TATA Projects Ltd-25 | 36,849 |
| RB2-SS-3rd.450 |  | Shuttering | 3d | 2027-08-28 | 2027-09-03 | RB2-SS-3rd.410, RB2-SS-3rd.435 | Carpenter [1980 h]; Helper [990 h]; Physical Progress [4240 h]; Formwork [1187 Sq m]; TATA Projects Ltd-25 | 1,383,044.92 |
| RB2-SS-3rd.470 |  | Concrete | 1d | 2027-09-03 | 2027-09-04 | RB2-SS-3rd.450 | Mason [50 h]; Helper [50 h]; Physical Progress [1410 h]; Concrete M40 [297 m3]; TATA Projects Ltd-25 | 2,930,499 |
|  | 2 | **Slab** |  | 2027-09-04 | 2027-10-11 |  |  |  |
| RB2-SS-3rd.480 |  | Shuttering | 4d | 2027-09-04 | 2027-09-10 | RB2-SS-3rd.470 | Carpenter [4290 h]; Helper [2150 h]; Physical Progress [5650 h]; Formwork [2574 Sq m]; TATA Projects Ltd-25 | 2,999,121.84 |
| RB2-SS-3rd.490 |  | Reinforcement Bottom Net with chairs | 3d | 2027-09-10 | 2027-09-14 | RB2-SS-3rd.480 | Barbender [1540 h]; Helper [770 h]; Physical Progress [4240 h]; Reinforcement Steel [23 MT1]; TATA Projects Ltd-25 | 2,219,787.5 |
| RB2-SS-3rd.505 |  | Laying of PT Tendon | 3d | 2027-09-14 | 2027-09-18 | RB2-SS-3rd.490 | Physical Progress [5650 h]; TATA Projects Ltd-25 |  |
| RB2-SS-3rd.520 |  | Reinforcement Top Net | 2d | 2027-09-18 | 2027-09-21 | RB2-SS-3rd.505 | Barbender [1540 h]; Helper [770 h]; Physical Progress [2820 h]; Reinforcement Steel [23 MT1]; TATA Projects Ltd-25 | 2,219,787.5 |
| RB2-SS-3rd.525 |  | MEP Coordination | 1d | 2027-09-21 | 2027-09-23 | RB2-SS-3rd.490, RB2-SS-3rd.520 | Physical Progress [1410 h]; TATA Projects Ltd-25 |  |
| RB2-SS-3rd.530 |  | Concrete of Slab | 1d | 2027-09-23 | 2027-09-24 | RB2-SS-3rd.525 | Mason [50 h]; Helper [50 h]; Physical Progress [1410 h]; Concrete M40 [623 m3]; TATA Projects Ltd-25 | 6,147,141 |
| RB2-SS-3rd.540 |  | Wait for Strength Gain | 6d | 2027-09-24 | 2027-10-04 | RB2-SS-3rd.530 | Physical Progress [8470 h]; TATA Projects Ltd-25 |  |
| RB2-SS-3rd.545 |  | PT Work | 5d | 2027-10-04 | 2027-10-11 | RB2-SS-3rd.540, RB2-SS-2nd.545 | PT [11 MT1]; Helper [100 h]; PT Fitter [100 h]; Physical Progress [7060 h]; TATA Projects Ltd-25 | 2,090,000 |

| ID | WBS | Activity | Duration | Start | Finish | Predecessors | Resources | Cost |
| --- | --- | --- | --- | --- | --- | --- | --- | --- |
|  | 5 | **Fourth Floor** |  | 2027-09-16 | 2027-11-15 |  |  |  |
|  | 1 | **Pour 1** |  | 2027-10-05 | 2027-11-15 |  |  |  |
|  | 1 | **Column** |  | 2027-10-05 | 2027-10-14 |  |  |  |
| RB2-SS-4th.10 |  | Reinforcement | 3d | 2027-10-05 | 2027-10-07 | RB2-SS-3rd.110, E-GFC-ST-RB2-235 | Barbender [3670 h]; Helper [1840 h]; Physical Progress [4240 h]; Reinforcement Steel [55 MT1]; TATA Projects Ltd-25 | 5,308,187.5 |
| RB2-SS-4th.15 |  | LPS | 1d | 2027-10-08 | 2027-10-08 | RB2-SS-4th.10 | LPS [36849 INR]; Physical Progress [1410 h]; TATA Projects Ltd-25 | 36,849 |
| RB2-SS-4th.20 |  | Shuttering | 3d | 2027-10-11 | 2027-10-13 | RB2-SS-4th.10, RB2-SS-4th.15 | Carpenter [1660 h]; Helper [830 h]; Physical Progress [4240 h]; Formwork [991 Sq m]; TATA Projects Ltd-25 | 1,154,673.56 |
| RB2-SS-4th.25 |  | Concrete | 1d | 2027-10-14 | 2027-10-14 | RB2-SS-4th.20 | Mason [50 h]; Helper [50 h]; Physical Progress [1410 h]; Concrete M40 [248 m3]; TATA Projects Ltd-25 | 2,447,016 |
|  | 2 | **Slab** |  | 2027-10-15 | 2027-11-15 |  |  |  |
| RB2-SS-4th.30 |  | Shuttering | 4d | 2027-10-15 | 2027-10-19 | RB2-SS-4th.25 | Carpenter [3330 h]; Helper [1670 h]; Physical Progress [5650 h]; Formwork [1995 Sq m]; TATA Projects Ltd-25 | 2,324,494.2 |
| RB2-SS-4th.35 |  | Reinforcement Bottom Net with chairs | 3d | 2027-10-20 | 2027-10-22 | RB2-SS-4th.30 | Barbender [1270 h]; Helper [640 h]; Physical Progress [4240 h]; Reinforcement Steel [19 MT1]; TATA Projects Ltd-25 | 1,833,737.5 |
| RB2-SS-4th.40 |  | Laying of PT Tendon | 4d | 2027-10-23 | 2027-10-27 | RB2-SS-4th.35, E-ShopD-Civil-PT-RB2-25 | Physical Progress [5650 h]; TATA Projects Ltd-25 |  |
| RB2-SS-4th.60 |  | Reinforcement Top Net | 2d | 2027-10-28 | 2027-10-30 | RB2-SS-4th.40 | Barbender [1270 h]; Helper [640 h]; Physical Progress [2820 h]; Reinforcement Steel [19 MT1]; TATA Projects Ltd-25 | 1,833,737.5 |
| RB2-SS-4th.75 |  | MEP Coordination | 1d | 2027-11-01 | 2027-11-01 | RB2-SS-4th.35, RB2-SS-4th.60 | Physical Progress [1410 h]; TATA Projects Ltd-25 |  |
| RB2-SS-4th.80 |  | Concrete of Slab | 1d | 2027-11-02 | 2027-11-02 | RB2-SS-4th.75 | Mason [50 h]; Helper [50 h]; Physical Progress [1410 h]; Concrete M40 [499 m3]; TATA Projects Ltd-25 | 4,923,633 |
| RB2-SS-4th.100 |  | Wait for Strength Gain | 6d | 2027-11-03 | 2027-11-09 | RB2-SS-4th.80 | Physical Progress [8470 h]; TATA Projects Ltd-25 |  |
| RB2-SS-4th.170 |  | PT Work | 5d | 2027-11-10 | 2027-11-15 | RB2-SS-4th.100, RB2-SS-3rd.180 | PT [7 MT1]; Helper [100 h]; PT Fitter [100 h]; Physical Progress [7060 h]; TATA Projects Ltd-25 | 1,330,000 |
|  | 2 | **Pour 2** |  | 2027-09-30 | 2027-11-13 |  |  |  |
|  | 1 | **Column, Core Wall, Shear Wall** |  | 2027-09-30 | 2027-10-14 |  |  |  |
| RB2-SS-4th.45 |  | Reinforcement | 4d | 2027-09-30 | 2027-10-06 | RB2-SS-3rd.235 | Barbender [3600 h]; Helper [1800 h]; Physical Progress [5650 h]; Reinforcement Steel [54 MT1]; TATA Projects Ltd-25 | 5,211,675 |
| RB2-SS-4th.85 |  | LPS | 1d | 2027-10-06 | 2027-10-07 | RB2-SS-4th.45 | LPS [36849 INR]; Physical Progress [1410 h]; TATA Projects Ltd-25 | 36,849 |
| RB2-SS-4th.105 |  | Shuttering | 4d | 2027-10-07 | 2027-10-13 | RB2-SS-4th.45, RB2-SS-4th.85 | Carpenter [1630 h]; Helper [820 h]; Physical Progress [5650 h]; Formwork [973 Sq m]; TATA Projects Ltd-25 | 1,133,700.68 |
| RB2-SS-4th.150 |  | Concrete | 1d | 2027-10-13 | 2027-10-14 | RB2-SS-4th.105 | Mason [50 h]; Helper [50 h]; Physical Progress [1410 h]; Concrete M40 [243 m3]; TATA Projects Ltd-25 | 2,397,681 |
|  | 3 | **Staircase - 1** |  | 2027-09-30 | 2027-10-21 |  |  |  |
| RB2-SS-4th.50 |  | Reinforcement of wall upto Flight 1 | 2d | 2027-09-30 | 2027-10-04 | RB2-SS-3rd.235 | Barbender [70 h]; Helper [40 h]; Physical Progress [2820 h]; Reinforcement Steel [1 MT1]; TATA Projects Ltd-25 | 96,512.5 |
| RB2-SS-4th.65 |  | Shuttering of wall upto Flight 1 | 2d | 2027-10-04 | 2027-10-06 | RB2-SS-4th.50 | Carpenter [20 h]; Helper [10 h]; Physical Progress [2820 h]; Formwork [10 Sq m]; TATA Projects Ltd-25 | 11,651.6 |
| RB2-SS-4th.90 |  | Casting of wall upto Flight 1 | 1d | 2027-10-06 | 2027-10-07 | RB2-SS-4th.65 | Mason; Helper; Physical Progress [1410 h]; Concrete M40 [3 m3]; TATA Projects Ltd-25 | 29,601 |
| RB2-SS-4th.110 |  | Shuttering of Staircase upto Flight 1 | 1d | 2027-10-07 | 2027-10-08 | RB2-SS-4th.90 | Carpenter [20 h]; Helper [10 h]; Physical Progress [1410 h]; Formwork [10 Sq m]; TATA Projects Ltd-25 | 11,651.6 |
| RB2-SS-4th.120 |  | Reinforcement of Staircase upto Flight 1 | 1d | 2027-10-08 | 2027-10-11 | RB2-SS-4th.110 | Barbender [70 h]; Helper [40 h]; Physical Progress [1410 h]; Reinforcement Steel [1 MT1]; TATA Projects Ltd-25 | 96,512.5 |
| RB2-SS-4th.130 |  | MEP coordination upto Flight 1 | 1d | 2027-10-11 | 2027-10-12 | RB2-SS-4th.120 | Physical Progress [1410 h]; TATA Projects Ltd-25 |  |
| RB2-SS-4th.140 |  | Casting of Staircase upto Flight 1 | 1d | 2027-10-12 | 2027-10-13 | RB2-SS-4th.130 | Mason; Helper; Physical Progress [1410 h]; Concrete M40 [3 m3]; TATA Projects Ltd-25 | 29,601 |
| RB2-SS-4th.155 |  | Reinforcement of wall upto Flight 2 | 2d | 2027-10-13 | 2027-10-15 | RB2-SS-4th.140 | Barbender [70 h]; Helper [40 h]; Physical Progress [2820 h]; Reinforcement Steel [1 MT1]; TATA Projects Ltd-25 | 96,512.5 |
| RB2-SS-4th.175 |  | Shuttering of wall upto Flight 2 | 2d | 2027-10-15 | 2027-10-18 | RB2-SS-4th.155 | Carpenter [20 h]; Helper [10 h]; Physical Progress [2820 h]; Formwork [10 Sq m]; TATA Projects Ltd-25 | 11,651.6 |
| RB2-SS-4th.185 |  | Casting of wall upto Flight 2 | 1d | 2027-10-18 | 2027-10-19 | RB2-SS-4th.175 | Mason; Helper; Physical Progress [1410 h]; Concrete M40 [3 m3]; TATA Projects Ltd-25 | 29,601 |
| RB2-SS-4th.200 |  | Shuttering of Staircase upto Flight 2 | 1d | 2027-10-19 | 2027-10-20 | RB2-SS-4th.185 | Carpenter [20 h]; Helper [10 h]; Physical Progress [1410 h]; Formwork [10 Sq m]; TATA Projects Ltd-25 | 11,651.6 |
| RB2-SS-4th.210 |  | Reinforcement of Staircase upto Flight 2 | 1d | 2027-10-20 | 2027-10-21 | RB2-SS-4th.200 | Barbender [70 h]; Helper [40 h]; Physical Progress [1410 h]; Reinforcement Steel [1 MT1]; TATA Projects Ltd-25 | 96,512.5 |

| ID | WBS | Activity | Duration | Start | Finish | Predecessors | Resources | Cost |
| --- | --- | --- | --- | --- | --- | --- | --- | --- |
|  | 4 | **Staircase - 2** |  | 2027-09-30 | 2027-10-21 |  |  |  |
| RB2-SS-4th.55 |  | Reinforcement of wall upto Flight 1 | 2d | 2027-09-30 | 2027-10-04 | RB2-SS-3rd.235 | Barbender [70 h]; Helper [40 h]; Physical Progress [2820 h]; Reinforcement Steel [1 MT1]; TATA Projects Ltd-25 | 96,512.5 |
| RB2-SS-4th.70 |  | Shuttering of wall upto Flight 1 | 2d | 2027-10-04 | 2027-10-06 | RB2-SS-4th.55 | Carpenter [20 h]; Helper [10 h]; Physical Progress [2820 h]; Formwork [10 Sq m]; TATA Projects Ltd-25 | 11,651.6 |
| RB2-SS-4th.95 |  | Casting of wall upto Flight 1 | 1d | 2027-10-06 | 2027-10-07 | RB2-SS-4th.70 | Mason; Helper; Physical Progress [1410 h]; Concrete M40 [3 m3]; TATA Projects Ltd-25 | 29,601 |
| RB2-SS-4th.115 |  | Shuttering of Staircase upto Flight 1 | 1d | 2027-10-07 | 2027-10-08 | RB2-SS-4th.95 | Carpenter [20 h]; Helper [10 h]; Physical Progress [1410 h]; Formwork [10 Sq m]; TATA Projects Ltd-25 | 11,651.6 |
| RB2-SS-4th.125 |  | Reinforcement of Staircase upto Flight 1 | 1d | 2027-10-08 | 2027-10-11 | RB2-SS-4th.115 | Barbender [70 h]; Helper [40 h]; Physical Progress [1410 h]; Reinforcement Steel [1 MT1]; TATA Projects Ltd-25 | 96,512.5 |
| RB2-SS-4th.135 |  | MEP coordination upto Flight 1 | 1d | 2027-10-11 | 2027-10-12 | RB2-SS-4th.125 | Physical Progress [1410 h]; TATA Projects Ltd-25 |  |
| RB2-SS-4th.145 |  | Casting of Staircase upto Flight 1 | 1d | 2027-10-12 | 2027-10-13 | RB2-SS-4th.135 | Mason; Helper; Physical Progress [1410 h]; Concrete M40 [3 m3]; TATA Projects Ltd-25 | 29,601 |
| RB2-SS-4th.160 |  | Reinforcement of wall upto Flight 2 | 2d | 2027-10-13 | 2027-10-15 | RB2-SS-4th.145 | Barbender [70 h]; Helper [40 h]; Physical Progress [2820 h]; Reinforcement Steel [1 MT1]; TATA Projects Ltd-25 | 96,512.5 |
| RB2-SS-4th.180 |  | Shuttering of wall upto Flight 2 | 2d | 2027-10-15 | 2027-10-18 | RB2-SS-4th.160 | Carpenter [20 h]; Helper [10 h]; Physical Progress [2820 h]; Formwork [10 Sq m]; TATA Projects Ltd-25 | 11,651.6 |
| RB2-SS-4th.190 |  | Casting of wall upto Flight 2 | 1d | 2027-10-18 | 2027-10-19 | RB2-SS-4th.180 | Mason; Helper; Physical Progress [1410 h]; Concrete M40 [3 m3]; TATA Projects Ltd-25 | 29,601 |
| RB2-SS-4th.205 |  | Shuttering of Staircase upto Flight 2 | 1d | 2027-10-19 | 2027-10-20 | RB2-SS-4th.190 | Carpenter [20 h]; Helper [10 h]; Physical Progress [1410 h]; Formwork [10 Sq m]; TATA Projects Ltd-25 | 11,651.6 |
| RB2-SS-4th.215 |  | Reinforcement of Staircase upto Flight 2 | 1d | 2027-10-20 | 2027-10-21 | RB2-SS-4th.205 | Barbender [70 h]; Helper [40 h]; Physical Progress [1410 h]; Reinforcement Steel [1 MT1]; TATA Projects Ltd-25 | 96,512.5 |
|  | 2 | **Slab** |  | 2027-10-14 | 2027-11-13 |  |  |  |
| RB2-SS-4th.165 |  | Shuttering | 4d | 2027-10-14 | 2027-10-19 | RB2-SS-4th.150 | Carpenter [3270 h]; Helper [1640 h]; Physical Progress [5650 h]; Formwork [1959 Sq m]; TATA Projects Ltd-25 | 2,282,548.44 |
| RB2-SS-4th.195 |  | Reinforcement Bottom Net with chairs | 3d | 2027-10-19 | 2027-10-22 | RB2-SS-4th.165 | Barbender [1200 h]; Helper [600 h]; Physical Progress [4240 h]; Reinforcement Steel [18 MT1]; TATA Projects Ltd-25 | 1,737,225 |
| RB2-SS-4th.220 |  | Laying of PT Tendon | 3d | 2027-10-22 | 2027-10-26 | RB2-SS-4th.195 | Physical Progress [5650 h]; TATA Projects Ltd-25 |  |
| RB2-SS-4th.225 |  | Reinforcement Top Net | 2d | 2027-10-26 | 2027-10-28 | RB2-SS-4th.220 | Barbender [1200 h]; Helper [600 h]; Physical Progress [2820 h]; Reinforcement Steel [18 MT1]; TATA Projects Ltd-25 | 1,737,225 |
| RB2-SS-4th.230 |  | MEP Coordination | 1d | 2027-10-28 | 2027-10-30 | RB2-SS-4th.195, RB2-SS-4th.210, RB2-SS-4th.225, RB2-SS-4th.215 | Physical Progress [1410 h]; TATA Projects Ltd-25 |  |
| RB2-SS-4th.235 |  | Concrete of Slab | 1d | 2027-10-30 | 2027-11-01 | RB2-SS-4th.230 | Mason [50 h]; Helper [50 h]; Physical Progress [1410 h]; Concrete M40 [490 m3]; TATA Projects Ltd-25 | 4,834,830 |
| RB2-SS-4th.240 |  | Wait for Strength Gain | 6d | 2027-11-01 | 2027-11-08 | RB2-SS-4th.235 | Physical Progress [8470 h]; TATA Projects Ltd-25 |  |
| RB2-SS-4th.245 |  | PT Work | 5d | 2027-11-08 | 2027-11-13 | RB2-SS-4th.240, RB2-SS-3rd.245 | PT [7 MT1]; Helper [100 h]; PT Fitter [100 h]; Physical Progress [7060 h]; TATA Projects Ltd-25 | 1,330,000 |
|  | 4 | **Pour 3** |  | 2027-09-16 | 2027-11-03 |  |  |  |
|  | 1 | **Column, Core Wall, Shear Wall** |  | 2027-09-16 | 2027-09-30 |  |  |  |
| RB2-SS-4th.250 |  | Reinforcement | 4d | 2027-09-16 | 2027-09-21 | RB2-SS-3rd.380 | Barbender [4200 h]; Helper [2100 h]; Physical Progress [5650 h]; Reinforcement Steel [63 MT1]; TATA Projects Ltd-25 | 6,080,287.5 |
| RB2-SS-4th.265 |  | LPS | 1d | 2027-09-21 | 2027-09-23 | RB2-SS-4th.250 | LPS [36849 INR]; Physical Progress [1410 h]; TATA Projects Ltd-25 | 36,849 |
| RB2-SS-4th.275 |  | Shuttering | 4d | 2027-09-23 | 2027-09-28 | RB2-SS-4th.250, RB2-SS-4th.265 | Carpenter [1910 h]; Helper [960 h]; Physical Progress [5650 h]; Formwork [1143 Sq m]; TATA Projects Ltd-25 | 1,331,777.88 |
| RB2-SS-4th.300 |  | Concrete | 1d | 2027-09-28 | 2027-09-30 | RB2-SS-4th.275 | Mason [50 h]; Helper [50 h]; Physical Progress [1410 h]; Concrete M40 [286 m3]; TATA Projects Ltd-25 | 2,821,962 |

| ID | WBS | Activity | Duration | Start | Finish | Predecessors | Resources | Cost |
| --- | --- | --- | --- | --- | --- | --- | --- | --- |
|  | 3 | **Staircase** |  | 2027-09-16 | 2027-10-08 |  |  |  |
| RB2-SS-4th.255 |  | Reinforcement of wall upto Flight 1 | 2d | 2027-09-16 | 2027-09-18 | RB2-SS-3rd.380 | Barbender [70 h]; Helper [40 h]; Physical Progress [2820 h]; Reinforcement Steel [1 MT1]; TATA Projects Ltd-25 | 96,512.5 |
| RB2-SS-4th.260 |  | Shuttering of wall upto Flight 1 | 2d | 2027-09-18 | 2027-09-21 | RB2-SS-4th.255 | Carpenter [20 h]; Helper [10 h]; Physical Progress [2820 h]; Formwork [10 Sq m]; TATA Projects Ltd-25 | 11,651.6 |
| RB2-SS-4th.270 |  | Casting of wall upto Flight 1 | 1d | 2027-09-21 | 2027-09-23 | RB2-SS-4th.260 | Mason; Helper; Physical Progress [1410 h]; Concrete M40 [3 m3]; TATA Projects Ltd-25 | 29,601 |
| RB2-SS-4th.280 |  | Shuttering of Staircase upto Flight 1 | 1d | 2027-09-23 | 2027-09-24 | RB2-SS-4th.270 | Carpenter [20 h]; Helper [10 h]; Physical Progress [1410 h]; Formwork [10 Sq m]; TATA Projects Ltd-25 | 11,651.6 |
| RB2-SS-4th.285 |  | Reinforcement of Staircase upto Flight 1 | 1d | 2027-09-24 | 2027-09-25 | RB2-SS-4th.280 | Barbender [70 h]; Helper [40 h]; Physical Progress [1410 h]; Reinforcement Steel [1 MT1]; TATA Projects Ltd-25 | 96,512.5 |
| RB2-SS-4th.290 |  | MEP coordination upto Flight 1 | 1d | 2027-09-25 | 2027-09-27 | RB2-SS-4th.285 | Physical Progress [1410 h]; TATA Projects Ltd-25 |  |
| RB2-SS-4th.295 |  | Casting of Staircase upto Flight 1 | 1d | 2027-09-27 | 2027-09-28 | RB2-SS-4th.290 | Mason; Helper; Physical Progress [1410 h]; Concrete M40 [3 m3]; TATA Projects Ltd-25 | 29,601 |
| RB2-SS-4th.305 |  | Reinforcement of wall upto Flight 2 | 2d | 2027-09-28 | 2027-10-01 | RB2-SS-4th.295 | Barbender [70 h]; Helper [40 h]; Physical Progress [2820 h]; Reinforcement Steel [1 MT1]; TATA Projects Ltd-25 | 96,512.5 |
| RB2-SS-4th.315 |  | Shuttering of wall upto Flight 2 | 2d | 2027-10-01 | 2027-10-05 | RB2-SS-4th.305 | Carpenter [20 h]; Helper [10 h]; Physical Progress [2820 h]; Formwork [10 Sq m]; TATA Projects Ltd-25 | 11,651.6 |
| RB2-SS-4th.320 |  | Casting of wall upto Flight 2 | 1d | 2027-10-05 | 2027-10-06 | RB2-SS-4th.315 | Mason; Helper; Physical Progress [1410 h]; Concrete M40 [3 m3]; TATA Projects Ltd-25 | 29,601 |
| RB2-SS-4th.330 |  | Shuttering of Staircase upto Flight 2 | 1d | 2027-10-06 | 2027-10-07 | RB2-SS-4th.320 | Carpenter [20 h]; Helper [10 h]; Physical Progress [1410 h]; Formwork [10 Sq m]; TATA Projects Ltd-25 | 11,651.6 |
| RB2-SS-4th.335 |  | Reinforcement of Staircase upto Flight 2 | 1d | 2027-10-07 | 2027-10-08 | RB2-SS-4th.330 | Barbender [70 h]; Helper [40 h]; Physical Progress [1410 h]; Reinforcement Steel [1 MT1]; TATA Projects Ltd-25 | 96,512.5 |
|  | 2 | **Slab** |  | 2027-09-30 | 2027-11-03 |  |  |  |
| RB2-SS-4th.310 |  | Shuttering | 4d | 2027-09-30 | 2027-10-06 | RB2-SS-4th.300 | Carpenter [3840 h]; Helper [1920 h]; Physical Progress [5650 h]; Formwork [2301 Sq m]; TATA Projects Ltd-25 | 2,681,033.16 |
| RB2-SS-4th.325 |  | Reinforcement Bottom Net with chairs | 3d | 2027-10-06 | 2027-10-11 | RB2-SS-4th.310 | Barbender [1470 h]; Helper [740 h]; Physical Progress [4240 h]; Reinforcement Steel [22 MT1]; TATA Projects Ltd-25 | 2,123,275 |
| RB2-SS-4th.340 |  | Laying of PT Tendon | 4d | 2027-10-11 | 2027-10-15 | RB2-SS-4th.325 | Physical Progress [5650 h]; TATA Projects Ltd-25 |  |
| RB2-SS-4th.355 |  | Reinforcement Top Net | 2d | 2027-10-15 | 2027-10-18 | RB2-SS-4th.340 | Barbender [1470 h]; Helper [740 h]; Physical Progress [2820 h]; Reinforcement Steel [22 MT1]; TATA Projects Ltd-25 | 2,123,275 |
| RB2-SS-4th.365 |  | MEP Coordination | 1d | 2027-10-18 | 2027-10-19 | RB2-SS-4th.325, RB2-SS-4th.355, RB2-SS-4th.335 | Physical Progress [1410 h]; TATA Projects Ltd-25 |  |
| RB2-SS-4th.380 |  | Concrete of Slab | 1d | 2027-10-19 | 2027-10-20 | RB2-SS-4th.365 | Mason [50 h]; Helper [50 h]; Physical Progress [1410 h]; Concrete M40 [575 m3]; TATA Projects Ltd-25 | 5,673,525 |
| RB2-SS-4th.395 |  | Wait for Strength Gain | 6d | 2027-10-20 | 2027-10-27 | RB2-SS-4th.380 | Physical Progress [8470 h]; TATA Projects Ltd-25 |  |
| RB2-SS-4th.420 |  | PT Work | 5d | 2027-10-27 | 2027-11-03 | RB2-SS-4th.395, RB2-SS-3rd.445 | PT [8 MT1]; Helper [100 h]; PT Fitter [100 h]; Physical Progress [7060 h]; TATA Projects Ltd-25 | 1,520,000 |
|  | 3 | **Pour 4** |  | 2027-09-28 | 2027-11-13 |  |  |  |
|  | 1 | **Column, Core Wall, Shear Wall** |  | 2027-09-28 | 2027-10-13 |  |  |  |
| RB2-SS-4th.345 |  | Reinforcement | 4d | 2027-09-28 | 2027-10-05 | RB2-SS-3rd.510 | Barbender [5340 h]; Helper [2670 h]; Physical Progress [5650 h]; Reinforcement Steel [80 MT1]; TATA Projects Ltd-25 | 7,721,000 |
| RB2-SS-4th.370 |  | LPS | 1d | 2027-10-05 | 2027-10-06 | RB2-SS-4th.345 | LPS [36849 INR]; Physical Progress [1410 h]; TATA Projects Ltd-25 | 36,849 |
| RB2-SS-4th.385 |  | Shuttering | 4d | 2027-10-06 | 2027-10-12 | RB2-SS-4th.345, RB2-SS-4th.370 | Carpenter [2400 h]; Helper [1200 h]; Physical Progress [5650 h]; Formwork [1438 Sq m]; TATA Projects Ltd-25 | 1,675,500.08 |
| RB2-SS-4th.425 |  | Concrete | 1d | 2027-10-12 | 2027-10-13 | RB2-SS-4th.385 | Mason [50 h]; Helper [50 h]; Physical Progress [1410 h]; Concrete M40 [359 m3]; TATA Projects Ltd-25 | 3,542,253 |

| ID | WBS | Activity | Duration | Start | Finish | Predecessors | Resources | Cost |
| --- | --- | --- | --- | --- | --- | --- | --- | --- |
|  | 4 | **Staircase** |  | 2027-09-28 | 2027-10-20 |  |  |  |
| RB2-SS-4th.350 |  | Reinforcement of wall upto Flight 1 | 2d | 2027-09-28 | 2027-10-01 | RB2-SS-3rd.510 | Barbender [70 h]; Helper [40 h]; Physical Progress [2820 h]; Reinforcement Steel [1 MT1]; TATA Projects Ltd-25 | 96,512.5 |
| RB2-SS-4th.360 |  | Shuttering of wall upto Flight 1 | 2d | 2027-10-01 | 2027-10-05 | RB2-SS-4th.350 | Carpenter [20 h]; Helper [10 h]; Physical Progress [2820 h]; Formwork [10 Sq m]; TATA Projects Ltd-25 | 11,651.6 |
| RB2-SS-4th.375 |  | Casting of wall upto Flight 1 | 1d | 2027-10-05 | 2027-10-06 | RB2-SS-4th.360 | Mason; Helper; Physical Progress [1410 h]; Concrete M40 [3 m3]; TATA Projects Ltd-25 | 29,601 |
| RB2-SS-4th.390 |  | Shuttering of Staircase upto Flight 1 | 1d | 2027-10-06 | 2027-10-07 | RB2-SS-4th.375 | Carpenter [20 h]; Helper [10 h]; Physical Progress [1410 h]; Formwork [10 Sq m]; TATA Projects Ltd-25 | 11,651.6 |
| RB2-SS-4th.405 |  | Reinforcement of Staircase upto Flight 1 | 1d | 2027-10-07 | 2027-10-08 | RB2-SS-4th.390 | Barbender [70 h]; Helper [40 h]; Physical Progress [1410 h]; Reinforcement Steel [1 MT1]; TATA Projects Ltd-25 | 96,512.5 |
| RB2-SS-4th.410 |  | MEP coordination upto Flight 1 | 1d | 2027-10-08 | 2027-10-11 | RB2-SS-4th.405 | Physical Progress [1410 h]; TATA Projects Ltd-25 |  |
| RB2-SS-4th.415 |  | Casting of Staircase upto Flight 1 | 1d | 2027-10-11 | 2027-10-12 | RB2-SS-4th.410 | Mason; Helper; Physical Progress [1410 h]; Concrete M40 [3 m3]; TATA Projects Ltd-25 | 29,601 |
| RB2-SS-4th.435 |  | Reinforcement of wall upto Flight 2 | 2d | 2027-10-12 | 2027-10-14 | RB2-SS-4th.415 | Barbender [70 h]; Helper [40 h]; Physical Progress [2820 h]; Reinforcement Steel [1 MT1]; TATA Projects Ltd-25 | 96,512.5 |
| RB2-SS-4th.450 |  | Shuttering of wall upto Flight 2 | 2d | 2027-10-14 | 2027-10-16 | RB2-SS-4th.435 | Carpenter [20 h]; Helper [10 h]; Physical Progress [2820 h]; Formwork [10 Sq m]; TATA Projects Ltd-25 | 11,651.6 |
| RB2-SS-4th.460 |  | Casting of wall upto Flight 2 | 1d | 2027-10-16 | 2027-10-18 | RB2-SS-4th.450 | Mason; Helper; Physical Progress [1410 h]; Concrete M40 [3 m3]; TATA Projects Ltd-25 | 29,601 |
| RB2-SS-4th.475 |  | Shuttering of Staircase upto Flight 2 | 1d | 2027-10-18 | 2027-10-19 | RB2-SS-4th.460 | Carpenter [20 h]; Helper [10 h]; Physical Progress [1410 h]; Formwork [10 Sq m]; TATA Projects Ltd-25 | 11,651.6 |
| RB2-SS-4th.480 |  | Reinforcement of Staircase upto Flight 2 | 1d | 2027-10-19 | 2027-10-20 | RB2-SS-4th.475 | Barbender [70 h]; Helper [40 h]; Physical Progress [1410 h]; Reinforcement Steel [1 MT1]; TATA Projects Ltd-25 | 96,512.5 |
|  | 2 | **Slab** |  | 2027-10-13 | 2027-11-13 |  |  |  |
| RB2-SS-4th.440 |  | Shuttering | 4d | 2027-10-13 | 2027-10-18 | RB2-SS-4th.425 | Carpenter [4830 h]; Helper [2420 h]; Physical Progress [5650 h]; Formwork [2894 Sq m]; TATA Projects Ltd-25 | 3,371,973.04 |
| RB2-SS-4th.465 |  | Reinforcement Bottom Net with chairs | 3d | 2027-10-18 | 2027-10-21 | RB2-SS-4th.440 | Barbender [1800 h]; Helper [900 h]; Physical Progress [4240 h]; Reinforcement Steel [27 MT1]; TATA Projects Ltd-25 | 2,605,837.5 |
| RB2-SS-4th.485 |  | Laying of PT Tendon | 4d | 2027-10-21 | 2027-10-26 | RB2-SS-4th.465 | Physical Progress [5650 h]; TATA Projects Ltd-25 |  |
| RB2-SS-4th.495 |  | Reinforcement Top Net | 2d | 2027-10-26 | 2027-10-28 | RB2-SS-4th.485 | Barbender [1800 h]; Helper [900 h]; Physical Progress [2820 h]; Reinforcement Steel [27 MT1]; TATA Projects Ltd-25 | 2,605,837.5 |
| RB2-SS-4th.505 |  | MEP Coordination | 1d | 2027-10-28 | 2027-10-30 | RB2-SS-4th.465, RB2-SS-4th.495, RB2-SS-4th.480 | Physical Progress [1410 h]; TATA Projects Ltd-25 |  |
| RB2-SS-4th.510 |  | Concrete of Slab | 1d | 2027-10-30 | 2027-11-01 | RB2-SS-4th.505 | Mason [50 h]; Helper [50 h]; Physical Progress [1410 h]; Concrete M40 [724 m3]; TATA Projects Ltd-25 | 7,143,708 |
| RB2-SS-4th.515 |  | Wait for Strength Gain | 6d | 2027-11-01 | 2027-11-08 | RB2-SS-4th.510 | Physical Progress [8470 h]; TATA Projects Ltd-25 |  |
| RB2-SS-4th.525 |  | PT Work | 5d | 2027-11-08 | 2027-11-13 | RB2-SS-4th.515 | PT [10 MT1]; Helper [100 h]; PT Fitter [100 h]; Physical Progress [8470 h]; TATA Projects Ltd-25 | 1,900,000 |
|  | 5 | **Pour 5** |  | 2027-09-24 | 2027-11-06 |  |  |  |
|  | 1 | **Column** |  | 2027-09-24 | 2027-10-06 |  |  |  |
| RB2-SS-4th.400 |  | Reinforcement | 3d | 2027-09-24 | 2027-09-28 | RB2-SS-3rd.530 | Barbender [3400 h]; Helper [1700 h]; Physical Progress [4240 h]; Reinforcement Steel [51 MT1]; TATA Projects Ltd-25 | 4,922,137.5 |
| RB2-SS-4th.430 |  | LPS | 1d | 2027-09-28 | 2027-09-30 | RB2-SS-4th.400 | LPS [36849 INR]; Physical Progress [1410 h]; TATA Projects Ltd-25 | 36,849 |
| RB2-SS-4th.445 |  | Shuttering | 3d | 2027-09-30 | 2027-10-05 | RB2-SS-4th.400, RB2-SS-4th.430 | Carpenter [1520 h]; Helper [760 h]; Physical Progress [4240 h]; Formwork [912 Sq m]; TATA Projects Ltd-25 | 1,062,625.92 |
| RB2-SS-4th.455 |  | Concrete | 1d | 2027-10-05 | 2027-10-06 | RB2-SS-4th.445 | Mason [50 h]; Helper [50 h]; Physical Progress [1410 h]; Concrete M40 [228 m3]; TATA Projects Ltd-25 | 2,249,676 |

| ID | WBS | Activity | Duration | Start | Finish | Predecessors | Resources | Cost |
| --- | --- | --- | --- | --- | --- | --- | --- | --- |
|  | 2 | **Slab** |  | 2027-10-06 | 2027-11-06 |  |  |  |
| RB2-SS-4th.470 |  | Shuttering | 4d | 2027-10-06 | 2027-10-12 | RB2-SS-4th.455 | Carpenter [3070 h]; Helper [1540 h]; Physical Progress [5650 h]; Formwork [1837 Sq m]; TATA Projects Ltd-25 | 2,140,398.92 |
| RB2-SS-4th.490 |  | Reinforcement Bottom Net with chairs | 3d | 2027-10-12 | 2027-10-15 | RB2-SS-4th.470 | Barbender [1140 h]; Helper [570 h]; Physical Progress [4240 h]; Reinforcement Steel [17 MT1]; TATA Projects Ltd-25 | 1,640,712.5 |
| RB2-SS-4th.500 |  | Laying of PT Tendon | 3d | 2027-10-15 | 2027-10-19 | RB2-SS-4th.490 | Physical Progress [5650 h]; TATA Projects Ltd-25 |  |
| RB2-SS-4th.520 |  | Reinforcement Top Net | 2d | 2027-10-19 | 2027-10-21 | RB2-SS-4th.500 | Barbender [1140 h]; Helper [570 h]; Physical Progress [2820 h]; Reinforcement Steel [17 MT1]; TATA Projects Ltd-25 | 1,640,712.5 |
| RB2-SS-4th.530 |  | MEP Coordination | 1d | 2027-10-21 | 2027-10-22 | RB2-SS-4th.490, RB2-SS-4th.520 | Physical Progress [1410 h]; TATA Projects Ltd-25 |  |
| RB2-SS-4th.535 |  | Concrete of Slab | 1d | 2027-10-22 | 2027-10-23 | RB2-SS-4th.530 | Mason [50 h]; Helper [50 h]; Physical Progress [1410 h]; Concrete M40 [459 m3]; TATA Projects Ltd-25 | 4,528,953 |
| RB2-SS-4th.540 |  | Wait for Strength Gain | 6d | 2027-10-23 | 2027-11-01 | RB2-SS-4th.535 | Physical Progress [8470 h]; TATA Projects Ltd-25 |  |
| RB2-SS-4th.545 |  | PT Work | 5d | 2027-11-01 | 2027-11-06 | RB2-SS-4th.540, RB2-SS-3rd.545 | PT [7 MT1]; Helper [100 h]; PT Fitter [100 h]; Physical Progress [7060 h]; TATA Projects Ltd-25 | 1,330,000 |
|  | 6 | **Fifth Floor** |  | 2027-10-20 | 2027-12-13 |  |  |  |
|  | 1 | **Pour 1** |  | 2027-11-03 | 2027-12-11 |  |  |  |
|  | 1 | **Column** |  | 2027-11-03 | 2027-11-11 |  |  |  |
| RB2-SS-5th.10 |  | Reinforcement | 3d | 2027-11-03 | 2027-11-05 | RB2-SS-4th.80, E-GFC-ST-RB2-240 | Barbender [3740 h]; Helper [1870 h]; Physical Progress [4240 h]; Reinforcement Steel [56 MT1]; TATA Projects Ltd-25 | 5,404,700 |
| RB2-SS-5th.15 |  | LPS | 1d | 2027-11-06 | 2027-11-06 | RB2-SS-5th.10 | LPS [36849 INR]; Physical Progress [1410 h]; TATA Projects Ltd-25 | 36,849 |
| RB2-SS-5th.20 |  | Shuttering | 3d | 2027-11-08 | 2027-11-10 | RB2-SS-5th.10, RB2-SS-5th.15 | Carpenter [1730 h]; Helper [870 h]; Physical Progress [4240 h]; Formwork [1033 Sq m]; TATA Projects Ltd-25 | 1,203,610.28 |
| RB2-SS-5th.25 |  | Concrete | 1d | 2027-11-11 | 2027-11-11 | RB2-SS-5th.20 | Mason [50 h]; Helper [50 h]; Physical Progress [1410 h]; Concrete M40 [258 m3]; TATA Projects Ltd-25 | 2,545,686 |
|  | 2 | **Slab** |  | 2027-11-12 | 2027-12-11 |  |  |  |
| RB2-SS-5th.30 |  | Shuttering | 4d | 2027-11-12 | 2027-11-16 | RB2-SS-5th.25 | Carpenter [3650 h]; Helper [1830 h]; Physical Progress [5650 h]; Formwork [2190 Sq m]; TATA Projects Ltd-25 | 2,551,700.4 |
| RB2-SS-5th.35 |  | Reinforcement Bottom Net with chairs | 3d | 2027-11-17 | 2027-11-19 | RB2-SS-5th.30 | Barbender [1400 h]; Helper [700 h]; Physical Progress [4240 h]; Reinforcement Steel [21 MT1]; TATA Projects Ltd-25 | 2,026,762.5 |
| RB2-SS-5th.40 |  | Laying of PT Tendon | 4d | 2027-11-20 | 2027-11-24 | RB2-SS-5th.35 | Physical Progress [5650 h]; TATA Projects Ltd-25 |  |
| RB2-SS-5th.45 |  | Reinforcement Top Net | 2d | 2027-11-25 | 2027-11-26 | RB2-SS-5th.40 | Barbender [1400 h]; Helper [700 h]; Physical Progress [2820 h]; Reinforcement Steel [21 MT1]; TATA Projects Ltd-25 | 2,026,762.5 |
| RB2-SS-5th.65 |  | MEP Coordination | 1d | 2027-11-27 | 2027-11-27 | RB2-SS-5th.35, RB2-SS-5th.45 | Physical Progress [1410 h]; TATA Projects Ltd-25 |  |
| RB2-SS-5th.70 |  | Concrete of Slab | 1d | 2027-11-29 | 2027-11-29 | RB2-SS-5th.65 | Mason [50 h]; Helper [50 h]; Physical Progress [1410 h]; Concrete M40 [548 m3]; TATA Projects Ltd-25 | 5,407,116 |
| RB2-SS-5th.85 |  | Wait for Strength Gain | 6d | 2027-11-30 | 2027-12-06 | RB2-SS-5th.70 | Physical Progress [8470 h]; TATA Projects Ltd-25 |  |
| RB2-SS-5th.150 |  | PT Work | 5d | 2027-12-07 | 2027-12-11 | RB2-SS-5th.85, RB2-SS-4th.170 | PT [9 MT1]; Helper [100 h]; PT Fitter [100 h]; Physical Progress [7060 h]; TATA Projects Ltd-25 | 1,710,000 |

| ID | WBS | Activity | Duration | Start | Finish | Predecessors | Resources | Cost |
| --- | --- | --- | --- | --- | --- | --- | --- | --- |
|  | 2 | **Pour 2** |  | 2027-11-01 | 2027-12-11 |  |  |  |
|  | 1 | **Column, Core Wall, Shear Wall** |  | 2027-11-01 | 2027-11-12 |  |  |  |
| RB2-SS-5th.50 |  | Reinforcement | 4d | 2027-11-01 | 2027-11-05 | RB2-SS-4th.235 | Barbender [3670 h]; Helper [1840 h]; Physical Progress [5650 h]; Reinforcement Steel [55 MT1]; TATA Projects Ltd-25 | 5,308,187.5 |
| RB2-SS-5th.90 |  | LPS | 1d | 2027-11-05 | 2027-11-06 | RB2-SS-5th.50 | LPS [36849 INR]; Physical Progress [1410 h]; TATA Projects Ltd-25 | 36,849 |
| RB2-SS-5th.105 |  | Shuttering | 4d | 2027-11-06 | 2027-11-11 | RB2-SS-5th.50, RB2-SS-5th.90 | Carpenter [1690 h]; Helper [850 h]; Physical Progress [5650 h]; Formwork [1014 Sq m]; TATA Projects Ltd-25 | 1,181,472.24 |
| RB2-SS-5th.155 |  | Concrete | 1d | 2027-11-11 | 2027-11-12 | RB2-SS-5th.105 | Mason [50 h]; Helper [50 h]; Physical Progress [1410 h]; Concrete M40 [254 m3]; TATA Projects Ltd-25 | 2,506,218 |
|  | 3 | **Staircase - 1** |  | 2027-11-01 | 2027-11-19 |  |  |  |
| RB2-SS-5th.55 |  | Reinforcement of wall upto Flight 1 | 2d | 2027-11-01 | 2027-11-03 | RB2-SS-4th.235 | Barbender [70 h]; Helper [40 h]; Physical Progress [2820 h]; Reinforcement Steel [1 MT1]; TATA Projects Ltd-25 | 96,512.5 |
| RB2-SS-5th.75 |  | Shuttering of wall upto Flight 1 | 2d | 2027-11-03 | 2027-11-05 | RB2-SS-5th.55 | Carpenter [20 h]; Helper [10 h]; Physical Progress [2820 h]; Formwork [10 Sq m]; TATA Projects Ltd-25 | 11,651.6 |
| RB2-SS-5th.95 |  | Casting of wall upto Flight 1 | 1d | 2027-11-05 | 2027-11-06 | RB2-SS-5th.75 | Mason; Helper; Physical Progress [1410 h]; Concrete M40 [3 m3]; TATA Projects Ltd-25 | 29,601 |
| RB2-SS-5th.110 |  | Shuttering of Staircase upto Flight 1 | 1d | 2027-11-06 | 2027-11-08 | RB2-SS-5th.95 | Carpenter [20 h]; Helper [10 h]; Physical Progress [1410 h]; Formwork [10 Sq m]; TATA Projects Ltd-25 | 11,651.6 |
| RB2-SS-5th.120 |  | Reinforcement of Staircase upto Flight 1 | 1d | 2027-11-08 | 2027-11-09 | RB2-SS-5th.110 | Barbender [70 h]; Helper [40 h]; Physical Progress [1410 h]; Reinforcement Steel [1 MT1]; TATA Projects Ltd-25 | 96,512.5 |
| RB2-SS-5th.130 |  | MEP coordination upto Flight 1 | 1d | 2027-11-09 | 2027-11-10 | RB2-SS-5th.120 | Physical Progress [1410 h]; TATA Projects Ltd-25 |  |
| RB2-SS-5th.140 |  | Casting of Staircase upto Flight 1 | 1d | 2027-11-10 | 2027-11-11 | RB2-SS-5th.130 | Mason; Helper; Physical Progress [1410 h]; Concrete M40 [3 m3]; TATA Projects Ltd-25 | 29,601 |
| RB2-SS-5th.160 |  | Reinforcement of wall upto Flight 2 | 2d | 2027-11-11 | 2027-11-13 | RB2-SS-5th.140 | Barbender [70 h]; Helper [40 h]; Physical Progress [2820 h]; Reinforcement Steel [1 MT1]; TATA Projects Ltd-25 | 96,512.5 |
| RB2-SS-5th.175 |  | Shuttering of wall upto Flight 2 | 2d | 2027-11-13 | 2027-11-16 | RB2-SS-5th.160 | Carpenter [20 h]; Helper [10 h]; Physical Progress [2820 h]; Formwork [10 Sq m]; TATA Projects Ltd-25 | 11,651.6 |
| RB2-SS-5th.185 |  | Casting of wall upto Flight 2 | 1d | 2027-11-16 | 2027-11-17 | RB2-SS-5th.175 | Mason; Helper; Physical Progress [1410 h]; Concrete M40 [3 m3]; TATA Projects Ltd-25 | 29,601 |
| RB2-SS-5th.200 |  | Shuttering of Staircase upto Flight 2 | 1d | 2027-11-17 | 2027-11-18 | RB2-SS-5th.185 | Carpenter [20 h]; Helper [10 h]; Physical Progress [1410 h]; Formwork [10 Sq m]; TATA Projects Ltd-25 | 11,651.6 |
| RB2-SS-5th.210 |  | Reinforcement of Staircase upto Flight 2 | 1d | 2027-11-18 | 2027-11-19 | RB2-SS-5th.200 | Barbender [70 h]; Helper [40 h]; Physical Progress [1410 h]; Reinforcement Steel [1 MT1]; TATA Projects Ltd-25 | 96,512.5 |
|  | 4 | **Staircase - 2** |  | 2027-11-01 | 2027-11-19 |  |  |  |
| RB2-SS-5th.60 |  | Reinforcement of wall upto Flight 1 | 2d | 2027-11-01 | 2027-11-03 | RB2-SS-4th.235 | Barbender [70 h]; Helper [40 h]; Physical Progress [2820 h]; Reinforcement Steel [1 MT1]; TATA Projects Ltd-25 | 96,512.5 |
| RB2-SS-5th.80 |  | Shuttering of wall upto Flight 1 | 2d | 2027-11-03 | 2027-11-05 | RB2-SS-5th.60 | Carpenter [20 h]; Helper [10 h]; Physical Progress [2820 h]; Formwork [10 Sq m]; TATA Projects Ltd-25 | 11,651.6 |
| RB2-SS-5th.100 |  | Casting of wall upto Flight 1 | 1d | 2027-11-05 | 2027-11-06 | RB2-SS-5th.80 | Mason; Helper; Physical Progress [1410 h]; Concrete M40 [3 m3]; TATA Projects Ltd-25 | 29,601 |
| RB2-SS-5th.115 |  | Shuttering of Staircase upto Flight 1 | 1d | 2027-11-06 | 2027-11-08 | RB2-SS-5th.100 | Carpenter [20 h]; Helper [10 h]; Physical Progress [1410 h]; Formwork [10 Sq m]; TATA Projects Ltd-25 | 11,651.6 |
| RB2-SS-5th.125 |  | Reinforcement of Staircase upto Flight 1 | 1d | 2027-11-08 | 2027-11-09 | RB2-SS-5th.115 | Barbender [70 h]; Helper [40 h]; Physical Progress [1410 h]; Reinforcement Steel [1 MT1]; TATA Projects Ltd-25 | 96,512.5 |
| RB2-SS-5th.135 |  | MEP coordination upto Flight 1 | 1d | 2027-11-09 | 2027-11-10 | RB2-SS-5th.125 | Physical Progress [1410 h]; TATA Projects Ltd-25 |  |
| RB2-SS-5th.145 |  | Casting of Staircase upto Flight 1 | 1d | 2027-11-10 | 2027-11-11 | RB2-SS-5th.135 | Mason; Helper; Physical Progress [1410 h]; Concrete M40 [3 m3]; TATA Projects Ltd-25 | 29,601 |
| RB2-SS-5th.165 |  | Reinforcement of wall upto Flight 2 | 2d | 2027-11-11 | 2027-11-13 | RB2-SS-5th.145 | Barbender [70 h]; Helper [40 h]; Physical Progress [2820 h]; Reinforcement Steel [1 MT1]; TATA Projects Ltd-25 | 96,512.5 |
| RB2-SS-5th.180 |  | Shuttering of wall upto Flight 2 | 2d | 2027-11-13 | 2027-11-16 | RB2-SS-5th.165 | Carpenter [20 h]; Helper [10 h]; Physical Progress [2820 h]; Formwork [10 Sq m]; TATA Projects Ltd-25 | 11,651.6 |
| RB2-SS-5th.190 |  | Casting of wall upto Flight 2 | 1d | 2027-11-16 | 2027-11-17 | RB2-SS-5th.180 | Mason; Helper; Physical Progress [1410 h]; Concrete M40 [3 m3]; TATA Projects Ltd-25 | 29,601 |
| RB2-SS-5th.205 |  | Shuttering of Staircase upto Flight 2 | 1d | 2027-11-17 | 2027-11-18 | RB2-SS-5th.190 | Carpenter [20 h]; Helper [10 h]; Physical Progress [1410 h]; Formwork [10 Sq m]; TATA Projects Ltd-25 | 11,651.6 |
| RB2-SS-5th.215 |  | Reinforcement of Staircase upto Flight 2 | 1d | 2027-11-18 | 2027-11-19 | RB2-SS-5th.205 | Barbender [70 h]; Helper [40 h]; Physical Progress [1410 h]; Reinforcement Steel [1 MT1]; TATA Projects Ltd-25 | 96,512.5 |

| ID | WBS | Activity | Duration | Start | Finish | Predecessors | Resources | Cost |
| --- | --- | --- | --- | --- | --- | --- | --- | --- |
|  | 2 | **Slab** |  | 2027-11-12 | 2027-12-11 |  |  |  |
| RB2-SS-5th.170 |  | Shuttering | 4d | 2027-11-12 | 2027-11-17 | RB2-SS-5th.155 | Carpenter [3590 h]; Helper [1800 h]; Physical Progress [5650 h]; Formwork [2151 Sq m]; TATA Projects Ltd-25 | 2,506,259.16 |
| RB2-SS-5th.195 |  | Reinforcement Bottom Net with chairs | 3d | 2027-11-17 | 2027-11-20 | RB2-SS-5th.170 | Barbender [1340 h]; Helper [670 h]; Physical Progress [4240 h]; Reinforcement Steel [20 MT1]; TATA Projects Ltd-25 | 1,930,250 |
| RB2-SS-5th.220 |  | Laying of PT Tendon | 3d | 2027-11-20 | 2027-11-24 | RB2-SS-5th.195 | Physical Progress [5650 h]; TATA Projects Ltd-25 |  |
| RB2-SS-5th.225 |  | Reinforcement Top Net | 2d | 2027-11-24 | 2027-11-26 | RB2-SS-5th.220 | Barbender [1340 h]; Helper [670 h]; Physical Progress [2820 h]; Reinforcement Steel [20 MT1]; TATA Projects Ltd-25 | 1,930,250 |
| RB2-SS-5th.230 |  | MEP Coordination | 1d | 2027-11-26 | 2027-11-27 | RB2-SS-5th.195, RB2-SS-5th.210, RB2-SS-5th.225, RB2-SS-5th.215 | Physical Progress [1410 h]; TATA Projects Ltd-25 |  |
| RB2-SS-5th.235 |  | Concrete of Slab | 1d | 2027-11-27 | 2027-11-29 | RB2-SS-5th.230 | Mason [50 h]; Helper [50 h]; Physical Progress [1410 h]; Concrete M40 [538 m3]; TATA Projects Ltd-25 | 5,308,446 |
| RB2-SS-5th.240 |  | Wait for Strength Gain | 6d | 2027-11-29 | 2027-12-06 | RB2-SS-5th.235 | Physical Progress [8470 h]; TATA Projects Ltd-25 |  |
| RB2-SS-5th.245 |  | PT Work | 5d | 2027-12-06 | 2027-12-11 | RB2-SS-5th.240, RB2-SS-4th.245 | PT [9 MT1]; Helper [100 h]; PT Fitter [100 h]; Physical Progress [7060 h]; TATA Projects Ltd-25 | 1,710,000 |
|  | 4 | **Pour 3** |  | 2027-10-20 | 2027-12-02 |  |  |  |
|  | 1 | **Column, Core Wall, Shear Wall** |  | 2027-10-20 | 2027-11-02 |  |  |  |
| RB2-SS-5th.250 |  | Reinforcement | 4d | 2027-10-20 | 2027-10-25 | RB2-SS-4th.380 | Barbender [4270 h]; Helper [2140 h]; Physical Progress [5650 h]; Reinforcement Steel [64 MT1]; TATA Projects Ltd-25 | 6,176,800 |
| RB2-SS-5th.265 |  | LPS | 1d | 2027-10-25 | 2027-10-26 | RB2-SS-5th.250 | LPS [36849 INR]; Physical Progress [1410 h]; TATA Projects Ltd-25 | 36,849 |
| RB2-SS-5th.275 |  | Shuttering | 4d | 2027-10-26 | 2027-11-01 | RB2-SS-5th.250, RB2-SS-5th.265 | Carpenter [1990 h]; Helper [1000 h]; Physical Progress [5650 h]; Formwork [1191 Sq m]; TATA Projects Ltd-25 | 1,387,705.56 |
| RB2-SS-5th.300 |  | Concrete | 1d | 2027-11-01 | 2027-11-02 | RB2-SS-5th.275 | Mason [50 h]; Helper [50 h]; Physical Progress [1410 h]; Concrete M40 [298 m3]; TATA Projects Ltd-25 | 2,940,366 |
|  | 3 | **Staircase** |  | 2027-10-20 | 2027-11-09 |  |  |  |
| RB2-SS-5th.255 |  | Reinforcement of wall upto Flight 1 | 2d | 2027-10-20 | 2027-10-22 | RB2-SS-4th.380 | Barbender [70 h]; Helper [40 h]; Physical Progress [2820 h]; Reinforcement Steel [1 MT1]; TATA Projects Ltd-25 | 96,512.5 |
| RB2-SS-5th.260 |  | Shuttering of wall upto Flight 1 | 2d | 2027-10-22 | 2027-10-25 | RB2-SS-5th.255 | Carpenter [20 h]; Helper [10 h]; Physical Progress [2820 h]; Formwork [10 Sq m]; TATA Projects Ltd-25 | 11,651.6 |
| RB2-SS-5th.270 |  | Casting of wall upto Flight 1 | 1d | 2027-10-25 | 2027-10-26 | RB2-SS-5th.260 | Mason; Helper; Physical Progress [1410 h]; Concrete M40 [3 m3]; TATA Projects Ltd-25 | 29,601 |
| RB2-SS-5th.280 |  | Shuttering of Staircase upto Flight 1 | 1d | 2027-10-26 | 2027-10-27 | RB2-SS-5th.270 | Carpenter [20 h]; Helper [10 h]; Physical Progress [1410 h]; Formwork [10 Sq m]; TATA Projects Ltd-25 | 11,651.6 |
| RB2-SS-5th.285 |  | Reinforcement of Staircase upto Flight 1 | 1d | 2027-10-27 | 2027-10-28 | RB2-SS-5th.280 | Barbender [70 h]; Helper [40 h]; Physical Progress [1410 h]; Reinforcement Steel [1 MT1]; TATA Projects Ltd-25 | 96,512.5 |
| RB2-SS-5th.290 |  | MEP coordination upto Flight 1 | 1d | 2027-10-28 | 2027-10-30 | RB2-SS-5th.285 | Physical Progress [1410 h]; TATA Projects Ltd-25 |  |
| RB2-SS-5th.295 |  | Casting of Staircase upto Flight 1 | 1d | 2027-10-30 | 2027-11-01 | RB2-SS-5th.290 | Mason; Helper; Physical Progress [1410 h]; Concrete M40 [3 m3]; TATA Projects Ltd-25 | 29,601 |
| RB2-SS-5th.305 |  | Reinforcement of wall upto Flight 2 | 2d | 2027-11-01 | 2027-11-03 | RB2-SS-5th.295 | Barbender [70 h]; Helper [40 h]; Physical Progress [2820 h]; Reinforcement Steel [1 MT1]; TATA Projects Ltd-25 | 96,512.5 |
| RB2-SS-5th.315 |  | Shuttering of wall upto Flight 2 | 2d | 2027-11-03 | 2027-11-05 | RB2-SS-5th.305 | Carpenter [20 h]; Helper [10 h]; Physical Progress [2820 h]; Formwork [10 Sq m]; TATA Projects Ltd-25 | 11,651.6 |
| RB2-SS-5th.320 |  | Casting of wall upto Flight 2 | 1d | 2027-11-05 | 2027-11-06 | RB2-SS-5th.315 | Mason; Helper; Physical Progress [1410 h]; Concrete M40 [3 m3]; TATA Projects Ltd-25 | 29,601 |
| RB2-SS-5th.330 |  | Shuttering of Staircase upto Flight 2 | 1d | 2027-11-06 | 2027-11-08 | RB2-SS-5th.320 | Carpenter [20 h]; Helper [10 h]; Physical Progress [1410 h]; Formwork [10 Sq m]; TATA Projects Ltd-25 | 11,651.6 |
| RB2-SS-5th.335 |  | Reinforcement of Staircase upto Flight 2 | 1d | 2027-11-08 | 2027-11-09 | RB2-SS-5th.330 | Barbender [70 h]; Helper [40 h]; Physical Progress [1410 h]; Reinforcement Steel [1 MT1]; TATA Projects Ltd-25 | 96,512.5 |

| ID | WBS | Activity | Duration | Start | Finish | Predecessors | Resources | Cost |
| --- | --- | --- | --- | --- | --- | --- | --- | --- |
|  | 2 | **Slab** |  | 2027-11-02 | 2027-12-02 |  |  |  |
| RB2-SS-5th.310 |  | Shuttering | 4d | 2027-11-02 | 2027-11-06 | RB2-SS-5th.300 | Carpenter [4210 h]; Helper [2110 h]; Physical Progress [5650 h]; Formwork [2526 Sq m]; TATA Projects Ltd-25 | 2,943,194.16 |
| RB2-SS-5th.325 |  | Reinforcement Bottom Net with chairs | 3d | 2027-11-06 | 2027-11-10 | RB2-SS-5th.310 | Barbender [1600 h]; Helper [800 h]; Physical Progress [4240 h]; Reinforcement Steel [24 MT1]; TATA Projects Ltd-25 | 2,316,300 |
| RB2-SS-5th.340 |  | Laying of PT Tendon | 4d | 2027-11-10 | 2027-11-15 | RB2-SS-5th.325 | Physical Progress [5650 h]; TATA Projects Ltd-25 |  |
| RB2-SS-5th.355 |  | Reinforcement Top Net | 2d | 2027-11-15 | 2027-11-17 | RB2-SS-5th.340 | Barbender [1600 h]; Helper [800 h]; Physical Progress [2820 h]; Reinforcement Steel [24 MT1]; TATA Projects Ltd-25 | 2,316,300 |
| RB2-SS-5th.365 |  | MEP Coordination | 1d | 2027-11-17 | 2027-11-18 | RB2-SS-5th.325, RB2-SS-5th.355, RB2-SS-5th.335 | Physical Progress [1410 h]; TATA Projects Ltd-25 |  |
| RB2-SS-5th.385 |  | Concrete of Slab | 1d | 2027-11-18 | 2027-11-19 | RB2-SS-5th.365 | Mason [50 h]; Helper [50 h]; Physical Progress [1410 h]; Concrete M40 [632 m3]; TATA Projects Ltd-25 | 6,235,944 |
| RB2-SS-5th.400 |  | Wait for Strength Gain | 6d | 2027-11-19 | 2027-11-26 | RB2-SS-5th.385 | Physical Progress [8470 h]; TATA Projects Ltd-25 |  |
| RB2-SS-5th.455 |  | PT Work | 5d | 2027-11-26 | 2027-12-02 | RB2-SS-5th.400, RB2-SS-4th.420 | PT [10 MT1]; Helper [100 h]; PT Fitter [100 h]; Physical Progress [7060 h]; TATA Projects Ltd-25 | 1,900,000 |
|  | 3 | **Pour 4** |  | 2027-11-01 | 2027-12-13 |  |  |  |
|  | 1 | **Column, Core Wall, Shear Wall** |  | 2027-11-01 | 2027-11-12 |  |  |  |
| RB2-SS-5th.345 |  | Reinforcement | 4d | 2027-11-01 | 2027-11-05 | RB2-SS-4th.510 | Barbender [5400 h]; Helper [2700 h]; Physical Progress [5650 h]; Reinforcement Steel [81 MT1]; TATA Projects Ltd-25 | 7,817,512.5 |
| RB2-SS-5th.370 |  | LPS | 1d | 2027-11-05 | 2027-11-06 | RB2-SS-5th.345 | LPS [36849 INR]; Physical Progress [1410 h]; TATA Projects Ltd-25 | 36,849 |
| RB2-SS-5th.390 |  | Shuttering | 4d | 2027-11-06 | 2027-11-11 | RB2-SS-5th.345, RB2-SS-5th.370 | Carpenter [2500 h]; Helper [1250 h]; Physical Progress [5650 h]; Formwork [1499 Sq m]; TATA Projects Ltd-25 | 1,746,574.84 |
| RB2-SS-5th.430 |  | Concrete | 1d | 2027-11-11 | 2027-11-12 | RB2-SS-5th.390 | Mason [50 h]; Helper [50 h]; Physical Progress [1410 h]; Concrete M40 [375 m3]; TATA Projects Ltd-25 | 3,700,125 |
|  | 4 | **Staircase** |  | 2027-11-01 | 2027-11-19 |  |  |  |
| RB2-SS-5th.350 |  | Reinforcement of wall upto Flight 1 | 2d | 2027-11-01 | 2027-11-03 | RB2-SS-4th.510 | Barbender [70 h]; Helper [40 h]; Physical Progress [2820 h]; Reinforcement Steel [1 MT1]; TATA Projects Ltd-25 | 96,512.5 |
| RB2-SS-5th.360 |  | Shuttering of wall upto Flight 1 | 2d | 2027-11-03 | 2027-11-05 | RB2-SS-5th.350 | Carpenter [20 h]; Helper [10 h]; Physical Progress [2820 h]; Formwork [10 Sq m]; TATA Projects Ltd-25 | 11,651.6 |
| RB2-SS-5th.380 |  | Casting of wall upto Flight 1 | 1d | 2027-11-05 | 2027-11-06 | RB2-SS-5th.360 | Mason; Helper; Physical Progress [1410 h]; Concrete M40 [3 m3]; TATA Projects Ltd-25 | 29,601 |
| RB2-SS-5th.395 |  | Shuttering of Staircase upto Flight 1 | 1d | 2027-11-06 | 2027-11-08 | RB2-SS-5th.380 | Carpenter [20 h]; Helper [10 h]; Physical Progress [1410 h]; Formwork [10 Sq m]; TATA Projects Ltd-25 | 11,651.6 |
| RB2-SS-5th.405 |  | Reinforcement of Staircase upto Flight 1 | 1d | 2027-11-08 | 2027-11-09 | RB2-SS-5th.395 | Barbender [70 h]; Helper [40 h]; Physical Progress [1410 h]; Reinforcement Steel [1 MT1]; TATA Projects Ltd-25 | 96,512.5 |
| RB2-SS-5th.415 |  | MEP coordination upto Flight 1 | 1d | 2027-11-09 | 2027-11-10 | RB2-SS-5th.405 | Physical Progress [1410 h]; TATA Projects Ltd-25 |  |
| RB2-SS-5th.425 |  | Casting of Staircase upto Flight 1 | 1d | 2027-11-10 | 2027-11-11 | RB2-SS-5th.415 | Mason; Helper; Physical Progress [1410 h]; Concrete M40 [3 m3]; TATA Projects Ltd-25 | 29,601 |
| RB2-SS-5th.435 |  | Reinforcement of wall upto Flight 2 | 2d | 2027-11-11 | 2027-11-13 | RB2-SS-5th.425 | Barbender [70 h]; Helper [40 h]; Physical Progress [2820 h]; Reinforcement Steel [1 MT1]; TATA Projects Ltd-25 | 96,512.5 |
| RB2-SS-5th.450 |  | Shuttering of wall upto Flight 2 | 2d | 2027-11-13 | 2027-11-16 | RB2-SS-5th.435 | Carpenter [20 h]; Helper [10 h]; Physical Progress [2820 h]; Formwork [10 Sq m]; TATA Projects Ltd-25 | 11,651.6 |
| RB2-SS-5th.465 |  | Casting of wall upto Flight 2 | 1d | 2027-11-16 | 2027-11-17 | RB2-SS-5th.450 | Mason; Helper; Physical Progress [1410 h]; Concrete M40 [3 m3]; TATA Projects Ltd-25 | 29,601 |
| RB2-SS-5th.475 |  | Shuttering of Staircase upto Flight 2 | 1d | 2027-11-17 | 2027-11-18 | RB2-SS-5th.465 | Carpenter [20 h]; Helper [10 h]; Physical Progress [1410 h]; Formwork [10 Sq m]; TATA Projects Ltd-25 | 11,651.6 |
| RB2-SS-5th.480 |  | Reinforcement of Staircase upto Flight 2 | 1d | 2027-11-18 | 2027-11-19 | RB2-SS-5th.475 | Barbender [70 h]; Helper [40 h]; Physical Progress [1410 h]; Reinforcement Steel [1 MT1]; TATA Projects Ltd-25 | 96,512.5 |

| ID | WBS | Activity | Duration | Start | Finish | Predecessors | Resources | Cost |
| --- | --- | --- | --- | --- | --- | --- | --- | --- |
|  | 2 | **Slab** |  | 2027-11-12 | 2027-12-13 |  |  |  |
| RB2-SS-5th.440 |  | Shuttering | 4d | 2027-11-12 | 2027-11-17 | RB2-SS-5th.430 | Carpenter [5300 h]; Helper [2650 h]; Physical Progress [5650 h]; Formwork [3177 Sq m]; TATA Projects Ltd-25 | 3,701,713.32 |
| RB2-SS-5th.470 |  | Reinforcement Bottom Net with chairs | 3d | 2027-11-17 | 2027-11-20 | RB2-SS-5th.440 | Barbender [2000 h]; Helper [1000 h]; Physical Progress [4240 h]; Reinforcement Steel [30 MT1]; TATA Projects Ltd-25 | 2,895,375 |
| RB2-SS-5th.490 |  | Laying of PT Tendon | 4d | 2027-11-20 | 2027-11-25 | RB2-SS-5th.470 | Physical Progress [5650 h]; TATA Projects Ltd-25 |  |
| RB2-SS-5th.500 |  | Reinforcement Top Net | 2d | 2027-11-25 | 2027-11-27 | RB2-SS-5th.490 | Barbender [2000 h]; Helper [1000 h]; Physical Progress [2820 h]; Reinforcement Steel [30 MT1]; TATA Projects Ltd-25 | 2,895,375 |
| RB2-SS-5th.505 |  | MEP Coordination | 1d | 2027-11-27 | 2027-11-29 | RB2-SS-5th.470, RB2-SS-5th.500, RB2-SS-5th.480 | Physical Progress [1410 h]; TATA Projects Ltd-25 |  |
| RB2-SS-5th.515 |  | Concrete of Slab | 1d | 2027-11-29 | 2027-11-30 | RB2-SS-5th.505 | Mason [50 h]; Helper [50 h]; Physical Progress [1410 h]; Concrete M40 [794 m3]; TATA Projects Ltd-25 | 7,834,398 |
| RB2-SS-5th.520 |  | Wait for Strength Gain | 6d | 2027-11-30 | 2027-12-07 | RB2-SS-5th.515 | Physical Progress [8470 h]; TATA Projects Ltd-25 |  |
| RB2-SS-5th.540 |  | PT Work | 5d | 2027-12-07 | 2027-12-13 | RB2-SS-5th.520 | PT [13 MT1]; Helper [100 h]; PT Fitter [100 h]; Physical Progress [7060 h]; TATA Projects Ltd-25 | 2,470,000 |
|  | 5 | **Pour 5** |  | 2027-10-23 | 2027-12-02 |  |  |  |
|  | 1 | **Column** |  | 2027-10-23 | 2027-11-03 |  |  |  |
| RB2-SS-5th.375 |  | Reinforcement | 3d | 2027-10-23 | 2027-10-27 | RB2-SS-4th.535 | Barbender [3400 h]; Helper [1700 h]; Physical Progress [4240 h]; Reinforcement Steel [51 MT1]; TATA Projects Ltd-25 | 4,922,137.5 |
| RB2-SS-5th.410 |  | LPS | 1d | 2027-10-27 | 2027-10-28 | RB2-SS-5th.375 | LPS [36849 INR]; Physical Progress [1410 h]; TATA Projects Ltd-25 | 36,849 |
| RB2-SS-5th.420 |  | Shuttering | 3d | 2027-10-28 | 2027-11-02 | RB2-SS-5th.375, RB2-SS-5th.410 | Carpenter [1590 h]; Helper [800 h]; Physical Progress [4240 h]; Formwork [951 Sq m]; TATA Projects Ltd-25 | 1,108,067.16 |
| RB2-SS-5th.445 |  | Concrete | 1d | 2027-11-02 | 2027-11-03 | RB2-SS-5th.420 | Mason [50 h]; Helper [50 h]; Physical Progress [1410 h]; Concrete M40 [238 m3]; TATA Projects Ltd-25 | 2,348,346 |
|  | 2 | **Slab** |  | 2027-11-03 | 2027-12-02 |  |  |  |
| RB2-SS-5th.460 |  | Shuttering | 4d | 2027-11-03 | 2027-11-08 | RB2-SS-5th.445 | Carpenter [3360 h]; Helper [1680 h]; Physical Progress [5650 h]; Formwork [2016 Sq m]; TATA Projects Ltd-25 | 2,348,962.56 |
| RB2-SS-5th.485 |  | Reinforcement Bottom Net with chairs | 3d | 2027-11-08 | 2027-11-11 | RB2-SS-5th.460 | Barbender [1270 h]; Helper [640 h]; Physical Progress [4240 h]; Reinforcement Steel [19 MT1]; TATA Projects Ltd-25 | 1,833,737.5 |
| RB2-SS-5th.495 |  | Laying of PT Tendon | 3d | 2027-11-11 | 2027-11-15 | RB2-SS-5th.485 | Physical Progress [5650 h]; TATA Projects Ltd-25 |  |
| RB2-SS-5th.510 |  | Reinforcement Top Net | 2d | 2027-11-15 | 2027-11-17 | RB2-SS-5th.495 | Barbender [1270 h]; Helper [640 h]; Physical Progress [2820 h]; Reinforcement Steel [19 MT1]; TATA Projects Ltd-25 | 1,833,737.5 |
| RB2-SS-5th.525 |  | MEP Coordination | 1d | 2027-11-17 | 2027-11-18 | RB2-SS-5th.485, RB2-SS-5th.510 | Physical Progress [1410 h]; TATA Projects Ltd-25 |  |
| RB2-SS-5th.530 |  | Concrete of Slab | 1d | 2027-11-18 | 2027-11-19 | RB2-SS-5th.525, RB2-SS-4th.545 | Mason [50 h]; Helper [50 h]; Physical Progress [1410 h]; Concrete M40 [504 m3]; TATA Projects Ltd-25 | 4,972,968 |
| RB2-SS-5th.535 |  | Wait for Strength Gain | 6d | 2027-11-19 | 2027-11-26 | RB2-SS-5th.530 | Physical Progress [8470 h]; TATA Projects Ltd-25 |  |
| RB2-SS-5th.545 |  | PT Work | 5d | 2027-11-26 | 2027-12-02 | RB2-SS-5th.535 | PT [8 MT1]; Helper [100 h]; PT Fitter [100 h]; Physical Progress [7060 h]; TATA Projects Ltd-25 | 1,520,000 |

| ID | WBS | Activity | Duration | Start | Finish | Predecessors | Resources | Cost |
| --- | --- | --- | --- | --- | --- | --- | --- | --- |
|  | 7 | **Sixth Floor** |  | 2027-11-19 | 2028-01-13 |  |  |  |
|  | 1 | **Pour 1** |  | 2027-11-30 | 2028-01-10 |  |  |  |
|  | 1 | **Column** |  | 2027-11-30 | 2027-12-08 |  |  |  |
| RB2-SS-6th.10 |  | Reinforcement | 3d | 2027-11-30 | 2027-12-02 | RB2-SS-5th.70, E-GFC-ST-RB2-245 | Barbender [3540 h]; Helper [1770 h]; Physical Progress [4240 h]; Reinforcement Steel [53 MT1]; TATA Projects Ltd-25 | 5,115,162.5 |
| RB2-SS-6th.15 |  | LPS | 1d | 2027-12-03 | 2027-12-03 | RB2-SS-6th.10 | LPS [36849 INR]; Physical Progress [1410 h]; TATA Projects Ltd-25 | 36,849 |
| RB2-SS-6th.20 |  | Shuttering | 3d | 2027-12-04 | 2027-12-07 | RB2-SS-6th.10, RB2-SS-6th.15 | Carpenter [1630 h]; Helper [820 h]; Physical Progress [4240 h]; Formwork [977 Sq m]; TATA Projects Ltd-25 | 1,138,361.32 |
| RB2-SS-6th.25 |  | Concrete | 1d | 2027-12-08 | 2027-12-08 | RB2-SS-6th.20 | Mason [50 h]; Helper [50 h]; Physical Progress [1410 h]; Concrete M40 [244 m3]; TATA Projects Ltd-25 | 2,407,548 |
|  | 2 | **Slab** |  | 2027-12-09 | 2028-01-10 |  |  |  |
| RB2-SS-6th.30 |  | Shuttering | 4d | 2027-12-09 | 2027-12-13 | RB2-SS-6th.25 | Carpenter [3860 h]; Helper [1930 h]; Physical Progress [5650 h]; Formwork [2316 Sq m]; TATA Projects Ltd-25 | 2,698,510.56 |
| RB2-SS-6th.35 |  | Reinforcement Bottom Net with chairs | 3d | 2027-12-14 | 2027-12-16 | RB2-SS-6th.30 | Barbender [1470 h]; Helper [740 h]; Physical Progress [4240 h]; Reinforcement Steel [22 MT1]; TATA Projects Ltd-25 | 2,123,275 |
| RB2-SS-6th.40 |  | Laying of PT Tendon | 4d | 2027-12-17 | 2027-12-21 | RB2-SS-6th.35 | Physical Progress [5650 h]; TATA Projects Ltd-25 |  |
| RB2-SS-6th.45 |  | Reinforcement Top Net | 2d | 2027-12-22 | 2027-12-23 | RB2-SS-6th.40 | Barbender [1470 h]; Helper [740 h]; Physical Progress [2820 h]; Reinforcement Steel [22 MT1]; TATA Projects Ltd-25 | 2,123,275 |
| RB2-SS-6th.50 |  | MEP Coordination | 1d | 2027-12-24 | 2027-12-24 | RB2-SS-6th.35, RB2-SS-6th.45 | Physical Progress [1410 h]; TATA Projects Ltd-25 |  |
| RB2-SS-6th.55 |  | Concrete of Slab | 1d | 2027-12-27 | 2027-12-27 | RB2-SS-6th.50 | Mason [50 h]; Helper [50 h]; Physical Progress [1410 h]; Concrete M40 [579 m3]; TATA Projects Ltd-25 | 5,712,993 |
| RB2-SS-6th.75 |  | Wait for Strength Gain | 6d | 2027-12-28 | 2028-01-04 | RB2-SS-6th.55 | Physical Progress [8470 h]; TATA Projects Ltd-25 |  |
| RB2-SS-6th.90 |  | PT Work | 5d | 2028-01-05 | 2028-01-10 | RB2-SS-6th.75, RB2-SS-5th.150 | PT [8 MT1]; Helper [100 h]; PT Fitter [100 h]; Physical Progress [7060 h]; TATA Projects Ltd-25 | 1,520,000 |
|  | 2 | **Pour 2** |  | 2027-11-29 | 2028-01-11 |  |  |  |
|  | 1 | **Column, Core Wall, Shear Wall** |  | 2027-11-29 | 2027-12-10 |  |  |  |
| RB2-SS-6th.60 |  | Reinforcement | 4d | 2027-11-29 | 2027-12-03 | RB2-SS-5th.235 | Barbender [3600 h]; Helper [1800 h]; Physical Progress [5650 h]; Reinforcement Steel [54 MT1]; TATA Projects Ltd-25 | 5,211,675 |
| RB2-SS-6th.95 |  | LPS | 1d | 2027-12-03 | 2027-12-04 | RB2-SS-6th.60 | LPS [36849 INR]; Physical Progress [1410 h]; TATA Projects Ltd-25 | 36,849 |
| RB2-SS-6th.110 |  | Shuttering | 4d | 2027-12-04 | 2027-12-09 | RB2-SS-6th.60, RB2-SS-6th.95 | Carpenter [1680 h]; Helper [840 h]; Physical Progress [5650 h]; Formwork [1007 Sq m]; TATA Projects Ltd-25 | 1,173,316.12 |
| RB2-SS-6th.155 |  | Concrete | 1d | 2027-12-09 | 2027-12-10 | RB2-SS-6th.110 | Mason [50 h]; Helper [50 h]; Physical Progress [1410 h]; Concrete M40 [252 m3]; TATA Projects Ltd-25 | 2,486,484 |
|  | 3 | **Staircase - 1** |  | 2027-11-29 | 2027-12-17 |  |  |  |
| RB2-SS-6th.65 |  | Reinforcement of wall upto Flight 1 | 2d | 2027-11-29 | 2027-12-01 | RB2-SS-5th.235 | Barbender [70 h]; Helper [40 h]; Physical Progress [2820 h]; Reinforcement Steel [1 MT1]; TATA Projects Ltd-25 | 96,512.5 |
| RB2-SS-6th.80 |  | Shuttering of wall upto Flight 1 | 2d | 2027-12-01 | 2027-12-03 | RB2-SS-6th.65 | Carpenter [20 h]; Helper [10 h]; Physical Progress [2820 h]; Formwork [10 Sq m]; TATA Projects Ltd-25 | 11,651.6 |
| RB2-SS-6th.100 |  | Casting of wall upto Flight 1 | 1d | 2027-12-03 | 2027-12-04 | RB2-SS-6th.80 | Mason; Helper; Physical Progress [1410 h]; Concrete M40 [3 m3]; TATA Projects Ltd-25 | 29,601 |
| RB2-SS-6th.115 |  | Shuttering of Staircase upto Flight 1 | 1d | 2027-12-04 | 2027-12-06 | RB2-SS-6th.100 | Carpenter [20 h]; Helper [10 h]; Physical Progress [1410 h]; Formwork [10 Sq m]; TATA Projects Ltd-25 | 11,651.6 |
| RB2-SS-6th.125 |  | Reinforcement of Staircase upto Flight 1 | 1d | 2027-12-06 | 2027-12-07 | RB2-SS-6th.115 | Barbender [70 h]; Helper [40 h]; Physical Progress [1410 h]; Reinforcement Steel [1 MT1]; TATA Projects Ltd-25 | 96,512.5 |
| RB2-SS-6th.135 |  | MEP coordination upto Flight 1 | 1d | 2027-12-07 | 2027-12-08 | RB2-SS-6th.125 | Physical Progress [1410 h]; TATA Projects Ltd-25 |  |
| RB2-SS-6th.145 |  | Casting of Staircase upto Flight 1 | 1d | 2027-12-08 | 2027-12-09 | RB2-SS-6th.135 | Mason; Helper; Physical Progress [1410 h]; Concrete M40 [3 m3]; TATA Projects Ltd-25 | 29,601 |
| RB2-SS-6th.160 |  | Reinforcement of wall upto Flight 2 | 2d | 2027-12-09 | 2027-12-11 | RB2-SS-6th.145 | Barbender [70 h]; Helper [40 h]; Physical Progress [2820 h]; Reinforcement Steel [1 MT1]; TATA Projects Ltd-25 | 96,512.5 |
| RB2-SS-6th.175 |  | Shuttering of wall upto Flight 2 | 2d | 2027-12-11 | 2027-12-14 | RB2-SS-6th.160 | Carpenter [20 h]; Helper [10 h]; Physical Progress [2820 h]; Formwork [10 Sq m]; TATA Projects Ltd-25 | 11,651.6 |
| RB2-SS-6th.185 |  | Casting of wall upto Flight 2 | 1d | 2027-12-14 | 2027-12-15 | RB2-SS-6th.175 | Mason; Helper; Physical Progress [1410 h]; Concrete M40 [3 m3]; TATA Projects Ltd-25 | 29,601 |
| RB2-SS-6th.200 |  | Shuttering of Staircase upto Flight 2 | 1d | 2027-12-15 | 2027-12-16 | RB2-SS-6th.185 | Carpenter [20 h]; Helper [10 h]; Physical Progress [1410 h]; Formwork [10 Sq m]; TATA Projects Ltd-25 | 11,651.6 |
| RB2-SS-6th.210 |  | Reinforcement of Staircase upto Flight 2 | 1d | 2027-12-16 | 2027-12-17 | RB2-SS-6th.200 | Barbender [70 h]; Helper [40 h]; Physical Progress [1410 h]; Reinforcement Steel [1 MT1]; TATA Projects Ltd-25 | 96,512.5 |

| ID | WBS | Activity | Duration | Start | Finish | Predecessors | Resources | Cost |
| --- | --- | --- | --- | --- | --- | --- | --- | --- |
|  | 4 | **Staircase - 2** |  | 2027-11-29 | 2027-12-17 |  |  |  |
| RB2-SS-6th.70 |  | Reinforcement of wall upto Flight 1 | 2d | 2027-11-29 | 2027-12-01 | RB2-SS-5th.235 | Barbender [70 h]; Helper [40 h]; Physical Progress [2820 h]; Reinforcement Steel [1 MT1]; TATA Projects Ltd-25 | 96,512.5 |
| RB2-SS-6th.85 |  | Shuttering of wall upto Flight 1 | 2d | 2027-12-01 | 2027-12-03 | RB2-SS-6th.70 | Carpenter [20 h]; Helper [10 h]; Physical Progress [2820 h]; Formwork [10 Sq m]; TATA Projects Ltd-25 | 11,651.6 |
| RB2-SS-6th.105 |  | Casting of wall upto Flight 1 | 1d | 2027-12-03 | 2027-12-04 | RB2-SS-6th.85 | Mason; Helper; Physical Progress [1410 h]; Concrete M40 [3 m3]; TATA Projects Ltd-25 | 29,601 |
| RB2-SS-6th.120 |  | Shuttering of Staircase upto Flight 1 | 1d | 2027-12-04 | 2027-12-06 | RB2-SS-6th.105 | Carpenter [20 h]; Helper [10 h]; Physical Progress [1410 h]; Formwork [10 Sq m]; TATA Projects Ltd-25 | 11,651.6 |
| RB2-SS-6th.130 |  | Reinforcement of Staircase upto Flight 1 | 1d | 2027-12-06 | 2027-12-07 | RB2-SS-6th.120 | Barbender [70 h]; Helper [40 h]; Physical Progress [1410 h]; Reinforcement Steel [1 MT1]; TATA Projects Ltd-25 | 96,512.5 |
| RB2-SS-6th.140 |  | MEP coordination upto Flight 1 | 1d | 2027-12-07 | 2027-12-08 | RB2-SS-6th.130 | Physical Progress [1410 h]; TATA Projects Ltd-25 |  |
| RB2-SS-6th.150 |  | Casting of Staircase upto Flight 1 | 1d | 2027-12-08 | 2027-12-09 | RB2-SS-6th.140 | Mason; Helper; Physical Progress [1410 h]; Concrete M40 [3 m3]; TATA Projects Ltd-25 | 29,601 |
| RB2-SS-6th.165 |  | Reinforcement of wall upto Flight 2 | 2d | 2027-12-09 | 2027-12-11 | RB2-SS-6th.150 | Barbender [70 h]; Helper [40 h]; Physical Progress [2820 h]; Reinforcement Steel [1 MT1]; TATA Projects Ltd-25 | 96,512.5 |
| RB2-SS-6th.180 |  | Shuttering of wall upto Flight 2 | 2d | 2027-12-11 | 2027-12-14 | RB2-SS-6th.165 | Carpenter [20 h]; Helper [10 h]; Physical Progress [2820 h]; Formwork [10 Sq m]; TATA Projects Ltd-25 | 11,651.6 |
| RB2-SS-6th.190 |  | Casting of wall upto Flight 2 | 1d | 2027-12-14 | 2027-12-15 | RB2-SS-6th.180 | Mason; Helper; Physical Progress [1410 h]; Concrete M40 [3 m3]; TATA Projects Ltd-25 | 29,601 |
| RB2-SS-6th.205 |  | Shuttering of Staircase upto Flight 2 | 1d | 2027-12-15 | 2027-12-16 | RB2-SS-6th.190 | Carpenter [20 h]; Helper [10 h]; Physical Progress [1410 h]; Formwork [10 Sq m]; TATA Projects Ltd-25 | 11,651.6 |
| RB2-SS-6th.215 |  | Reinforcement of Staircase upto Flight 2 | 1d | 2027-12-16 | 2027-12-17 | RB2-SS-6th.205 | Barbender [70 h]; Helper [40 h]; Physical Progress [1410 h]; Reinforcement Steel [1 MT1]; TATA Projects Ltd-25 | 96,512.5 |
|  | 2 | **Slab** |  | 2027-12-10 | 2028-01-11 |  |  |  |
| RB2-SS-6th.170 |  | Shuttering | 4d | 2027-12-10 | 2027-12-15 | RB2-SS-6th.155 | Carpenter [3980 h]; Helper [1990 h]; Physical Progress [5650 h]; Formwork [2386 Sq m]; TATA Projects Ltd-25 | 2,780,071.76 |
| RB2-SS-6th.195 |  | Reinforcement Bottom Net with chairs | 3d | 2027-12-15 | 2027-12-18 | RB2-SS-6th.170 | Barbender [1470 h]; Helper [740 h]; Physical Progress [4240 h]; Reinforcement Steel [22 MT1]; TATA Projects Ltd-25 | 2,123,275 |
| RB2-SS-6th.220 |  | Laying of PT Tendon | 3d | 2027-12-18 | 2027-12-22 | RB2-SS-6th.195 | Physical Progress [5650 h]; TATA Projects Ltd-25 |  |
| RB2-SS-6th.225 |  | Reinforcement Top Net | 2d | 2027-12-22 | 2027-12-24 | RB2-SS-6th.220 | Barbender [1470 h]; Helper [740 h]; Physical Progress [2820 h]; Reinforcement Steel [22 MT1]; TATA Projects Ltd-25 | 2,123,275 |
| RB2-SS-6th.230 |  | MEP Coordination | 1d | 2027-12-24 | 2027-12-27 | RB2-SS-6th.195, RB2-SS-6th.210, RB2-SS-6th.225, RB2-SS-6th.215 | Physical Progress [1410 h]; TATA Projects Ltd-25 |  |
| RB2-SS-6th.235 |  | Concrete of Slab | 1d | 2027-12-27 | 2027-12-28 | RB2-SS-6th.230 | Mason [50 h]; Helper [50 h]; Physical Progress [1410 h]; Concrete M40 [596 m3]; TATA Projects Ltd-25 | 5,880,732 |
| RB2-SS-6th.240 |  | Wait for Strength Gain | 6d | 2027-12-28 | 2028-01-05 | RB2-SS-6th.235 | Physical Progress [8470 h]; TATA Projects Ltd-25 |  |
| RB2-SS-6th.245 |  | PT Work | 5d | 2028-01-05 | 2028-01-11 | RB2-SS-6th.240, RB2-SS-5th.245 | PT [8 MT1]; Helper [100 h]; PT Fitter [100 h]; Physical Progress [7060 h]; TATA Projects Ltd-25 | 1,520,000 |
|  | 4 | **Pour 3** |  | 2027-11-19 | 2028-01-03 |  |  |  |
|  | 1 | **Column, Core Wall, Shear Wall** |  | 2027-11-19 | 2027-12-01 |  |  |  |
| RB2-SS-6th.250 |  | Reinforcement | 4d | 2027-11-19 | 2027-11-24 | RB2-SS-5th.385 | Barbender [4070 h]; Helper [2040 h]; Physical Progress [5650 h]; Reinforcement Steel [61 MT1]; TATA Projects Ltd-25 | 5,887,262.5 |
| RB2-SS-6th.265 |  | LPS | 1d | 2027-11-24 | 2027-11-25 | RB2-SS-6th.250 | LPS [36849 INR]; Physical Progress [1410 h]; TATA Projects Ltd-25 | 36,849 |
| RB2-SS-6th.275 |  | Shuttering | 4d | 2027-11-25 | 2027-11-30 | RB2-SS-6th.250, RB2-SS-6th.265 | Carpenter [1880 h]; Helper [940 h]; Physical Progress [5650 h]; Formwork [1127 Sq m]; TATA Projects Ltd-25 | 1,313,135.32 |
| RB2-SS-6th.300 |  | Concrete | 1d | 2027-11-30 | 2027-12-01 | RB2-SS-6th.275 | Mason [50 h]; Helper [50 h]; Physical Progress [1410 h]; Concrete M40 [282 m3]; TATA Projects Ltd-25 | 2,782,494 |

| ID | WBS | Activity | Duration | Start | Finish | Predecessors | Resources | Cost |
| --- | --- | --- | --- | --- | --- | --- | --- | --- |
|  | 3 | **Staircase** |  | 2027-11-19 | 2027-12-08 |  |  |  |
| RB2-SS-6th.255 |  | Reinforcement of wall upto Flight 1 | 2d | 2027-11-19 | 2027-11-22 | RB2-SS-5th.385 | Barbender [70 h]; Helper [40 h]; Physical Progress [2820 h]; Reinforcement Steel [1 MT1]; TATA Projects Ltd-25 | 96,512.5 |
| RB2-SS-6th.260 |  | Shuttering of wall upto Flight 1 | 2d | 2027-11-22 | 2027-11-24 | RB2-SS-6th.255 | Carpenter [20 h]; Helper [10 h]; Physical Progress [2820 h]; Formwork [10 Sq m]; TATA Projects Ltd-25 | 11,651.6 |
| RB2-SS-6th.270 |  | Casting of wall upto Flight 1 | 1d | 2027-11-24 | 2027-11-25 | RB2-SS-6th.260 | Mason; Helper; Physical Progress [1410 h]; Concrete M40 [3 m3]; TATA Projects Ltd-25 | 29,601 |
| RB2-SS-6th.280 |  | Shuttering of Staircase upto Flight 1 | 1d | 2027-11-25 | 2027-11-26 | RB2-SS-6th.270 | Carpenter [20 h]; Helper [10 h]; Physical Progress [1410 h]; Formwork [10 Sq m]; TATA Projects Ltd-25 | 11,651.6 |
| RB2-SS-6th.285 |  | Reinforcement of Staircase upto Flight 1 | 1d | 2027-11-26 | 2027-11-27 | RB2-SS-6th.280 | Barbender [70 h]; Helper [40 h]; Physical Progress [1410 h]; Reinforcement Steel [1 MT1]; TATA Projects Ltd-25 | 96,512.5 |
| RB2-SS-6th.290 |  | MEP coordination upto Flight 1 | 1d | 2027-11-27 | 2027-11-29 | RB2-SS-6th.285 | Physical Progress [1410 h]; TATA Projects Ltd-25 |  |
| RB2-SS-6th.295 |  | Casting of Staircase upto Flight 1 | 1d | 2027-11-29 | 2027-11-30 | RB2-SS-6th.290 | Mason; Helper; Physical Progress [1410 h]; Concrete M40 [3 m3]; TATA Projects Ltd-25 | 29,601 |
| RB2-SS-6th.305 |  | Reinforcement of wall upto Flight 2 | 2d | 2027-11-30 | 2027-12-02 | RB2-SS-6th.295 | Barbender [70 h]; Helper [40 h]; Physical Progress [2820 h]; Reinforcement Steel [1 MT1]; TATA Projects Ltd-25 | 96,512.5 |
| RB2-SS-6th.315 |  | Shuttering of wall upto Flight 2 | 2d | 2027-12-02 | 2027-12-04 | RB2-SS-6th.305 | Carpenter [20 h]; Helper [10 h]; Physical Progress [2820 h]; Formwork [10 Sq m]; TATA Projects Ltd-25 | 11,651.6 |
| RB2-SS-6th.320 |  | Casting of wall upto Flight 2 | 1d | 2027-12-04 | 2027-12-06 | RB2-SS-6th.315 | Mason; Helper; Physical Progress [1410 h]; Concrete M40 [3 m3]; TATA Projects Ltd-25 | 29,601 |
| RB2-SS-6th.330 |  | Shuttering of Staircase upto Flight 2 | 1d | 2027-12-06 | 2027-12-07 | RB2-SS-6th.320 | Carpenter [20 h]; Helper [10 h]; Physical Progress [1410 h]; Formwork [10 Sq m]; TATA Projects Ltd-25 | 11,651.6 |
| RB2-SS-6th.335 |  | Reinforcement of Staircase upto Flight 2 | 1d | 2027-12-07 | 2027-12-08 | RB2-SS-6th.330 | Barbender [70 h]; Helper [40 h]; Physical Progress [1410 h]; Reinforcement Steel [1 MT1]; TATA Projects Ltd-25 | 96,512.5 |
|  | 2 | **Slab** |  | 2027-12-01 | 2028-01-03 |  |  |  |
| RB2-SS-6th.310 |  | Shuttering | 4d | 2027-12-01 | 2027-12-06 | RB2-SS-6th.300 | Carpenter [4460 h]; Helper [2230 h]; Physical Progress [5650 h]; Formwork [2671 Sq m]; TATA Projects Ltd-25 | 3,112,142.36 |
| RB2-SS-6th.325 |  | Reinforcement Bottom Net with chairs | 3d | 2027-12-06 | 2027-12-09 | RB2-SS-6th.310 | Barbender [1670 h]; Helper [840 h]; Physical Progress [4240 h]; Reinforcement Steel [25 MT1]; TATA Projects Ltd-25 | 2,412,812.5 |
| RB2-SS-6th.340 |  | Laying of PT Tendon | 4d | 2027-12-09 | 2027-12-14 | RB2-SS-6th.325 | Physical Progress [5650 h]; TATA Projects Ltd-25 |  |
| RB2-SS-6th.355 |  | Reinforcement Top Net | 2d | 2027-12-14 | 2027-12-16 | RB2-SS-6th.340 | Barbender [1670 h]; Helper [840 h]; Physical Progress [2820 h]; Reinforcement Steel [25 MT1]; TATA Projects Ltd-25 | 2,412,812.5 |
| RB2-SS-6th.370 |  | MEP Coordination | 1d | 2027-12-16 | 2027-12-17 | RB2-SS-6th.325, RB2-SS-6th.355, RB2-SS-6th.335 | Physical Progress [1410 h]; TATA Projects Ltd-25 |  |
| RB2-SS-6th.385 |  | Concrete of Slab | 1d | 2027-12-17 | 2027-12-18 | RB2-SS-6th.370 | Mason [50 h]; Helper [50 h]; Physical Progress [1410 h]; Concrete M40 [668 m3]; TATA Projects Ltd-25 | 6,591,156 |
| RB2-SS-6th.405 |  | Wait for Strength Gain | 6d | 2027-12-18 | 2027-12-27 | RB2-SS-6th.385 | Physical Progress [8470 h]; TATA Projects Ltd-25 |  |
| RB2-SS-6th.460 |  | PT Work | 5d | 2027-12-27 | 2028-01-03 | RB2-SS-6th.405, RB2-SS-5th.455 | PT [9 MT1]; Helper [100 h]; PT Fitter [100 h]; Physical Progress [7060 h]; TATA Projects Ltd-25 | 1,710,000 |
|  | 3 | **Pour 4** |  | 2027-11-30 | 2028-01-13 |  |  |  |
|  | 1 | **Column, Core Wall, Shear Wall** |  | 2027-11-30 | 2027-12-11 |  |  |  |
| RB2-SS-6th.345 |  | Reinforcement | 4d | 2027-11-30 | 2027-12-04 | RB2-SS-5th.515 | Barbender [5470 h]; Helper [2740 h]; Physical Progress [5650 h]; Reinforcement Steel [82 MT1]; TATA Projects Ltd-25 | 7,914,025 |
| RB2-SS-6th.375 |  | LPS | 1d | 2027-12-04 | 2027-12-06 | RB2-SS-6th.345 | LPS [36849 INR]; Physical Progress [1410 h]; TATA Projects Ltd-25 | 36,849 |
| RB2-SS-6th.390 |  | Shuttering | 4d | 2027-12-06 | 2027-12-10 | RB2-SS-6th.345, RB2-SS-6th.375 | Carpenter [2540 h]; Helper [1270 h]; Physical Progress [5650 h]; Formwork [1522 Sq m]; TATA Projects Ltd-25 | 1,773,373.52 |
| RB2-SS-6th.430 |  | Concrete | 1d | 2027-12-10 | 2027-12-11 | RB2-SS-6th.390 | Mason [50 h]; Helper [50 h]; Physical Progress [1410 h]; Concrete M40 [380 m3]; TATA Projects Ltd-25 | 3,749,460 |

| ID | WBS | Activity | Duration | Start | Finish | Predecessors | Resources | Cost |
| --- | --- | --- | --- | --- | --- | --- | --- | --- |
|  | 4 | **Staircase** |  | 2027-11-30 | 2027-12-18 |  |  |  |
| RB2-SS-6th.350 |  | Reinforcement of wall upto Flight 1 | 2d | 2027-11-30 | 2027-12-02 | RB2-SS-5th.515 | Barbender [70 h]; Helper [40 h]; Physical Progress [2820 h]; Reinforcement Steel [1 MT1]; TATA Projects Ltd-25 | 96,512.5 |
| RB2-SS-6th.365 |  | Shuttering of wall upto Flight 1 | 2d | 2027-12-02 | 2027-12-04 | RB2-SS-6th.350 | Carpenter [20 h]; Helper [10 h]; Physical Progress [2820 h]; Formwork [10 Sq m]; TATA Projects Ltd-25 | 11,651.6 |
| RB2-SS-6th.380 |  | Casting of wall upto Flight 1 | 1d | 2027-12-04 | 2027-12-06 | RB2-SS-6th.365 | Mason; Helper; Physical Progress [1410 h]; Concrete M40 [3 m3]; TATA Projects Ltd-25 | 29,601 |
| RB2-SS-6th.400 |  | Shuttering of Staircase upto Flight 1 | 1d | 2027-12-06 | 2027-12-07 | RB2-SS-6th.380 | Carpenter [20 h]; Helper [10 h]; Physical Progress [1410 h]; Formwork [10 Sq m]; TATA Projects Ltd-25 | 11,651.6 |
| RB2-SS-6th.415 |  | Reinforcement of Staircase upto Flight 1 | 1d | 2027-12-07 | 2027-12-08 | RB2-SS-6th.400 | Barbender [70 h]; Helper [40 h]; Physical Progress [1410 h]; Reinforcement Steel [1 MT1]; TATA Projects Ltd-25 | 96,512.5 |
| RB2-SS-6th.420 |  | MEP coordination upto Flight 1 | 1d | 2027-12-08 | 2027-12-09 | RB2-SS-6th.415 | Physical Progress [1410 h]; TATA Projects Ltd-25 |  |
| RB2-SS-6th.425 |  | Casting of Staircase upto Flight 1 | 1d | 2027-12-09 | 2027-12-10 | RB2-SS-6th.420 | Mason; Helper; Physical Progress [1410 h]; Concrete M40 [3 m3]; TATA Projects Ltd-25 | 29,601 |
| RB2-SS-6th.440 |  | Reinforcement of wall upto Flight 2 | 2d | 2027-12-10 | 2027-12-13 | RB2-SS-6th.425 | Barbender [70 h]; Helper [40 h]; Physical Progress [2820 h]; Reinforcement Steel [1 MT1]; TATA Projects Ltd-25 | 96,512.5 |
| RB2-SS-6th.455 |  | Shuttering of wall upto Flight 2 | 2d | 2027-12-13 | 2027-12-15 | RB2-SS-6th.440 | Carpenter [20 h]; Helper [10 h]; Physical Progress [2820 h]; Formwork [10 Sq m]; TATA Projects Ltd-25 | 11,651.6 |
| RB2-SS-6th.465 |  | Casting of wall upto Flight 2 | 1d | 2027-12-15 | 2027-12-16 | RB2-SS-6th.455 | Mason; Helper; Physical Progress [1410 h]; Concrete M40 [3 m3]; TATA Projects Ltd-25 | 29,601 |
| RB2-SS-6th.480 |  | Shuttering of Staircase upto Flight 2 | 1d | 2027-12-16 | 2027-12-17 | RB2-SS-6th.465 | Carpenter [20 h]; Helper [10 h]; Physical Progress [1410 h]; Formwork [10 Sq m]; TATA Projects Ltd-25 | 11,651.6 |
| RB2-SS-6th.485 |  | Reinforcement of Staircase upto Flight 2 | 1d | 2027-12-17 | 2027-12-18 | RB2-SS-6th.480 | Barbender [70 h]; Helper [40 h]; Physical Progress [1410 h]; Reinforcement Steel [1 MT1]; TATA Projects Ltd-25 | 96,512.5 |
|  | 2 | **Slab** |  | 2027-12-11 | 2028-01-13 |  |  |  |
| RB2-SS-6th.445 |  | Shuttering | 4d | 2027-12-11 | 2027-12-16 | RB2-SS-6th.430 | Carpenter [6020 h]; Helper [3010 h]; Physical Progress [5650 h]; Formwork [3607 Sq m]; TATA Projects Ltd-25 | 4,202,732.12 |
| RB2-SS-6th.470 |  | Reinforcement Bottom Net with chairs | 3d | 2027-12-16 | 2027-12-20 | RB2-SS-6th.445 | Barbender [2270 h]; Helper [1140 h]; Physical Progress [4240 h]; Reinforcement Steel [34 MT1]; TATA Projects Ltd-25 | 3,281,425 |
| RB2-SS-6th.490 |  | Laying of PT Tendon | 4d | 2027-12-20 | 2027-12-24 | RB2-SS-6th.470 | Physical Progress [5650 h]; TATA Projects Ltd-25 |  |
| RB2-SS-6th.500 |  | Reinforcement Top Net | 2d | 2027-12-24 | 2027-12-28 | RB2-SS-6th.490 | Barbender [2270 h]; Helper [1140 h]; Physical Progress [2820 h]; Reinforcement Steel [34 MT1]; TATA Projects Ltd-25 | 3,281,425 |
| RB2-SS-6th.510 |  | MEP Coordination | 1d | 2027-12-28 | 2027-12-29 | RB2-SS-6th.470, RB2-SS-6th.500, RB2-SS-6th.485 | Physical Progress [1410 h]; TATA Projects Ltd-25 |  |
| RB2-SS-6th.520 |  | Concrete of Slab | 1d | 2027-12-29 | 2027-12-30 | RB2-SS-6th.510 | Mason [50 h]; Helper [50 h]; Physical Progress [1410 h]; Concrete M40 [902 m3]; TATA Projects Ltd-25 | 8,900,034 |
| RB2-SS-6th.530 |  | Wait for Strength Gain | 6d | 2027-12-30 | 2028-01-07 | RB2-SS-6th.520 | Physical Progress [8470 h]; TATA Projects Ltd-25 |  |
| RB2-SS-6th.540 |  | PT Work | 5d | 2028-01-07 | 2028-01-13 | RB2-SS-6th.530, RB2-SS-5th.540 | PT [13 MT1]; Helper [100 h]; PT Fitter [100 h]; Physical Progress [7060 h]; TATA Projects Ltd-25 | 2,470,000 |
|  | 5 | **Pour 5** |  | 2027-11-19 | 2027-12-29 |  |  |  |
|  | 1 | **Column** |  | 2027-11-19 | 2027-11-29 |  |  |  |
| RB2-SS-6th.360 |  | Reinforcement | 3d | 2027-11-19 | 2027-11-23 | RB2-SS-5th.530 | Barbender [3800 h]; Helper [1900 h]; Physical Progress [4240 h]; Reinforcement Steel [57 MT1]; TATA Projects Ltd-25 | 5,501,212.5 |
| RB2-SS-6th.395 |  | LPS | 1d | 2027-11-23 | 2027-11-24 | RB2-SS-6th.360 | LPS [36849 INR]; Physical Progress [1410 h]; TATA Projects Ltd-25 | 36,849 |
| RB2-SS-6th.410 |  | Shuttering | 3d | 2027-11-24 | 2027-11-27 | RB2-SS-6th.360, RB2-SS-6th.395 | Carpenter [1760 h]; Helper [880 h]; Physical Progress [4240 h]; Formwork [1056 Sq m]; TATA Projects Ltd-25 | 1,230,408.96 |
| RB2-SS-6th.435 |  | Concrete | 1d | 2027-11-27 | 2027-11-29 | RB2-SS-6th.410 | Mason [50 h]; Helper [50 h]; Physical Progress [1410 h]; Concrete M40 [264 m3]; TATA Projects Ltd-25 | 2,604,888 |

| ID | WBS | Activity | Duration | Start | Finish | Predecessors | Calendar | Resources | Cost |
| --- | --- | --- | --- | --- | --- | --- | --- | --- | --- |
|  | 2 | **Slab** |  | 2027-11-29 | 2027-12-29 |  |  |  |  |
| RB2-SS-6th.450 |  | Shuttering | 4d | 2027-11-29 | 2027-12-03 | RB2-SS-6th.435 |  | Carpenter [4180 h]; Helper [2090 h]; Physical Progress [5650 h]; Formwork [2503 Sq m]; TATA Projects Ltd-25 | 2,916,395.48 |
| RB2-SS-6th.475 |  | Reinforcement Bottom Net with chairs | 3d | 2027-12-03 | 2027-12-07 | RB2-SS-6th.450 |  | Barbender [1540 h]; Helper [770 h]; Physical Progress [4240 h]; Reinforcement Steel [23 MT1]; TATA Projects Ltd-25 | 2,219,787.5 |
| RB2-SS-6th.495 |  | Laying of PT Tendon | 3d | 2027-12-07 | 2027-12-10 | RB2-SS-6th.475 |  | Physical Progress [5650 h]; TATA Projects Ltd-25 |  |
| RB2-SS-6th.505 |  | Reinforcement Top Net | 2d | 2027-12-10 | 2027-12-13 | RB2-SS-6th.495 |  | Barbender [1540 h]; Helper [770 h]; Physical Progress [2820 h]; Reinforcement Steel [23 MT1]; TATA Projects Ltd-25 | 2,219,787.5 |
| RB2-SS-6th.515 |  | MEP Coordination | 1d | 2027-12-13 | 2027-12-14 | RB2-SS-6th.475, RB2-SS-6th.505 |  | Physical Progress [1410 h]; TATA Projects Ltd-25 |  |
| RB2-SS-6th.525 |  | Concrete of Slab | 1d | 2027-12-14 | 2027-12-15 | RB2-SS-6th.515 |  | Mason [50 h]; Helper [50 h]; Physical Progress [1410 h]; Concrete M40 [626 m3]; TATA Projects Ltd-25 | 6,176,742 |
| RB2-SS-6th.535 |  | Wait for Strength Gain | 6d | 2027-12-15 | 2027-12-22 | RB2-SS-6th.525 |  | Physical Progress [8470 h]; TATA Projects Ltd-25 |  |
| RB2-SS-6th.545 |  | PT Work | 5d | 2027-12-22 | 2027-12-29 | RB2-SS-6th.535, RB2-SS-5th.545 |  | PT [9 MT1]; Helper [100 h]; PT Fitter [100 h]; Physical Progress [7060 h]; TATA Projects Ltd-25 | 1,710,000 |
|  | 14 | **Roof Top** |  | 2027-12-15 | 2028-01-22 |  |  |  |  |
|  | 1 | **Column, Shear Wall** |  | 2027-12-15 | 2027-12-31 |  |  |  |  |
| RB2-SS-Roof10 |  | Reinforcement | 6d | 2027-12-15 | 2027-12-22 | E-GFC-ST-RB2-225, RB2-SS-6th.525 |  | Barbender [140 h]; Helper [70 h]; Physical Progress [8470 h]; Reinforcement Steel [2 MT1]; TATA Projects Ltd-25 | 193,025 |
| RB2-SS-Roof15 |  | Shuttering | 6d | 2027-12-22 | 2027-12-30 | RB2-SS-Roof10 |  | Carpenter [170 h]; Helper [90 h]; Physical Progress [8470 h]; Formwork [100 Sq m]; TATA Projects Ltd-25 | 116,516 |
| RB2-SS-Roof20 |  | Concrete | 1d | 2027-12-30 | 2027-12-31 | RB2-SS-Roof15 |  | Mason [50 h]; Helper [50 h]; Physical Progress [1410 h]; Concrete M40 [10 m3]; TATA Projects Ltd-25 | 98,670 |
|  | 2 | **Slab** |  | 2027-12-31 | 2028-01-22 |  |  |  |  |
| RB2-SS-Roof25 |  | Shuttering | 8d | 2027-12-31 | 2028-01-11 | RB2-SS-Roof20 |  | Carpenter [170 h]; Helper [90 h]; Physical Progress [11300 h]; Formwork [100 Sq m]; TATA Projects Ltd-25 | 116,516 |
| RB2-SS-Roof30 |  | Reinforcement | 8d | 2028-01-11 | 2028-01-20 | RB2-SS-Roof25 |  | Barbender [140 h]; Helper [70 h]; Physical Progress [11300 h]; Reinforcement Steel [2 MT1]; TATA Projects Ltd-25 | 193,025 |
| RB2-SS-Roof35 |  | MEP Coordination | 1d | 2028-01-20 | 2028-01-21 | RB2-SS-Roof30 |  | Physical Progress [1410 h]; TATA Projects Ltd-25 |  |
| RB2-SS-Roof40 |  | Concrete of Slab | 1d | 2028-01-21 | 2028-01-22 | RB2-SS-Roof35, RB2-SS-6th.90, RB2-SS-6th.245, RB2-SS-6th.460, RB2-SS-6th.545 |  | Mason [50 h]; Helper [50 h]; Physical Progress [1410 h]; Concrete M40 [10 m3]; TATA Projects Ltd-25 | 98,670 |
|  | 4 | **Wet finishes, MEP, ID** |  | 2027-07-09 | 2029-05-16 |  |  |  |  |
|  | 1 | **Ground Floor** |  | 2027-07-09 | 2029-02-08 |  |  |  |  |
|  | 1 | **Wet Finishes** |  | 2027-07-09 | 2027-10-19 |  |  |  |  |
| RB2-WMI-GF10 |  | Deshuttering | 4d | 2027-07-09 | 2027-07-14 | RB2-SS-1st.500 | CSD-LKO Calender (6 day + Holiday)-25 | Physical Progress [2140 h]; TATA Projects Ltd-25 |  |
| RB2-WMI-GF15 |  | Brickwork/Blockwork | 30d | 2027-07-14 | 2027-08-18 | RB2-WMI-GF10, E-GFC-AR-RB2-50 | CSD-LKO Calender (6 day + Holiday)-25 | Masonry [1008 CuM]; Mason [6720 h]; Helper [3360 h]; Physical Progress [16020 h]; TATA Projects Ltd-25 | 9,611,642.88 |
| RB2-WMI-GF55 |  | Waterproofing of Toilets, Balcony & Kitchen | 15d | 2027-08-18 | 2027-09-06 | RB2-WMI-GF15 | CSD-LKO Calender (6 day + Holiday)-25 | Waterproofing [8564838 INR]; Waterprrofing Mason [8160 h]; Helper [4080 h]; Physical Progress [8010 h]; TATA Projects Ltd-25 | 8,564,838 |
| RB2-WMI-GF95 |  | Plaster | 15d | 2027-09-29 | 2027-10-19 | RB2-WMI-GF30, RB2-WMI-GF75, RB2-WMI-GF80, RB2-WMI-GF55 | CSD-LKO Calender (6 day + Holiday)-25 | Plaster [22828 Sqr Mtr]; Mason [15220 h]; Helper [7610 h]; Physical Progress [8010 h]; TATA Projects Ltd-25 | 12,644,657.48 |

| ID | WBS | Activity | Duration | Start | Finish | Predecessors | Calendar | Resources | Cost |
| --- | --- | --- | --- | --- | --- | --- | --- | --- | --- |
|  | 5 | **MEP** |  | 2027-07-14 | 2029-01-03 |  |  |  |  |
|  | 2 | **HVAC** |  | 2027-08-18 | 2028-11-09 |  |  |  |  |
|  | 1 | **1st Fix** |  | 2027-08-18 | 2027-12-11 |  |  |  |  |
| RB2-WMI-GF50 |  | Duct Support Fabrication | 35d | 2027-08-18 | 2027-09-29 | RB2-WMI-GF15, E-GFC-MEP-RB2-210 | CSD-LKO Calender (6 day + Holiday)-25 | Physical Progress [8010 h]; HVAC [225002 INR]; TATA Projects Ltd-25 | 225,002 |
| RB2-WMI-GF100 |  | Installing duct hangers and supports | 30d | 2027-09-29 | 2027-11-06 | RB2-WMI-GF50, E-GFC-MEP-RB2-210 | CSD-LKO Calender (6 day + Holiday)-25 | Physical Progress [5340 h]; HVAC [450004 INR]; TATA Projects Ltd-25 | 450,004 |
| RB2-WMI-GF130 |  | Laying concealed/exposed refrigerant piping | 30d | 2027-11-06 | 2027-12-11 | RB2-WMI-GF100, E-GFC-MEP-RB2-210 | CSD-LKO Calender (6 day + Holiday)-25 | Physical Progress [8010 h]; HVAC [112501 INR]; TATA Projects Ltd-25 | 112,501 |
| RB2-WMI-GF135 |  | Laying concealed/exposed drain piping | 30d | 2027-11-06 | 2027-12-11 | RB2-WMI-GF100, E-GFC-MEP-RB2-210 | CSD-LKO Calender (6 day + Holiday)-25 | Physical Progress [5340 h]; HVAC [675006 INR]; TATA Projects Ltd-25 | 675,006 |
|  | 2 | **2nd Fix** |  | 2027-11-06 | 2028-04-11 |  |  |  |  |
| RB2-WMI-GF140 |  | Duct installation | 30d | 2027-11-06 | 2027-12-11 | RB2-WMI-GF100 | CSD-LKO Calender (6 day + Holiday)-25 | Physical Progress [8010 h]; HVAC [1687515 INR]; TATA Projects Ltd-25 | 1,687,515 |
| RB2-WMI-GF170 |  | Insulation of ducts (thermal/acoustic) | 10d | 2027-12-11 | 2027-12-23 | RB2-WMI-GF140 | CSD-LKO Calender (6 day + Holiday)-25 | Physical Progress [3200 h]; HVAC [1012509 INR]; TATA Projects Ltd-25 | 1,012,509 |
| RB2-WMI-GF185 |  | Installation of chilled water piping / VRF piping | 25d | 2027-12-23 | 2028-01-24 | RB2-WMI-GF170 | CSD-LKO Calender (6 day + Holiday)-25 | Physical Progress [3200 h]; HVAC [2250021 INR]; TATA Projects Ltd-25 | 2,250,021 |
| RB2-WMI-GF220 |  | Installation of indoor units including AHU, FCU | 45d | 2028-01-24 | 2028-03-18 | RB2-WMI-GF185, RB2-WMI-GF130, RB2-WMI-GF135 | CSD-LKO Calender (6 day + Holiday)-25 | Physical Progress [24030 h]; HVAC [2025019 INR]; TATA Projects Ltd-25 | 2,025,019 |
| RB2-WMI-GF250 |  | Connecting refrigerant and drain piping to indoor units | 20d | 2028-03-18 | 2028-04-11 | RB2-WMI-GF220 | CSD-LKO Calender (6 day + Holiday)-25 | Physical Progress [3200 h]; HVAC [562505 INR]; TATA Projects Ltd-25 | 562,505 |
|  | 3 | **Final Fix** |  | 2028-08-29 | 2028-11-09 |  |  |  |  |
| RB2-WMI-GF260 |  | Installing grills, diffusers, dampers | 30d | 2028-08-29 | 2028-10-04 | RB2-WMI-GF255 | CSD-LKO Calender (6 day + Holiday)-25 | Physical Progress [3200 h]; HVAC [1125010 INR]; TATA Projects Ltd-25 | 1,125,010 |
| RB2-WMI-GF285 |  | Installation of thermostats and control panels | 30d | 2028-10-05 | 2028-11-09 | RB2-WMI-GF260, RB2-WMI-GF275, RB2-WMI-GF250 | CSD-LKO Calender (6 day + Holiday)-25 | Physical Progress [3200 h]; HVAC [562505 INR]; TATA Projects Ltd-25 | 562,505 |
|  | 1 | **Electrical** |  | 2027-07-14 | 2028-12-14 |  |  |  |  |
|  | 1 | **1st Fix** |  | 2027-07-14 | 2027-09-29 |  |  |  |  |
| RB2-WMI-GF20 |  | Slab Conduiting | 35d | 2027-07-14 | 2027-08-24 | RB2-WMI-GF10, E-GFC-MEP-RB2-210 | CSD-LKO Calender (6 day + Holiday)-25 | Physical Progress [13350 h]; Electrical [1141818 INR]; TATA Projects Ltd-25 | 1,141,818 |
| RB2-WMI-GF30 |  | Wall Conduiting | 30d | 2027-08-18 | 2027-09-23 | RB2-WMI-GF15, E-GFC-MEP-RB2-210 | CSD-LKO Calender (6 day + Holiday)-25 | Physical Progress [5340 h]; Electrical [570909 INR]; TATA Projects Ltd-25 | 570,909 |
| RB2-WMI-GF75 |  | Installing back boxes for switches, sockets | 5d | 2027-09-23 | 2027-09-29 | RB2-WMI-GF30, RB2-WMI-GF20, E-GFC-MEP-RB2-210 | CSD-LKO Calender (6 day + Holiday)-25 | Physical Progress [2670 h]; Electrical [342545 INR]; TATA Projects Ltd-25 | 342,545 |
|  | 2 | **2nd Fix** |  | 2027-10-19 | 2028-04-11 |  |  |  |  |
| RB2-WMI-GF115 |  | Cable tray laying | 25d | 2027-10-19 | 2027-11-18 | RB2-WMI-GF95 | CSD-LKO Calender (6 day + Holiday)-25 | Physical Progress [13350 h]; Electrical [456727 INR]; TATA Projects Ltd-25 | 456,727 |
| RB2-WMI-GF155 |  | Cabling & Wire Pulling | 60d | 2027-11-18 | 2028-01-31 | RB2-WMI-GF115 | CSD-LKO Calender (6 day + Holiday)-25 | Physical Progress [24030 h]; Electrical [2283636 INR]; TATA Projects Ltd-25 | 2,283,636 |
| RB2-WMI-GF205 |  | DB fixing and connecting | 35d | 2028-01-31 | 2028-03-13 | RB2-WMI-GF155 | CSD-LKO Calender (6 day + Holiday)-25 | Physical Progress [8010 h]; Electrical [342545 INR]; TATA Projects Ltd-25 | 342,545 |
| RB2-WMI-GF210 |  | Floor Rising Main Installation | 20d | 2028-01-31 | 2028-02-23 | RB2-WMI-GF155 | CSD-LKO Calender (6 day + Holiday)-25 | Physical Progress [2670 h]; Electrical [1598545 INR]; TATA Projects Ltd-25 | 1,598,545 |
| RB2-WMI-GF225 |  | Floor/Distribution Panel Installation | 15d | 2028-03-13 | 2028-03-30 | RB2-WMI-GF205 | CSD-LKO Calender (6 day + Holiday)-25 | Physical Progress [2670 h]; Electrical [913454 INR]; TATA Projects Ltd-25 | 913,454 |
| RB2-WMI-GF245 |  | Equipment Earthing | 10d | 2028-03-30 | 2028-04-11 | RB2-WMI-GF225, RB2-WMI-GF210 | CSD-LKO Calender (6 day + Holiday)-25 | Physical Progress [5340 h]; Electrical [342545 INR]; TATA Projects Ltd-25 | 342,545 |

| ID | WBS | Activity | Duration | Start | Finish | Predecessors | Calendar | Resources | Cost |
| --- | --- | --- | --- | --- | --- | --- | --- | --- | --- |
|  | 3 | **Final Fix** |  | 2028-10-05 | 2028-12-14 |  |  |  |  |
| RB2-WMI-GF280 |  | Switches & Socket | 30d | 2028-10-05 | 2028-11-09 | RB2-WMI-GF275 | CSD-LKO Calender (6 day + Holiday)-25 | Physical Progress [10680 h]; Electrical [1141818 INR]; TATA Projects Ltd-25 | 1,141,818 |
| RB2-WMI-GF325 |  | Light Fixtures | 30d | 2028-11-10 | 2028-12-14 | RB2-WMI-GF280, RB2-WMI-GF245 | CSD-LKO Calender (6 day + Holiday)-25 | Physical Progress [8010 h]; Electrical [1712727 INR]; TATA Projects Ltd-25 | 1,712,727 |
|  | 3 | **Plumbing** |  | 2027-08-18 | 2028-11-27 |  |  |  |  |
|  | 1 | **1st Fix** |  | 2027-08-18 | 2028-01-24 |  |  |  |  |
| RB2-WMI-GF35 |  | Fixing pipe supports and clamps | 35d | 2027-08-18 | 2027-09-29 | RB2-WMI-GF15, E-GFC-MEP-RB2-210 | CSD-LKO Calender (6 day + Holiday)-25 | Physical Progress [5340 h]; Plumbing [470624 INR]; TATA Projects Ltd-25 | 470,624 |
| RB2-WMI-GF60 |  | Laying water supply pipes (hot & cold) | 35d | 2027-09-29 | 2027-11-12 | RB2-WMI-GF35, E-GFC-MEP-RB2-210 | CSD-LKO Calender (6 day + Holiday)-25 | Physical Progress [8010 h]; Plumbing [941247 INR]; TATA Projects Ltd-25 | 941,247 |
| RB2-WMI-GF65 |  | Laying drainage pipes (soil, waste, vent) | 35d | 2027-09-29 | 2027-11-12 | RB2-WMI-GF35, E-GFC-MEP-RB2-210 | CSD-LKO Calender (6 day + Holiday)-25 | Physical Progress [8010 h]; Plumbing [941247 INR]; TATA Projects Ltd-25 | 941,247 |
| RB2-WMI-GF70 |  | Installation of plumbing fixture base supports (WC frames, sink brackets) | 30d | 2027-11-12 | 2027-12-17 | RB2-WMI-GF65, E-GFC-MEP-RB2-210 | CSD-LKO Calender (6 day + Holiday)-25 | Physical Progress [3200 h]; Plumbing [470624 INR]; TATA Projects Ltd-25 | 470,624 |
| RB2-WMI-GF85 |  | Pressure testing of water supply lines | 25d | 2027-12-17 | 2028-01-18 | RB2-WMI-GF60, RB2-WMI-GF65, RB2-WMI-GF70, E-GFC-MEP-RB2-210 | CSD-LKO Calender (6 day + Holiday)-25 | Physical Progress [3740 h]; Plumbing [94125 INR]; TATA Projects Ltd-25 | 94,125 |
| RB2-WMI-GF90 |  | Installation of concealed parts of toilet fixtures | 30d | 2027-12-17 | 2028-01-24 | RB2-WMI-GF70, E-GFC-MEP-RB2-210 | CSD-LKO Calender (6 day + Holiday)-25 | Physical Progress [5340 h]; Plumbing [470624 INR]; TATA Projects Ltd-25 | 470,624 |
|  | 2 | **2nd FIx** |  | 2028-01-18 | 2028-04-11 |  |  |  |  |
| RB2-WMI-GF110 |  | Insulation of hot water pipes (if applicable) | 30d | 2028-01-18 | 2028-02-23 | RB2-WMI-GF85 | CSD-LKO Calender (6 day + Holiday)-25 | Physical Progress [3200 h]; Plumbing [470624 INR]; TATA Projects Ltd-25 | 470,624 |
| RB2-WMI-GF120 |  | Installation of vertical risers and main distribution lines | 35d | 2028-01-24 | 2028-03-06 | RB2-WMI-GF95, RB2-WMI-GF85, RB2-WMI-GF90 | CSD-LKO Calender (6 day + Holiday)-25 | Physical Progress [10680 h]; Plumbing [941247 INR]; TATA Projects Ltd-25 | 941,247 |
| RB2-WMI-GF145 |  | Testing drainage lines for leakage/blockage | 30d | 2028-02-23 | 2028-03-30 | RB2-WMI-GF70, RB2-WMI-GF110 | CSD-LKO Calender (6 day + Holiday)-25 | Physical Progress [3200 h]; Plumbing [94125 INR]; TATA Projects Ltd-25 | 94,125 |
| RB2-WMI-GF160 |  | Fixing floor traps and gully traps | 30d | 2028-03-06 | 2028-04-11 | RB2-WMI-GF120 | CSD-LKO Calender (6 day + Holiday)-25 | Physical Progress [3200 h]; Plumbing [282374 INR]; TATA Projects Ltd-25 | 282,374 |
|  | 3 | **Final FIx** |  | 2028-10-05 | 2028-11-27 |  |  |  |  |
| RB2-WMI-GF290 |  | Installation of sanitary fixtures (WC, washbasins, urinals, sinks) | 10d | 2028-10-05 | 2028-10-16 | RB2-WMI-GF275, RB2-WMI-GF145, RB2-WMI-GF160 | CSD-LKO Calender (6 day + Holiday)-25 | Physical Progress [5340 h]; Plumbing [1882495 INR]; TATA Projects Ltd-25 | 1,882,495 |
| RB2-WMI-GF315 |  | Installation of CP fittings (taps, mixers, showers, health faucets) | 10d | 2028-10-18 | 2028-10-28 | RB2-WMI-GF290, RB2-WMI-GF275 | CSD-LKO Calender (6 day + Holiday)-25 | Physical Progress [5340 h]; Plumbing [941247 INR]; TATA Projects Ltd-25 | 941,247 |
| RB2-WMI-GF320 |  | Connection of appliances | 25d | 2028-10-30 | 2028-11-27 | RB2-WMI-GF315 | CSD-LKO Calender (6 day + Holiday)-25 | Physical Progress [3740 h]; Plumbing [470624 INR]; TATA Projects Ltd-25 | 470,624 |
|  | 4 | **Firefighting** |  | 2027-08-18 | 2028-12-20 |  |  |  |  |
|  | 1 | **1st Fix** |  | 2027-08-18 | 2027-12-17 |  |  |  |  |
| RB2-WMI-GF40 |  | Fixing pipe supports and hangers | 35d | 2027-08-18 | 2027-09-29 | RB2-WMI-GF15, E-GFC-MEP-RB2-210 | CSD-LKO Calender (6 day + Holiday)-25 | Physical Progress [5340 h]; Firefighting [366658 INR]; TATA Projects Ltd-25 | 366,658 |
| RB2-WMI-GF105 |  | Laying branch piping | 35d | 2027-09-29 | 2027-11-12 | RB2-WMI-GF40, E-GFC-MEP-RB2-210 | CSD-LKO Calender (6 day + Holiday)-25 | Physical Progress [8010 h]; Firefighting [785695 INR]; TATA Projects Ltd-25 | 785,695 |
| RB2-WMI-GF150 |  | Hydrostatic pressure testing of piping | 30d | 2027-11-12 | 2027-12-17 | RB2-WMI-GF105, E-GFC-MEP-RB2-210 | CSD-LKO Calender (6 day + Holiday)-25 | Physical Progress [3200 h]; Firefighting [104759 INR]; TATA Projects Ltd-25 | 104,759 |

| ID | WBS | Activity | Duration | Start | Finish | Predecessors | Calendar | Resources | Cost |
| --- | --- | --- | --- | --- | --- | --- | --- | --- | --- |
|  | 2 | **2nd Fix** |  | 2027-12-17 | 2028-03-13 |  |  |  |  |
| RB2-WMI-GF175 |  | Installation of vertical risers and distribution piping in shafts | 35d | 2027-12-17 | 2028-01-31 | RB2-WMI-GF95, RB2-WMI-GF150 | CSD-LKO Calender (6 day + Holiday)-25 | Physical Progress [13350 h]; Firefighting [1047593 INR]; TATA Projects Ltd-25 | 1,047,593 |
| RB2-WMI-GF180 |  | Painting/insulation of exposed fire pipes | 30d | 2027-12-17 | 2028-01-24 | RB2-WMI-GF150 | CSD-LKO Calender (6 day + Holiday)-25 | Physical Progress [5340 h]; Firefighting [52380 INR]; TATA Projects Ltd-25 | 52,380 |
| RB2-WMI-GF190 |  | Testing risers and branch lines for leakage | 30d | 2028-01-24 | 2028-02-29 | RB2-WMI-GF180 | CSD-LKO Calender (6 day + Holiday)-25 | Physical Progress [3200 h]; Firefighting [104759 INR]; TATA Projects Ltd-25 | 104,759 |
| RB2-WMI-GF200 |  | Installation of sprinkler branch lines in ceilings | 35d | 2028-01-31 | 2028-03-13 | RB2-WMI-GF175 | CSD-LKO Calender (6 day + Holiday)-25 | Physical Progress [13350 h]; Firefighting [785695 INR]; TATA Projects Ltd-25 | 785,695 |
|  | 3 | **Final FIx** |  | 2028-10-05 | 2028-12-20 |  |  |  |  |
| RB2-WMI-GF295 |  | Installation of hydrant accessories (valves, hose reels, cabinets) | 25d | 2028-10-05 | 2028-11-03 | RB2-WMI-GF275 | CSD-LKO Calender (6 day + Holiday)-25 | Physical Progress [5340 h]; Firefighting [523796 INR]; TATA Projects Ltd-25 | 523,796 |
| RB2-WMI-GF300 |  | Installation of portable fire extinguishers | 30d | 2028-10-05 | 2028-11-09 | RB2-WMI-GF275 | CSD-LKO Calender (6 day + Holiday)-25 | Physical Progress [3200 h]; Firefighting [52380 INR]; TATA Projects Ltd-25 | 52,380 |
| RB2-WMI-GF330 |  | Installation of sprinkler heads, nozzles, and final alignment | 35d | 2028-11-10 | 2028-12-20 | RB2-WMI-GF275, RB2-WMI-GF305, RB2-WMI-GF200 | CSD-LKO Calender (6 day + Holiday)-25 | Physical Progress [24030 h]; Firefighting [785695 INR]; TATA Projects Ltd-25 | 785,695 |
| RB2-WMI-GF335 |  | Integration with fire alarm system | 20d | 2028-11-10 | 2028-12-02 | RB2-WMI-GF300 | CSD-LKO Calender (6 day + Holiday)-25 | Physical Progress [10680 h]; Firefighting [261898 INR]; TATA Projects Ltd-25 | 261,898 |
|  | 5 | **ELV** |  | 2027-07-14 | 2029-01-03 |  |  |  |  |
|  | 1 | **1st Fix** |  | 2027-07-14 | 2027-09-29 |  |  |  |  |
| RB2-WMI-GF25 |  | Slab Conduiting | 35d | 2027-07-14 | 2027-08-24 | RB2-WMI-GF10, E-GFC-MEP-RB2-210 | CSD-LKO Calender (6 day + Holiday)-25 | Physical Progress [13350 h]; ELV [469789 INR]; TATA Projects Ltd-25 | 469,789 |
| RB2-WMI-GF45 |  | Wall Conduiting | 30d | 2027-08-18 | 2027-09-23 | RB2-WMI-GF15, E-GFC-MEP-RB2-210 | CSD-LKO Calender (6 day + Holiday)-25 | Physical Progress [5340 h]; ELV [201338 INR]; TATA Projects Ltd-25 | 201,338 |
| RB2-WMI-GF80 |  | Installing back boxes for switches, sockets | 5d | 2027-09-23 | 2027-09-29 | RB2-WMI-GF45, RB2-WMI-GF25, E-GFC-MEP-RB2-210 | CSD-LKO Calender (6 day + Holiday)-25 | Physical Progress [2670 h]; ELV [335564 INR]; TATA Projects Ltd-25 | 335,564 |
|  | 2 | **2nd Fix** |  | 2027-10-19 | 2028-04-11 |  |  |  |  |
| RB2-WMI-GF125 |  | Cable tray installation | 30d | 2027-10-19 | 2027-11-24 | RB2-WMI-GF95 | CSD-LKO Calender (6 day + Holiday)-25 | Physical Progress [13350 h]; ELV [335564 INR]; TATA Projects Ltd-25 | 335,564 |
| RB2-WMI-GF165 |  | Cabeling of ELV cable - IT/Fire Alarm/Public Address | 45d | 2027-11-24 | 2028-01-18 | RB2-WMI-GF125 | CSD-LKO Calender (6 day + Holiday)-25 | Physical Progress [24030 h]; ELV [805353 INR]; TATA Projects Ltd-25 | 805,353 |
| RB2-WMI-GF195 |  | ELV Rack Installation | 30d | 2028-01-18 | 2028-02-23 | RB2-WMI-GF165 | CSD-LKO Calender (6 day + Holiday)-25 | Physical Progress [5340 h]; ELV [335564 INR]; TATA Projects Ltd-25 | 335,564 |
| RB2-WMI-GF215 |  | Termination of cables at junction boxes, patch panels, and control panels | 15d | 2028-02-23 | 2028-03-13 | RB2-WMI-GF195 | CSD-LKO Calender (6 day + Holiday)-25 | Physical Progress [16020 h]; ELV [335564 INR]; TATA Projects Ltd-25 | 335,564 |
| RB2-WMI-GF230 |  | Fixing devices like CCTV camera bases, card reader bases, smoke detector bases, PA Bases, Wifi Bases | 25d | 2028-03-13 | 2028-04-11 | RB2-WMI-GF215 | CSD-LKO Calender (6 day + Holiday)-25 | Physical Progress [2140 h]; ELV [671128 INR]; TATA Projects Ltd-25 | 671,128 |
|  | 3 | **Final Fix** |  | 2028-11-10 | 2029-01-03 |  |  |  |  |
| RB2-WMI-GF340 |  | Installation of data and Voice Faceplate | 25d | 2028-11-10 | 2028-12-08 | RB2-WMI-GF275, RB2-WMI-GF305, RB2-WMI-GF230 | CSD-LKO Calender (6 day + Holiday)-25 | Physical Progress [8010 h]; ELV [335564 INR]; TATA Projects Ltd-25 | 335,564 |
| RB2-WMI-GF345 |  | Installation of Camera & Wifi | 30d | 2028-11-10 | 2028-12-14 | RB2-WMI-GF275, RB2-WMI-GF305 | CSD-LKO Calender (6 day + Holiday)-25 | Physical Progress [8010 h]; ELV [335564 INR]; TATA Projects Ltd-25 | 335,564 |
| RB2-WMI-GF350 |  | Installation of fire alarm devices + Public Address | 15d | 2028-11-10 | 2028-11-27 | RB2-WMI-GF275, RB2-WMI-GF305 | CSD-LKO Calender (6 day + Holiday)-25 | Physical Progress [8010 h]; ELV [402677 INR]; TATA Projects Ltd-25 | 402,677 |
| RB2-WMI-GF365 |  | Installation of Active System | 15d | 2028-11-28 | 2028-12-14 | RB2-WMI-GF350 | CSD-LKO Calender (6 day + Holiday)-25 | Physical Progress [8010 h]; ELV [671128 INR]; TATA Projects Ltd-25 | 671,128 |
| RB2-WMI-GF370 |  | Fire Panel Intallation & Integration | 25d | 2028-11-28 | 2028-12-27 | RB2-WMI-GF350 | CSD-LKO Calender (6 day + Holiday)-25 | Physical Progress [13350 h]; ELV [335564 INR]; TATA Projects Ltd-25 | 335,564 |
| RB2-WMI-GF375 |  | Installation & Integration of Audio Visual System | 25d | 2028-11-28 | 2028-12-27 | RB2-WMI-GF350 | CSD-LKO Calender (6 day + Holiday)-25 | Physical Progress [13350 h]; ELV [335564 INR]; TATA Projects Ltd-25 | 335,564 |
| RB2-WMI-GF380 |  | Installation & Integration of Access Control | 25d | 2028-11-28 | 2028-12-27 | RB2-WMI-GF350 | CSD-LKO Calender (6 day + Holiday)-25 | Physical Progress [13350 h]; ELV [335564 INR]; TATA Projects Ltd-25 | 335,564 |
| RB2-WMI-GF385 |  | Integration of Active components | 15d | 2028-12-15 | 2029-01-03 | RB2-WMI-GF365 | CSD-LKO Calender (6 day + Holiday)-25 | Physical Progress [8010 h]; ELV [134226 INR]; TATA Projects Ltd-25 | 134,226 |

| ID | WBS | Activity | Duration | Start | Finish | Predecessors | Calendar | Resources | Cost |
| --- | --- | --- | --- | --- | --- | --- | --- | --- | --- |
|  | 2 | **Dry Finishes/ID Works** |  | 2028-06-05 | 2029-02-08 |  |  |  |  |
| RB2-WMI-GF235 |  | Running of Wild Air | 1d | 2028-06-05 | 2028-06-05 | RB2-F-(GF-2nd)40, RB2-WMI-GF140, RB2-WMI-GF170, RB2-WMI-GF185, RB2-WMI-GF220, RB2-WMI-GF250 | CSD-LKO Calender (6 day + Holiday)-25 | Physical Progress [530 h]; TATA Projects Ltd-25 |  |
| RB2-WMI-GF240 |  | Wall finish ID Works | 35d | 2028-06-06 | 2028-07-15 | RB2-WMI-GF235, P-R&O_ID-Fur-20, P-R&O_ID-Wall-20, P-R&O_ID-Floor-20, P-R&O_ID-SF-20, P-R&O_ID-FC-20, P-R&O_ID-Doors-20, RB2-WMI-GF115, RB2-WMI-GF155, RB2-WMI-GF205, RB2-WMI-GF210, RB2-WMI-GF225, RB2-WMI-GF245, RB2-WMI-GF110, RB2-WMI-GF120, RB2-WMI-GF145, RB2-WMI-GF160, RB2-WMI-GF175, RB2-WMI-GF180, RB2-WMI-GF190, RB2-WMI-GF200, RB2-WMI-GF125, RB2-WMI-GF165, RB2-WMI-GF195, RB2-WMI-GF215, RB2-WMI-GF230 | CSD-LKO Calender (6 day + Holiday)-25 | ID Work [6333907 INR]; Physical Progress [16020 h]; TATA Projects Ltd-25 | 6,333,907 |
| RB2-WMI-GF255 |  | False Ceiling Installation | 35d | 2028-07-17 | 2028-08-28 | RB2-WMI-GF240 | CSD-LKO Calender (6 day + Holiday)-25 | ID Work [8445209 INR]; Physical Progress [24030 h]; TATA Projects Ltd-25 | 8,445,209 |
| RB2-WMI-GF265 |  | Flooring of toilets/kitchen/Balcony | 15d | 2028-08-29 | 2028-09-14 | RB2-WMI-GF55, RB2-WMI-GF255 | CSD-LKO Calender (6 day + Holiday)-25 | ID Work [3378084 INR]; Physical Progress [8010 h]; TATA Projects Ltd-25 | 3,378,084 |
| RB2-WMI-GF270 |  | Doors & Windows/Fire Doors/Shaft Doors | 35d | 2028-09-15 | 2028-10-28 | RB2-WMI-GF240, RB2-WMI-GF265 | CSD-LKO Calender (6 day + Holiday)-25 | ID Work [4222604 INR]; Physical Progress [8010 h]; TATA Projects Ltd-25 | 4,222,604 |
| RB2-WMI-GF275 |  | Putty & First Coat of Paint | 15d | 2028-09-15 | 2028-10-04 | RB2-WMI-GF240, RB2-WMI-GF265 | CSD-LKO Calender (6 day + Holiday)-25 | Painting [6989 Sq m]; Painter [6990 h]; Helper [6990 h]; Physical Progress [8010 h]; TATA Projects Ltd-25 | 1,597,825.18 |
| RB2-WMI-GF305 |  | Flooring | 30d | 2028-10-05 | 2028-11-09 | RB2-WMI-GF275 | CSD-LKO Calender (6 day + Holiday)-25 | ID Work [4222604 INR]; Physical Progress [16020 h]; TATA Projects Ltd-25 | 4,222,604 |
| RB2-WMI-GF310 |  | Railing for staircase | 35d | 2028-10-05 | 2028-11-15 | RB2-WMI-GF240, RB2-WMI-GF275 | CSD-LKO Calender (6 day + Holiday)-25 | ID Work [1266781 INR]; Physical Progress [8010 h]; TATA Projects Ltd-25 | 1,266,781 |
| RB2-WMI-GF355 |  | Fixed Furniture | 10d | 2028-11-10 | 2028-11-21 | RB2-WMI-GF305 | CSD-LKO Calender (6 day + Holiday)-25 | ID Work [2111302 INR]; Physical Progress [5340 h]; TATA Projects Ltd-25 | 2,111,302 |
| RB2-WMI-GF360 |  | False ceiling final finishes | 15d | 2028-11-10 | 2028-11-27 | RB2-WMI-GF285 | CSD-LKO Calender (6 day + Holiday)-25 | ID Work [844521 INR]; Physical Progress [8010 h]; TATA Projects Ltd-25 | 844,521 |
| RB2-WMI-GF390 |  | Final coat of paint | 15d | 2029-01-04 | 2029-01-20 | RB2-WMI-GF360, RB2-WMI-GF310, RB2-WMI-GF355, RB2-WMI-GF325, RB2-WMI-GF320, RB2-WMI-GF335, RB2-WMI-GF330, RB2-WMI-GF385, RB2-WMI-GF380, RB2-WMI-GF375, RB2-WMI-GF370, RB2-WMI-GF345, RB2-WMI-GF340, RB2-WMI-GF270 | CSD-LKO Calender (6 day + Holiday)-25 | Painting [6989 Sq m]; Painter [6990 h]; Helper [6990 h]; Physical Progress [8010 h]; TATA Projects Ltd-25 | 1,597,825.18 |
| RB2-WMI-GF395 |  | Soft Furnishing & Signage | 15d | 2029-01-22 | 2029-02-08 | RB2-WMI-GF390 | CSD-LKO Calender (6 day + Holiday)-25 | ID Work [8445209 INR]; Physical Progress [2670 h]; TATA Projects Ltd-25 | 8,445,209 |
| RB2-WMI-GF400 |  | Loose Furniture | 15d | 2029-01-22 | 2029-02-08 | RB2-WMI-GF390 | CSD-LKO Calender (6 day + Holiday)-25 | ID Work [2955823 INR]; Physical Progress [2670 h]; TATA Projects Ltd-25 | 2,955,823 |
|  | 2 | **First Floor** |  | 2027-08-21 | 2029-02-08 |  |  |  |  |
|  | 1 | **Wet Finishes** |  | 2027-08-21 | 2027-12-02 |  |  |  |  |
| RB2-WMI-1st10 |  | Deshuttering | 4d | 2027-08-21 | 2027-08-26 | RB2-SS-2nd.505 | CSD-LKO Calender (6 day + Holiday)-25 | Physical Progress [2140 h]; TATA Projects Ltd-25 |  |
| RB2-WMI-1st15 |  | Brickwork/Blockwork | 30d | 2027-08-26 | 2027-10-01 | RB2-WMI-1st10, E-GFC-AR-RB2-135 | CSD-LKO Calender (6 day + Holiday)-25 | Masonry [1008 CuM]; Mason [6720 h]; Helper [3360 h]; Physical Progress [16020 h]; TATA Projects Ltd-25 | 9,611,642.88 |
| RB2-WMI-1st55 |  | Waterproofing of Toilets, Balcony & Kitchen | 15d | 2027-10-01 | 2027-10-21 | RB2-WMI-1st15 | CSD-LKO Calender (6 day + Holiday)-25 | Waterproofing [8564838 INR]; Waterprrofing Mason [8160 h]; Helper [4080 h]; Physical Progress [8010 h]; TATA Projects Ltd-25 | 8,564,838 |
| RB2-WMI-1st95 |  | Plaster | 15d | 2027-11-15 | 2027-12-02 | RB2-WMI-1st30, RB2-WMI-1st75, RB2-WMI-1st80, RB2-WMI-1st55 | CSD-LKO Calender (6 day + Holiday)-25 | Plaster [22828 Sqr Mtr]; Mason [15220 h]; Helper [7610 h]; Physical Progress [8010 h]; TATA Projects Ltd-25 | 12,644,657.48 |
|  | 5 | **MEP** |  | 2027-08-26 | 2029-01-03 |  |  |  |  |
|  | 2 | **HVAC** |  | 2027-10-01 | 2028-11-09 |  |  |  |  |
|  | 1 | **1st Fix** |  | 2027-10-01 | 2028-01-27 |  |  |  |  |
| RB2-WMI-1st50 |  | Duct Support Fabrication | 35d | 2027-10-01 | 2027-11-15 | RB2-WMI-1st15, E-GFC-MEP-RB2-215 | CSD-LKO Calender (6 day + Holiday)-25 | Physical Progress [8010 h]; HVAC [225002 INR]; TATA Projects Ltd-25 | 225,002 |
| RB2-WMI-1st100 |  | Installing duct hangers and supports | 30d | 2027-11-15 | 2027-12-20 | RB2-WMI-1st50, E-GFC-MEP-RB2-215 | CSD-LKO Calender (6 day + Holiday)-25 | Physical Progress [5340 h]; HVAC [450004 INR]; TATA Projects Ltd-25 | 450,004 |
| RB2-WMI-1st130 |  | Laying concealed/exposed refrigerant piping | 30d | 2027-12-20 | 2028-01-27 | RB2-WMI-1st100, E-GFC-MEP-RB2-215 | CSD-LKO Calender (6 day + Holiday)-25 | Physical Progress [8010 h]; HVAC [112501 INR]; TATA Projects Ltd-25 | 112,501 |
| RB2-WMI-1st135 |  | Laying concealed/exposed drain piping | 30d | 2027-12-20 | 2028-01-27 | RB2-WMI-1st100, E-GFC-MEP-RB2-215 | CSD-LKO Calender (6 day + Holiday)-25 | Physical Progress [5340 h]; HVAC [675006 INR]; TATA Projects Ltd-25 | 675,006 |

| ID | WBS | Activity | Duration | Start | Finish | Predecessors | Calendar | Resources | Cost |
| --- | --- | --- | --- | --- | --- | --- | --- | --- | --- |
|  | 2 | **2nd Fix** |  | 2027-12-20 | 2028-05-03 |  |  |  |  |
| RB2-WMI-1st140 |  | Duct installation | 20d | 2027-12-20 | 2028-01-14 | RB2-WMI-1st100 | CSD-LKO Calender (6 day + Holiday)-25 | Physical Progress [8010 h]; HVAC [1687515 INR]; TATA Projects Ltd-25 | 1,687,515 |
| RB2-WMI-1st170 |  | Insulation of ducts (thermal/acoustic) | 10d | 2028-01-14 | 2028-01-27 | RB2-WMI-1st140 | CSD-LKO Calender (6 day + Holiday)-25 | Physical Progress [3200 h]; HVAC [1012509 INR]; TATA Projects Ltd-25 | 1,012,509 |
| RB2-WMI-1st185 |  | Installation of chilled water piping / VRF piping | 20d | 2028-01-27 | 2028-02-19 | RB2-WMI-1st170 | CSD-LKO Calender (6 day + Holiday)-25 | Physical Progress [3200 h]; HVAC [2250021 INR]; TATA Projects Ltd-25 | 2,250,021 |
| RB2-WMI-1st220 |  | Installation of indoor units including AHU, FCU | 45d | 2028-02-19 | 2028-04-13 | RB2-WMI-1st185, RB2-WMI-1st130, RB2-WMI-1st135 | CSD-LKO Calender (6 day + Holiday)-25 | Physical Progress [24030 h]; HVAC [2025019 INR]; TATA Projects Ltd-25 | 2,025,019 |
| RB2-WMI-1st255 |  | Connecting refrigerant and drain piping to indoor units | 15d | 2028-04-13 | 2028-05-03 | RB2-WMI-1st220 | CSD-LKO Calender (6 day + Holiday)-25 | Physical Progress [3200 h]; HVAC [562505 INR]; TATA Projects Ltd-25 | 562,505 |
|  | 3 | **Final Fix** |  | 2028-08-29 | 2028-11-09 |  |  |  |  |
| RB2-WMI-1st260 |  | Installing grills, diffusers, dampers | 30d | 2028-08-29 | 2028-10-04 | RB2-WMI-1st245 | CSD-LKO Calender (6 day + Holiday)-25 | Physical Progress [3200 h]; HVAC [1125010 INR]; TATA Projects Ltd-25 | 1,125,010 |
| RB2-WMI-1st285 |  | Installation of thermostats and control panels | 30d | 2028-10-05 | 2028-11-09 | RB2-WMI-1st260, RB2-WMI-1st275, RB2-WMI-1st255 | CSD-LKO Calender (6 day + Holiday)-25 | Physical Progress [3200 h]; HVAC [562505 INR]; TATA Projects Ltd-25 | 562,505 |
|  | 1 | **Electrical** |  | 2027-08-26 | 2028-12-14 |  |  |  |  |
|  | 1 | **1st Fix** |  | 2027-08-26 | 2027-11-15 |  |  |  |  |
| RB2-WMI-1st20 |  | Slab Conduiting | 35d | 2027-08-26 | 2027-10-08 | RB2-WMI-1st10, E-GFC-MEP-RB2-215 | CSD-LKO Calender (6 day + Holiday)-25 | Physical Progress [13350 h]; Electrical [1141818 INR]; TATA Projects Ltd-25 | 1,141,818 |
| RB2-WMI-1st30 |  | Wall Conduiting | 30d | 2027-10-01 | 2027-11-09 | RB2-WMI-1st15, E-GFC-MEP-RB2-215 | CSD-LKO Calender (6 day + Holiday)-25 | Physical Progress [5340 h]; Electrical [570909 INR]; TATA Projects Ltd-25 | 570,909 |
| RB2-WMI-1st75 |  | Installing back boxes for switches, sockets | 5d | 2027-11-09 | 2027-11-15 | RB2-WMI-1st30, RB2-WMI-1st20, E-GFC-MEP-RB2-215 | CSD-LKO Calender (6 day + Holiday)-25 | Physical Progress [2670 h]; Electrical [342545 INR]; TATA Projects Ltd-25 | 342,545 |
|  | 2 | **2nd Fix** |  | 2027-12-02 | 2028-05-03 |  |  |  |  |
| RB2-WMI-1st115 |  | Cable tray laying | 20d | 2027-12-02 | 2027-12-27 | RB2-WMI-1st95 | CSD-LKO Calender (6 day + Holiday)-25 | Physical Progress [13350 h]; Electrical [456727 INR]; TATA Projects Ltd-25 | 456,727 |
| RB2-WMI-1st155 |  | Cabling & Wire Pulling | 55d | 2027-12-27 | 2028-03-02 | RB2-WMI-1st115 | CSD-LKO Calender (6 day + Holiday)-25 | Physical Progress [24030 h]; Electrical [2283636 INR]; TATA Projects Ltd-25 | 2,283,636 |
| RB2-WMI-1st205 |  | DB fixing and connecting | 25d | 2028-03-02 | 2028-04-01 | RB2-WMI-1st155 | CSD-LKO Calender (6 day + Holiday)-25 | Physical Progress [8010 h]; Electrical [342545 INR]; TATA Projects Ltd-25 | 342,545 |
| RB2-WMI-1st210 |  | Floor Rising Main Installation | 20d | 2028-03-02 | 2028-03-27 | RB2-WMI-1st155 | CSD-LKO Calender (6 day + Holiday)-25 | Physical Progress [2670 h]; Electrical [1598545 INR]; TATA Projects Ltd-25 | 1,598,545 |
| RB2-WMI-1st235 |  | Floor/Distribution Panel Installation | 15d | 2028-04-01 | 2028-04-20 | RB2-WMI-1st205 | CSD-LKO Calender (6 day + Holiday)-25 | Physical Progress [2670 h]; Electrical [913454 INR]; TATA Projects Ltd-25 | 913,454 |
| RB2-WMI-1st250 |  | Equipment Earthing | 10d | 2028-04-20 | 2028-05-03 | RB2-WMI-1st235, RB2-WMI-1st210 | CSD-LKO Calender (6 day + Holiday)-25 | Physical Progress [5340 h]; Electrical [342545 INR]; TATA Projects Ltd-25 | 342,545 |
|  | 3 | **Final Fix** |  | 2028-10-05 | 2028-12-14 |  |  |  |  |
| RB2-WMI-1st280 |  | Switches & Socket | 30d | 2028-10-05 | 2028-11-09 | RB2-WMI-1st275 | CSD-LKO Calender (6 day + Holiday)-25 | Physical Progress [10680 h]; Electrical [1141818 INR]; TATA Projects Ltd-25 | 1,141,818 |
| RB2-WMI-1st325 |  | Light Fixtures | 30d | 2028-11-10 | 2028-12-14 | RB2-WMI-1st280, RB2-WMI-1st250 | CSD-LKO Calender (6 day + Holiday)-25 | Physical Progress [8010 h]; Electrical [1712727 INR]; TATA Projects Ltd-25 | 1,712,727 |

| ID | WBS | Activity | Duration | Start | Finish | Predecessors | Calendar | Resources | Cost |
| --- | --- | --- | --- | --- | --- | --- | --- | --- | --- |
|  | 3 | **Plumbing** |  | 2027-10-01 | 2028-11-27 |  |  |  |  |
|  | 1 | **1st Fix** |  | 2027-10-01 | 2028-03-08 |  |  |  |  |
| RB2-WMI-1st35 |  | Fixing pipe supports and clamps | 35d | 2027-10-01 | 2027-11-15 | RB2-WMI-1st15, E-GFC-MEP-RB2-215 | CSD-LKO Calender (6 day + Holiday)-25 | Physical Progress [5340 h]; Plumbing [470624 INR]; TATA Projects Ltd-25 | 470,624 |
| RB2-WMI-1st60 |  | Laying water supply pipes (hot & cold) | 35d | 2027-11-15 | 2027-12-27 | RB2-WMI-1st35, E-GFC-MEP-RB2-215 | CSD-LKO Calender (6 day + Holiday)-25 | Physical Progress [8010 h]; Plumbing [941247 INR]; TATA Projects Ltd-25 | 941,247 |
| RB2-WMI-1st65 |  | Laying drainage pipes (soil, waste, vent) | 35d | 2027-11-15 | 2027-12-27 | RB2-WMI-1st35, E-GFC-MEP-RB2-215 | CSD-LKO Calender (6 day + Holiday)-25 | Physical Progress [8010 h]; Plumbing [941247 INR]; TATA Projects Ltd-25 | 941,247 |
| RB2-WMI-1st70 |  | Installation of plumbing fixture base supports (WC frames, sink brackets) | 30d | 2027-12-27 | 2028-02-02 | RB2-WMI-1st65, E-GFC-MEP-RB2-215 | CSD-LKO Calender (6 day + Holiday)-25 | Physical Progress [3200 h]; Plumbing [470624 INR]; TATA Projects Ltd-25 | 470,624 |
| RB2-WMI-1st85 |  | Pressure testing of water supply lines | 25d | 2028-02-02 | 2028-03-02 | RB2-WMI-1st60, RB2-WMI-1st65, RB2-WMI-1st70, E-GFC-MEP-RB2-215 | CSD-LKO Calender (6 day + Holiday)-25 | Physical Progress [3740 h]; Plumbing [94125 INR]; TATA Projects Ltd-25 | 94,125 |
| RB2-WMI-1st90 |  | Installation of concealed parts of toilet fixtures | 30d | 2028-02-02 | 2028-03-08 | RB2-WMI-1st70, E-GFC-MEP-RB2-215 | CSD-LKO Calender (6 day + Holiday)-25 | Physical Progress [5340 h]; Plumbing [470624 INR]; TATA Projects Ltd-25 | 470,624 |
|  | 2 | **2nd FIx** |  | 2028-03-02 | 2028-05-03 |  |  |  |  |
| RB2-WMI-1st110 |  | Insulation of hot water pipes (if applicable) | 30d | 2028-03-02 | 2028-04-07 | RB2-WMI-1st85 | CSD-LKO Calender (6 day + Holiday)-25 | Physical Progress [3200 h]; Plumbing [470624 INR]; TATA Projects Ltd-25 | 470,624 |
| RB2-WMI-1st120 |  | Installation of vertical risers and main distribution lines | 35d | 2028-03-08 | 2028-04-20 | RB2-WMI-1st95, RB2-WMI-1st85, RB2-WMI-1st90 | CSD-LKO Calender (6 day + Holiday)-25 | Physical Progress [10680 h]; Plumbing [941247 INR]; TATA Projects Ltd-25 | 941,247 |
| RB2-WMI-1st145 |  | Testing drainage lines for leakage/blockage | 20d | 2028-04-07 | 2028-05-03 | RB2-WMI-1st70, RB2-WMI-1st110 | CSD-LKO Calender (6 day + Holiday)-25 | Physical Progress [3200 h]; Plumbing [94125 INR]; TATA Projects Ltd-25 | 94,125 |
| RB2-WMI-1st160 |  | Fixing floor traps and gully traps | 10d | 2028-04-20 | 2028-05-03 | RB2-WMI-1st120 | CSD-LKO Calender (6 day + Holiday)-25 | Physical Progress [3200 h]; Plumbing [282374 INR]; TATA Projects Ltd-25 | 282,374 |
|  | 3 | **Final FIx** |  | 2028-10-05 | 2028-11-27 |  |  |  |  |
| RB2-WMI-1st290 |  | Installation of sanitary fixtures (WC, washbasins, urinals, sinks) | 10d | 2028-10-05 | 2028-10-16 | RB2-WMI-1st275, RB2-WMI-1st160, RB2-WMI-1st145 | CSD-LKO Calender (6 day + Holiday)-25 | Physical Progress [5340 h]; Plumbing [1882495 INR]; TATA Projects Ltd-25 | 1,882,495 |
| RB2-WMI-1st315 |  | Installation of CP fittings (taps, mixers, showers, health faucets) | 10d | 2028-10-18 | 2028-10-28 | RB2-WMI-1st290, RB2-WMI-1st275 | CSD-LKO Calender (6 day + Holiday)-25 | Physical Progress [5340 h]; Plumbing [941247 INR]; TATA Projects Ltd-25 | 941,247 |
| RB2-WMI-1st320 |  | Connection of appliances | 25d | 2028-10-30 | 2028-11-27 | RB2-WMI-1st315 | CSD-LKO Calender (6 day + Holiday)-25 | Physical Progress [3740 h]; Plumbing [470624 INR]; TATA Projects Ltd-25 | 470,624 |
|  | 4 | **Firefighting** |  | 2027-10-01 | 2028-12-20 |  |  |  |  |
|  | 1 | **1st Fix** |  | 2027-10-01 | 2028-02-02 |  |  |  |  |
| RB2-WMI-1st40 |  | Fixing pipe supports and hangers | 35d | 2027-10-01 | 2027-11-15 | RB2-WMI-1st15, E-GFC-MEP-RB2-215 | CSD-LKO Calender (6 day + Holiday)-25 | Physical Progress [5340 h]; Firefighting [366658 INR]; TATA Projects Ltd-25 | 366,658 |
| RB2-WMI-1st105 |  | Laying branch piping | 35d | 2027-11-15 | 2027-12-27 | RB2-WMI-1st40, E-GFC-MEP-RB2-215 | CSD-LKO Calender (6 day + Holiday)-25 | Physical Progress [8010 h]; Firefighting [785695 INR]; TATA Projects Ltd-25 | 785,695 |
| RB2-WMI-1st150 |  | Hydrostatic pressure testing of piping | 30d | 2027-12-27 | 2028-02-02 | RB2-WMI-1st105, E-GFC-MEP-RB2-215 | CSD-LKO Calender (6 day + Holiday)-25 | Physical Progress [3200 h]; Firefighting [104759 INR]; TATA Projects Ltd-25 | 104,759 |
|  | 2 | **2nd Fix** |  | 2028-02-02 | 2028-04-26 |  |  |  |  |
| RB2-WMI-1st175 |  | Installation of vertical risers and distribution piping in shafts | 35d | 2028-02-02 | 2028-03-15 | RB2-WMI-1st95, RB2-WMI-1st150 | CSD-LKO Calender (6 day + Holiday)-25 | Physical Progress [13350 h]; Firefighting [1047593 INR]; TATA Projects Ltd-25 | 1,047,593 |
| RB2-WMI-1st180 |  | Painting/insulation of exposed fire pipes | 30d | 2028-02-02 | 2028-03-08 | RB2-WMI-1st150 | CSD-LKO Calender (6 day + Holiday)-25 | Physical Progress [5340 h]; Firefighting [52380 INR]; TATA Projects Ltd-25 | 52,380 |
| RB2-WMI-1st190 |  | Testing risers and branch lines for leakage | 30d | 2028-03-08 | 2028-04-13 | RB2-WMI-1st180 | CSD-LKO Calender (6 day + Holiday)-25 | Physical Progress [3200 h]; Firefighting [104759 INR]; TATA Projects Ltd-25 | 104,759 |
| RB2-WMI-1st200 |  | Installation of sprinkler branch lines in ceilings | 35d | 2028-03-15 | 2028-04-26 | RB2-WMI-1st175 | CSD-LKO Calender (6 day + Holiday)-25 | Physical Progress [13350 h]; Firefighting [785695 INR]; TATA Projects Ltd-25 | 785,695 |

| ID | WBS | Activity | Duration | Start | Finish | Predecessors | Calendar | Resources | Cost |
| --- | --- | --- | --- | --- | --- | --- | --- | --- | --- |
|  | 3 | **Final FIx** |  | 2028-10-05 | 2028-12-20 |  |  |  |  |
| RB2-WMI-1st295 |  | Installation of hydrant accessories (valves, hose reels, cabinets) | 25d | 2028-10-05 | 2028-11-03 | RB2-WMI-1st275 | CSD-LKO Calender (6 day + Holiday)-25 | Physical Progress [5340 h]; Firefighting [523796 INR]; TATA Projects Ltd-25 | 523,796 |
| RB2-WMI-1st300 |  | Installation of portable fire extinguishers | 30d | 2028-10-05 | 2028-11-09 | RB2-WMI-1st275 | CSD-LKO Calender (6 day + Holiday)-25 | Physical Progress [3200 h]; Firefighting [52380 INR]; TATA Projects Ltd-25 | 52,380 |
| RB2-WMI-1st330 |  | Installation of sprinkler heads, nozzles, and final alignment | 35d | 2028-11-10 | 2028-12-20 | RB2-WMI-1st275, RB2-WMI-1st305, RB2-WMI-1st200 | CSD-LKO Calender (6 day + Holiday)-25 | Physical Progress [24030 h]; Firefighting [785695 INR]; TATA Projects Ltd-25 | 785,695 |
| RB2-WMI-1st335 |  | Integration with fire alarm system | 20d | 2028-11-10 | 2028-12-02 | RB2-WMI-1st300 | CSD-LKO Calender (6 day + Holiday)-25 | Physical Progress [10680 h]; Firefighting [261898 INR]; TATA Projects Ltd-25 | 261,898 |
|  | 5 | **ELV** |  | 2027-08-26 | 2029-01-03 |  |  |  |  |
|  | 1 | **1st Fix** |  | 2027-08-26 | 2027-11-15 |  |  |  |  |
| RB2-WMI-1st25 |  | Slab Conduiting | 35d | 2027-08-26 | 2027-10-08 | RB2-WMI-1st10, E-GFC-MEP-RB2-215 | CSD-LKO Calender (6 day + Holiday)-25 | Physical Progress [13350 h]; ELV [469789 INR]; TATA Projects Ltd-25 | 469,789 |
| RB2-WMI-1st45 |  | Wall Conduiting | 30d | 2027-10-01 | 2027-11-09 | RB2-WMI-1st15, E-GFC-MEP-RB2-215 | CSD-LKO Calender (6 day + Holiday)-25 | Physical Progress [5340 h]; ELV [201338 INR]; TATA Projects Ltd-25 | 201,338 |
| RB2-WMI-1st80 |  | Installing back boxes for switches, sockets | 5d | 2027-11-09 | 2027-11-15 | RB2-WMI-1st45, RB2-WMI-1st25, E-GFC-MEP-RB2-215 | CSD-LKO Calender (6 day + Holiday)-25 | Physical Progress [2670 h]; ELV [335564 INR]; TATA Projects Ltd-25 | 335,564 |
|  | 2 | **2nd Fix** |  | 2027-12-02 | 2028-05-03 |  |  |  |  |
| RB2-WMI-1st125 |  | Cable tray installation | 25d | 2027-12-02 | 2028-01-03 | RB2-WMI-1st95 | CSD-LKO Calender (6 day + Holiday)-25 | Physical Progress [13350 h]; ELV [335564 INR]; TATA Projects Ltd-25 | 335,564 |
| RB2-WMI-1st165 |  | Cabeling of ELV cable - IT/Fire Alarm/Public Address | 45d | 2028-01-03 | 2028-02-25 | RB2-WMI-1st125 | CSD-LKO Calender (6 day + Holiday)-25 | Physical Progress [24030 h]; ELV [805353 INR]; TATA Projects Ltd-25 | 805,353 |
| RB2-WMI-1st195 |  | ELV Rack Installation | 20d | 2028-02-25 | 2028-03-21 | RB2-WMI-1st165 | CSD-LKO Calender (6 day + Holiday)-25 | Physical Progress [5340 h]; ELV [335564 INR]; TATA Projects Ltd-25 | 335,564 |
| RB2-WMI-1st215 |  | Termination of cables at junction boxes, patch panels, and control panels | 10d | 2028-03-21 | 2028-04-01 | RB2-WMI-1st195 | CSD-LKO Calender (6 day + Holiday)-25 | Physical Progress [16020 h]; ELV [335564 INR]; TATA Projects Ltd-25 | 335,564 |
| RB2-WMI-1st240 |  | Fixing devices like CCTV camera bases, card reader bases, smoke detector bases, PA Bases, Wifi Bases | 25d | 2028-04-01 | 2028-05-03 | RB2-WMI-1st215 | CSD-LKO Calender (6 day + Holiday)-25 | Physical Progress [2140 h]; ELV [671128 INR]; TATA Projects Ltd-25 | 671,128 |
|  | 3 | **FInal Fix** |  | 2028-11-10 | 2029-01-03 |  |  |  |  |
| RB2-WMI-1st340 |  | Installation of data and Voice Faceplate | 25d | 2028-11-10 | 2028-12-08 | RB2-WMI-1st275, RB2-WMI-1st305, RB2-WMI-1st240 | CSD-LKO Calender (6 day + Holiday)-25 | Physical Progress [8010 h]; ELV [335564 INR]; TATA Projects Ltd-25 | 335,564 |
| RB2-WMI-1st345 |  | Installation of Camera & Wifi | 30d | 2028-11-10 | 2028-12-14 | RB2-WMI-1st275, RB2-WMI-1st305 | CSD-LKO Calender (6 day + Holiday)-25 | Physical Progress [8010 h]; ELV [335564 INR]; TATA Projects Ltd-25 | 335,564 |
| RB2-WMI-1st350 |  | Installation of fire alarm devices + Public Address | 15d | 2028-11-10 | 2028-11-27 | RB2-WMI-1st275, RB2-WMI-1st305 | CSD-LKO Calender (6 day + Holiday)-25 | Physical Progress [8010 h]; ELV [402677 INR]; TATA Projects Ltd-25 | 402,677 |
| RB2-WMI-1st365 |  | Installation of Active System | 15d | 2028-11-28 | 2028-12-14 | RB2-WMI-1st350 | CSD-LKO Calender (6 day + Holiday)-25 | Physical Progress [8010 h]; ELV [671128 INR]; TATA Projects Ltd-25 | 671,128 |
| RB2-WMI-1st370 |  | Fire Panel Intallation & Integration | 25d | 2028-11-28 | 2028-12-27 | RB2-WMI-1st350 | CSD-LKO Calender (6 day + Holiday)-25 | Physical Progress [13350 h]; ELV [335564 INR]; TATA Projects Ltd-25 | 335,564 |
| RB2-WMI-1st375 |  | Installation & Integration of Audio Visual System | 25d | 2028-11-28 | 2028-12-27 | RB2-WMI-1st350 | CSD-LKO Calender (6 day + Holiday)-25 | Physical Progress [13350 h]; ELV [335564 INR]; TATA Projects Ltd-25 | 335,564 |
| RB2-WMI-1st380 |  | Installation & Integration of Access Control | 25d | 2028-11-28 | 2028-12-27 | RB2-WMI-1st350 | CSD-LKO Calender (6 day + Holiday)-25 | Physical Progress [13350 h]; ELV [335564 INR]; TATA Projects Ltd-25 | 335,564 |
| RB2-WMI-1st385 |  | Integration of Active components | 15d | 2028-12-15 | 2029-01-03 | RB2-WMI-1st365 | CSD-LKO Calender (6 day + Holiday)-25 | Physical Progress [8010 h]; ELV [134226 INR]; TATA Projects Ltd-25 | 134,226 |

| ID | WBS | Activity | Duration | Start | Finish | Predecessors | Calendar | Resources | Cost |
| --- | --- | --- | --- | --- | --- | --- | --- | --- | --- |
|  | 2 | **Dry Finishes/ID Works** |  | 2028-06-05 | 2029-02-08 |  |  |  |  |
| RB2-WMI-1st225 |  | Running of Wild Air | 1d | 2028-06-05 | 2028-06-05 | RB2-F-(GF-2nd)40, RB2-WMI-1st140, RB2-WMI-1st170, RB2-WMI-1st185, RB2-WMI-1st220, RB2-WMI-1st255 | CSD-LKO Calender (6 day + Holiday)-25 | Physical Progress [530 h]; TATA Projects Ltd-25 |  |
| RB2-WMI-1st230 |  | Wall finish ID Works | 35d | 2028-06-06 | 2028-07-15 | RB2-WMI-1st225, RB2-WMI-1st115, RB2-WMI-1st155, RB2-WMI-1st205, RB2-WMI-1st210, RB2-WMI-1st235, RB2-WMI-1st250, RB2-WMI-1st110, RB2-WMI-1st120, RB2-WMI-1st145, RB2-WMI-1st160, RB2-WMI-1st175, RB2-WMI-1st180, RB2-WMI-1st190, RB2-WMI-1st200, RB2-WMI-1st125, RB2-WMI-1st165, RB2-WMI-1st195, RB2-WMI-1st215, RB2-WMI-1st240 | CSD-LKO Calender (6 day + Holiday)-25 | ID Work [6333907 INR]; Physical Progress [16020 h]; TATA Projects Ltd-25 | 6,333,907 |
| RB2-WMI-1st245 |  | False Ceiling Installation | 35d | 2028-07-17 | 2028-08-28 | RB2-WMI-1st230 | CSD-LKO Calender (6 day + Holiday)-25 | ID Work [8445209 INR]; Physical Progress [24030 h]; TATA Projects Ltd-25 | 8,445,209 |
| RB2-WMI-1st265 |  | Flooring of toilets/kitchen/Balcony | 15d | 2028-08-29 | 2028-09-14 | RB2-WMI-1st55, RB2-WMI-1st245 | CSD-LKO Calender (6 day + Holiday)-25 | ID Work [3378084 INR]; Physical Progress [8010 h]; TATA Projects Ltd-25 | 3,378,084 |
| RB2-WMI-1st270 |  | Doors & Windows/Fire Doors/Shaft Doors | 35d | 2028-09-15 | 2028-10-28 | RB2-WMI-1st230, RB2-WMI-1st265 | CSD-LKO Calender (6 day + Holiday)-25 | ID Work [4222604 INR]; Physical Progress [8010 h]; TATA Projects Ltd-25 | 4,222,604 |
| RB2-WMI-1st275 |  | Putty & First Coat of Paint | 15d | 2028-09-15 | 2028-10-04 | RB2-WMI-1st230, RB2-WMI-1st265 | CSD-LKO Calender (6 day + Holiday)-25 | Painting [6989 Sq m]; Painter [6990 h]; Helper [6990 h]; Physical Progress [8010 h]; TATA Projects Ltd-25 | 1,597,825.18 |
| RB2-WMI-1st305 |  | Flooring | 30d | 2028-10-05 | 2028-11-09 | RB2-WMI-1st275 | CSD-LKO Calender (6 day + Holiday)-25 | ID Work [4222604 INR]; Physical Progress [16020 h]; TATA Projects Ltd-25 | 4,222,604 |
| RB2-WMI-1st310 |  | Railing for staircase | 35d | 2028-10-05 | 2028-11-15 | RB2-WMI-1st230, RB2-WMI-1st275 | CSD-LKO Calender (6 day + Holiday)-25 | ID Work [1266781 INR]; Physical Progress [8010 h]; TATA Projects Ltd-25 | 1,266,781 |
| RB2-WMI-1st355 |  | Fixed Furniture | 10d | 2028-11-10 | 2028-11-21 | RB2-WMI-1st305 | CSD-LKO Calender (6 day + Holiday)-25 | ID Work [2111302 INR]; Physical Progress [5340 h]; TATA Projects Ltd-25 | 2,111,302 |
| RB2-WMI-1st360 |  | False ceiling final finishes | 15d | 2028-11-10 | 2028-11-27 | RB2-WMI-1st285 | CSD-LKO Calender (6 day + Holiday)-25 | ID Work [844521 INR]; Physical Progress [8010 h]; TATA Projects Ltd-25 | 844,521 |
| RB2-WMI-1st390 |  | Final coat of paint | 15d | 2029-01-04 | 2029-01-20 | RB2-WMI-1st360, RB2-WMI-1st310, RB2-WMI-1st355, RB2-WMI-1st325, RB2-WMI-1st320, RB2-WMI-1st335, RB2-WMI-1st330, RB2-WMI-1st385, RB2-WMI-1st380, RB2-WMI-1st375, RB2-WMI-1st370, RB2-WMI-1st345, RB2-WMI-1st340, RB2-WMI-1st270 | CSD-LKO Calender (6 day + Holiday)-25 | Painting [6989 Sq m]; Painter [6990 h]; Helper [6990 h]; Physical Progress [8010 h]; TATA Projects Ltd-25 | 1,597,825.18 |
| RB2-WMI-1st395 |  | Soft Furnishing & Signage | 15d | 2029-01-22 | 2029-02-08 | RB2-WMI-1st390 | CSD-LKO Calender (6 day + Holiday)-25 | ID Work [8445209 INR]; Physical Progress [2670 h]; TATA Projects Ltd-25 | 8,445,209 |
| RB2-WMI-1st400 |  | Loose Furniture | 15d | 2029-01-22 | 2029-02-08 | RB2-WMI-1st390 | CSD-LKO Calender (6 day + Holiday)-25 | ID Work [2955823 INR]; Physical Progress [2670 h]; TATA Projects Ltd-25 | 2,955,823 |
|  | 4 | **Second Floor** |  | 2027-09-28 | 2029-03-21 |  |  |  |  |
|  | 1 | **Wet Finishes** |  | 2027-09-28 | 2028-01-10 |  |  |  |  |
| RB2-WMI-2nd10 |  | Deshuttering | 4d | 2027-09-28 | 2027-10-04 | RB2-SS-3rd.510 | CSD-LKO Calender (6 day + Holiday)-25 | Physical Progress [2140 h]; TATA Projects Ltd-25 |  |
| RB2-WMI-2nd15 |  | Brickwork/Blockwork | 30d | 2027-10-04 | 2027-11-10 | RB2-WMI-2nd10, E-GFC-AR-RB2-140 | CSD-LKO Calender (6 day + Holiday)-25 | Masonry [1008 CuM]; Mason [6720 h]; Helper [3360 h]; Physical Progress [16020 h]; TATA Projects Ltd-25 | 9,611,642.88 |
| RB2-WMI-2nd55 |  | Waterproofing of Toilets, Balcony & Kitchen | 15d | 2027-11-10 | 2027-11-27 | RB2-WMI-2nd15 | CSD-LKO Calender (6 day + Holiday)-25 | Waterproofing [8564838 INR]; Waterprrofing Mason [8160 h]; Helper [4080 h]; Physical Progress [8010 h]; TATA Projects Ltd-25 | 8,564,838 |
| RB2-WMI-2nd95 |  | Plaster | 15d | 2027-12-21 | 2028-01-10 | RB2-WMI-2nd30, RB2-WMI-2nd75, RB2-WMI-2nd80, RB2-WMI-2nd55 | CSD-LKO Calender (6 day + Holiday)-25 | Plaster [22828 Sqr Mtr]; Mason [15220 h]; Helper [7610 h]; Physical Progress [8010 h]; TATA Projects Ltd-25 | 12,644,657.48 |
|  | 5 | **MEP 1st Fix, 2nd Fix** |  | 2027-10-04 | 2028-07-14 |  |  |  |  |
|  | 2 | **HVAC** |  | 2027-11-10 | 2028-07-14 |  |  |  |  |
|  | 1 | **1st Fix** |  | 2027-11-10 | 2028-03-03 |  |  |  |  |
| RB2-WMI-2nd50 |  | Duct Support Fabrication | 35d | 2027-11-10 | 2027-12-21 | RB2-WMI-2nd15, E-GFC-MEP-RB2-220 | CSD-LKO Calender (6 day + Holiday)-25 | Physical Progress [8010 h]; HVAC [225002 INR]; TATA Projects Ltd-25 | 225,002 |
| RB2-WMI-2nd100 |  | Installing duct hangers and supports | 30d | 2027-12-21 | 2028-01-28 | RB2-WMI-2nd50, E-GFC-MEP-RB2-220 | CSD-LKO Calender (6 day + Holiday)-25 | Physical Progress [5340 h]; HVAC [450004 INR]; TATA Projects Ltd-25 | 450,004 |
| RB2-WMI-2nd130 |  | Laying concealed/exposed refrigerant piping | 30d | 2028-01-28 | 2028-03-03 | RB2-WMI-2nd100, E-GFC-MEP-RB2-220 | CSD-LKO Calender (6 day + Holiday)-25 | Physical Progress [8010 h]; HVAC [112501 INR]; TATA Projects Ltd-25 | 112,501 |
| RB2-WMI-2nd135 |  | Laying concealed/exposed drain piping | 30d | 2028-01-28 | 2028-03-03 | RB2-WMI-2nd100, E-GFC-MEP-RB2-220 | CSD-LKO Calender (6 day + Holiday)-25 | Physical Progress [5340 h]; HVAC [675006 INR]; TATA Projects Ltd-25 | 675,006 |

| ID | WBS | Activity | Duration | Start | Finish | Predecessors | Calendar | Resources | Cost |
| --- | --- | --- | --- | --- | --- | --- | --- | --- | --- |
|  | 2 | **2nd Fix** |  | 2028-01-28 | 2028-07-14 |  |  |  |  |
| RB2-WMI-2nd140 |  | Duct installation | 25d | 2028-01-28 | 2028-02-26 | RB2-WMI-2nd100 | CSD-LKO Calender (6 day + Holiday)-25 | Physical Progress [8010 h]; HVAC [1687515 INR]; TATA Projects Ltd-25 | 1,687,515 |
| RB2-WMI-2nd170 |  | Insulation of ducts (thermal/acoustic) | 15d | 2028-02-26 | 2028-03-16 | RB2-WMI-2nd140 | CSD-LKO Calender (6 day + Holiday)-25 | Physical Progress [3200 h]; HVAC [1012509 INR]; TATA Projects Ltd-25 | 1,012,509 |
| RB2-WMI-2nd185 |  | Installation of chilled water piping / VRF piping | 30d | 2028-03-16 | 2028-04-21 | RB2-WMI-2nd170 | CSD-LKO Calender (6 day + Holiday)-25 | Physical Progress [3200 h]; HVAC [2250021 INR]; TATA Projects Ltd-25 | 2,250,021 |
| RB2-WMI-2nd220 |  | Installation of indoor units including AHU, FCU | 45d | 2028-04-21 | 2028-06-15 | RB2-WMI-2nd185, RB2-WMI-2nd130, RB2-WMI-2nd135 | CSD-LKO Calender (6 day + Holiday)-25 | Physical Progress [24030 h]; HVAC [2025019 INR]; TATA Projects Ltd-25 | 2,025,019 |
| RB2-WMI-2nd255 |  | Connecting refrigerant and drain piping to indoor units | 25d | 2028-06-15 | 2028-07-14 | RB2-WMI-2nd220 | CSD-LKO Calender (6 day + Holiday)-25 | Physical Progress [3200 h]; HVAC [562505 INR]; TATA Projects Ltd-25 | 562,505 |
|  | 1 | **Electrical** |  | 2027-10-04 | 2028-07-14 |  |  |  |  |
|  | 1 | **1st Fix** |  | 2027-10-04 | 2027-12-21 |  |  |  |  |
| RB2-WMI-2nd20 |  | Slab Conduiting | 35d | 2027-10-04 | 2027-11-16 | RB2-WMI-2nd10, E-GFC-MEP-RB2-220 | CSD-LKO Calender (6 day + Holiday)-25 | Physical Progress [13350 h]; Electrical [1141818 INR]; TATA Projects Ltd-25 | 1,141,818 |
| RB2-WMI-2nd30 |  | Wall Conduiting | 30d | 2027-11-10 | 2027-12-15 | RB2-WMI-2nd15, E-GFC-MEP-RB2-220 | CSD-LKO Calender (6 day + Holiday)-25 | Physical Progress [5340 h]; Electrical [570909 INR]; TATA Projects Ltd-25 | 570,909 |
| RB2-WMI-2nd75 |  | Installing back boxes for switches, sockets | 5d | 2027-12-15 | 2027-12-21 | RB2-WMI-2nd30, RB2-WMI-2nd20, E-GFC-MEP-RB2-220 | CSD-LKO Calender (6 day + Holiday)-25 | Physical Progress [2670 h]; Electrical [342545 INR]; TATA Projects Ltd-25 | 342,545 |
|  | 2 | **2nd Fix** |  | 2028-01-10 | 2028-07-14 |  |  |  |  |
| RB2-WMI-2nd115 |  | Cable tray laying | 35d | 2028-01-10 | 2028-02-21 | RB2-WMI-2nd95 | CSD-LKO Calender (6 day + Holiday)-25 | Physical Progress [13350 h]; Electrical [456727 INR]; TATA Projects Ltd-25 | 456,727 |
| RB2-WMI-2nd155 |  | Cabling & Wire Pulling | 60d | 2028-02-21 | 2028-05-05 | RB2-WMI-2nd115 | CSD-LKO Calender (6 day + Holiday)-25 | Physical Progress [24030 h]; Electrical [2283636 INR]; TATA Projects Ltd-25 | 2,283,636 |
| RB2-WMI-2nd205 |  | DB fixing and connecting | 20d | 2028-05-05 | 2028-05-29 | RB2-WMI-2nd155 | CSD-LKO Calender (6 day + Holiday)-25 | Physical Progress [8010 h]; Electrical [342545 INR]; TATA Projects Ltd-25 | 342,545 |
| RB2-WMI-2nd210 |  | Floor Rising Main Installation | 20d | 2028-05-05 | 2028-05-29 | RB2-WMI-2nd155 | CSD-LKO Calender (6 day + Holiday)-25 | Physical Progress [2670 h]; Electrical [1598545 INR]; TATA Projects Ltd-25 | 1,598,545 |
| RB2-WMI-2nd225 |  | Floor/Distribution Panel Installation | 20d | 2028-05-29 | 2028-06-21 | RB2-WMI-2nd205 | CSD-LKO Calender (6 day + Holiday)-25 | Physical Progress [2670 h]; Electrical [913454 INR]; TATA Projects Ltd-25 | 913,454 |
| RB2-WMI-2nd245 |  | Equipment Earthing | 20d | 2028-06-21 | 2028-07-14 | RB2-WMI-2nd225, RB2-WMI-2nd210 | CSD-LKO Calender (6 day + Holiday)-25 | Physical Progress [5340 h]; Electrical [342545 INR]; TATA Projects Ltd-25 | 342,545 |
|  | 3 | **Plumbing** |  | 2027-11-10 | 2028-07-03 |  |  |  |  |
|  | 1 | **1st Fix** |  | 2027-11-10 | 2028-04-15 |  |  |  |  |
| RB2-WMI-2nd35 |  | Fixing pipe supports and clamps | 35d | 2027-11-10 | 2027-12-21 | RB2-WMI-2nd15, E-GFC-MEP-RB2-220 | CSD-LKO Calender (6 day + Holiday)-25 | Physical Progress [5340 h]; Plumbing [470624 INR]; TATA Projects Ltd-25 | 470,624 |
| RB2-WMI-2nd60 |  | Laying water supply pipes (hot & cold) | 35d | 2027-12-21 | 2028-02-03 | RB2-WMI-2nd35, E-GFC-MEP-RB2-220 | CSD-LKO Calender (6 day + Holiday)-25 | Physical Progress [8010 h]; Plumbing [941247 INR]; TATA Projects Ltd-25 | 941,247 |
| RB2-WMI-2nd65 |  | Laying drainage pipes (soil, waste, vent) | 35d | 2027-12-21 | 2028-02-03 | RB2-WMI-2nd35, E-GFC-MEP-RB2-220 | CSD-LKO Calender (6 day + Holiday)-25 | Physical Progress [8010 h]; Plumbing [941247 INR]; TATA Projects Ltd-25 | 941,247 |
| RB2-WMI-2nd70 |  | Installation of plumbing fixture base supports (WC frames, sink brackets) | 30d | 2028-02-03 | 2028-03-09 | RB2-WMI-2nd65, E-GFC-MEP-RB2-220 | CSD-LKO Calender (6 day + Holiday)-25 | Physical Progress [3200 h]; Plumbing [470624 INR]; TATA Projects Ltd-25 | 470,624 |
| RB2-WMI-2nd85 |  | Pressure testing of water supply lines | 25d | 2028-03-09 | 2028-04-08 | RB2-WMI-2nd60, RB2-WMI-2nd65, RB2-WMI-2nd70, E-GFC-MEP-RB2-220 | CSD-LKO Calender (6 day + Holiday)-25 | Physical Progress [3740 h]; Plumbing [94125 INR]; TATA Projects Ltd-25 | 94,125 |
| RB2-WMI-2nd90 |  | Installation of concealed parts of toilet fixtures | 30d | 2028-03-09 | 2028-04-15 | RB2-WMI-2nd70, E-GFC-MEP-RB2-220 | CSD-LKO Calender (6 day + Holiday)-25 | Physical Progress [5340 h]; Plumbing [470624 INR]; TATA Projects Ltd-25 | 470,624 |

| ID | WBS | Activity | Duration | Start | Finish | Predecessors | Calendar | Resources | Cost |
| --- | --- | --- | --- | --- | --- | --- | --- | --- | --- |
|  | 2 | **2nd FIx** |  | 2028-04-08 | 2028-07-03 |  |  |  |  |
| RB2-WMI-2nd110 |  | Insulation of hot water pipes (if applicable) | 30d | 2028-04-08 | 2028-05-17 | RB2-WMI-2nd85 | CSD-LKO Calender (6 day + Holiday)-25 | Physical Progress [3200 h]; Plumbing [470624 INR]; TATA Projects Ltd-25 | 470,624 |
| RB2-WMI-2nd120 |  | Installation of vertical risers and main distribution lines | 35d | 2028-04-15 | 2028-05-29 | RB2-WMI-2nd95, RB2-WMI-2nd85, RB2-WMI-2nd90 | CSD-LKO Calender (6 day + Holiday)-25 | Physical Progress [10680 h]; Plumbing [941247 INR]; TATA Projects Ltd-25 | 941,247 |
| RB2-WMI-2nd145 |  | Testing drainage lines for leakage/blockage | 30d | 2028-05-17 | 2028-06-21 | RB2-WMI-2nd70, RB2-WMI-2nd110 | CSD-LKO Calender (6 day + Holiday)-25 | Physical Progress [3200 h]; Plumbing [94125 INR]; TATA Projects Ltd-25 | 94,125 |
| RB2-WMI-2nd160 |  | Fixing floor traps and gully traps | 30d | 2028-05-29 | 2028-07-03 | RB2-WMI-2nd120 | CSD-LKO Calender (6 day + Holiday)-25 | Physical Progress [3200 h]; Plumbing [282374 INR]; TATA Projects Ltd-25 | 282,374 |
|  | 4 | **Firefighting** |  | 2027-11-10 | 2028-06-03 |  |  |  |  |
|  | 1 | **1st Fix** |  | 2027-11-10 | 2028-03-09 |  |  |  |  |
| RB2-WMI-2nd40 |  | Fixing pipe supports and hangers | 35d | 2027-11-10 | 2027-12-21 | RB2-WMI-2nd15, E-GFC-MEP-RB2-220 | CSD-LKO Calender (6 day + Holiday)-25 | Physical Progress [5340 h]; Firefighting [366658 INR]; TATA Projects Ltd-25 | 366,658 |
| RB2-WMI-2nd105 |  | Laying branch piping | 35d | 2027-12-21 | 2028-02-03 | RB2-WMI-2nd40, E-GFC-MEP-RB2-220 | CSD-LKO Calender (6 day + Holiday)-25 | Physical Progress [8010 h]; Firefighting [785695 INR]; TATA Projects Ltd-25 | 785,695 |
| RB2-WMI-2nd150 |  | Hydrostatic pressure testing of piping | 30d | 2028-02-03 | 2028-03-09 | RB2-WMI-2nd105, E-GFC-MEP-RB2-220 | CSD-LKO Calender (6 day + Holiday)-25 | Physical Progress [3200 h]; Firefighting [104759 INR]; TATA Projects Ltd-25 | 104,759 |
|  | 2 | **2nd Fix** |  | 2028-03-09 | 2028-06-03 |  |  |  |  |
| RB2-WMI-2nd175 |  | Installation of vertical risers and distribution piping in shafts | 35d | 2028-03-09 | 2028-04-21 | RB2-WMI-2nd95, RB2-WMI-2nd150 | CSD-LKO Calender (6 day + Holiday)-25 | Physical Progress [13350 h]; Firefighting [1047593 INR]; TATA Projects Ltd-25 | 1,047,593 |
| RB2-WMI-2nd180 |  | Painting/insulation of exposed fire pipes | 30d | 2028-03-09 | 2028-04-15 | RB2-WMI-2nd150 | CSD-LKO Calender (6 day + Holiday)-25 | Physical Progress [5340 h]; Firefighting [52380 INR]; TATA Projects Ltd-25 | 52,380 |
| RB2-WMI-2nd190 |  | Testing risers and branch lines for leakage | 30d | 2028-04-15 | 2028-05-23 | RB2-WMI-2nd180 | CSD-LKO Calender (6 day + Holiday)-25 | Physical Progress [3200 h]; Firefighting [104759 INR]; TATA Projects Ltd-25 | 104,759 |
| RB2-WMI-2nd200 |  | Installation of sprinkler branch lines in ceilings | 35d | 2028-04-21 | 2028-06-03 | RB2-WMI-2nd175 | CSD-LKO Calender (6 day + Holiday)-25 | Physical Progress [13350 h]; Firefighting [785695 INR]; TATA Projects Ltd-25 | 785,695 |
|  | 5 | **ELV** |  | 2027-10-04 | 2028-07-14 |  |  |  |  |
|  | 1 | **1st Fix** |  | 2027-10-04 | 2027-12-21 |  |  |  |  |
| RB2-WMI-2nd25 |  | Slab Conduiting | 35d | 2027-10-04 | 2027-11-16 | RB2-WMI-2nd10, E-GFC-MEP-RB2-220 | CSD-LKO Calender (6 day + Holiday)-25 | Physical Progress [13350 h]; ELV [469789 INR]; TATA Projects Ltd-25 | 469,789 |
| RB2-WMI-2nd45 |  | Wall Conduiting | 30d | 2027-11-10 | 2027-12-15 | RB2-WMI-2nd15, E-GFC-MEP-RB2-220 | CSD-LKO Calender (6 day + Holiday)-25 | Physical Progress [5340 h]; ELV [201338 INR]; TATA Projects Ltd-25 | 201,338 |
| RB2-WMI-2nd80 |  | Installing back boxes for switches, sockets | 5d | 2027-12-15 | 2027-12-21 | RB2-WMI-2nd45, RB2-WMI-2nd25, E-GFC-MEP-RB2-220 | CSD-LKO Calender (6 day + Holiday)-25 | Physical Progress [2670 h]; ELV [335564 INR]; TATA Projects Ltd-25 | 335,564 |
|  | 2 | **2nd Fix** |  | 2028-01-10 | 2028-07-14 |  |  |  |  |
| RB2-WMI-2nd125 |  | Cable tray installation | 35d | 2028-01-10 | 2028-02-21 | RB2-WMI-2nd95 | CSD-LKO Calender (6 day + Holiday)-25 | Physical Progress [13350 h]; ELV [335564 INR]; TATA Projects Ltd-25 | 335,564 |
| RB2-WMI-2nd165 |  | Cabeling of ELV cable - IT/Fire Alarm/Public Address | 45d | 2028-02-21 | 2028-04-15 | RB2-WMI-2nd125 | CSD-LKO Calender (6 day + Holiday)-25 | Physical Progress [24030 h]; ELV [805353 INR]; TATA Projects Ltd-25 | 805,353 |
| RB2-WMI-2nd195 |  | ELV Rack Installation | 30d | 2028-04-15 | 2028-05-23 | RB2-WMI-2nd165 | CSD-LKO Calender (6 day + Holiday)-25 | Physical Progress [5340 h]; ELV [335564 INR]; TATA Projects Ltd-25 | 335,564 |
| RB2-WMI-2nd215 |  | Termination of cables at junction boxes, patch panels, and control panels | 20d | 2028-05-23 | 2028-06-15 | RB2-WMI-2nd195 | CSD-LKO Calender (6 day + Holiday)-25 | Physical Progress [16020 h]; ELV [335564 INR]; TATA Projects Ltd-25 | 335,564 |
| RB2-WMI-2nd230 |  | Fixing devices like CCTV camera bases, card reader bases, smoke detector bases, PA Bases, Wifi Bases | 25d | 2028-06-15 | 2028-07-14 | RB2-WMI-2nd215 | CSD-LKO Calender (6 day + Holiday)-25 | Physical Progress [2140 h]; ELV [671128 INR]; TATA Projects Ltd-25 | 671,128 |

| ID | WBS | Activity | Duration | Start | Finish | Predecessors | Calendar | Resources | Cost |
| --- | --- | --- | --- | --- | --- | --- | --- | --- | --- |
|  | 6 | **Dry Finishes/ID Works** |  | 2028-08-18 | 2029-03-21 |  |  |  |  |
| RB2-WMI-2nd235 |  | Running of Wild Air | 1d | 2028-08-18 | 2028-08-18 | RB2-F-(2nd-5th)40, RB2-WMI-2nd140, RB2-WMI-2nd170, RB2-WMI-2nd185, RB2-WMI-2nd220, RB2-WMI-2nd255 | CSD-LKO Calender (6 day + Holiday)-25 | Physical Progress [530 h]; TATA Projects Ltd-25 |  |
| RB2-WMI-2nd240 |  | Wall finish ID Works | 35d | 2028-08-19 | 2028-09-30 | RB2-WMI-2nd235, RB2-WMI-2nd115, RB2-WMI-2nd155, RB2-WMI-2nd205, RB2-WMI-2nd210, RB2-WMI-2nd225, RB2-WMI-2nd245, RB2-WMI-2nd110, RB2-WMI-2nd120, RB2-WMI-2nd145, RB2-WMI-2nd160, RB2-WMI-2nd175, RB2-WMI-2nd180, RB2-WMI-2nd190, RB2-WMI-2nd200, RB2-WMI-2nd125, RB2-WMI-2nd165, RB2-WMI-2nd195, RB2-WMI-2nd215, RB2-WMI-2nd230 | CSD-LKO Calender (6 day + Holiday)-25 | ID Work [6333907 INR]; Physical Progress [5340 h]; TATA Projects Ltd-25 | 6,333,907 |
| RB2-WMI-2nd250 |  | False Ceiling Installation | 35d | 2028-10-03 | 2028-11-13 | RB2-WMI-2nd240 | CSD-LKO Calender (6 day + Holiday)-25 | ID Work [8445209 INR]; Physical Progress [10680 h]; TATA Projects Ltd-25 | 8,445,209 |
| RB2-WMI-2nd265 |  | Flooring of toilets/kitchen/Balcony | 10d | 2028-11-14 | 2028-11-24 | RB2-WMI-2nd55, RB2-WMI-2nd250 | CSD-LKO Calender (6 day + Holiday)-25 | ID Work [3378084 INR]; Physical Progress [5340 h]; TATA Projects Ltd-25 | 3,378,084 |
| RB2-WMI-2nd270 |  | Doors & Windows/Fire Doors/Shaft Doors | 35d | 2028-11-25 | 2029-01-06 | RB2-WMI-2nd240, RB2-WMI-2nd265 | CSD-LKO Calender (6 day + Holiday)-25 | ID Work [4222604 INR]; Physical Progress [5340 h]; TATA Projects Ltd-25 | 4,222,604 |
| RB2-WMI-2nd275 |  | Putty & First Coat of Paint | 10d | 2028-11-25 | 2028-12-06 | RB2-WMI-2nd240, RB2-WMI-2nd265 | CSD-LKO Calender (6 day + Holiday)-25 | Painting [6989 Sq m]; Painter [6990 h]; Helper [6990 h]; Physical Progress [5340 h]; TATA Projects Ltd-25 | 1,597,825.18 |
| RB2-WMI-2nd300 |  | Wooden Flooring/Flooring | 20d | 2028-12-07 | 2028-12-30 | RB2-WMI-2nd275 | CSD-LKO Calender (6 day + Holiday)-25 | ID Work [4222604 INR]; Physical Progress [10680 h]; TATA Projects Ltd-25 | 4,222,604 |
| RB2-WMI-2nd305 |  | Railing for staircase | 35d | 2028-12-07 | 2029-01-18 | RB2-WMI-2nd240, RB2-WMI-2nd275 | CSD-LKO Calender (6 day + Holiday)-25 | ID Work [1266781 INR]; Physical Progress [8010 h]; TATA Projects Ltd-25 | 1,266,781 |
| RB2-WMI-2nd345 |  | Fixed Furniture | 8d | 2029-01-02 | 2029-01-10 | RB2-WMI-2nd300 | CSD-LKO Calender (6 day + Holiday)-25 | ID Work [2111302 INR]; Physical Progress [4270 h]; TATA Projects Ltd-25 | 2,111,302 |
| RB2-WMI-2nd380 |  | False ceiling final finishes | 10d | 2029-01-25 | 2029-02-06 | RB2-WMI-2nd310 | CSD-LKO Calender (6 day + Holiday)-25 | ID Work [844521 INR]; Physical Progress [5340 h]; TATA Projects Ltd-25 | 844,521 |
| RB2-WMI-2nd390 |  | Final coat of paint | 10d | 2029-02-20 | 2029-03-03 | RB2-WMI-2nd380, RB2-WMI-2nd345, RB2-WMI-2nd350, RB2-WMI-2nd320, RB2-WMI-2nd325, RB2-WMI-2nd355, RB2-WMI-2nd385, RB2-WMI-2nd375, RB2-WMI-2nd370, RB2-WMI-2nd365, RB2-WMI-2nd335, RB2-WMI-2nd330, RB2-WMI-2nd270, RB2-WMI-2nd305 | CSD-LKO Calender (6 day + Holiday)-25 | Painting [6989 Sq m]; Painter [6990 h]; Helper [6990 h]; Physical Progress [5340 h]; TATA Projects Ltd-25 | 1,597,825.18 |
| RB2-WMI-2nd395 |  | Soft Furnishing & Signage | 15d | 2029-03-05 | 2029-03-21 | RB2-WMI-2nd390 | CSD-LKO Calender (6 day + Holiday)-25 | ID Work [8445209 INR]; Physical Progress [1600 h]; TATA Projects Ltd-25 | 8,445,209 |
| RB2-WMI-2nd400 |  | Loose Furniture | 15d | 2029-03-05 | 2029-03-21 | RB2-WMI-2nd390 | CSD-LKO Calender (6 day + Holiday)-25 | ID Work [2955823 INR]; Physical Progress [1600 h]; TATA Projects Ltd-25 | 2,955,823 |
|  | 7 | **MEP Final Fix** |  | 2028-11-14 | 2029-02-19 |  |  |  |  |
|  | 3 | **HVAC** |  | 2028-11-14 | 2029-01-24 |  |  |  |  |
| RB2-WMI-2nd260 |  | Installing grills, diffusers, dampers | 30d | 2028-11-14 | 2028-12-18 | RB2-WMI-2nd250 | CSD-LKO Calender (6 day + Holiday)-25 | Physical Progress [3200 h]; HVAC [1125010 INR]; TATA Projects Ltd-25 | 1,125,010 |
| RB2-WMI-2nd310 |  | Installation of thermostats and control panels | 30d | 2028-12-19 | 2029-01-24 | RB2-WMI-2nd260, RB2-WMI-2nd275, RB2-WMI-2nd255 | CSD-LKO Calender (6 day + Holiday)-25 | Physical Progress [3200 h]; HVAC [562505 INR]; TATA Projects Ltd-25 | 562,505 |
|  | 1 | **Electrical** |  | 2028-12-07 | 2029-02-19 |  |  |  |  |
| RB2-WMI-2nd280 |  | Switches & Socket | 30d | 2028-12-07 | 2029-01-12 | RB2-WMI-2nd275 | CSD-LKO Calender (6 day + Holiday)-25 | Physical Progress [10680 h]; Electrical [1141818 INR]; TATA Projects Ltd-25 | 1,141,818 |
| RB2-WMI-2nd350 |  | Light Fixtures | 30d | 2029-01-13 | 2029-02-19 | RB2-WMI-2nd280, RB2-WMI-2nd245 | CSD-LKO Calender (6 day + Holiday)-25 | Physical Progress [8010 h]; Electrical [1712727 INR]; TATA Projects Ltd-25 | 1,712,727 |
|  | 2 | **Plumbing** |  | 2028-12-07 | 2029-01-31 |  |  |  |  |
| RB2-WMI-2nd285 |  | Installation of sanitary fixtures (WC, washbasins, urinals, sinks) | 10d | 2028-12-07 | 2028-12-18 | RB2-WMI-2nd275, RB2-WMI-2nd145, RB2-WMI-2nd160 | CSD-LKO Calender (6 day + Holiday)-25 | Physical Progress [5340 h]; Plumbing [1882495 INR]; TATA Projects Ltd-25 | 1,882,495 |
| RB2-WMI-2nd315 |  | Installation of CP fittings (taps, mixers, showers, health faucets) | 10d | 2028-12-19 | 2028-12-30 | RB2-WMI-2nd285, RB2-WMI-2nd275 | CSD-LKO Calender (6 day + Holiday)-25 | Physical Progress [5340 h]; Plumbing [941247 INR]; TATA Projects Ltd-25 | 941,247 |
| RB2-WMI-2nd320 |  | Connection of appliances | 25d | 2029-01-02 | 2029-01-31 | RB2-WMI-2nd315 | CSD-LKO Calender (6 day + Holiday)-25 | Physical Progress [3740 h]; Plumbing [470624 INR]; TATA Projects Ltd-25 | 470,624 |

| ID | WBS | Activity | Duration | Start | Finish | Predecessors | Calendar | Resources | Cost |
| --- | --- | --- | --- | --- | --- | --- | --- | --- | --- |
|  | 4 | **Firefighting** |  | 2028-12-07 | 2029-02-12 |  |  |  |  |
| RB2-WMI-2nd290 |  | Installation of hydrant accessories (valves, hose reels, cabinets) | 25d | 2028-12-07 | 2029-01-06 | RB2-WMI-2nd275 | CSD-LKO Calender (6 day + Holiday)-25 | Physical Progress [5340 h]; Firefighting [523796 INR]; TATA Projects Ltd-25 | 523,796 |
| RB2-WMI-2nd295 |  | Installation of portable fire extinguishers | 30d | 2028-12-07 | 2029-01-12 | RB2-WMI-2nd275 | CSD-LKO Calender (6 day + Holiday)-25 | Physical Progress [3200 h]; Firefighting [52380 INR]; TATA Projects Ltd-25 | 52,380 |
| RB2-WMI-2nd325 |  | Installation of sprinkler heads, nozzles, and final alignment | 35d | 2029-01-02 | 2029-02-12 | RB2-WMI-2nd275, RB2-WMI-2nd300, RB2-WMI-2nd190, RB2-WMI-2nd200 | CSD-LKO Calender (6 day + Holiday)-25 | Physical Progress [21360 h]; Firefighting [785695 INR]; TATA Projects Ltd-25 | 785,695 |
| RB2-WMI-2nd355 |  | Integration with fire alarm system | 20d | 2029-01-13 | 2029-02-06 | RB2-WMI-2nd295 | CSD-LKO Calender (6 day + Holiday)-25 | Physical Progress [10680 h]; Firefighting [261898 INR]; TATA Projects Ltd-25 | 261,898 |
|  | 5 | **ELV** |  | 2029-01-02 | 2029-02-19 |  |  |  |  |
| RB2-WMI-2nd330 |  | Installation of data and Voice Faceplate | 25d | 2029-01-02 | 2029-01-31 | RB2-WMI-2nd275, RB2-WMI-2nd300, RB2-WMI-2nd230 | CSD-LKO Calender (6 day + Holiday)-25 | Physical Progress [5340 h]; ELV [335564 INR]; TATA Projects Ltd-25 | 335,564 |
| RB2-WMI-2nd335 |  | Installation of Camera & Wifi | 30d | 2029-01-02 | 2029-02-06 | RB2-WMI-2nd275, RB2-WMI-2nd300 | CSD-LKO Calender (6 day + Holiday)-25 | Physical Progress [5340 h]; ELV [335564 INR]; TATA Projects Ltd-25 | 335,564 |
| RB2-WMI-2nd340 |  | Installation of fire alarm devices + Public Address | 10d | 2029-01-02 | 2029-01-12 | RB2-WMI-2nd275, RB2-WMI-2nd300 | CSD-LKO Calender (6 day + Holiday)-25 | Physical Progress [5340 h]; ELV [402677 INR]; TATA Projects Ltd-25 | 402,677 |
| RB2-WMI-2nd360 |  | Installation of Active System | 15d | 2029-01-13 | 2029-01-31 | RB2-WMI-2nd340 | CSD-LKO Calender (6 day + Holiday)-25 | Physical Progress [8010 h]; ELV [671128 INR]; TATA Projects Ltd-25 | 671,128 |
| RB2-WMI-2nd365 |  | Fire Panel Intallation & Integration | 25d | 2029-01-13 | 2029-02-12 | RB2-WMI-2nd340 | CSD-LKO Calender (6 day + Holiday)-25 | Physical Progress [13350 h]; ELV [335564 INR]; TATA Projects Ltd-25 | 335,564 |
| RB2-WMI-2nd370 |  | Installation & Integration of Audio Visual System | 25d | 2029-01-13 | 2029-02-12 | RB2-WMI-2nd340 | CSD-LKO Calender (6 day + Holiday)-25 | Physical Progress [13350 h]; ELV [335564 INR]; TATA Projects Ltd-25 | 335,564 |
| RB2-WMI-2nd375 |  | Installation & Integration of Access Control | 25d | 2029-01-13 | 2029-02-12 | RB2-WMI-2nd340 | CSD-LKO Calender (6 day + Holiday)-25 | Physical Progress [13350 h]; ELV [335564 INR]; TATA Projects Ltd-25 | 335,564 |
| RB2-WMI-2nd385 |  | Integration of Active components | 15d | 2029-02-01 | 2029-02-19 | RB2-WMI-2nd360 | CSD-LKO Calender (6 day + Holiday)-25 | Physical Progress [8010 h]; ELV [134226 INR]; TATA Projects Ltd-25 | 134,226 |
|  | 3 | **Third Floor** |  | 2027-11-01 | 2029-04-12 |  |  |  |  |
|  | 1 | **Wet Finishes** |  | 2027-11-01 | 2028-02-10 |  |  |  |  |
| RB2-WMI-3rd10 |  | Deshuttering | 4d | 2027-11-01 | 2027-11-05 | RB2-SS-4th.510 | CSD-LKO Calender (6 day + Holiday)-25 | Physical Progress [2140 h]; TATA Projects Ltd-25 |  |
| RB2-WMI-3rd15 |  | Brickwork/Blockwork | 30d | 2027-11-05 | 2027-12-10 | RB2-WMI-3rd10, E-GFC-AR-RB2-145 | CSD-LKO Calender (6 day + Holiday)-25 | Masonry [1008 CuM]; Mason [6720 h]; Helper [3360 h]; Physical Progress [16020 h]; TATA Projects Ltd-25 | 9,611,642.88 |
| RB2-WMI-3rd55 |  | Waterproofing of Toilets, Balcony & Kitchen | 15d | 2027-12-10 | 2027-12-29 | RB2-WMI-3rd15 | CSD-LKO Calender (6 day + Holiday)-25 | Waterproofing [8564838 INR]; Waterprrofing Mason [8160 h]; Helper [4080 h]; Physical Progress [8010 h]; TATA Projects Ltd-25 | 8,564,838 |
| RB2-WMI-3rd95 |  | Plaster | 15d | 2028-01-22 | 2028-02-10 | RB2-WMI-3rd30, RB2-WMI-3rd75, RB2-WMI-3rd80, RB2-WMI-3rd55 | CSD-LKO Calender (6 day + Holiday)-25 | Plaster [22828 Sqr Mtr]; Mason [15220 h]; Helper [7610 h]; Physical Progress [8010 h]; TATA Projects Ltd-25 | 12,644,657.48 |
|  | 5 | **MEP 1st Fix, 2nd Fix** |  | 2027-11-05 | 2028-07-21 |  |  |  |  |
|  | 2 | **HVAC** |  | 2027-12-10 | 2028-07-21 |  |  |  |  |
|  | 1 | **1st Fix** |  | 2027-12-10 | 2028-04-04 |  |  |  |  |
| RB2-WMI-3rd50 |  | Duct Support Fabrication | 35d | 2027-12-10 | 2028-01-22 | RB2-WMI-3rd15, E-GFC-MEP-RB2-225 | CSD-LKO Calender (6 day + Holiday)-25 | Physical Progress [8010 h]; HVAC [225002 INR]; TATA Projects Ltd-25 | 225,002 |
| RB2-WMI-3rd100 |  | Installing duct hangers and supports | 30d | 2028-01-22 | 2028-02-28 | RB2-WMI-3rd50, E-GFC-MEP-RB2-225 | CSD-LKO Calender (6 day + Holiday)-25 | Physical Progress [5340 h]; HVAC [450004 INR]; TATA Projects Ltd-25 | 450,004 |
| RB2-WMI-3rd130 |  | Laying concealed/exposed refrigerant piping | 30d | 2028-02-28 | 2028-04-04 | RB2-WMI-3rd100, E-GFC-MEP-RB2-225 | CSD-LKO Calender (6 day + Holiday)-25 | Physical Progress [8010 h]; HVAC [112501 INR]; TATA Projects Ltd-25 | 112,501 |
| RB2-WMI-3rd135 |  | Laying concealed/exposed drain piping | 30d | 2028-02-28 | 2028-04-04 | RB2-WMI-3rd100, E-GFC-MEP-RB2-225 | CSD-LKO Calender (6 day + Holiday)-25 | Physical Progress [5340 h]; HVAC [675006 INR]; TATA Projects Ltd-25 | 675,006 |

| ID | WBS | Activity | Duration | Start | Finish | Predecessors | Calendar | Resources | Cost |
| --- | --- | --- | --- | --- | --- | --- | --- | --- | --- |
|  | 2 | **2nd Fix** |  | 2028-02-28 | 2028-07-21 |  |  |  |  |
| RB2-WMI-3rd140 |  | Duct installation | 30d | 2028-02-28 | 2028-04-04 | RB2-WMI-3rd100 | CSD-LKO Calender (6 day + Holiday)-25 | Physical Progress [8010 h]; HVAC [1687515 INR]; TATA Projects Ltd-25 | 1,687,515 |
| RB2-WMI-3rd170 |  | Insulation of ducts (thermal/acoustic) | 10d | 2028-04-04 | 2028-04-17 | RB2-WMI-3rd140 | CSD-LKO Calender (6 day + Holiday)-25 | Physical Progress [3200 h]; HVAC [1012509 INR]; TATA Projects Ltd-25 | 1,012,509 |
| RB2-WMI-3rd185 |  | Installation of chilled water piping / VRF piping | 20d | 2028-04-17 | 2028-05-12 | RB2-WMI-3rd170 | CSD-LKO Calender (6 day + Holiday)-25 | Physical Progress [3200 h]; HVAC [2250021 INR]; TATA Projects Ltd-25 | 2,250,021 |
| RB2-WMI-3rd220 |  | Installation of indoor units including AHU, FCU | 45d | 2028-05-12 | 2028-07-04 | RB2-WMI-3rd185, RB2-WMI-3rd130, RB2-WMI-3rd135 | CSD-LKO Calender (6 day + Holiday)-25 | Physical Progress [24030 h]; HVAC [2025019 INR]; TATA Projects Ltd-25 | 2,025,019 |
| RB2-WMI-3rd265 |  | Connecting refrigerant and drain piping to indoor units | 15d | 2028-07-04 | 2028-07-21 | RB2-WMI-3rd220 | CSD-LKO Calender (6 day + Holiday)-25 | Physical Progress [3200 h]; HVAC [562505 INR]; TATA Projects Ltd-25 | 562,505 |
|  | 1 | **Electrical** |  | 2027-11-05 | 2028-07-21 |  |  |  |  |
|  | 1 | **1st Fix** |  | 2027-11-05 | 2028-01-22 |  |  |  |  |
| RB2-WMI-3rd25 |  | Slab Conduiting | 35d | 2027-11-05 | 2027-12-16 | RB2-WMI-3rd10, E-GFC-MEP-RB2-225 | CSD-LKO Calender (6 day + Holiday)-25 | Physical Progress [13350 h]; Electrical [1141818 INR]; TATA Projects Ltd-25 | 1,141,818 |
| RB2-WMI-3rd30 |  | Wall Conduiting | 30d | 2027-12-10 | 2028-01-17 | RB2-WMI-3rd15, E-GFC-MEP-RB2-225 | CSD-LKO Calender (6 day + Holiday)-25 | Physical Progress [5340 h]; Electrical [570909 INR]; TATA Projects Ltd-25 | 570,909 |
| RB2-WMI-3rd75 |  | Installing back boxes for switches, sockets | 5d | 2028-01-17 | 2028-01-22 | RB2-WMI-3rd30, RB2-WMI-3rd25, E-GFC-MEP-RB2-225 | CSD-LKO Calender (6 day + Holiday)-25 | Physical Progress [2670 h]; Electrical [342545 INR]; TATA Projects Ltd-25 | 342,545 |
|  | 2 | **2nd Fix** |  | 2028-02-10 | 2028-07-21 |  |  |  |  |
| RB2-WMI-3rd115 |  | Cable tray laying | 35d | 2028-02-10 | 2028-03-23 | RB2-WMI-3rd95 | CSD-LKO Calender (6 day + Holiday)-25 | Physical Progress [13350 h]; Electrical [456727 INR]; TATA Projects Ltd-25 | 456,727 |
| RB2-WMI-3rd155 |  | Cabling & Wire Pulling | 45d | 2028-03-23 | 2028-05-18 | RB2-WMI-3rd115 | CSD-LKO Calender (6 day + Holiday)-25 | Physical Progress [24030 h]; Electrical [2283636 INR]; TATA Projects Ltd-25 | 2,283,636 |
| RB2-WMI-3rd205 |  | DB fixing and connecting | 20d | 2028-05-18 | 2028-06-10 | RB2-WMI-3rd155 | CSD-LKO Calender (6 day + Holiday)-25 | Physical Progress [8010 h]; Electrical [342545 INR]; TATA Projects Ltd-25 | 342,545 |
| RB2-WMI-3rd210 |  | Floor Rising Main Installation | 20d | 2028-05-18 | 2028-06-10 | RB2-WMI-3rd155 | CSD-LKO Calender (6 day + Holiday)-25 | Physical Progress [2670 h]; Electrical [1598545 INR]; TATA Projects Ltd-25 | 1,598,545 |
| RB2-WMI-3rd225 |  | Floor/Distribution Panel Installation | 20d | 2028-06-10 | 2028-07-04 | RB2-WMI-3rd205 | CSD-LKO Calender (6 day + Holiday)-25 | Physical Progress [2670 h]; Electrical [913454 INR]; TATA Projects Ltd-25 | 913,454 |
| RB2-WMI-3rd250 |  | Equipment Earthing | 15d | 2028-07-04 | 2028-07-21 | RB2-WMI-3rd225, RB2-WMI-3rd210 | CSD-LKO Calender (6 day + Holiday)-25 | Physical Progress [5340 h]; Electrical [342545 INR]; TATA Projects Ltd-25 | 342,545 |
|  | 3 | **Plumbing** |  | 2027-12-10 | 2028-07-21 |  |  |  |  |
|  | 1 | **1st Fix** |  | 2027-12-10 | 2028-05-18 |  |  |  |  |
| RB2-WMI-3rd35 |  | Fixing pipe supports and clamps | 35d | 2027-12-10 | 2028-01-22 | RB2-WMI-3rd15, E-GFC-MEP-RB2-225 | CSD-LKO Calender (6 day + Holiday)-25 | Physical Progress [5340 h]; Plumbing [470624 INR]; TATA Projects Ltd-25 | 470,624 |
| RB2-WMI-3rd60 |  | Laying water supply pipes (hot & cold) | 35d | 2028-01-22 | 2028-03-04 | RB2-WMI-3rd35, E-GFC-MEP-RB2-225 | CSD-LKO Calender (6 day + Holiday)-25 | Physical Progress [8010 h]; Plumbing [941247 INR]; TATA Projects Ltd-25 | 941,247 |
| RB2-WMI-3rd65 |  | Laying drainage pipes (soil, waste, vent) | 35d | 2028-01-22 | 2028-03-04 | RB2-WMI-3rd35, E-GFC-MEP-RB2-225 | CSD-LKO Calender (6 day + Holiday)-25 | Physical Progress [8010 h]; Plumbing [941247 INR]; TATA Projects Ltd-25 | 941,247 |
| RB2-WMI-3rd70 |  | Installation of plumbing fixture base supports (WC frames, sink brackets) | 30d | 2028-03-04 | 2028-04-10 | RB2-WMI-3rd65, E-GFC-MEP-RB2-225 | CSD-LKO Calender (6 day + Holiday)-25 | Physical Progress [3200 h]; Plumbing [470624 INR]; TATA Projects Ltd-25 | 470,624 |
| RB2-WMI-3rd85 |  | Pressure testing of water supply lines | 25d | 2028-04-10 | 2028-05-12 | RB2-WMI-3rd60, RB2-WMI-3rd65, RB2-WMI-3rd70, E-GFC-MEP-RB2-225 | CSD-LKO Calender (6 day + Holiday)-25 | Physical Progress [3740 h]; Plumbing [94125 INR]; TATA Projects Ltd-25 | 94,125 |
| RB2-WMI-3rd90 |  | Installation of concealed parts of toilet fixtures | 30d | 2028-04-10 | 2028-05-18 | RB2-WMI-3rd70, E-GFC-MEP-RB2-225 | CSD-LKO Calender (6 day + Holiday)-25 | Physical Progress [5340 h]; Plumbing [470624 INR]; TATA Projects Ltd-25 | 470,624 |

| ID | WBS | Activity | Duration | Start | Finish | Predecessors | Calendar | Resources | Cost |
| --- | --- | --- | --- | --- | --- | --- | --- | --- | --- |
|  | 2 | **2nd FIx** |  | 2028-05-12 | 2028-07-21 |  |  |  |  |
| RB2-WMI-3rd110 |  | Insulation of hot water pipes (if applicable) | 30d | 2028-05-12 | 2028-06-16 | RB2-WMI-3rd85 | CSD-LKO Calender (6 day + Holiday)-25 | Physical Progress [3200 h]; Plumbing [470624 INR]; TATA Projects Ltd-25 | 470,624 |
| RB2-WMI-3rd120 |  | Installation of vertical risers and main distribution lines | 35d | 2028-05-18 | 2028-06-28 | RB2-WMI-3rd95, RB2-WMI-3rd85, RB2-WMI-3rd90 | CSD-LKO Calender (6 day + Holiday)-25 | Physical Progress [10680 h]; Plumbing [941247 INR]; TATA Projects Ltd-25 | 941,247 |
| RB2-WMI-3rd145 |  | Testing drainage lines for leakage/blockage | 30d | 2028-06-16 | 2028-07-21 | RB2-WMI-3rd70, RB2-WMI-3rd110 | CSD-LKO Calender (6 day + Holiday)-25 | Physical Progress [3200 h]; Plumbing [94125 INR]; TATA Projects Ltd-25 | 94,125 |
| RB2-WMI-3rd160 |  | Fixing floor traps and gully traps | 20d | 2028-06-28 | 2028-07-21 | RB2-WMI-3rd120 | CSD-LKO Calender (6 day + Holiday)-25 | Physical Progress [3200 h]; Plumbing [282374 INR]; TATA Projects Ltd-25 | 282,374 |
|  | 4 | **Firefighting** |  | 2027-12-10 | 2028-07-04 |  |  |  |  |
|  | 1 | **1st Fix** |  | 2027-12-10 | 2028-04-10 |  |  |  |  |
| RB2-WMI-3rd40 |  | Fixing pipe supports and hangers | 35d | 2027-12-10 | 2028-01-22 | RB2-WMI-3rd15, E-GFC-MEP-RB2-225 | CSD-LKO Calender (6 day + Holiday)-25 | Physical Progress [5340 h]; Firefighting [366658 INR]; TATA Projects Ltd-25 | 366,658 |
| RB2-WMI-3rd105 |  | Laying branch piping | 35d | 2028-01-22 | 2028-03-04 | RB2-WMI-3rd40, E-GFC-MEP-RB2-225 | CSD-LKO Calender (6 day + Holiday)-25 | Physical Progress [8010 h]; Firefighting [785695 INR]; TATA Projects Ltd-25 | 785,695 |
| RB2-WMI-3rd150 |  | Hydrostatic pressure testing of piping | 30d | 2028-03-04 | 2028-04-10 | RB2-WMI-3rd105, E-GFC-MEP-RB2-225 | CSD-LKO Calender (6 day + Holiday)-25 | Physical Progress [3200 h]; Firefighting [104759 INR]; TATA Projects Ltd-25 | 104,759 |
|  | 2 | **2nd Fix** |  | 2028-04-10 | 2028-07-04 |  |  |  |  |
| RB2-WMI-3rd175 |  | Installation of vertical risers and distribution piping in shafts | 35d | 2028-04-10 | 2028-05-24 | RB2-WMI-3rd95, RB2-WMI-3rd150 | CSD-LKO Calender (6 day + Holiday)-25 | Physical Progress [13350 h]; Firefighting [1047593 INR]; TATA Projects Ltd-25 | 1,047,593 |
| RB2-WMI-3rd180 |  | Painting/insulation of exposed fire pipes | 30d | 2028-04-10 | 2028-05-18 | RB2-WMI-3rd150 | CSD-LKO Calender (6 day + Holiday)-25 | Physical Progress [5340 h]; Firefighting [52380 INR]; TATA Projects Ltd-25 | 52,380 |
| RB2-WMI-3rd190 |  | Testing risers and branch lines for leakage | 30d | 2028-05-18 | 2028-06-22 | RB2-WMI-3rd180 | CSD-LKO Calender (6 day + Holiday)-25 | Physical Progress [3200 h]; Firefighting [104759 INR]; TATA Projects Ltd-25 | 104,759 |
| RB2-WMI-3rd200 |  | Installation of sprinkler branch lines in ceilings | 35d | 2028-05-24 | 2028-07-04 | RB2-WMI-3rd175 | CSD-LKO Calender (6 day + Holiday)-25 | Physical Progress [13350 h]; Firefighting [785695 INR]; TATA Projects Ltd-25 | 785,695 |
|  | 5 | **ELV** |  | 2027-11-05 | 2028-07-21 |  |  |  |  |
|  | 1 | **1st Fix** |  | 2027-11-05 | 2028-01-22 |  |  |  |  |
| RB2-WMI-3rd20 |  | Slab Conduiting | 35d | 2027-11-05 | 2027-12-16 | RB2-WMI-3rd10, E-GFC-MEP-RB2-225 | CSD-LKO Calender (6 day + Holiday)-25 | Physical Progress [13350 h]; ELV [469789 INR]; TATA Projects Ltd-25 | 469,789 |
| RB2-WMI-3rd45 |  | Wall Conduiting | 30d | 2027-12-10 | 2028-01-17 | RB2-WMI-3rd15, E-GFC-MEP-RB2-225 | CSD-LKO Calender (6 day + Holiday)-25 | Physical Progress [5340 h]; ELV [201338 INR]; TATA Projects Ltd-25 | 201,338 |
| RB2-WMI-3rd80 |  | Installing back boxes for switches, sockets | 5d | 2028-01-17 | 2028-01-22 | RB2-WMI-3rd45, RB2-WMI-3rd20, E-GFC-MEP-RB2-225 | CSD-LKO Calender (6 day + Holiday)-25 | Physical Progress [2670 h]; ELV [335564 INR]; TATA Projects Ltd-25 | 335,564 |
|  | 2 | **2nd Fix** |  | 2028-02-10 | 2028-07-21 |  |  |  |  |
| RB2-WMI-3rd125 |  | Cable tray installation | 25d | 2028-02-10 | 2028-03-10 | RB2-WMI-3rd95 | CSD-LKO Calender (6 day + Holiday)-25 | Physical Progress [13350 h]; ELV [335564 INR]; TATA Projects Ltd-25 | 335,564 |
| RB2-WMI-3rd165 |  | Cabeling of ELV cable - IT/Fire Alarm/Public Address | 45d | 2028-03-10 | 2028-05-06 | RB2-WMI-3rd125 | CSD-LKO Calender (6 day + Holiday)-25 | Physical Progress [24030 h]; ELV [805353 INR]; TATA Projects Ltd-25 | 805,353 |
| RB2-WMI-3rd195 |  | ELV Rack Installation | 25d | 2028-05-06 | 2028-06-05 | RB2-WMI-3rd165 | CSD-LKO Calender (6 day + Holiday)-25 | Physical Progress [5340 h]; ELV [335564 INR]; TATA Projects Ltd-25 | 335,564 |
| RB2-WMI-3rd215 |  | Termination of cables at junction boxes, patch panels, and control panels | 15d | 2028-06-05 | 2028-06-22 | RB2-WMI-3rd195 | CSD-LKO Calender (6 day + Holiday)-25 | Physical Progress [16020 h]; ELV [335564 INR]; TATA Projects Ltd-25 | 335,564 |
| RB2-WMI-3rd240 |  | Fixing devices like CCTV camera bases, card reader bases, smoke detector bases, PA Bases, Wifi Bases | 25d | 2028-06-22 | 2028-07-21 | RB2-WMI-3rd215 | CSD-LKO Calender (6 day + Holiday)-25 | Physical Progress [2140 h]; ELV [671128 INR]; TATA Projects Ltd-25 | 671,128 |

| ID | WBS | Activity | Duration | Start | Finish | Predecessors | Calendar | Resources | Cost |
| --- | --- | --- | --- | --- | --- | --- | --- | --- | --- |
|  | 2 | **Dry Finishes/ID Works** |  | 2028-09-09 | 2029-04-12 |  |  |  |  |
| RB2-WMI-3rd230 |  | Running of Wild Air | 1d | 2028-09-09 | 2028-09-09 | RB2-F-(2nd-5th)50, RB2-WMI-3rd140, RB2-WMI-3rd170, RB2-WMI-3rd185, RB2-WMI-3rd220, RB2-WMI-3rd265 | CSD-LKO Calender (6 day + Holiday)-25 | Physical Progress [530 h]; TATA Projects Ltd-25 |  |
| RB2-WMI-3rd235 |  | Wall finish ID Works | 35d | 2028-09-11 | 2028-10-24 | RB2-WMI-3rd230, RB2-WMI-3rd115, RB2-WMI-3rd155, RB2-WMI-3rd205, RB2-WMI-3rd210, RB2-WMI-3rd225, RB2-WMI-3rd250, RB2-WMI-3rd110, RB2-WMI-3rd120, RB2-WMI-3rd145, RB2-WMI-3rd160, RB2-WMI-3rd175, RB2-WMI-3rd180, RB2-WMI-3rd190, RB2-WMI-3rd200, RB2-WMI-3rd125, RB2-WMI-3rd165, RB2-WMI-3rd195, RB2-WMI-3rd215, RB2-WMI-3rd240 | CSD-LKO Calender (6 day + Holiday)-25 | ID Work [6333907 INR]; Physical Progress [5340 h]; TATA Projects Ltd-25 | 6,333,907 |
| RB2-WMI-3rd245 |  | False Ceiling Installation | 35d | 2028-10-25 | 2028-12-04 | RB2-WMI-3rd235 | CSD-LKO Calender (6 day + Holiday)-25 | ID Work [8445209 INR]; Physical Progress [10680 h]; TATA Projects Ltd-25 | 8,445,209 |
| RB2-WMI-3rd260 |  | Flooring of toilets/kitchen/Balcony | 10d | 2028-12-05 | 2028-12-15 | RB2-WMI-3rd245, RB2-WMI-3rd55 | CSD-LKO Calender (6 day + Holiday)-25 | ID Work [3378084 INR]; Physical Progress [5340 h]; TATA Projects Ltd-25 | 3,378,084 |
| RB2-WMI-3rd270 |  | Doors & Windows/Fire Doors/Shaft Doors | 35d | 2028-12-16 | 2029-01-29 | RB2-WMI-3rd235, RB2-WMI-3rd260 | CSD-LKO Calender (6 day + Holiday)-25 | ID Work [4222604 INR]; Physical Progress [5340 h]; TATA Projects Ltd-25 | 4,222,604 |
| RB2-WMI-3rd275 |  | Putty & First Coat of Paint | 10d | 2028-12-16 | 2028-12-28 | RB2-WMI-3rd235, RB2-WMI-3rd260 | CSD-LKO Calender (6 day + Holiday)-25 | Painting [6989 Sq m]; Painter [6990 h]; Helper [6990 h]; Physical Progress [5340 h]; TATA Projects Ltd-25 | 1,597,825.18 |
| RB2-WMI-3rd300 |  | Wooden Flooring/Flooring | 20d | 2028-12-29 | 2029-01-22 | RB2-WMI-3rd275 | CSD-LKO Calender (6 day + Holiday)-25 | ID Work [4222604 INR]; Physical Progress [10680 h]; TATA Projects Ltd-25 | 4,222,604 |
| RB2-WMI-3rd305 |  | Railing for staircase | 35d | 2028-12-29 | 2029-02-09 | RB2-WMI-3rd235, RB2-WMI-3rd275 | CSD-LKO Calender (6 day + Holiday)-25 | ID Work [1266781 INR]; Physical Progress [8010 h]; TATA Projects Ltd-25 | 1,266,781 |
| RB2-WMI-3rd345 |  | Fixed Furniture | 8d | 2029-01-23 | 2029-02-01 | RB2-WMI-3rd300 | CSD-LKO Calender (6 day + Holiday)-25 | ID Work [2111302 INR]; Physical Progress [4270 h]; TATA Projects Ltd-25 | 2,111,302 |
| RB2-WMI-3rd385 |  | False ceiling final finishes | 10d | 2029-02-17 | 2029-02-28 | RB2-WMI-3rd315 | CSD-LKO Calender (6 day + Holiday)-25 | ID Work [844521 INR]; Physical Progress [5340 h]; TATA Projects Ltd-25 | 844,521 |
| RB2-WMI-3rd390 |  | Final coat of paint | 10d | 2029-03-14 | 2029-03-24 | RB2-WMI-3rd385, RB2-WMI-3rd305, RB2-WMI-3rd345, RB2-WMI-3rd350, RB2-WMI-3rd320, RB2-WMI-3rd325, RB2-WMI-3rd355, RB2-WMI-3rd380, RB2-WMI-3rd375, RB2-WMI-3rd370, RB2-WMI-3rd365, RB2-WMI-3rd335, RB2-WMI-3rd330, RB2-WMI-3rd270 | CSD-LKO Calender (6 day + Holiday)-25 | Painting [6989 Sq m]; Painter [6990 h]; Helper [6990 h]; Physical Progress [5340 h]; TATA Projects Ltd-25 | 1,597,825.18 |
| RB2-WMI-3rd395 |  | Soft Furnishing & Signage | 15d | 2029-03-26 | 2029-04-12 | RB2-WMI-3rd390 | CSD-LKO Calender (6 day + Holiday)-25 | ID Work [8445209 INR]; Physical Progress [1600 h]; TATA Projects Ltd-25 | 8,445,209 |
| RB2-WMI-3rd400 |  | Loose Furniture | 15d | 2029-03-26 | 2029-04-12 | RB2-WMI-3rd390 | CSD-LKO Calender (6 day + Holiday)-25 | ID Work [2955823 INR]; Physical Progress [1600 h]; TATA Projects Ltd-25 | 2,955,823 |
|  | 3 | **MEP Final Fix** |  | 2028-12-05 | 2029-03-13 |  |  |  |  |
|  | 3 | **HVAC** |  | 2028-12-05 | 2029-02-16 |  |  |  |  |
| RB2-WMI-3rd255 |  | Installing grills, diffusers, dampers | 30d | 2028-12-05 | 2029-01-10 | RB2-WMI-3rd245 | CSD-LKO Calender (6 day + Holiday)-25 | Physical Progress [3200 h]; HVAC [1125010 INR]; TATA Projects Ltd-25 | 1,125,010 |
| RB2-WMI-3rd315 |  | Installation of thermostats and control panels | 30d | 2029-01-11 | 2029-02-16 | RB2-WMI-3rd255, RB2-WMI-3rd275, RB2-WMI-3rd265 | CSD-LKO Calender (6 day + Holiday)-25 | Physical Progress [3200 h]; HVAC [562505 INR]; TATA Projects Ltd-25 | 562,505 |
|  | 1 | **Electrical** |  | 2028-12-29 | 2029-03-13 |  |  |  |  |
| RB2-WMI-3rd280 |  | Switches & Socket | 30d | 2028-12-29 | 2029-02-03 | RB2-WMI-3rd275 | CSD-LKO Calender (6 day + Holiday)-25 | Physical Progress [10680 h]; Electrical [1141818 INR]; TATA Projects Ltd-25 | 1,141,818 |
| RB2-WMI-3rd350 |  | Light Fixtures | 30d | 2029-02-05 | 2029-03-13 | RB2-WMI-3rd280, RB2-WMI-3rd250 | CSD-LKO Calender (6 day + Holiday)-25 | Physical Progress [8010 h]; Electrical [1712727 INR]; TATA Projects Ltd-25 | 1,712,727 |
|  | 2 | **Plumbing** |  | 2028-12-29 | 2029-02-22 |  |  |  |  |
| RB2-WMI-3rd285 |  | Installation of sanitary fixtures (WC, washbasins, urinals, sinks) | 10d | 2028-12-29 | 2029-01-10 | RB2-WMI-3rd275, RB2-WMI-3rd145, RB2-WMI-3rd160 | CSD-LKO Calender (6 day + Holiday)-25 | Physical Progress [5340 h]; Plumbing [1882495 INR]; TATA Projects Ltd-25 | 1,882,495 |
| RB2-WMI-3rd310 |  | Installation of CP fittings (taps, mixers, showers, health faucets) | 10d | 2029-01-11 | 2029-01-22 | RB2-WMI-3rd285, RB2-WMI-3rd275 | CSD-LKO Calender (6 day + Holiday)-25 | Physical Progress [5340 h]; Plumbing [941247 INR]; TATA Projects Ltd-25 | 941,247 |
| RB2-WMI-3rd320 |  | Connection of appliances | 25d | 2029-01-23 | 2029-02-22 | RB2-WMI-3rd310 | CSD-LKO Calender (6 day + Holiday)-25 | Physical Progress [3740 h]; Plumbing [470624 INR]; TATA Projects Ltd-25 | 470,624 |

| ID | WBS | Activity | Duration | Start | Finish | Predecessors | Calendar | Resources | Cost |
| --- | --- | --- | --- | --- | --- | --- | --- | --- | --- |
|  | 4 | **Firefighting** |  | 2028-12-29 | 2029-03-07 |  |  |  |  |
| RB2-WMI-3rd290 |  | Installation of hydrant accessories (valves, hose reels, cabinets) | 25d | 2028-12-29 | 2029-01-29 | RB2-WMI-3rd275 | CSD-LKO Calender (6 day + Holiday)-25 | Physical Progress [5340 h]; Firefighting [523796 INR]; TATA Projects Ltd-25 | 523,796 |
| RB2-WMI-3rd295 |  | Installation of portable fire extinguishers | 30d | 2028-12-29 | 2029-02-03 | RB2-WMI-3rd275 | CSD-LKO Calender (6 day + Holiday)-25 | Physical Progress [3200 h]; Firefighting [52380 INR]; TATA Projects Ltd-25 | 52,380 |
| RB2-WMI-3rd325 |  | Installation of sprinkler heads, nozzles, and final alignment | 35d | 2029-01-23 | 2029-03-07 | RB2-WMI-3rd275, RB2-WMI-3rd300, RB2-WMI-3rd190, RB2-WMI-3rd200 | CSD-LKO Calender (6 day + Holiday)-25 | Physical Progress [21360 h]; Firefighting [785695 INR]; TATA Projects Ltd-25 | 785,695 |
| RB2-WMI-3rd355 |  | Integration with fire alarm system | 20d | 2029-02-05 | 2029-02-28 | RB2-WMI-3rd295 | CSD-LKO Calender (6 day + Holiday)-25 | Physical Progress [10680 h]; Firefighting [261898 INR]; TATA Projects Ltd-25 | 261,898 |
|  | 5 | **ELV** |  | 2029-01-23 | 2029-03-13 |  |  |  |  |
| RB2-WMI-3rd330 |  | Installation of data and Voice Faceplate | 25d | 2029-01-23 | 2029-02-22 | RB2-WMI-3rd275, RB2-WMI-3rd300, RB2-WMI-3rd240 | CSD-LKO Calender (6 day + Holiday)-25 | Physical Progress [5340 h]; ELV [335564 INR]; TATA Projects Ltd-25 | 335,564 |
| RB2-WMI-3rd335 |  | Installation of Camera & Wifi | 30d | 2029-01-23 | 2029-02-28 | RB2-WMI-3rd275, RB2-WMI-3rd300 | CSD-LKO Calender (6 day + Holiday)-25 | Physical Progress [5340 h]; ELV [335564 INR]; TATA Projects Ltd-25 | 335,564 |
| RB2-WMI-3rd340 |  | Installation of fire alarm devices + Public Address | 10d | 2029-01-23 | 2029-02-03 | RB2-WMI-3rd275, RB2-WMI-3rd300 | CSD-LKO Calender (6 day + Holiday)-25 | Physical Progress [5340 h]; ELV [402677 INR]; TATA Projects Ltd-25 | 402,677 |
| RB2-WMI-3rd360 |  | Installation of Active System | 15d | 2029-02-05 | 2029-02-22 | RB2-WMI-3rd340 | CSD-LKO Calender (6 day + Holiday)-25 | Physical Progress [8010 h]; ELV [671128 INR]; TATA Projects Ltd-25 | 671,128 |
| RB2-WMI-3rd365 |  | Fire Panel Intallation & Integration | 25d | 2029-02-05 | 2029-03-07 | RB2-WMI-3rd340 | CSD-LKO Calender (6 day + Holiday)-25 | Physical Progress [13350 h]; ELV [335564 INR]; TATA Projects Ltd-25 | 335,564 |
| RB2-WMI-3rd370 |  | Installation & Integration of Audio Visual System | 25d | 2029-02-05 | 2029-03-07 | RB2-WMI-3rd340 | CSD-LKO Calender (6 day + Holiday)-25 | Physical Progress [13350 h]; ELV [335564 INR]; TATA Projects Ltd-25 | 335,564 |
| RB2-WMI-3rd375 |  | Installation & Integration of Access Control | 25d | 2029-02-05 | 2029-03-07 | RB2-WMI-3rd340 | CSD-LKO Calender (6 day + Holiday)-25 | Physical Progress [13350 h]; ELV [335564 INR]; TATA Projects Ltd-25 | 335,564 |
| RB2-WMI-3rd380 |  | Integration of Active components | 15d | 2029-02-23 | 2029-03-13 | RB2-WMI-3rd360 | CSD-LKO Calender (6 day + Holiday)-25 | Physical Progress [8010 h]; ELV [134226 INR]; TATA Projects Ltd-25 | 134,226 |
|  | 5 | **Fourth Floor** |  | 2027-11-30 | 2029-03-13 |  |  |  |  |
|  | 1 | **Wet Finishes** |  | 2027-11-30 | 2028-02-28 |  |  |  |  |
| RB2-WMI-4th10 |  | Deshuttering | 4d | 2027-11-30 | 2027-12-04 | RB2-SS-5th.515 | CSD-LKO Calender (6 day + Holiday)-25 | Physical Progress [2140 h]; TATA Projects Ltd-25 |  |
| RB2-WMI-4th15 |  | Brickwork/Blockwork | 20d | 2027-12-04 | 2027-12-29 | RB2-WMI-4th10, E-GFC-AR-RB2-230 | CSD-LKO Calender (6 day + Holiday)-25 | Masonry [1008 CuM]; Mason [6720 h]; Helper [3360 h]; Physical Progress [16020 h]; TATA Projects Ltd-25 | 9,611,642.88 |
| RB2-WMI-4th55 |  | Waterproofing of Toilets, Balcony & Kitchen | 15d | 2027-12-29 | 2028-01-17 | RB2-WMI-4th15 | CSD-LKO Calender (6 day + Holiday)-25 | Waterproofing [8564838 INR]; Waterprrofing Mason [8160 h]; Helper [4080 h]; Physical Progress [8010 h]; TATA Projects Ltd-25 | 8,564,838 |
| RB2-WMI-4th95 |  | Plaster | 15d | 2028-02-10 | 2028-02-28 | RB2-WMI-4th30, RB2-WMI-4th75, RB2-WMI-4th80, RB2-WMI-4th55 | CSD-LKO Calender (6 day + Holiday)-25 | Plaster [22828 Sqr Mtr]; Mason [15220 h]; Helper [7610 h]; Physical Progress [8010 h]; TATA Projects Ltd-25 | 12,644,657.48 |
|  | 5 | **MEP 1st Fix, 2nd Fix** |  | 2027-12-04 | 2028-09-02 |  |  |  |  |
|  | 2 | **HVAC** |  | 2027-12-29 | 2028-07-21 |  |  |  |  |
|  | 1 | **1st Fix** |  | 2027-12-29 | 2028-03-29 |  |  |  |  |
| RB2-WMI-4th50 |  | Duct Support Fabrication | 15d | 2027-12-29 | 2028-01-17 | RB2-WMI-4th15, E-GFC-MEP-RB2-230 | CSD-LKO Calender (6 day + Holiday)-25 | Physical Progress [8010 h]; HVAC [225002 INR]; TATA Projects Ltd-25 | 225,002 |
| RB2-WMI-4th100 |  | Installing duct hangers and supports | 30d | 2028-01-17 | 2028-02-22 | RB2-WMI-4th50, E-GFC-MEP-RB2-230 | CSD-LKO Calender (6 day + Holiday)-25 | Physical Progress [5340 h]; HVAC [450004 INR]; TATA Projects Ltd-25 | 450,004 |
| RB2-WMI-4th130 |  | Laying concealed/exposed refrigerant piping | 30d | 2028-02-22 | 2028-03-29 | RB2-WMI-4th100, E-GFC-MEP-RB2-230 | CSD-LKO Calender (6 day + Holiday)-25 | Physical Progress [8010 h]; HVAC [112501 INR]; TATA Projects Ltd-25 | 112,501 |
| RB2-WMI-4th135 |  | Laying concealed/exposed drain piping | 30d | 2028-02-22 | 2028-03-29 | RB2-WMI-4th100, E-GFC-MEP-RB2-230 | CSD-LKO Calender (6 day + Holiday)-25 | Physical Progress [5340 h]; HVAC [675006 INR]; TATA Projects Ltd-25 | 675,006 |

| ID | WBS | Activity | Duration | Start | Finish | Predecessors | Calendar | Resources | Cost |
| --- | --- | --- | --- | --- | --- | --- | --- | --- | --- |
|  | 2 | **2nd Fix** |  | 2028-02-22 | 2028-07-21 |  |  |  |  |
| RB2-WMI-4th140 |  | Duct installation | 30d | 2028-02-22 | 2028-03-29 | RB2-WMI-4th100 | CSD-LKO Calender (6 day + Holiday)-25 | Physical Progress [8010 h]; HVAC [1687515 INR]; TATA Projects Ltd-25 | 1,687,515 |
| RB2-WMI-4th170 |  | Insulation of ducts (thermal/acoustic) | 10d | 2028-03-29 | 2028-04-10 | RB2-WMI-4th140 | CSD-LKO Calender (6 day + Holiday)-25 | Physical Progress [3200 h]; HVAC [1012509 INR]; TATA Projects Ltd-25 | 1,012,509 |
| RB2-WMI-4th185 |  | Installation of chilled water piping / VRF piping | 20d | 2028-04-10 | 2028-05-06 | RB2-WMI-4th170 | CSD-LKO Calender (6 day + Holiday)-25 | Physical Progress [3200 h]; HVAC [2250021 INR]; TATA Projects Ltd-25 | 2,250,021 |
| RB2-WMI-4th225 |  | Installation of indoor units including AHU, FCU | 45d | 2028-05-06 | 2028-06-28 | RB2-WMI-4th185, RB2-WMI-4th130, RB2-WMI-4th135 | CSD-LKO Calender (6 day + Holiday)-25 | Physical Progress [24030 h]; HVAC [2025019 INR]; TATA Projects Ltd-25 | 2,025,019 |
| RB2-WMI-4th305 |  | Connecting refrigerant and drain piping to indoor units | 20d | 2028-06-28 | 2028-07-21 | RB2-WMI-4th225 | CSD-LKO Calender (6 day + Holiday)-25 | Physical Progress [3200 h]; HVAC [562505 INR]; TATA Projects Ltd-25 | 562,505 |
|  | 1 | **Electrical** |  | 2027-12-04 | 2028-07-10 |  |  |  |  |
|  | 1 | **1st Fix** |  | 2027-12-04 | 2028-02-10 |  |  |  |  |
| RB2-WMI-4th20 |  | Slab Conduiting | 35d | 2027-12-04 | 2028-01-17 | RB2-WMI-4th10, E-GFC-MEP-RB2-230 | CSD-LKO Calender (6 day + Holiday)-25 | Physical Progress [13350 h]; Electrical [1141818 INR]; TATA Projects Ltd-25 | 1,141,818 |
| RB2-WMI-4th30 |  | Wall Conduiting | 30d | 2027-12-29 | 2028-02-04 | RB2-WMI-4th15, E-GFC-MEP-RB2-230 | CSD-LKO Calender (6 day + Holiday)-25 | Physical Progress [5340 h]; Electrical [570909 INR]; TATA Projects Ltd-25 | 570,909 |
| RB2-WMI-4th75 |  | Installing back boxes for switches, sockets | 5d | 2028-02-04 | 2028-02-10 | RB2-WMI-4th30, RB2-WMI-4th20, E-GFC-MEP-RB2-230 | CSD-LKO Calender (6 day + Holiday)-25 | Physical Progress [2670 h]; Electrical [342545 INR]; TATA Projects Ltd-25 | 342,545 |
|  | 2 | **2nd Fix** |  | 2028-02-28 | 2028-07-10 |  |  |  |  |
| RB2-WMI-4th115 |  | Cable tray laying | 25d | 2028-02-28 | 2028-03-29 | RB2-WMI-4th95 | CSD-LKO Calender (6 day + Holiday)-25 | Physical Progress [13350 h]; Electrical [456727 INR]; TATA Projects Ltd-25 | 456,727 |
| RB2-WMI-4th155 |  | Cabling & Wire Pulling | 45d | 2028-03-29 | 2028-05-24 | RB2-WMI-4th115 | CSD-LKO Calender (6 day + Holiday)-25 | Physical Progress [24030 h]; Electrical [2283636 INR]; TATA Projects Ltd-25 | 2,283,636 |
| RB2-WMI-4th205 |  | DB fixing and connecting | 20d | 2028-05-24 | 2028-06-16 | RB2-WMI-4th155 | CSD-LKO Calender (6 day + Holiday)-25 | Physical Progress [8010 h]; Electrical [342545 INR]; TATA Projects Ltd-25 | 342,545 |
| RB2-WMI-4th210 |  | Floor Rising Main Installation | 20d | 2028-05-24 | 2028-06-16 | RB2-WMI-4th155 | CSD-LKO Calender (6 day + Holiday)-25 | Physical Progress [2670 h]; Electrical [1598545 INR]; TATA Projects Ltd-25 | 1,598,545 |
| RB2-WMI-4th240 |  | Floor/Distribution Panel Installation | 10d | 2028-06-16 | 2028-06-28 | RB2-WMI-4th205 | CSD-LKO Calender (6 day + Holiday)-25 | Physical Progress [2670 h]; Electrical [913454 INR]; TATA Projects Ltd-25 | 913,454 |
| RB2-WMI-4th270 |  | Equipment Earthing | 10d | 2028-06-28 | 2028-07-10 | RB2-WMI-4th240, RB2-WMI-4th210 | CSD-LKO Calender (6 day + Holiday)-25 | Physical Progress [5340 h]; Electrical [342545 INR]; TATA Projects Ltd-25 | 342,545 |
|  | 3 | **Plumbing** |  | 2027-12-29 | 2028-07-10 |  |  |  |  |
|  | 1 | **1st Fix** |  | 2027-12-29 | 2028-05-18 |  |  |  |  |
| RB2-WMI-4th35 |  | Fixing pipe supports and clamps | 20d | 2027-12-29 | 2028-01-22 | RB2-WMI-4th15, E-GFC-MEP-RB2-230 | CSD-LKO Calender (6 day + Holiday)-25 | Physical Progress [5340 h]; Plumbing [470624 INR]; TATA Projects Ltd-25 | 470,624 |
| RB2-WMI-4th60 |  | Laying water supply pipes (hot & cold) | 35d | 2028-01-22 | 2028-03-04 | RB2-WMI-4th35, E-GFC-MEP-RB2-230 | CSD-LKO Calender (6 day + Holiday)-25 | Physical Progress [8010 h]; Plumbing [941247 INR]; TATA Projects Ltd-25 | 941,247 |
| RB2-WMI-4th65 |  | Laying drainage pipes (soil, waste, vent) | 35d | 2028-01-22 | 2028-03-04 | RB2-WMI-4th35, E-GFC-MEP-RB2-230 | CSD-LKO Calender (6 day + Holiday)-25 | Physical Progress [8010 h]; Plumbing [941247 INR]; TATA Projects Ltd-25 | 941,247 |
| RB2-WMI-4th70 |  | Installation of plumbing fixture base supports (WC frames, sink brackets) | 30d | 2028-03-04 | 2028-04-10 | RB2-WMI-4th65, E-GFC-MEP-RB2-230 | CSD-LKO Calender (6 day + Holiday)-25 | Physical Progress [3200 h]; Plumbing [470624 INR]; TATA Projects Ltd-25 | 470,624 |
| RB2-WMI-4th85 |  | Pressure testing of water supply lines | 25d | 2028-04-10 | 2028-05-12 | RB2-WMI-4th60, RB2-WMI-4th65, RB2-WMI-4th70, E-GFC-MEP-RB2-230 | CSD-LKO Calender (6 day + Holiday)-25 | Physical Progress [3740 h]; Plumbing [94125 INR]; TATA Projects Ltd-25 | 94,125 |
| RB2-WMI-4th90 |  | Installation of concealed parts of toilet fixtures | 30d | 2028-04-10 | 2028-05-18 | RB2-WMI-4th70, E-GFC-MEP-RB2-230 | CSD-LKO Calender (6 day + Holiday)-25 | Physical Progress [5340 h]; Plumbing [470624 INR]; TATA Projects Ltd-25 | 470,624 |

| ID | WBS | Activity | Duration | Start | Finish | Predecessors | Calendar | Resources | Cost |
| --- | --- | --- | --- | --- | --- | --- | --- | --- | --- |
|  | 2 | **2nd FIx** |  | 2028-05-12 | 2028-07-10 |  |  |  |  |
| RB2-WMI-4th110 |  | Insulation of hot water pipes (if applicable) | 30d | 2028-05-12 | 2028-06-16 | RB2-WMI-4th85 | CSD-LKO Calender (6 day + Holiday)-25 | Physical Progress [3200 h]; Plumbing [470624 INR]; TATA Projects Ltd-25 | 470,624 |
| RB2-WMI-4th120 |  | Installation of vertical risers and main distribution lines | 35d | 2028-05-18 | 2028-06-28 | RB2-WMI-4th95, RB2-WMI-4th85, RB2-WMI-4th90 | CSD-LKO Calender (6 day + Holiday)-25 | Physical Progress [10680 h]; Plumbing [941247 INR]; TATA Projects Ltd-25 | 941,247 |
| RB2-WMI-4th145 |  | Testing drainage lines for leakage/blockage | 15d | 2028-06-16 | 2028-07-04 | RB2-WMI-4th70, RB2-WMI-4th110 | CSD-LKO Calender (6 day + Holiday)-25 | Physical Progress [3200 h]; Plumbing [94125 INR]; TATA Projects Ltd-25 | 94,125 |
| RB2-WMI-4th160 |  | Fixing floor traps and gully traps | 10d | 2028-06-28 | 2028-07-10 | RB2-WMI-4th120 | CSD-LKO Calender (6 day + Holiday)-25 | Physical Progress [3200 h]; Plumbing [282374 INR]; TATA Projects Ltd-25 | 282,374 |
|  | 4 | **Firefighting** |  | 2027-12-29 | 2028-07-10 |  |  |  |  |
|  | 1 | **1st Fix** |  | 2027-12-29 | 2028-04-28 |  |  |  |  |
| RB2-WMI-4th40 |  | Fixing pipe supports and hangers | 35d | 2027-12-29 | 2028-02-10 | RB2-WMI-4th15, E-GFC-MEP-RB2-230 | CSD-LKO Calender (6 day + Holiday)-25 | Physical Progress [5340 h]; Firefighting [366658 INR]; TATA Projects Ltd-25 | 366,658 |
| RB2-WMI-4th105 |  | Laying branch piping | 35d | 2028-02-10 | 2028-03-23 | RB2-WMI-4th40, E-GFC-MEP-RB2-230 | CSD-LKO Calender (6 day + Holiday)-25 | Physical Progress [8010 h]; Firefighting [785695 INR]; TATA Projects Ltd-25 | 785,695 |
| RB2-WMI-4th150 |  | Hydrostatic pressure testing of piping | 30d | 2028-03-23 | 2028-04-28 | RB2-WMI-4th105, E-GFC-MEP-RB2-230 | CSD-LKO Calender (6 day + Holiday)-25 | Physical Progress [3200 h]; Firefighting [104759 INR]; TATA Projects Ltd-25 | 104,759 |
|  | 2 | **2nd Fix** |  | 2028-04-28 | 2028-07-10 |  |  |  |  |
| RB2-WMI-4th175 |  | Installation of vertical risers and distribution piping in shafts | 35d | 2028-04-28 | 2028-06-10 | RB2-WMI-4th95, RB2-WMI-4th150 | CSD-LKO Calender (6 day + Holiday)-25 | Physical Progress [13350 h]; Firefighting [1047593 INR]; TATA Projects Ltd-25 | 1,047,593 |
| RB2-WMI-4th180 |  | Painting/insulation of exposed fire pipes | 30d | 2028-04-28 | 2028-06-05 | RB2-WMI-4th150 | CSD-LKO Calender (6 day + Holiday)-25 | Physical Progress [5340 h]; Firefighting [52380 INR]; TATA Projects Ltd-25 | 52,380 |
| RB2-WMI-4th190 |  | Testing risers and branch lines for leakage | 30d | 2028-06-05 | 2028-07-10 | RB2-WMI-4th180 | CSD-LKO Calender (6 day + Holiday)-25 | Physical Progress [3200 h]; Firefighting [104759 INR]; TATA Projects Ltd-25 | 104,759 |
| RB2-WMI-4th200 |  | Installation of sprinkler branch lines in ceilings | 25d | 2028-06-10 | 2028-07-10 | RB2-WMI-4th175 | CSD-LKO Calender (6 day + Holiday)-25 | Physical Progress [13350 h]; Firefighting [785695 INR]; TATA Projects Ltd-25 | 785,695 |
|  | 5 | **ELV** |  | 2027-12-04 | 2028-09-02 |  |  |  |  |
|  | 1 | **1st Fix** |  | 2027-12-04 | 2028-02-10 |  |  |  |  |
| RB2-WMI-4th25 |  | Slab Conduiting | 35d | 2027-12-04 | 2028-01-17 | RB2-WMI-4th10, E-GFC-MEP-RB2-230 | CSD-LKO Calender (6 day + Holiday)-25 | Physical Progress [13350 h]; ELV [469789 INR]; TATA Projects Ltd-25 | 469,789 |
| RB2-WMI-4th45 |  | Wall Conduiting | 30d | 2027-12-29 | 2028-02-04 | RB2-WMI-4th15, E-GFC-MEP-RB2-230 | CSD-LKO Calender (6 day + Holiday)-25 | Physical Progress [5340 h]; ELV [201338 INR]; TATA Projects Ltd-25 | 201,338 |
| RB2-WMI-4th80 |  | Installing back boxes for switches, sockets | 5d | 2028-02-04 | 2028-02-10 | RB2-WMI-4th45, RB2-WMI-4th25, E-GFC-MEP-RB2-230 | CSD-LKO Calender (6 day + Holiday)-25 | Physical Progress [2670 h]; ELV [335564 INR]; TATA Projects Ltd-25 | 335,564 |
|  | 2 | **2nd Fix** |  | 2028-02-28 | 2028-09-02 |  |  |  |  |
| RB2-WMI-4th125 |  | Cable tray installation | 35d | 2028-02-28 | 2028-04-10 | RB2-WMI-4th95 | CSD-LKO Calender (6 day + Holiday)-25 | Physical Progress [13350 h]; ELV [335564 INR]; TATA Projects Ltd-25 | 335,564 |
| RB2-WMI-4th165 |  | Cabeling of ELV cable - IT/Fire Alarm/Public Address | 45d | 2028-04-10 | 2028-06-05 | RB2-WMI-4th125 | CSD-LKO Calender (6 day + Holiday)-25 | Physical Progress [24030 h]; ELV [805353 INR]; TATA Projects Ltd-25 | 805,353 |
| RB2-WMI-4th195 |  | ELV Rack Installation | 30d | 2028-06-05 | 2028-07-10 | RB2-WMI-4th165 | CSD-LKO Calender (6 day + Holiday)-25 | Physical Progress [5340 h]; ELV [335564 INR]; TATA Projects Ltd-25 | 335,564 |
| RB2-WMI-4th215 |  | Termination of cables at junction boxes, patch panels, and control panels | 30d | 2028-07-10 | 2028-08-14 | RB2-WMI-4th195 | CSD-LKO Calender (6 day + Holiday)-25 | Physical Progress [16020 h]; ELV [335564 INR]; TATA Projects Ltd-25 | 335,564 |
| RB2-WMI-4th245 |  | Fixing devices like CCTV camera bases, card reader bases, smoke detector bases, PA Bases, Wifi Bases | 15d | 2028-08-14 | 2028-09-02 | RB2-WMI-4th215 | CSD-LKO Calender (6 day + Holiday)-25 | Physical Progress [2140 h]; ELV [671128 INR]; TATA Projects Ltd-25 | 671,128 |
