# CSD-LKO_Revised Baseline

Schedule from Primavera P6, 2026-02-14 to 2029-06-07, data date 2026-09-30, costs in INR, A marks actual dates.

| ID | WBS | Activity | Duration | Start | Finish | Predecessors | Calendar | Resources | Cost |
| --- | --- | --- | --- | --- | --- | --- | --- | --- | --- |
|  | 2 | **Dry Finishes/ID Works** |  | 2028-09-09 | 2029-03-13 |  |  |  |  |
| RB2-WMI-4th220 |  | Running of Wild Air | 1d | 2028-09-09 | 2028-09-09 | RB2-F-(2nd-5th)50, RB2-WMI-4th140, RB2-WMI-4th170, RB2-WMI-4th185, RB2-WMI-4th225, RB2-WMI-4th305 | CSD-LKO Calender (6 day + Holiday)-25 | Physical Progress [530 h]; TATA Projects Ltd-25 |  |
| RB2-WMI-4th230 |  | Wall finish ID Works | 25d | 2028-09-11 | 2028-10-11 | RB2-WMI-4th220, RB2-WMI-4th115, RB2-WMI-4th155, RB2-WMI-4th205, RB2-WMI-4th210, RB2-WMI-4th240, RB2-WMI-4th270, RB2-WMI-4th110, RB2-WMI-4th120, RB2-WMI-4th145, RB2-WMI-4th160, RB2-WMI-4th175, RB2-WMI-4th180, RB2-WMI-4th190, RB2-WMI-4th200, RB2-WMI-4th125, RB2-WMI-4th165, RB2-WMI-4th195, RB2-WMI-4th215, RB2-WMI-4th245 | CSD-LKO Calender (6 day + Holiday)-25 | ID Work [6333907 INR]; Physical Progress [5340 h]; TATA Projects Ltd-25 | 6,333,907 |
| RB2-WMI-4th235 |  | False Ceiling Installation | 20d | 2028-10-12 | 2028-11-04 | RB2-WMI-4th230 | CSD-LKO Calender (6 day + Holiday)-25 | ID Work [8445209 INR]; Physical Progress [10680 h]; TATA Projects Ltd-25 | 8,445,209 |
| RB2-WMI-4th255 |  | Flooring of toilets/kitchen/Balcony | 10d | 2028-11-06 | 2028-11-16 | RB2-WMI-4th235, RB2-WMI-4th55 | CSD-LKO Calender (6 day + Holiday)-25 | ID Work [3378084 INR]; Physical Progress [5340 h]; TATA Projects Ltd-25 | 3,378,084 |
| RB2-WMI-4th260 |  | Doors & Windows/Fire Doors/Shaft Doors | 35d | 2028-11-17 | 2028-12-28 | RB2-WMI-4th230, RB2-WMI-4th255 | CSD-LKO Calender (6 day + Holiday)-25 | ID Work [4222604 INR]; Physical Progress [5340 h]; TATA Projects Ltd-25 | 4,222,604 |
| RB2-WMI-4th265 |  | Putty & First Coat of Paint | 10d | 2028-11-17 | 2028-11-28 | RB2-WMI-4th230, RB2-WMI-4th255 | CSD-LKO Calender (6 day + Holiday)-25 | Painting [6989 Sq m]; Painter [6990 h]; Helper [6990 h]; Physical Progress [5340 h]; TATA Projects Ltd-25 | 1,597,825.18 |
| RB2-WMI-4th295 |  | Wooden Flooring/Flooring | 20d | 2028-11-29 | 2028-12-21 | RB2-WMI-4th265 | CSD-LKO Calender (6 day + Holiday)-25 | ID Work [4222604 INR]; Physical Progress [10680 h]; TATA Projects Ltd-25 | 4,222,604 |
| RB2-WMI-4th300 |  | Railing for staircase | 35d | 2028-11-29 | 2029-01-10 | RB2-WMI-4th230, RB2-WMI-4th265 | CSD-LKO Calender (6 day + Holiday)-25 | ID Work [1266781 INR]; Physical Progress [8010 h]; TATA Projects Ltd-25 | 1,266,781 |
| RB2-WMI-4th340 |  | Fixed Furniture | 8d | 2028-12-22 | 2029-01-02 | RB2-WMI-4th295 | CSD-LKO Calender (6 day + Holiday)-25 | ID Work [2111302 INR]; Physical Progress [4270 h]; TATA Projects Ltd-25 | 2,111,302 |
| RB2-WMI-4th385 |  | False ceiling final finishes | 20d | 2029-01-17 | 2029-02-09 | RB2-WMI-4th375 | CSD-LKO Calender (6 day + Holiday)-25 | ID Work [844521 INR]; Physical Progress [5340 h]; TATA Projects Ltd-25 | 844,521 |
| RB2-WMI-4th390 |  | Final coat of paint | 10d | 2029-02-10 | 2029-02-22 | RB2-WMI-4th385, RB2-WMI-4th300, RB2-WMI-4th340, RB2-WMI-4th345, RB2-WMI-4th315, RB2-WMI-4th320, RB2-WMI-4th350, RB2-WMI-4th380, RB2-WMI-4th370, RB2-WMI-4th365, RB2-WMI-4th360, RB2-WMI-4th330, RB2-WMI-4th325, RB2-WMI-4th260 | CSD-LKO Calender (6 day + Holiday)-25 | Painting [6989 Sq m]; Painter [6990 h]; Helper [6990 h]; Physical Progress [5340 h]; TATA Projects Ltd-25 | 1,597,825.18 |
| RB2-WMI-4th395 |  | Soft Furnishing & Signage | 15d | 2029-02-23 | 2029-03-13 | RB2-WMI-4th390 | CSD-LKO Calender (6 day + Holiday)-25 | ID Work [8445209 INR]; Physical Progress [1600 h]; TATA Projects Ltd-25 | 8,445,209 |
| RB2-WMI-4th400 |  | Loose Furniture | 15d | 2029-02-23 | 2029-03-13 | RB2-WMI-4th390 | CSD-LKO Calender (6 day + Holiday)-25 | ID Work [2955823 INR]; Physical Progress [1600 h]; TATA Projects Ltd-25 | 2,955,823 |
|  | 3 | **MEP Final Fix** |  | 2028-11-06 | 2029-02-09 |  |  |  |  |
|  | 3 | **HVAC** |  | 2028-11-06 | 2029-01-16 |  |  |  |  |
| RB2-WMI-4th250 |  | Installing grills, diffusers, dampers | 30d | 2028-11-06 | 2028-12-09 | RB2-WMI-4th235 | CSD-LKO Calender (6 day + Holiday)-25 | Physical Progress [3200 h]; HVAC [1125010 INR]; TATA Projects Ltd-25 | 1,125,010 |
| RB2-WMI-4th375 |  | Installation of thermostats and control panels | 30d | 2028-12-11 | 2029-01-16 | RB2-WMI-4th250, RB2-WMI-4th265, RB2-WMI-4th305 | CSD-LKO Calender (6 day + Holiday)-25 | Physical Progress [3200 h]; HVAC [562505 INR]; TATA Projects Ltd-25 | 562,505 |
|  | 1 | **Electrical** |  | 2028-11-29 | 2029-02-09 |  |  |  |  |
| RB2-WMI-4th275 |  | Switches & Socket | 30d | 2028-11-29 | 2029-01-04 | RB2-WMI-4th265 | CSD-LKO Calender (6 day + Holiday)-25 | Physical Progress [10680 h]; Electrical [1141818 INR]; TATA Projects Ltd-25 | 1,141,818 |
| RB2-WMI-4th345 |  | Light Fixtures | 30d | 2029-01-05 | 2029-02-09 | RB2-WMI-4th275, RB2-WMI-4th270 | CSD-LKO Calender (6 day + Holiday)-25 | Physical Progress [8010 h]; Electrical [1712727 INR]; TATA Projects Ltd-25 | 1,712,727 |
|  | 2 | **Plumbing** |  | 2028-11-29 | 2029-01-22 |  |  |  |  |
| RB2-WMI-4th280 |  | Installation of sanitary fixtures (WC, washbasins, urinals, sinks) | 10d | 2028-11-29 | 2028-12-09 | RB2-WMI-4th265, RB2-WMI-4th145, RB2-WMI-4th160 | CSD-LKO Calender (6 day + Holiday)-25 | Physical Progress [5340 h]; Plumbing [1882495 INR]; TATA Projects Ltd-25 | 1,882,495 |
| RB2-WMI-4th310 |  | Installation of CP fittings (taps, mixers, showers, health faucets) | 10d | 2028-12-11 | 2028-12-21 | RB2-WMI-4th280, RB2-WMI-4th265 | CSD-LKO Calender (6 day + Holiday)-25 | Physical Progress [5340 h]; Plumbing [941247 INR]; TATA Projects Ltd-25 | 941,247 |
| RB2-WMI-4th315 |  | Connection of appliances | 25d | 2028-12-22 | 2029-01-22 | RB2-WMI-4th310 | CSD-LKO Calender (6 day + Holiday)-25 | Physical Progress [3740 h]; Plumbing [470624 INR]; TATA Projects Ltd-25 | 470,624 |

| ID | WBS | Activity | Duration | Start | Finish | Predecessors | Calendar | Resources | Cost |
| --- | --- | --- | --- | --- | --- | --- | --- | --- | --- |
|  | 4 | **Firefighting** |  | 2028-11-29 | 2029-02-03 |  |  |  |  |
| RB2-WMI-4th285 |  | Installation of hydrant accessories (valves, hose reels, cabinets) | 25d | 2028-11-29 | 2028-12-28 | RB2-WMI-4th265 | CSD-LKO Calender (6 day + Holiday)-25 | Physical Progress [5340 h]; Firefighting [523796 INR]; TATA Projects Ltd-25 | 523,796 |
| RB2-WMI-4th290 |  | Installation of portable fire extinguishers | 30d | 2028-11-29 | 2029-01-04 | RB2-WMI-4th265 | CSD-LKO Calender (6 day + Holiday)-25 | Physical Progress [3200 h]; Firefighting [52380 INR]; TATA Projects Ltd-25 | 52,380 |
| RB2-WMI-4th320 |  | Installation of sprinkler heads, nozzles, and final alignment | 35d | 2028-12-22 | 2029-02-03 | RB2-WMI-4th265, RB2-WMI-4th295, RB2-WMI-4th190, RB2-WMI-4th200 | CSD-LKO Calender (6 day + Holiday)-25 | Physical Progress [21360 h]; Firefighting [785695 INR]; TATA Projects Ltd-25 | 785,695 |
| RB2-WMI-4th350 |  | Integration with fire alarm system | 20d | 2029-01-05 | 2029-01-29 | RB2-WMI-4th290 | CSD-LKO Calender (6 day + Holiday)-25 | Physical Progress [10680 h]; Firefighting [261898 INR]; TATA Projects Ltd-25 | 261,898 |
|  | 5 | **ELV** |  | 2028-12-22 | 2029-02-09 |  |  |  |  |
| RB2-WMI-4th325 |  | Installation of data and Voice Faceplate | 25d | 2028-12-22 | 2029-01-22 | RB2-WMI-4th265, RB2-WMI-4th295, RB2-WMI-4th245 | CSD-LKO Calender (6 day + Holiday)-25 | Physical Progress [5340 h]; ELV [335564 INR]; TATA Projects Ltd-25 | 335,564 |
| RB2-WMI-4th330 |  | Installation of Camera & Wifi | 30d | 2028-12-22 | 2029-01-29 | RB2-WMI-4th265, RB2-WMI-4th295 | CSD-LKO Calender (6 day + Holiday)-25 | Physical Progress [5340 h]; ELV [335564 INR]; TATA Projects Ltd-25 | 335,564 |
| RB2-WMI-4th335 |  | Installation of fire alarm devices + Public Address | 10d | 2028-12-22 | 2029-01-04 | RB2-WMI-4th265, RB2-WMI-4th295 | CSD-LKO Calender (6 day + Holiday)-25 | Physical Progress [5340 h]; ELV [402677 INR]; TATA Projects Ltd-25 | 402,677 |
| RB2-WMI-4th355 |  | Installation of Active System | 15d | 2029-01-05 | 2029-01-22 | RB2-WMI-4th335 | CSD-LKO Calender (6 day + Holiday)-25 | Physical Progress [8010 h]; ELV [671128 INR]; TATA Projects Ltd-25 | 671,128 |
| RB2-WMI-4th360 |  | Fire Panel Intallation & Integration | 25d | 2029-01-05 | 2029-02-03 | RB2-WMI-4th335 | CSD-LKO Calender (6 day + Holiday)-25 | Physical Progress [13350 h]; ELV [335564 INR]; TATA Projects Ltd-25 | 335,564 |
| RB2-WMI-4th365 |  | Installation & Integration of Audio Visual System | 25d | 2029-01-05 | 2029-02-03 | RB2-WMI-4th335 | CSD-LKO Calender (6 day + Holiday)-25 | Physical Progress [13350 h]; ELV [335564 INR]; TATA Projects Ltd-25 | 335,564 |
| RB2-WMI-4th370 |  | Installation & Integration of Access Control | 25d | 2029-01-05 | 2029-02-03 | RB2-WMI-4th335 | CSD-LKO Calender (6 day + Holiday)-25 | Physical Progress [13350 h]; ELV [335564 INR]; TATA Projects Ltd-25 | 335,564 |
| RB2-WMI-4th380 |  | Integration of Active components | 15d | 2029-01-23 | 2029-02-09 | RB2-WMI-4th355 | CSD-LKO Calender (6 day + Holiday)-25 | Physical Progress [8010 h]; ELV [134226 INR]; TATA Projects Ltd-25 | 134,226 |
|  | 6 | **Fifth Floor** |  | 2027-12-30 | 2029-04-25 |  |  |  |  |
|  | 1 | **Wet Finishes** |  | 2027-12-30 | 2028-03-07 |  |  |  |  |
| RB2-WMI-5th10 |  | Deshuttering | 4d | 2027-12-30 | 2028-01-05 | RB2-SS-6th.520 | CSD-LKO Calender (6 day + Holiday)-25 | Physical Progress [2140 h]; TATA Projects Ltd-25 |  |
| RB2-WMI-5th15 |  | Brickwork/Blockwork | 10d | 2028-01-05 | 2028-01-17 | RB2-WMI-5th10, E-GFC-AR-RB2-235 | CSD-LKO Calender (6 day + Holiday)-25 | Masonry [1008 CuM]; Mason [6720 h]; Helper [3360 h]; Physical Progress [16020 h]; TATA Projects Ltd-25 | 9,611,642.88 |
| RB2-WMI-5th55 |  | Waterproofing of Toilets, Balcony & Kitchen | 15d | 2028-01-17 | 2028-02-04 | RB2-WMI-5th15 | CSD-LKO Calender (6 day + Holiday)-25 | Waterproofing [8564838 INR]; Waterprrofing Mason [8160 h]; Helper [4080 h]; Physical Progress [8010 h]; TATA Projects Ltd-25 | 8,564,838 |
| RB2-WMI-5th95 |  | Plaster | 7d | 2028-02-28 | 2028-03-07 | RB2-WMI-5th30, RB2-WMI-5th75, RB2-WMI-5th80, RB2-WMI-5th55 | CSD-LKO Calender (6 day + Holiday)-25 | Plaster [22828 Sqr Mtr]; Mason [15220 h]; Helper [7610 h]; Physical Progress [8010 h]; TATA Projects Ltd-25 | 12,644,657.48 |
|  | 5 | **MEP 1st Fix, 2nd Fix** |  | 2028-01-05 | 2028-09-29 |  |  |  |  |
|  | 2 | **HVAC** |  | 2028-01-17 | 2028-08-08 |  |  |  |  |
|  | 1 | **1st Fix** |  | 2028-01-17 | 2028-05-12 |  |  |  |  |
| RB2-WMI-5th50 |  | Duct Support Fabrication | 35d | 2028-01-17 | 2028-02-28 | RB2-WMI-5th15 | CSD-LKO Calender (6 day + Holiday)-25 | Physical Progress [8010 h]; HVAC [225002 INR]; TATA Projects Ltd-25 | 225,002 |
| RB2-WMI-5th100 |  | Installing duct hangers and supports | 30d | 2028-02-28 | 2028-04-04 | RB2-WMI-5th50 | CSD-LKO Calender (6 day + Holiday)-25 | Physical Progress [5340 h]; HVAC [450004 INR]; TATA Projects Ltd-25 | 450,004 |
| RB2-WMI-5th130 |  | Laying concealed/exposed refrigerant piping | 30d | 2028-04-04 | 2028-05-12 | RB2-WMI-5th100 | CSD-LKO Calender (6 day + Holiday)-25 | Physical Progress [8010 h]; HVAC [112501 INR]; TATA Projects Ltd-25 | 112,501 |
| RB2-WMI-5th135 |  | Laying concealed/exposed drain piping | 30d | 2028-04-04 | 2028-05-12 | RB2-WMI-5th100 | CSD-LKO Calender (6 day + Holiday)-25 | Physical Progress [5340 h]; HVAC [675006 INR]; TATA Projects Ltd-25 | 675,006 |

| ID | WBS | Activity | Duration | Start | Finish | Predecessors | Calendar | Resources | Cost |
| --- | --- | --- | --- | --- | --- | --- | --- | --- | --- |
|  | 2 | **2nd Fix** |  | 2028-04-04 | 2028-08-08 |  |  |  |  |
| RB2-WMI-5th140 |  | Duct installation | 20d | 2028-04-04 | 2028-04-28 | RB2-WMI-5th100 | CSD-LKO Calender (6 day + Holiday)-25 | Physical Progress [8010 h]; HVAC [1687515 INR]; TATA Projects Ltd-25 | 1,687,515 |
| RB2-WMI-5th170 |  | Insulation of ducts (thermal/acoustic) | 10d | 2028-04-28 | 2028-05-12 | RB2-WMI-5th140 | CSD-LKO Calender (6 day + Holiday)-25 | Physical Progress [3200 h]; HVAC [1012509 INR]; TATA Projects Ltd-25 | 1,012,509 |
| RB2-WMI-5th185 |  | Installation of chilled water piping / VRF piping | 20d | 2028-05-12 | 2028-06-05 | RB2-WMI-5th170 | CSD-LKO Calender (6 day + Holiday)-25 | Physical Progress [3200 h]; HVAC [2250021 INR]; TATA Projects Ltd-25 | 2,250,021 |
| RB2-WMI-5th220 |  | Installation of indoor units including AHU, FCU | 35d | 2028-06-05 | 2028-07-15 | RB2-WMI-5th185, RB2-WMI-5th130, RB2-WMI-5th135 | CSD-LKO Calender (6 day + Holiday)-25 | Physical Progress [24030 h]; HVAC [2025019 INR]; TATA Projects Ltd-25 | 2,025,019 |
| RB2-WMI-5th250 |  | Connecting refrigerant and drain piping to indoor units | 20d | 2028-07-15 | 2028-08-08 | RB2-WMI-5th220 | CSD-LKO Calender (6 day + Holiday)-25 | Physical Progress [3200 h]; HVAC [562505 INR]; TATA Projects Ltd-25 | 562,505 |
|  | 1 | **Electrical** |  | 2028-01-05 | 2028-08-10 |  |  |  |  |
|  | 1 | **1st Fix** |  | 2028-01-05 | 2028-02-28 |  |  |  |  |
| RB2-WMI-5th25 |  | Slab Conduiting | 35d | 2028-01-05 | 2028-02-16 | RB2-WMI-5th10, E-GFC-MEP-RB2-235 | CSD-LKO Calender (6 day + Holiday)-25 | Physical Progress [13350 h]; Electrical [1141818 INR]; TATA Projects Ltd-25 | 1,141,818 |
| RB2-WMI-5th30 |  | Wall Conduiting | 30d | 2028-01-17 | 2028-02-22 | RB2-WMI-5th15, E-GFC-MEP-RB2-235 | CSD-LKO Calender (6 day + Holiday)-25 | Physical Progress [5340 h]; Electrical [570909 INR]; TATA Projects Ltd-25 | 570,909 |
| RB2-WMI-5th75 |  | Installing back boxes for switches, sockets | 5d | 2028-02-22 | 2028-02-28 | RB2-WMI-5th30, RB2-WMI-5th25, E-GFC-MEP-RB2-235 | CSD-LKO Calender (6 day + Holiday)-25 | Physical Progress [2670 h]; Electrical [342545 INR]; TATA Projects Ltd-25 | 342,545 |
|  | 2 | **2nd Fix** |  | 2028-03-07 | 2028-08-10 |  |  |  |  |
| RB2-WMI-5th115 |  | Cable tray laying | 25d | 2028-03-07 | 2028-04-06 | RB2-WMI-5th95 | CSD-LKO Calender (6 day + Holiday)-25 | Physical Progress [13350 h]; Electrical [456727 INR]; TATA Projects Ltd-25 | 456,727 |
| RB2-WMI-5th155 |  | Cabling & Wire Pulling | 45d | 2028-04-06 | 2028-06-01 | RB2-WMI-5th115 | CSD-LKO Calender (6 day + Holiday)-25 | Physical Progress [24030 h]; Electrical [2283636 INR]; TATA Projects Ltd-25 | 2,283,636 |
| RB2-WMI-5th205 |  | DB fixing and connecting | 20d | 2028-06-01 | 2028-06-24 | RB2-WMI-5th155 | CSD-LKO Calender (6 day + Holiday)-25 | Physical Progress [8010 h]; Electrical [342545 INR]; TATA Projects Ltd-25 | 342,545 |
| RB2-WMI-5th210 |  | Floor Rising Main Installation | 20d | 2028-06-01 | 2028-06-24 | RB2-WMI-5th155 | CSD-LKO Calender (6 day + Holiday)-25 | Physical Progress [2670 h]; Electrical [1598545 INR]; TATA Projects Ltd-25 | 1,598,545 |
| RB2-WMI-5th225 |  | Floor/Distribution Panel Installation | 20d | 2028-06-24 | 2028-07-18 | RB2-WMI-5th205 | CSD-LKO Calender (6 day + Holiday)-25 | Physical Progress [2670 h]; Electrical [913454 INR]; TATA Projects Ltd-25 | 913,454 |
| RB2-WMI-5th235 |  | Equipment Earthing | 20d | 2028-07-18 | 2028-08-10 | RB2-WMI-5th225, RB2-WMI-5th210 | CSD-LKO Calender (6 day + Holiday)-25 | Physical Progress [5340 h]; Electrical [342545 INR]; TATA Projects Ltd-25 | 342,545 |
|  | 3 | **Plumbing** |  | 2028-01-17 | 2028-09-08 |  |  |  |  |
|  | 1 | **1st Fix** |  | 2028-01-17 | 2028-06-22 |  |  |  |  |
| RB2-WMI-5th35 |  | Fixing pipe supports and clamps | 35d | 2028-01-17 | 2028-02-28 | RB2-WMI-5th15, E-GFC-MEP-RB2-235 | CSD-LKO Calender (6 day + Holiday)-25 | Physical Progress [5340 h]; Plumbing [470624 INR]; TATA Projects Ltd-25 | 470,624 |
| RB2-WMI-5th60 |  | Laying water supply pipes (hot & cold) | 35d | 2028-02-28 | 2028-04-10 | RB2-WMI-5th35, E-GFC-MEP-RB2-235 | CSD-LKO Calender (6 day + Holiday)-25 | Physical Progress [8010 h]; Plumbing [941247 INR]; TATA Projects Ltd-25 | 941,247 |
| RB2-WMI-5th65 |  | Laying drainage pipes (soil, waste, vent) | 35d | 2028-02-28 | 2028-04-10 | RB2-WMI-5th35, E-GFC-MEP-RB2-235 | CSD-LKO Calender (6 day + Holiday)-25 | Physical Progress [8010 h]; Plumbing [941247 INR]; TATA Projects Ltd-25 | 941,247 |
| RB2-WMI-5th70 |  | Installation of plumbing fixture base supports (WC frames, sink brackets) | 30d | 2028-04-10 | 2028-05-18 | RB2-WMI-5th65, E-GFC-MEP-RB2-235 | CSD-LKO Calender (6 day + Holiday)-25 | Physical Progress [3200 h]; Plumbing [470624 INR]; TATA Projects Ltd-25 | 470,624 |
| RB2-WMI-5th85 |  | Pressure testing of water supply lines | 25d | 2028-05-18 | 2028-06-16 | RB2-WMI-5th60, RB2-WMI-5th65, RB2-WMI-5th70, E-GFC-MEP-RB2-235 | CSD-LKO Calender (6 day + Holiday)-25 | Physical Progress [3740 h]; Plumbing [94125 INR]; TATA Projects Ltd-25 | 94,125 |
| RB2-WMI-5th90 |  | Installation of concealed parts of toilet fixtures | 30d | 2028-05-18 | 2028-06-22 | RB2-WMI-5th70, E-GFC-MEP-RB2-235 | CSD-LKO Calender (6 day + Holiday)-25 | Physical Progress [5340 h]; Plumbing [470624 INR]; TATA Projects Ltd-25 | 470,624 |

| ID | WBS | Activity | Duration | Start | Finish | Predecessors | Calendar | Resources | Cost |
| --- | --- | --- | --- | --- | --- | --- | --- | --- | --- |
|  | 2 | **2nd FIx** |  | 2028-06-16 | 2028-09-08 |  |  |  |  |
| RB2-WMI-5th110 |  | Insulation of hot water pipes (if applicable) | 30d | 2028-06-16 | 2028-07-21 | RB2-WMI-5th85 | CSD-LKO Calender (6 day + Holiday)-25 | Physical Progress [3200 h]; Plumbing [470624 INR]; TATA Projects Ltd-25 | 470,624 |
| RB2-WMI-5th120 |  | Installation of vertical risers and main distribution lines | 35d | 2028-06-22 | 2028-08-02 | RB2-WMI-5th95, RB2-WMI-5th85, RB2-WMI-5th90 | CSD-LKO Calender (6 day + Holiday)-25 | Physical Progress [10680 h]; Plumbing [941247 INR]; TATA Projects Ltd-25 | 941,247 |
| RB2-WMI-5th145 |  | Testing drainage lines for leakage/blockage | 30d | 2028-07-21 | 2028-08-28 | RB2-WMI-5th70, RB2-WMI-5th110 | CSD-LKO Calender (6 day + Holiday)-25 | Physical Progress [3200 h]; Plumbing [94125 INR]; TATA Projects Ltd-25 | 94,125 |
| RB2-WMI-5th160 |  | Fixing floor traps and gully traps | 30d | 2028-08-02 | 2028-09-08 | RB2-WMI-5th120 | CSD-LKO Calender (6 day + Holiday)-25 | Physical Progress [3200 h]; Plumbing [282374 INR]; TATA Projects Ltd-25 | 282,374 |
|  | 4 | **Firefighting** |  | 2028-01-17 | 2028-08-08 |  |  |  |  |
|  | 1 | **1st Fix** |  | 2028-01-17 | 2028-05-18 |  |  |  |  |
| RB2-WMI-5th40 |  | Fixing pipe supports and hangers | 35d | 2028-01-17 | 2028-02-28 | RB2-WMI-5th15, E-GFC-MEP-RB2-235 | CSD-LKO Calender (6 day + Holiday)-25 | Physical Progress [5340 h]; Firefighting [366658 INR]; TATA Projects Ltd-25 | 366,658 |
| RB2-WMI-5th105 |  | Laying branch piping | 35d | 2028-02-28 | 2028-04-10 | RB2-WMI-5th40, E-GFC-MEP-RB2-235 | CSD-LKO Calender (6 day + Holiday)-25 | Physical Progress [8010 h]; Firefighting [785695 INR]; TATA Projects Ltd-25 | 785,695 |
| RB2-WMI-5th150 |  | Hydrostatic pressure testing of piping | 30d | 2028-04-10 | 2028-05-18 | RB2-WMI-5th105, E-GFC-MEP-RB2-235 | CSD-LKO Calender (6 day + Holiday)-25 | Physical Progress [3200 h]; Firefighting [104759 INR]; TATA Projects Ltd-25 | 104,759 |
|  | 2 | **2nd Fix** |  | 2028-05-18 | 2028-08-08 |  |  |  |  |
| RB2-WMI-5th175 |  | Installation of vertical risers and distribution piping in shafts | 35d | 2028-05-18 | 2028-06-28 | RB2-WMI-5th95, RB2-WMI-5th150 | CSD-LKO Calender (6 day + Holiday)-25 | Physical Progress [13350 h]; Firefighting [1047593 INR]; TATA Projects Ltd-25 | 1,047,593 |
| RB2-WMI-5th180 |  | Painting/insulation of exposed fire pipes | 30d | 2028-05-18 | 2028-06-22 | RB2-WMI-5th150 | CSD-LKO Calender (6 day + Holiday)-25 | Physical Progress [5340 h]; Firefighting [52380 INR]; TATA Projects Ltd-25 | 52,380 |
| RB2-WMI-5th190 |  | Testing risers and branch lines for leakage | 30d | 2028-06-22 | 2028-07-27 | RB2-WMI-5th180 | CSD-LKO Calender (6 day + Holiday)-25 | Physical Progress [3200 h]; Firefighting [104759 INR]; TATA Projects Ltd-25 | 104,759 |
| RB2-WMI-5th200 |  | Installation of sprinkler branch lines in ceilings | 35d | 2028-06-28 | 2028-08-08 | RB2-WMI-5th175 | CSD-LKO Calender (6 day + Holiday)-25 | Physical Progress [13350 h]; Firefighting [785695 INR]; TATA Projects Ltd-25 | 785,695 |
|  | 5 | **ELV** |  | 2028-01-05 | 2028-09-29 |  |  |  |  |
|  | 1 | **1st Fix** |  | 2028-01-05 | 2028-02-28 |  |  |  |  |
| RB2-WMI-5th20 |  | Slab Conduiting | 35d | 2028-01-05 | 2028-02-16 | RB2-WMI-5th10, E-GFC-MEP-RB2-235 | CSD-LKO Calender (6 day + Holiday)-25 | Physical Progress [13350 h]; ELV [469789 INR]; TATA Projects Ltd-25 | 469,789 |
| RB2-WMI-5th45 |  | Wall Conduiting | 30d | 2028-01-17 | 2028-02-22 | RB2-WMI-5th15, E-GFC-MEP-RB2-235 | CSD-LKO Calender (6 day + Holiday)-25 | Physical Progress [5340 h]; ELV [201338 INR]; TATA Projects Ltd-25 | 201,338 |
| RB2-WMI-5th80 |  | Installing back boxes for switches, sockets | 5d | 2028-02-22 | 2028-02-28 | RB2-WMI-5th45, RB2-WMI-5th20, E-GFC-MEP-RB2-235 | CSD-LKO Calender (6 day + Holiday)-25 | Physical Progress [2670 h]; ELV [335564 INR]; TATA Projects Ltd-25 | 335,564 |
|  | 2 | **2nd Fix** |  | 2028-03-07 | 2028-09-29 |  |  |  |  |
| RB2-WMI-5th125 |  | Cable tray installation | 35d | 2028-03-07 | 2028-04-19 | RB2-WMI-5th95 | CSD-LKO Calender (6 day + Holiday)-25 | Physical Progress [13350 h]; ELV [335564 INR]; TATA Projects Ltd-25 | 335,564 |
| RB2-WMI-5th165 |  | Cabeling of ELV cable - IT/Fire Alarm/Public Address | 45d | 2028-04-19 | 2028-06-13 | RB2-WMI-5th125 | CSD-LKO Calender (6 day + Holiday)-25 | Physical Progress [24030 h]; ELV [805353 INR]; TATA Projects Ltd-25 | 805,353 |
| RB2-WMI-5th195 |  | ELV Rack Installation | 30d | 2028-06-13 | 2028-07-18 | RB2-WMI-5th165 | CSD-LKO Calender (6 day + Holiday)-25 | Physical Progress [5340 h]; ELV [335564 INR]; TATA Projects Ltd-25 | 335,564 |
| RB2-WMI-5th215 |  | Termination of cables at junction boxes, patch panels, and control panels | 35d | 2028-07-18 | 2028-08-30 | RB2-WMI-5th195 | CSD-LKO Calender (6 day + Holiday)-25 | Physical Progress [16020 h]; ELV [335564 INR]; TATA Projects Ltd-25 | 335,564 |
| RB2-WMI-5th230 |  | Fixing devices like CCTV camera bases, card reader bases, smoke detector bases, PA Bases, Wifi Bases | 25d | 2028-08-30 | 2028-09-29 | RB2-WMI-5th215 | CSD-LKO Calender (6 day + Holiday)-25 | Physical Progress [2140 h]; ELV [671128 INR]; TATA Projects Ltd-25 | 671,128 |

| ID | WBS | Activity | Duration | Start | Finish | Predecessors | Calendar | Resources | Cost |
| --- | --- | --- | --- | --- | --- | --- | --- | --- | --- |
|  | 2 | **Dry Finishes/ID Works** |  | 2028-11-10 | 2029-04-25 |  |  |  |  |
| RB2-WMI-5th240 |  | Running of Wild Air | 1d | 2028-11-10 | 2028-11-10 | RB2-F-5th50, RB2-WMI-5th140, RB2-WMI-5th170, RB2-WMI-5th185, RB2-WMI-5th220, RB2-WMI-5th250 | CSD-LKO Calender (6 day + Holiday)-25 | Physical Progress [530 h]; TATA Projects Ltd-25 |  |
| RB2-WMI-5th245 |  | Wall finish ID Works | 10d | 2028-11-11 | 2028-11-22 | RB2-WMI-5th240, RB2-WMI-5th115, RB2-WMI-5th155, RB2-WMI-5th205, RB2-WMI-5th210, RB2-WMI-5th225, RB2-WMI-5th235, RB2-WMI-5th110, RB2-WMI-5th120, RB2-WMI-5th145, RB2-WMI-5th160, RB2-WMI-5th175, RB2-WMI-5th180, RB2-WMI-5th190, RB2-WMI-5th200, RB2-WMI-5th125, RB2-WMI-5th165, RB2-WMI-5th195, RB2-WMI-5th215, RB2-WMI-5th230 | CSD-LKO Calender (6 day + Holiday)-25 | ID Work [6333907 INR]; Physical Progress [5340 h]; TATA Projects Ltd-25 | 6,333,907 |
| RB2-WMI-5th255 |  | False Ceiling Installation | 20d | 2028-11-23 | 2028-12-15 | RB2-WMI-5th245 | CSD-LKO Calender (6 day + Holiday)-25 | ID Work [8445209 INR]; Physical Progress [10680 h]; TATA Projects Ltd-25 | 8,445,209 |
| RB2-WMI-5th265 |  | Flooring of toilets/kitchen/Balcony | 10d | 2028-12-16 | 2028-12-28 | RB2-WMI-5th255, RB2-WMI-5th55 | CSD-LKO Calender (6 day + Holiday)-25 | ID Work [3378084 INR]; Physical Progress [5340 h]; TATA Projects Ltd-25 | 3,378,084 |
| RB2-WMI-5th270 |  | Doors & Windows/Fire Doors/Shaft Doors | 35d | 2028-12-29 | 2029-02-09 | RB2-WMI-5th245, RB2-WMI-5th265 | CSD-LKO Calender (6 day + Holiday)-25 | ID Work [4222604 INR]; Physical Progress [5340 h]; TATA Projects Ltd-25 | 4,222,604 |
| RB2-WMI-5th275 |  | Putty & First Coat of Paint | 10d | 2028-12-29 | 2029-01-10 | RB2-WMI-5th245, RB2-WMI-5th265 | CSD-LKO Calender (6 day + Holiday)-25 | Painting [6989 Sq m]; Painter [6990 h]; Helper [6990 h]; Physical Progress [5340 h]; TATA Projects Ltd-25 | 1,597,825.18 |
| RB2-WMI-5th300 |  | Wooden Flooring/Flooring | 20d | 2029-01-11 | 2029-02-03 | RB2-WMI-5th275 | CSD-LKO Calender (6 day + Holiday)-25 | ID Work [4222604 INR]; Physical Progress [10680 h]; TATA Projects Ltd-25 | 4,222,604 |
| RB2-WMI-5th305 |  | Railing for staircase | 35d | 2029-01-11 | 2029-02-22 | RB2-WMI-5th245, RB2-WMI-5th275 | CSD-LKO Calender (6 day + Holiday)-25 | ID Work [1266781 INR]; Physical Progress [8010 h]; TATA Projects Ltd-25 | 1,266,781 |
| RB2-WMI-5th345 |  | Fixed Furniture | 8d | 2029-02-05 | 2029-02-13 | RB2-WMI-5th300 | CSD-LKO Calender (6 day + Holiday)-25 | ID Work [2111302 INR]; Physical Progress [4270 h]; TATA Projects Ltd-25 | 2,111,302 |
| RB2-WMI-5th380 |  | False ceiling final finishes | 10d | 2029-03-02 | 2029-03-13 | RB2-WMI-5th310 | CSD-LKO Calender (6 day + Holiday)-25 | ID Work [844521 INR]; Physical Progress [5340 h]; TATA Projects Ltd-25 | 844,521 |
| RB2-WMI-5th390 |  | Final coat of paint | 10d | 2029-03-26 | 2029-04-06 | RB2-WMI-5th380, RB2-WMI-5th305, RB2-WMI-5th345, RB2-WMI-5th350, RB2-WMI-5th320, RB2-WMI-5th325, RB2-WMI-5th355, RB2-WMI-5th385, RB2-WMI-5th375, RB2-WMI-5th370, RB2-WMI-5th365, RB2-WMI-5th335, RB2-WMI-5th330, RB2-WMI-5th270 | CSD-LKO Calender (6 day + Holiday)-25 | Painting [6989 Sq m]; Painter [6990 h]; Helper [6990 h]; Physical Progress [5340 h]; TATA Projects Ltd-25 | 1,597,825.18 |
| RB2-WMI-5th395 |  | Soft Furnishing & Signage | 15d | 2029-04-07 | 2029-04-25 | RB2-WMI-5th390 | CSD-LKO Calender (6 day + Holiday)-25 | ID Work [8445209 INR]; Physical Progress [1600 h]; TATA Projects Ltd-25 | 8,445,209 |
| RB2-WMI-5th400 |  | Loose Furniture | 15d | 2029-04-07 | 2029-04-25 | RB2-WMI-5th390 | CSD-LKO Calender (6 day + Holiday)-25 | ID Work [2955823 INR]; Physical Progress [1600 h]; TATA Projects Ltd-25 | 2,955,823 |
|  | 3 | **MEP Final Fix** |  | 2028-12-16 | 2029-03-24 |  |  |  |  |
|  | 3 | **HVAC** |  | 2028-12-16 | 2029-02-28 |  |  |  |  |
| RB2-WMI-5th260 |  | Installing grills, diffusers, dampers | 30d | 2028-12-16 | 2029-01-22 | RB2-WMI-5th255 | CSD-LKO Calender (6 day + Holiday)-25 | Physical Progress [3200 h]; HVAC [1125010 INR]; TATA Projects Ltd-25 | 1,125,010 |
| RB2-WMI-5th310 |  | Installation of thermostats and control panels | 30d | 2029-01-23 | 2029-02-28 | RB2-WMI-5th260, RB2-WMI-5th275, RB2-WMI-5th250 | CSD-LKO Calender (6 day + Holiday)-25 | Physical Progress [3200 h]; HVAC [562505 INR]; TATA Projects Ltd-25 | 562,505 |
|  | 1 | **Electrical** |  | 2029-01-11 | 2029-03-24 |  |  |  |  |
| RB2-WMI-5th280 |  | Switches & Socket | 30d | 2029-01-11 | 2029-02-16 | RB2-WMI-5th275 | CSD-LKO Calender (6 day + Holiday)-25 | Physical Progress [10680 h]; Electrical [1141818 INR]; TATA Projects Ltd-25 | 1,141,818 |
| RB2-WMI-5th350 |  | Light Fixtures | 30d | 2029-02-17 | 2029-03-24 | RB2-WMI-5th280, RB2-WMI-5th235 | CSD-LKO Calender (6 day + Holiday)-25 | Physical Progress [8010 h]; Electrical [1712727 INR]; TATA Projects Ltd-25 | 1,712,727 |
|  | 2 | **Plumbing** |  | 2029-01-11 | 2029-03-07 |  |  |  |  |
| RB2-WMI-5th285 |  | Installation of sanitary fixtures (WC, washbasins, urinals, sinks) | 10d | 2029-01-11 | 2029-01-22 | RB2-WMI-5th275, RB2-WMI-5th145, RB2-WMI-5th160 | CSD-LKO Calender (6 day + Holiday)-25 | Physical Progress [5340 h]; Plumbing [1882495 INR]; TATA Projects Ltd-25 | 1,882,495 |
| RB2-WMI-5th315 |  | Installation of CP fittings (taps, mixers, showers, health faucets) | 10d | 2029-01-23 | 2029-02-03 | RB2-WMI-5th285, RB2-WMI-5th275 | CSD-LKO Calender (6 day + Holiday)-25 | Physical Progress [5340 h]; Plumbing [941247 INR]; TATA Projects Ltd-25 | 941,247 |
| RB2-WMI-5th320 |  | Connection of appliances | 25d | 2029-02-05 | 2029-03-07 | RB2-WMI-5th315 | CSD-LKO Calender (6 day + Holiday)-25 | Physical Progress [3740 h]; Plumbing [470624 INR]; TATA Projects Ltd-25 | 470,624 |

| ID | WBS | Activity | Duration | Start | Finish | Predecessors | Calendar | Resources | Cost |
| --- | --- | --- | --- | --- | --- | --- | --- | --- | --- |
|  | 4 | **Firefighting** |  | 2029-01-11 | 2029-03-19 |  |  |  |  |
| RB2-WMI-5th290 |  | Installation of hydrant accessories (valves, hose reels, cabinets) | 25d | 2029-01-11 | 2029-02-09 | RB2-WMI-5th275 | CSD-LKO Calender (6 day + Holiday)-25 | Physical Progress [5340 h]; Firefighting [523796 INR]; TATA Projects Ltd-25 | 523,796 |
| RB2-WMI-5th295 |  | Installation of portable fire extinguishers | 30d | 2029-01-11 | 2029-02-16 | RB2-WMI-5th275 | CSD-LKO Calender (6 day + Holiday)-25 | Physical Progress [3200 h]; Firefighting [52380 INR]; TATA Projects Ltd-25 | 52,380 |
| RB2-WMI-5th325 |  | Installation of sprinkler heads, nozzles, and final alignment | 35d | 2029-02-05 | 2029-03-19 | RB2-WMI-5th275, RB2-WMI-5th300, RB2-WMI-5th190, RB2-WMI-5th200 | CSD-LKO Calender (6 day + Holiday)-25 | Physical Progress [21360 h]; Firefighting [785695 INR]; TATA Projects Ltd-25 | 785,695 |
| RB2-WMI-5th355 |  | Integration with fire alarm system | 20d | 2029-02-17 | 2029-03-13 | RB2-WMI-5th295 | CSD-LKO Calender (6 day + Holiday)-25 | Physical Progress [10680 h]; Firefighting [261898 INR]; TATA Projects Ltd-25 | 261,898 |
|  | 5 | **ELV** |  | 2029-02-05 | 2029-03-24 |  |  |  |  |
| RB2-WMI-5th330 |  | Installation of data and Voice Faceplate | 25d | 2029-02-05 | 2029-03-07 | RB2-WMI-5th275, RB2-WMI-5th300, RB2-WMI-5th230 | CSD-LKO Calender (6 day + Holiday)-25 | Physical Progress [5340 h]; ELV [335564 INR]; TATA Projects Ltd-25 | 335,564 |
| RB2-WMI-5th335 |  | Installation of Camera & Wifi | 30d | 2029-02-05 | 2029-03-13 | RB2-WMI-5th275, RB2-WMI-5th300 | CSD-LKO Calender (6 day + Holiday)-25 | Physical Progress [5340 h]; ELV [335564 INR]; TATA Projects Ltd-25 | 335,564 |
| RB2-WMI-5th340 |  | Installation of fire alarm devices + Public Address | 10d | 2029-02-05 | 2029-02-16 | RB2-WMI-5th275, RB2-WMI-5th300 | CSD-LKO Calender (6 day + Holiday)-25 | Physical Progress [5340 h]; ELV [402677 INR]; TATA Projects Ltd-25 | 402,677 |
| RB2-WMI-5th360 |  | Installation of Active System | 15d | 2029-02-17 | 2029-03-07 | RB2-WMI-5th340 | CSD-LKO Calender (6 day + Holiday)-25 | Physical Progress [8010 h]; ELV [671128 INR]; TATA Projects Ltd-25 | 671,128 |
| RB2-WMI-5th365 |  | Fire Panel Intallation & Integration | 25d | 2029-02-17 | 2029-03-19 | RB2-WMI-5th340 | CSD-LKO Calender (6 day + Holiday)-25 | Physical Progress [13350 h]; ELV [335564 INR]; TATA Projects Ltd-25 | 335,564 |
| RB2-WMI-5th370 |  | Installation & Integration of Audio Visual System | 25d | 2029-02-17 | 2029-03-19 | RB2-WMI-5th340 | CSD-LKO Calender (6 day + Holiday)-25 | Physical Progress [13350 h]; ELV [335564 INR]; TATA Projects Ltd-25 | 335,564 |
| RB2-WMI-5th375 |  | Installation & Integration of Access Control | 25d | 2029-02-17 | 2029-03-19 | RB2-WMI-5th340 | CSD-LKO Calender (6 day + Holiday)-25 | Physical Progress [13350 h]; ELV [335564 INR]; TATA Projects Ltd-25 | 335,564 |
| RB2-WMI-5th385 |  | Integration of Active components | 15d | 2029-03-08 | 2029-03-24 | RB2-WMI-5th360 | CSD-LKO Calender (6 day + Holiday)-25 | Physical Progress [8010 h]; ELV [134226 INR]; TATA Projects Ltd-25 | 134,226 |
|  | 7 | **Sixth Floor** |  | 2028-01-22 | 2029-05-16 |  |  |  |  |
|  | 1 | **Wet Finishes** |  | 2028-01-22 | 2028-03-17 |  |  |  |  |
| RB2-WMI-6th10 |  | Deshuttering | 3d | 2028-01-22 | 2028-01-27 | RB2-SS-Roof40 | CSD-LKO Calender (6 day + Holiday)-25 | Physical Progress [1600 h]; TATA Projects Ltd-25 |  |
| RB2-WMI-6th15 |  | Brickwork/Blockwork | 10d | 2028-01-27 | 2028-02-08 | RB2-WMI-6th10, E-GFC-AR-RB2-240 | CSD-LKO Calender (6 day + Holiday)-25 | Masonry [1008 CuM]; Mason [6720 h]; Helper [3360 h]; Physical Progress [6410 h]; TATA Projects Ltd-25 | 9,611,642.88 |
| RB2-WMI-6th55 |  | Waterproofing of Toilets, Balcony & Kitchen | 15d | 2028-02-08 | 2028-02-25 | RB2-WMI-6th15 | CSD-LKO Calender (6 day + Holiday)-25 | Waterproofing [8564838 INR]; Waterprrofing Mason [8160 h]; Helper [4080 h]; Physical Progress [8010 h]; TATA Projects Ltd-25 | 8,564,838 |
| RB2-WMI-6th95 |  | Plaster | 7d | 2028-03-08 | 2028-03-17 | RB2-WMI-6th30, RB2-WMI-6th75, RB2-WMI-6th80, RB2-WMI-6th55 | CSD-LKO Calender (6 day + Holiday)-25 | Plaster [22828 Sqr Mtr]; Mason [15220 h]; Helper [7610 h]; Physical Progress [3740 h]; TATA Projects Ltd-25 | 12,644,657.48 |
|  | 5 | **MEP 1st Fix, 2nd Fix** |  | 2028-01-27 | 2028-10-10 |  |  |  |  |
|  | 2 | **HVAC** |  | 2028-02-08 | 2028-09-12 |  |  |  |  |
|  | 1 | **1st Fix** |  | 2028-02-08 | 2028-06-02 |  |  |  |  |
| RB2-WMI-6th50 |  | Duct Support Fabrication | 35d | 2028-02-08 | 2028-03-21 | RB2-WMI-6th15, E-GFC-MEP-RB2-240 | CSD-LKO Calender (6 day + Holiday)-25 | Physical Progress [8010 h]; HVAC [225002 INR]; TATA Projects Ltd-25 | 225,002 |
| RB2-WMI-6th120 |  | Installing duct hangers and supports | 30d | 2028-03-21 | 2028-04-26 | RB2-WMI-6th50, E-GFC-MEP-RB2-240 | CSD-LKO Calender (6 day + Holiday)-25 | Physical Progress [5340 h]; HVAC [450004 INR]; TATA Projects Ltd-25 | 450,004 |
| RB2-WMI-6th135 |  | Laying concealed/exposed refrigerant piping | 30d | 2028-04-26 | 2028-06-02 | RB2-WMI-6th120, E-GFC-MEP-RB2-240 | CSD-LKO Calender (6 day + Holiday)-25 | Physical Progress [8010 h]; HVAC [112501 INR]; TATA Projects Ltd-25 | 112,501 |
| RB2-WMI-6th140 |  | Laying concealed/exposed drain piping | 30d | 2028-04-26 | 2028-06-02 | RB2-WMI-6th120, E-GFC-MEP-RB2-240 | CSD-LKO Calender (6 day + Holiday)-25 | Physical Progress [5340 h]; HVAC [675006 INR]; TATA Projects Ltd-25 | 675,006 |

| ID | WBS | Activity | Duration | Start | Finish | Predecessors | Calendar | Resources | Cost |
| --- | --- | --- | --- | --- | --- | --- | --- | --- | --- |
|  | 2 | **2nd Fix** |  | 2028-04-26 | 2028-09-12 |  |  |  |  |
| RB2-WMI-6th145 |  | Duct installation | 20d | 2028-04-26 | 2028-05-22 | RB2-WMI-6th120 | CSD-LKO Calender (6 day + Holiday)-25 | Physical Progress [8010 h]; HVAC [1687515 INR]; TATA Projects Ltd-25 | 1,687,515 |
| RB2-WMI-6th170 |  | Insulation of ducts (thermal/acoustic) | 10d | 2028-05-22 | 2028-06-02 | RB2-WMI-6th145 | CSD-LKO Calender (6 day + Holiday)-25 | Physical Progress [3200 h]; HVAC [1012509 INR]; TATA Projects Ltd-25 | 1,012,509 |
| RB2-WMI-6th200 |  | Installation of chilled water piping / VRF piping | 20d | 2028-06-02 | 2028-06-26 | RB2-WMI-6th170 | CSD-LKO Calender (6 day + Holiday)-25 | Physical Progress [3200 h]; HVAC [2250021 INR]; TATA Projects Ltd-25 | 2,250,021 |
| RB2-WMI-6th225 |  | Installation of indoor units including AHU, FCU | 45d | 2028-06-26 | 2028-08-18 | RB2-WMI-6th200, RB2-WMI-6th135, RB2-WMI-6th140 | CSD-LKO Calender (6 day + Holiday)-25 | Physical Progress [24030 h]; HVAC [2025019 INR]; TATA Projects Ltd-25 | 2,025,019 |
| RB2-WMI-6th240 |  | Connecting refrigerant and drain piping to indoor units | 20d | 2028-08-18 | 2028-09-12 | RB2-WMI-6th225 | CSD-LKO Calender (6 day + Holiday)-25 | Physical Progress [3200 h]; HVAC [562505 INR]; TATA Projects Ltd-25 | 562,505 |
|  | 1 | **Electrical** |  | 2028-01-27 | 2028-08-21 |  |  |  |  |
|  | 1 | **1st Fix** |  | 2028-01-27 | 2028-03-08 |  |  |  |  |
| RB2-WMI-6th25 |  | Slab Conduiting | 30d | 2028-01-27 | 2028-03-02 | RB2-WMI-6th10, E-GFC-MEP-RB2-240 | CSD-LKO Calender (6 day + Holiday)-25 | Physical Progress [13350 h]; Electrical [1141818 INR]; TATA Projects Ltd-25 | 1,141,818 |
| RB2-WMI-6th30 |  | Wall Conduiting | 15d | 2028-02-08 | 2028-02-25 | RB2-WMI-6th15, E-GFC-MEP-RB2-240 | CSD-LKO Calender (6 day + Holiday)-25 | Physical Progress [5340 h]; Electrical [570909 INR]; TATA Projects Ltd-25 | 570,909 |
| RB2-WMI-6th75 |  | Installing back boxes for switches, sockets | 5d | 2028-03-02 | 2028-03-08 | RB2-WMI-6th30, RB2-WMI-6th25, E-GFC-MEP-RB2-240 | CSD-LKO Calender (6 day + Holiday)-25 | Physical Progress [2670 h]; Electrical [342545 INR]; TATA Projects Ltd-25 | 342,545 |
|  | 2 | **2nd Fix** |  | 2028-03-17 | 2028-08-21 |  |  |  |  |
| RB2-WMI-6th105 |  | Cable tray laying | 25d | 2028-03-17 | 2028-04-17 | RB2-WMI-6th95 | CSD-LKO Calender (6 day + Holiday)-25 | Physical Progress [13350 h]; Electrical [456727 INR]; TATA Projects Ltd-25 | 456,727 |
| RB2-WMI-6th150 |  | Cabling & Wire Pulling | 45d | 2028-04-17 | 2028-06-10 | RB2-WMI-6th105 | CSD-LKO Calender (6 day + Holiday)-25 | Physical Progress [24030 h]; Electrical [2283636 INR]; TATA Projects Ltd-25 | 2,283,636 |
| RB2-WMI-6th190 |  | DB fixing and connecting | 20d | 2028-06-10 | 2028-07-04 | RB2-WMI-6th150 | CSD-LKO Calender (6 day + Holiday)-25 | Physical Progress [8010 h]; Electrical [342545 INR]; TATA Projects Ltd-25 | 342,545 |
| RB2-WMI-6th195 |  | Floor Rising Main Installation | 20d | 2028-06-10 | 2028-07-04 | RB2-WMI-6th150 | CSD-LKO Calender (6 day + Holiday)-25 | Physical Progress [2670 h]; Electrical [1598545 INR]; TATA Projects Ltd-25 | 1,598,545 |
| RB2-WMI-6th220 |  | Floor/Distribution Panel Installation | 20d | 2028-07-04 | 2028-07-27 | RB2-WMI-6th190 | CSD-LKO Calender (6 day + Holiday)-25 | Physical Progress [2670 h]; Electrical [913454 INR]; TATA Projects Ltd-25 | 913,454 |
| RB2-WMI-6th235 |  | Equipment Earthing | 20d | 2028-07-27 | 2028-08-21 | RB2-WMI-6th220, RB2-WMI-6th195 | CSD-LKO Calender (6 day + Holiday)-25 | Physical Progress [5340 h]; Electrical [342545 INR]; TATA Projects Ltd-25 | 342,545 |
|  | 3 | **Plumbing** |  | 2028-02-08 | 2028-09-23 |  |  |  |  |
|  | 1 | **1st Fix** |  | 2028-02-08 | 2028-07-13 |  |  |  |  |
| RB2-WMI-6th35 |  | Fixing pipe supports and clamps | 35d | 2028-02-08 | 2028-03-21 | RB2-WMI-6th15, E-GFC-MEP-RB2-240 | CSD-LKO Calender (6 day + Holiday)-25 | Physical Progress [2670 h]; Plumbing [470624 INR]; TATA Projects Ltd-25 | 470,624 |
| RB2-WMI-6th60 |  | Laying water supply pipes (hot & cold) | 35d | 2028-03-21 | 2028-05-03 | RB2-WMI-6th35, E-GFC-MEP-RB2-240 | CSD-LKO Calender (6 day + Holiday)-25 | Physical Progress [8010 h]; Plumbing [941247 INR]; TATA Projects Ltd-25 | 941,247 |
| RB2-WMI-6th65 |  | Laying drainage pipes (soil, waste, vent) | 35d | 2028-03-21 | 2028-05-03 | RB2-WMI-6th35, E-GFC-MEP-RB2-240 | CSD-LKO Calender (6 day + Holiday)-25 | Physical Progress [3740 h]; Plumbing [941247 INR]; TATA Projects Ltd-25 | 941,247 |
| RB2-WMI-6th70 |  | Installation of plumbing fixture base supports (WC frames, sink brackets) | 30d | 2028-05-03 | 2028-06-08 | RB2-WMI-6th65, E-GFC-MEP-RB2-240 | CSD-LKO Calender (6 day + Holiday)-25 | Physical Progress [3200 h]; Plumbing [470624 INR]; TATA Projects Ltd-25 | 470,624 |
| RB2-WMI-6th85 |  | Installation of concealed parts of toilet fixtures | 30d | 2028-06-08 | 2028-07-13 | RB2-WMI-6th70, E-GFC-MEP-RB2-240 | CSD-LKO Calender (6 day + Holiday)-25 | Physical Progress [3200 h]; Plumbing [470624 INR]; TATA Projects Ltd-25 | 470,624 |
| RB2-WMI-6th90 |  | Pressure testing of water supply lines | 25d | 2028-06-08 | 2028-07-07 | RB2-WMI-6th60, RB2-WMI-6th65, RB2-WMI-6th70, E-GFC-MEP-RB2-240 | CSD-LKO Calender (6 day + Holiday)-25 | Physical Progress [3740 h]; Plumbing [94125 INR]; TATA Projects Ltd-25 | 94,125 |

| ID | WBS | Activity | Duration | Start | Finish | Predecessors | Calendar | Resources | Cost |
| --- | --- | --- | --- | --- | --- | --- | --- | --- | --- |
|  | 2 | **2nd FIx** |  | 2028-07-07 | 2028-09-23 |  |  |  |  |
| RB2-WMI-6th100 |  | Insulation of hot water pipes (if applicable) | 30d | 2028-07-07 | 2028-08-11 | RB2-WMI-6th90 | CSD-LKO Calender (6 day + Holiday)-25 | Physical Progress [3200 h]; Plumbing [470624 INR]; TATA Projects Ltd-25 | 470,624 |
| RB2-WMI-6th110 |  | Installation of vertical risers and main distribution lines | 35d | 2028-07-07 | 2028-08-18 | RB2-WMI-6th95, RB2-WMI-6th90 | CSD-LKO Calender (6 day + Holiday)-25 | Physical Progress [10680 h]; Plumbing [941247 INR]; TATA Projects Ltd-25 | 941,247 |
| RB2-WMI-6th130 |  | Testing drainage lines for leakage/blockage | 30d | 2028-08-11 | 2028-09-18 | RB2-WMI-6th70, RB2-WMI-6th100, RB2-WMI-6th85 | CSD-LKO Calender (6 day + Holiday)-25 | Physical Progress [3200 h]; Plumbing [94125 INR]; TATA Projects Ltd-25 | 94,125 |
| RB2-WMI-6th155 |  | Fixing floor traps and gully traps | 30d | 2028-08-18 | 2028-09-23 | RB2-WMI-6th110 | CSD-LKO Calender (6 day + Holiday)-25 | Physical Progress [3200 h]; Plumbing [282374 INR]; TATA Projects Ltd-25 | 282,374 |
|  | 4 | **Firefighting** |  | 2028-02-08 | 2028-08-31 |  |  |  |  |
|  | 1 | **1st Fix** |  | 2028-02-08 | 2028-06-08 |  |  |  |  |
| RB2-WMI-6th40 |  | Fixing pipe supports and hangers | 35d | 2028-02-08 | 2028-03-21 | RB2-WMI-6th15, E-GFC-MEP-RB2-240 | CSD-LKO Calender (6 day + Holiday)-25 | Physical Progress [5340 h]; Firefighting [366658 INR]; TATA Projects Ltd-25 | 366,658 |
| RB2-WMI-6th125 |  | Laying branch piping | 35d | 2028-03-21 | 2028-05-03 | RB2-WMI-6th40, E-GFC-MEP-RB2-240 | CSD-LKO Calender (6 day + Holiday)-25 | Physical Progress [8010 h]; Firefighting [785695 INR]; TATA Projects Ltd-25 | 785,695 |
| RB2-WMI-6th165 |  | Hydrostatic pressure testing of piping | 30d | 2028-05-03 | 2028-06-08 | RB2-WMI-6th125, E-GFC-MEP-RB2-240 | CSD-LKO Calender (6 day + Holiday)-25 | Physical Progress [3200 h]; Firefighting [104759 INR]; TATA Projects Ltd-25 | 104,759 |
|  | 2 | **2nd Fix** |  | 2028-06-08 | 2028-08-31 |  |  |  |  |
| RB2-WMI-6th175 |  | Installation of vertical risers and distribution piping in shafts | 35d | 2028-06-08 | 2028-07-19 | RB2-WMI-6th95, RB2-WMI-6th165 | CSD-LKO Calender (6 day + Holiday)-25 | Physical Progress [13350 h]; Firefighting [1047593 INR]; TATA Projects Ltd-25 | 1,047,593 |
| RB2-WMI-6th180 |  | Painting/insulation of exposed fire pipes | 30d | 2028-06-08 | 2028-07-13 | RB2-WMI-6th165 | CSD-LKO Calender (6 day + Holiday)-25 | Physical Progress [5340 h]; Firefighting [52380 INR]; TATA Projects Ltd-25 | 52,380 |
| RB2-WMI-6th205 |  | Testing risers and branch lines for leakage | 30d | 2028-07-13 | 2028-08-18 | RB2-WMI-6th180 | CSD-LKO Calender (6 day + Holiday)-25 | Physical Progress [3200 h]; Firefighting [104759 INR]; TATA Projects Ltd-25 | 104,759 |
| RB2-WMI-6th210 |  | Installation of sprinkler branch lines in ceilings | 35d | 2028-07-19 | 2028-08-31 | RB2-WMI-6th175 | CSD-LKO Calender (6 day + Holiday)-25 | Physical Progress [13350 h]; Firefighting [785695 INR]; TATA Projects Ltd-25 | 785,695 |
|  | 5 | **ELV** |  | 2028-01-27 | 2028-10-10 |  |  |  |  |
|  | 1 | **1st Fix** |  | 2028-01-27 | 2028-03-08 |  |  |  |  |
| RB2-WMI-6th20 |  | Slab Conduiting | 30d | 2028-01-27 | 2028-03-02 | RB2-WMI-6th10, E-GFC-MEP-RB2-240 | CSD-LKO Calender (6 day + Holiday)-25 | Physical Progress [13350 h]; ELV [469789 INR]; TATA Projects Ltd-25 | 469,789 |
| RB2-WMI-6th45 |  | Wall Conduiting | 15d | 2028-02-08 | 2028-02-25 | RB2-WMI-6th15, E-GFC-MEP-RB2-240 | CSD-LKO Calender (6 day + Holiday)-25 | Physical Progress [5340 h]; ELV [201338 INR]; TATA Projects Ltd-25 | 201,338 |
| RB2-WMI-6th80 |  | Installing back boxes for switches, sockets | 5d | 2028-03-02 | 2028-03-08 | RB2-WMI-6th45, RB2-WMI-6th20, E-GFC-MEP-RB2-240 | CSD-LKO Calender (6 day + Holiday)-25 | Physical Progress [2670 h]; ELV [335564 INR]; TATA Projects Ltd-25 | 335,564 |
|  | 2 | **2nd Fix** |  | 2028-03-17 | 2028-10-10 |  |  |  |  |
| RB2-WMI-6th115 |  | Cable tray installation | 35d | 2028-03-17 | 2028-04-28 | RB2-WMI-6th95 | CSD-LKO Calender (6 day + Holiday)-25 | Physical Progress [13350 h]; ELV [335564 INR]; TATA Projects Ltd-25 | 335,564 |
| RB2-WMI-6th160 |  | Cabeling of ELV cable - IT/Fire Alarm/Public Address | 45d | 2028-04-28 | 2028-06-22 | RB2-WMI-6th115 | CSD-LKO Calender (6 day + Holiday)-25 | Physical Progress [24030 h]; ELV [805353 INR]; TATA Projects Ltd-25 | 805,353 |
| RB2-WMI-6th185 |  | ELV Rack Installation | 30d | 2028-06-22 | 2028-07-27 | RB2-WMI-6th160 | CSD-LKO Calender (6 day + Holiday)-25 | Physical Progress [5340 h]; ELV [335564 INR]; TATA Projects Ltd-25 | 335,564 |
| RB2-WMI-6th215 |  | Termination of cables at junction boxes, patch panels, and control panels | 35d | 2028-07-27 | 2028-09-08 | RB2-WMI-6th185 | CSD-LKO Calender (6 day + Holiday)-25 | Physical Progress [16020 h]; ELV [335564 INR]; TATA Projects Ltd-25 | 335,564 |
| RB2-WMI-6th230 |  | Fixing devices like CCTV camera bases, card reader bases, smoke detector bases, PA Bases, Wifi Bases | 25d | 2028-09-08 | 2028-10-10 | RB2-WMI-6th215 | CSD-LKO Calender (6 day + Holiday)-25 | Physical Progress [2140 h]; ELV [671128 INR]; TATA Projects Ltd-25 | 671,128 |

| ID | WBS | Activity | Duration | Start | Finish | Predecessors | Calendar | Resources | Cost |
| --- | --- | --- | --- | --- | --- | --- | --- | --- | --- |
|  | 2 | **Dry Finishes/ID Works** |  | 2028-12-18 | 2029-05-16 |  |  |  |  |
| RB2-WMI-6th245 |  | Running of Wild Air | 1d | 2028-12-18 | 2028-12-18 | RB2-F-6th50, RB2-WMI-6th145, RB2-WMI-6th170, RB2-WMI-6th200, RB2-WMI-6th225, RB2-WMI-6th240 | CSD-LKO Calender (6 day + Holiday)-25 | Physical Progress [530 h]; TATA Projects Ltd-25 |  |
| RB2-WMI-6th250 |  | Wall finish ID Works | 10d | 2028-12-19 | 2028-12-30 | RB2-WMI-6th245, RB2-WMI-6th105, RB2-WMI-6th150, RB2-WMI-6th190, RB2-WMI-6th195, RB2-WMI-6th220, RB2-WMI-6th235, RB2-WMI-6th110, RB2-WMI-6th100, RB2-WMI-6th130, RB2-WMI-6th155, RB2-WMI-6th175, RB2-WMI-6th180, RB2-WMI-6th205, RB2-WMI-6th210, RB2-WMI-6th115, RB2-WMI-6th160, RB2-WMI-6th185, RB2-WMI-6th215, RB2-WMI-6th230 | CSD-LKO Calender (6 day + Holiday)-25 | ID Work [6333907 INR]; Physical Progress [5340 h]; TATA Projects Ltd-25 | 6,333,907 |
| RB2-WMI-6th255 |  | False Ceiling Installation | 15d | 2029-01-02 | 2029-01-18 | RB2-WMI-6th250 | CSD-LKO Calender (6 day + Holiday)-25 | ID Work [8445209 INR]; Physical Progress [8010 h]; TATA Projects Ltd-25 | 8,445,209 |
| RB2-WMI-6th265 |  | Flooring of toilets/kitchen/Balcony | 10d | 2029-01-19 | 2029-01-31 | RB2-WMI-6th255, RB2-WMI-6th55 | CSD-LKO Calender (6 day + Holiday)-25 | ID Work [3378084 INR]; Physical Progress [5340 h]; TATA Projects Ltd-25 | 3,378,084 |
| RB2-WMI-6th270 |  | Doors & Windows/Fire Doors/Shaft Doors | 35d | 2029-02-01 | 2029-03-15 | RB2-WMI-6th250, RB2-WMI-6th265 | CSD-LKO Calender (6 day + Holiday)-25 | ID Work [4222604 INR]; Physical Progress [5340 h]; TATA Projects Ltd-25 | 4,222,604 |
| RB2-WMI-6th275 |  | Putty & First Coat of Paint | 10d | 2029-02-01 | 2029-02-12 | RB2-WMI-6th250, RB2-WMI-6th265 | CSD-LKO Calender (6 day + Holiday)-25 | Painting [6989 Sq m]; Painter [6990 h]; Helper [6990 h]; Physical Progress [5340 h]; TATA Projects Ltd-25 | 1,597,825.18 |
| RB2-WMI-6th300 |  | Wooden Flooring/Flooring | 15d | 2029-02-13 | 2029-03-03 | RB2-WMI-6th275 | CSD-LKO Calender (6 day + Holiday)-25 | ID Work [4222604 INR]; Physical Progress [8010 h]; TATA Projects Ltd-25 | 4,222,604 |
| RB2-WMI-6th305 |  | Railing for staircase | 35d | 2029-02-13 | 2029-03-27 | RB2-WMI-6th250, RB2-WMI-6th275 | CSD-LKO Calender (6 day + Holiday)-25 | ID Work [1266781 INR]; Physical Progress [8010 h]; TATA Projects Ltd-25 | 1,266,781 |
| RB2-WMI-6th345 |  | Fixed Furniture | 8d | 2029-03-05 | 2029-03-13 | RB2-WMI-6th300 | CSD-LKO Calender (6 day + Holiday)-25 | ID Work [2111302 INR]; Physical Progress [4270 h]; TATA Projects Ltd-25 | 2,111,302 |
| RB2-WMI-6th385 |  | False ceiling final finishes | 10d | 2029-04-04 | 2029-04-14 | RB2-WMI-6th310 | CSD-LKO Calender (6 day + Holiday)-25 | ID Work [844521 INR]; Physical Progress [5340 h]; TATA Projects Ltd-25 | 844,521 |
| RB2-WMI-6th390 |  | Final coat of paint | 10d | 2029-04-16 | 2029-04-27 | RB2-WMI-6th385, RB2-WMI-6th305, RB2-WMI-6th345, RB2-WMI-6th375, RB2-WMI-6th350, RB2-WMI-6th320, RB2-WMI-6th325, RB2-WMI-6th380, RB2-WMI-6th370, RB2-WMI-6th365, RB2-WMI-6th360, RB2-WMI-6th335, RB2-WMI-6th330, RB2-WMI-6th270 | CSD-LKO Calender (6 day + Holiday)-25 | Painting [6989 Sq m]; Painter [6990 h]; Helper [6990 h]; Physical Progress [5340 h]; TATA Projects Ltd-25 | 1,597,825.18 |
| RB2-WMI-6th395 |  | Soft Furnishing & Signage | 15d | 2029-04-28 | 2029-05-16 | RB2-WMI-6th390 | CSD-LKO Calender (6 day + Holiday)-25 | ID Work [8445209 INR]; Physical Progress [1600 h]; TATA Projects Ltd-25 | 8,445,209 |
| RB2-WMI-6th400 |  | Loose Furniture | 15d | 2029-04-28 | 2029-05-16 | RB2-WMI-6th390 | CSD-LKO Calender (6 day + Holiday)-25 | ID Work [2955823 INR]; Physical Progress [1600 h]; TATA Projects Ltd-25 | 2,955,823 |
|  | 3 | **MEP Final Fix** |  | 2029-01-19 | 2029-04-03 |  |  |  |  |
|  | 3 | **HVAC** |  | 2029-01-19 | 2029-04-03 |  |  |  |  |
| RB2-WMI-6th260 |  | Installing grills, diffusers, dampers | 30d | 2029-01-19 | 2029-02-24 | RB2-WMI-6th255 | CSD-LKO Calender (6 day + Holiday)-25 | Physical Progress [3200 h]; HVAC [1125010 INR]; TATA Projects Ltd-25 | 1,125,010 |
| RB2-WMI-6th310 |  | Installation of thermostats and control panels | 30d | 2029-02-26 | 2029-04-03 | RB2-WMI-6th260, RB2-WMI-6th275, RB2-WMI-6th240 | CSD-LKO Calender (6 day + Holiday)-25 | Physical Progress [3200 h]; HVAC [562505 INR]; TATA Projects Ltd-25 | 562,505 |
|  | 1 | **Electrical** |  | 2029-02-13 | 2029-04-03 |  |  |  |  |
| RB2-WMI-6th280 |  | Switches & Socket | 20d | 2029-02-13 | 2029-03-09 | RB2-WMI-6th275 | CSD-LKO Calender (6 day + Holiday)-25 | Physical Progress [10680 h]; Electrical [1141818 INR]; TATA Projects Ltd-25 | 1,141,818 |
| RB2-WMI-6th375 |  | Light Fixtures | 20d | 2029-03-10 | 2029-04-03 | RB2-WMI-6th280, RB2-WMI-6th235 | CSD-LKO Calender (6 day + Holiday)-25 | Physical Progress [8010 h]; Electrical [1712727 INR]; TATA Projects Ltd-25 | 1,712,727 |
|  | 2 | **Plumbing** |  | 2029-02-13 | 2029-04-03 |  |  |  |  |
| RB2-WMI-6th285 |  | Installation of sanitary fixtures (WC, washbasins, urinals, sinks) | 10d | 2029-02-13 | 2029-02-24 | RB2-WMI-6th275, RB2-WMI-6th155, RB2-WMI-6th130 | CSD-LKO Calender (6 day + Holiday)-25 | Physical Progress [5340 h]; Plumbing [1882495 INR]; TATA Projects Ltd-25 | 1,882,495 |
| RB2-WMI-6th315 |  | Installation of CP fittings (taps, mixers, showers, health faucets) | 10d | 2029-02-26 | 2029-03-09 | RB2-WMI-6th285, RB2-WMI-6th275 | CSD-LKO Calender (6 day + Holiday)-25 | Physical Progress [5340 h]; Plumbing [941247 INR]; TATA Projects Ltd-25 | 941,247 |
| RB2-WMI-6th350 |  | Connection of appliances | 20d | 2029-03-10 | 2029-04-03 | RB2-WMI-6th315 | CSD-LKO Calender (6 day + Holiday)-25 | Physical Progress [3740 h]; Plumbing [470624 INR]; TATA Projects Ltd-25 | 470,624 |

| ID | WBS | Activity | Duration | Start | Finish | Predecessors | Calendar | Resources | Cost |
| --- | --- | --- | --- | --- | --- | --- | --- | --- | --- |
|  | 4 | **Firefighting** |  | 2029-02-13 | 2029-04-03 |  |  |  |  |
| RB2-WMI-6th290 |  | Installation of hydrant accessories (valves, hose reels, cabinets) | 25d | 2029-02-13 | 2029-03-15 | RB2-WMI-6th275 | CSD-LKO Calender (6 day + Holiday)-25 | Physical Progress [5340 h]; Firefighting [523796 INR]; TATA Projects Ltd-25 | 523,796 |
| RB2-WMI-6th295 |  | Installation of portable fire extinguishers | 15d | 2029-02-13 | 2029-03-03 | RB2-WMI-6th275 | CSD-LKO Calender (6 day + Holiday)-25 | Physical Progress [3200 h]; Firefighting [52380 INR]; TATA Projects Ltd-25 | 52,380 |
| RB2-WMI-6th320 |  | Installation of sprinkler heads, nozzles, and final alignment | 25d | 2029-03-05 | 2029-04-03 | RB2-WMI-6th275, RB2-WMI-6th300, RB2-WMI-6th205, RB2-WMI-6th210 | CSD-LKO Calender (6 day + Holiday)-25 | Physical Progress [10680 h]; Firefighting [785695 INR]; TATA Projects Ltd-25 | 785,695 |
| RB2-WMI-6th325 |  | Integration with fire alarm system | 20d | 2029-03-05 | 2029-03-27 | RB2-WMI-6th295 | CSD-LKO Calender (6 day + Holiday)-25 | Physical Progress [10680 h]; Firefighting [261898 INR]; TATA Projects Ltd-25 | 261,898 |
|  | 5 | **ELV** |  | 2029-03-05 | 2029-04-03 |  |  |  |  |
| RB2-WMI-6th330 |  | Installation of data and Voice Faceplate | 25d | 2029-03-05 | 2029-04-03 | RB2-WMI-6th275, RB2-WMI-6th300 | CSD-LKO Calender (6 day + Holiday)-25 | Physical Progress [5340 h]; ELV [335564 INR]; TATA Projects Ltd-25 | 335,564 |
| RB2-WMI-6th335 |  | Installation of Camera & Wifi | 25d | 2029-03-05 | 2029-04-03 | RB2-WMI-6th275, RB2-WMI-6th300 | CSD-LKO Calender (6 day + Holiday)-25 | Physical Progress [5340 h]; ELV [335564 INR]; TATA Projects Ltd-25 | 335,564 |
| RB2-WMI-6th340 |  | Installation of fire alarm devices + Public Address | 10d | 2029-03-05 | 2029-03-15 | RB2-WMI-6th275, RB2-WMI-6th300 | CSD-LKO Calender (6 day + Holiday)-25 | Physical Progress [5340 h]; ELV [402677 INR]; TATA Projects Ltd-25 | 402,677 |
| RB2-WMI-6th355 |  | Installation of Active System | 8d | 2029-03-16 | 2029-03-24 | RB2-WMI-6th340 | CSD-LKO Calender (6 day + Holiday)-25 | Physical Progress [8010 h]; ELV [671128 INR]; TATA Projects Ltd-25 | 671,128 |
| RB2-WMI-6th360 |  | Fire Panel Intallation & Integration | 15d | 2029-03-16 | 2029-04-03 | RB2-WMI-6th340 | CSD-LKO Calender (6 day + Holiday)-25 | Physical Progress [13350 h]; ELV [335564 INR]; TATA Projects Ltd-25 | 335,564 |
| RB2-WMI-6th365 |  | Installation & Integration of Audio Visual System | 15d | 2029-03-16 | 2029-04-03 | RB2-WMI-6th340 | CSD-LKO Calender (6 day + Holiday)-25 | Physical Progress [13350 h]; ELV [335564 INR]; TATA Projects Ltd-25 | 335,564 |
| RB2-WMI-6th370 |  | Installation & Integration of Access Control | 15d | 2029-03-16 | 2029-04-03 | RB2-WMI-6th340 | CSD-LKO Calender (6 day + Holiday)-25 | Physical Progress [13350 h]; ELV [335564 INR]; TATA Projects Ltd-25 | 335,564 |
| RB2-WMI-6th380 |  | Integration of Active components | 7d | 2029-03-26 | 2029-04-03 | RB2-WMI-6th355 | CSD-LKO Calender (6 day + Holiday)-25 | Physical Progress [8010 h]; ELV [134226 INR]; TATA Projects Ltd-25 | 134,226 |
|  | 13 | **Structural Steel works for Facade** |  | 2027-12-28 | 2028-06-02 |  |  |  |  |
| RB2-F-SS10 |  | GF to Second Floor | 75d | 2027-12-28 | 2028-03-28 | SSF15 SS+60d, RB2-SS-6th.55, Bridge-SS-GF.575 FF+20d, Bridge-SS-1st.575 FF+20d |  | Physical Progress [233330 h]; TATA Projects Ltd-25 |  |
| RB2-F-SS15 |  | Second Floor to Fifth Floor | 50d | 2028-03-29 | 2028-05-29 | RB2-F-SS10, Bridge-SS-4th.575 FF+5d, Bridge-SS-3rd.575 FF+20d, Bridge-SS-2nd.575 FF+20d |  | Physical Progress [233330 h]; TATA Projects Ltd-25 |  |
| RB2-F-SS20 |  | Fifth Floor to Sixth Floor | 20d | 2028-04-17 | 2028-05-11 | RB2-F-SS15 SS+15d |  | Physical Progress [116670 h]; TATA Projects Ltd-25 |  |
| RB2-F-SS25 |  | Sixth Floor to Terrace | 19d | 2028-05-12 | 2028-06-02 | RB2-F-SS20, RB2-SS-Roof40 FS+14d, SSF20 FF+30d |  | Physical Progress [116670 h]; TATA Projects Ltd-25 |  |
|  | 5 | **Facade** |  | 2028-01-13 | 2029-02-13 |  |  |  |  |
|  | 2 | **GF to Second Floor** |  | 2028-01-13 | 2028-07-10 |  |  |  |  |
|  | 1 | **Front Face - Toward Airport** |  | 2028-01-13 | 2028-07-10 |  |  |  |  |
| RB2-F-(GF-2nd)10 |  | Integration of Services Before Facade | 10d | 2028-01-13 | 2028-01-25 | RB2-SS-6th.540, RB2-SS-6th.545, RB2-SS-6th.90, RB2-SS-6th.245, RB2-SS-6th.460 |  | Facade [1368553 INR]; Physical Progress [18420 h]; TATA Projects Ltd-25 | 1,368,553 |
| RB2-F-(GF-2nd)15 |  | Fixing of Facade Support | 25d | 2028-03-29 | 2028-04-27 | RB2-F-(GF-2nd)10 SS+2d, RB2-F-SS10, P-F-Glass-15 |  | Facade [6842767 INR]; Physical Progress [46050 h]; TATA Projects Ltd-25 | 6,842,767 |
| RB2-F-(GF-2nd)40 |  | Fixing of Facade | 30d | 2028-04-28 | 2028-06-03 | RB2-F-(GF-2nd)15 |  | Facade [16422640 INR]; Physical Progress [73680 h]; TATA Projects Ltd-25 | 16,422,640 |
| RB2-F-(GF-2nd)55 |  | Integration of Services After Facade | 30d | 2028-06-05 | 2028-07-10 | RB2-F-(GF-2nd)40 |  | Facade [2737107 INR]; Physical Progress [18420 h]; TATA Projects Ltd-25 | 2,737,107 |

| ID | WBS | Activity | Duration | Start | Finish | Predecessors | Resources | Cost |
| --- | --- | --- | --- | --- | --- | --- | --- | --- |
|  | 2 | **Back Face - Toward RT-1** |  | 2028-01-25 | 2028-05-12 |  |  |  |
| RB2-F-(GF-2nd)20 |  | Integration of Services Before Facade | 10d | 2028-01-25 | 2028-02-07 | RB2-F-(GF-2nd)10 | Facade [1368553 INR]; Physical Progress [18420 h]; TATA Projects Ltd-25 | 1,368,553 |
| RB2-F-(GF-2nd)25 |  | Fixing of Facade Support | 25d | 2028-01-28 | 2028-02-28 | RB2-F-(GF-2nd)20 SS+2d | Facade [6842767 INR]; Physical Progress [46050 h]; TATA Projects Ltd-25 | 6,842,767 |
| RB2-F-(GF-2nd)45 |  | Fixing of Facade | 30d | 2028-02-28 | 2028-04-04 | RB2-F-(GF-2nd)25 | Facade [16422640 INR]; Physical Progress [73680 h]; TATA Projects Ltd-25 | 16,422,640 |
| RB2-F-(GF-2nd)60 |  | Integration of Services After Facade | 30d | 2028-04-04 | 2028-05-12 | RB2-F-(GF-2nd)45 | Facade [2737107 INR]; Physical Progress [27630 h]; TATA Projects Ltd-25 | 2,737,107 |
|  | 3 | **Side Face** |  | 2028-02-07 | 2028-05-18 |  |  |  |
| RB2-F-(GF-2nd)30 |  | Integration of Services Before Facade | 10d | 2028-02-07 | 2028-02-18 | RB2-F-(GF-2nd)20 | Facade [625624 INR]; Physical Progress [18420 h]; TATA Projects Ltd-25 | 625,624 |
| RB2-F-(GF-2nd)35 |  | Fixing of Facade Support | 20d | 2028-02-09 | 2028-03-04 | RB2-F-(GF-2nd)30 SS+2d | Facade [3128122 INR]; Physical Progress [36840 h]; TATA Projects Ltd-25 | 3,128,122 |
| RB2-F-(GF-2nd)50 |  | Fixing of Facade | 30d | 2028-03-04 | 2028-04-10 | RB2-F-(GF-2nd)35 | Facade [7507493 INR]; Physical Progress [73680 h]; TATA Projects Ltd-25 | 7,507,493 |
| RB2-F-(GF-2nd)65 |  | Integration of Services After Facade | 30d | 2028-04-10 | 2028-05-18 | RB2-F-(GF-2nd)50 | Facade [1251249 INR]; Physical Progress [27630 h]; TATA Projects Ltd-25 | 1,251,249 |
|  | 3 | **Second Floor - Fifth Floor** |  | 2028-06-05 | 2028-10-20 |  |  |  |
|  | 1 | **Front Face - Toward Airport** |  | 2028-06-05 | 2028-09-30 |  |  |  |
| RB2-F-(2nd-5th)10 |  | Integration of Services Before Facade | 10d | 2028-06-05 | 2028-06-15 | RB2-F-(GF-2nd)40 | Facade [2052830 INR]; Physical Progress [18420 h]; TATA Projects Ltd-25 | 2,052,830 |
| RB2-F-(2nd-5th)15 |  | Fixing of Facade Support | 25d | 2028-06-07 | 2028-07-06 | RB2-F-(2nd-5th)10 SS+2d, RB2-F-SS15 | Facade [10264150 INR]; Physical Progress [46050 h]; TATA Projects Ltd-25 | 10,264,150 |
| RB2-F-(2nd-5th)40 |  | Fixing of Facade | 30d | 2028-07-07 | 2028-08-17 | RB2-F-(2nd-5th)15 | Facade [24633960 INR]; Physical Progress [73680 h]; TATA Projects Ltd-25 | 24,633,960 |
| RB2-F-(2nd-5th)55 |  | Integration of Services After Facade | 30d | 2028-08-18 | 2028-09-30 | RB2-F-(2nd-5th)40 | Facade [4105660 INR]; Physical Progress [18420 h]; TATA Projects Ltd-25 | 4,105,660 |
|  | 2 | **Back Face - Toward RT-1** |  | 2028-06-16 | 2028-10-13 |  |  |  |
| RB2-F-(2nd-5th)20 |  | Integration of Services Before Facade | 10d | 2028-06-16 | 2028-06-27 | RB2-F-(2nd-5th)10, RB2-F-(GF-2nd)45 | Facade [2052830 INR]; Physical Progress [18420 h]; TATA Projects Ltd-25 | 2,052,830 |
| RB2-F-(2nd-5th)25 |  | Fixing of Facade Support | 25d | 2028-06-19 | 2028-07-20 | RB2-F-(2nd-5th)20 SS+2d | Facade [10264150 INR]; Physical Progress [46050 h]; TATA Projects Ltd-25 | 10,264,150 |
| RB2-F-(2nd-5th)45 |  | Fixing of Facade | 30d | 2028-07-21 | 2028-09-01 | RB2-F-(2nd-5th)25 | Facade [24633960 INR]; Physical Progress [73680 h]; TATA Projects Ltd-25 | 24,633,960 |
| RB2-F-(2nd-5th)60 |  | Integration of Services After Facade | 30d | 2028-09-02 | 2028-10-13 | RB2-F-(2nd-5th)45 | Facade [4105660 INR]; Physical Progress [18420 h]; TATA Projects Ltd-25 | 4,105,660 |
|  | 3 | **Side Face** |  | 2028-06-28 | 2028-10-20 |  |  |  |
| RB2-F-(2nd-5th)30 |  | Integration of Services Before Facade | 10d | 2028-06-28 | 2028-07-10 | RB2-F-(2nd-5th)20, RB2-F-(GF-2nd)50 | Facade [938437 INR]; Physical Progress [18420 h]; TATA Projects Ltd-25 | 938,437 |
| RB2-F-(2nd-5th)35 |  | Fixing of Facade Support | 20d | 2028-06-30 | 2028-07-27 | RB2-F-(2nd-5th)30 SS+2d | Facade [4692183 INR]; Physical Progress [36840 h]; TATA Projects Ltd-25 | 4,692,183 |
| RB2-F-(2nd-5th)50 |  | Fixing of Facade | 30d | 2028-07-28 | 2028-09-08 | RB2-F-(2nd-5th)35 | Facade [11261239 INR]; Physical Progress [64470 h]; TATA Projects Ltd-25 | 11,261,239 |
| RB2-F-(2nd-5th)65 |  | Integration of Services After Facade | 30d | 2028-09-09 | 2028-10-20 | RB2-F-(2nd-5th)50 | Facade [1876873 INR]; Physical Progress [27630 h]; TATA Projects Ltd-25 | 1,876,873 |

| ID | WBS | Activity | Duration | Start | Finish | Predecessors | Resources | Cost |
| --- | --- | --- | --- | --- | --- | --- | --- | --- |
|  | 6 | **Fifth Floor - Sixth Floor** |  | 2028-08-18 | 2028-12-14 |  |  |  |
|  | 1 | **Front Face - Toward Airport** |  | 2028-08-18 | 2028-11-21 |  |  |  |
| RB2-F-5th10 |  | Integration of Services Before Facade | 10d | 2028-08-18 | 2028-09-01 | RB2-F-(2nd-5th)40 | Facade [684277 INR]; Physical Progress [18420 h]; TATA Projects Ltd-25 | 684,277 |
| RB2-F-5th15 |  | Fixing of Facade Support | 20d | 2028-08-21 | 2028-09-18 | RB2-F-5th10 SS+2d, RB2-F-SS20 | Facade [3421383 INR]; Physical Progress [36840 h]; TATA Projects Ltd-25 | 3,421,383 |
| RB2-F-5th35 |  | Fixing of Facade | 20d | 2028-09-19 | 2028-10-16 | RB2-F-5th15 | Facade [8211320 INR]; Physical Progress [55260 h]; TATA Projects Ltd-25 | 8,211,320 |
| RB2-F-5th55 |  | Integration of Services After Facade | 30d | 2028-10-18 | 2028-11-21 | RB2-F-5th35 | Facade [1368553 INR]; Physical Progress [18420 h]; TATA Projects Ltd-25 | 1,368,553 |
|  | 2 | **Back Face - Toward RT-1** |  | 2028-09-02 | 2028-12-02 |  |  |  |
| RB2-F-5th20 |  | Integration of Services Before Facade | 10d | 2028-09-02 | 2028-09-15 | RB2-F-5th10, RB2-F-(2nd-5th)45 | Facade [684277 INR]; Physical Progress [18420 h]; TATA Projects Ltd-25 | 684,277 |
| RB2-F-5th25 |  | Fixing of Facade Support | 20d | 2028-09-05 | 2028-10-04 | RB2-F-5th20 SS+2d | Facade [3421383 INR]; Physical Progress [36840 h]; TATA Projects Ltd-25 | 3,421,383 |
| RB2-F-5th45 |  | Fixing of Facade | 20d | 2028-10-05 | 2028-10-28 | RB2-F-5th25 | Facade [8211320 INR]; Physical Progress [55260 h]; TATA Projects Ltd-25 | 8,211,320 |
| RB2-F-5th60 |  | Integration of Services After Facade | 30d | 2028-10-30 | 2028-12-02 | RB2-F-5th45 | Facade [1368553 INR]; Physical Progress [18420 h]; TATA Projects Ltd-25 | 1,368,553 |
|  | 3 | **Side Face** |  | 2028-09-16 | 2028-12-14 |  |  |  |
| RB2-F-5th30 |  | Integration of Services Before Facade | 10d | 2028-09-16 | 2028-09-30 | RB2-F-5th20, RB2-F-(2nd-5th)50 | Facade [312812 INR]; Physical Progress [18420 h]; TATA Projects Ltd-25 | 312,812 |
| RB2-F-5th40 |  | Fixing of Facade Support | 20d | 2028-09-19 | 2028-10-16 | RB2-F-5th30 SS+2d | Facade [1564061 INR]; Physical Progress [36840 h]; TATA Projects Ltd-25 | 1,564,061 |
| RB2-F-5th50 |  | Fixing of Facade | 20d | 2028-10-18 | 2028-11-09 | RB2-F-5th40 | Facade [3753746 INR]; Physical Progress [46050 h]; TATA Projects Ltd-25 | 3,753,746 |
| RB2-F-5th65 |  | Integration of Services After Facade | 30d | 2028-11-10 | 2028-12-14 | RB2-F-5th50 | Facade [625624 INR]; Physical Progress [18420 h]; TATA Projects Ltd-25 | 625,624 |
|  | 8 | **Sixth Floor - Terrace** |  | 2028-10-18 | 2029-01-23 |  |  |  |
|  | 1 | **Front Face - Toward Airport** |  | 2028-10-18 | 2029-01-05 |  |  |  |
| RB2-F-6th10 |  | Integration of Services Before Facade | 10d | 2028-10-18 | 2028-10-28 | RB2-F-5th35 | Facade [580598 INR]; Physical Progress [18420 h]; TATA Projects Ltd-25 | 580,598 |
| RB2-F-6th15 |  | Fixing of Facade Support | 15d | 2028-10-20 | 2028-11-06 | RB2-F-6th10 SS+2d, RB2-F-SS25 | Facade [2902992 INR]; Physical Progress [27630 h]; TATA Projects Ltd-25 | 2,902,992 |
| RB2-F-6th35 |  | Fixing of Facade | 20d | 2028-11-07 | 2028-11-29 | RB2-F-6th15 | Facade [6967181 INR]; Physical Progress [36840 h]; TATA Projects Ltd-25 | 6,967,181 |
| RB2-F-6th55 |  | Integration of Services After Facade | 30d | 2028-11-30 | 2029-01-05 | RB2-F-6th35 | Facade [1161197 INR]; Physical Progress [18420 h]; TATA Projects Ltd-25 | 1,161,197 |
|  | 2 | **Back Face - Toward RT-1** |  | 2028-10-30 | 2029-01-17 |  |  |  |
| RB2-F-6th20 |  | Integration of Services Before Facade | 10d | 2028-10-30 | 2028-11-09 | RB2-F-6th10, RB2-F-5th45 | Facade [580598 INR]; Physical Progress [18420 h]; TATA Projects Ltd-25 | 580,598 |
| RB2-F-6th25 |  | Fixing of Facade Support | 15d | 2028-11-01 | 2028-11-17 | RB2-F-6th20 SS+2d | Facade [2902992 INR]; Physical Progress [27630 h]; TATA Projects Ltd-25 | 2,902,992 |
| RB2-F-6th45 |  | Fixing of Facade | 20d | 2028-11-18 | 2028-12-11 | RB2-F-6th25 | Facade [6967181 INR]; Physical Progress [36840 h]; TATA Projects Ltd-25 | 6,967,181 |
| RB2-F-6th60 |  | Integration of Services After Facade | 30d | 2028-12-12 | 2029-01-17 | RB2-F-6th45 | Facade [1161197 INR]; Physical Progress [18420 h]; TATA Projects Ltd-25 | 1,161,197 |

| ID | WBS | Activity | Duration | Start | Finish | Predecessors | Resources | Cost |
| --- | --- | --- | --- | --- | --- | --- | --- | --- |
|  | 3 | **Side Face** |  | 2028-11-10 | 2029-01-23 |  |  |  |
| RB2-F-6th30 |  | Integration of Services Before Facade | 5d | 2028-11-10 | 2028-11-15 | RB2-F-6th20, RB2-F-5th50 | Facade [265416 INR]; Physical Progress [9210 h]; TATA Projects Ltd-25 | 265,416 |
| RB2-F-6th40 |  | Fixing of Facade Support | 10d | 2028-11-13 | 2028-11-23 | RB2-F-6th30 SS+2d | Facade [1327082 INR]; Physical Progress [18420 h]; TATA Projects Ltd-25 | 1,327,082 |
| RB2-F-6th50 |  | Fixing of Facade | 20d | 2028-11-24 | 2028-12-16 | RB2-F-6th40 | Facade [3184997 INR]; Physical Progress [38680 h]; TATA Projects Ltd-25 | 3,184,997 |
| RB2-F-6th65 |  | Integration of Services After Facade | 30d | 2028-12-18 | 2029-01-23 | RB2-F-6th50 | Facade [530833 INR]; Physical Progress [18420 h]; TATA Projects Ltd-25 | 530,833 |
|  | 1 | **Above Terrace** |  | 2028-09-09 | 2029-02-13 |  |  |  |
|  | 1 | **Front Face - Toward Airport** |  | 2028-11-30 | 2029-01-25 |  |  |  |
| RB2-F-Terrace30 |  | Integration of Services Before Facade | 10d | 2028-11-30 | 2028-12-11 | RB2-F-6th35 | Facade [552951 INR]; Physical Progress [18420 h]; TATA Projects Ltd-25 | 552,951 |
| RB2-F-Terrace35 |  | Fixing of Facade Support | 15d | 2028-12-02 | 2028-12-19 | RB2-F-Terrace30 SS+2d | Facade [2764754 INR]; Physical Progress [27630 h]; TATA Projects Ltd-25 | 2,764,754 |
| RB2-F-Terrace55 |  | Fixing of Facade | 20d | 2028-12-20 | 2029-01-13 | RB2-F-Terrace35 | Facade [6635410 INR]; Physical Progress [36840 h]; TATA Projects Ltd-25 | 6,635,410 |
| RB2-F-Terrace70 |  | Integration of Services After Facade | 10d | 2029-01-15 | 2029-01-25 | RB2-F-Terrace55 | Facade [1105902 INR]; Physical Progress [18420 h]; TATA Projects Ltd-25 | 1,105,902 |
|  | 2 | **Back Face - Toward RT-1** |  | 2028-12-12 | 2029-02-07 |  |  |  |
| RB2-F-Terrace40 |  | Integration of Services Before Facade | 10d | 2028-12-12 | 2028-12-22 | RB2-F-Terrace30, RB2-F-6th45 | Facade [552951 INR]; Physical Progress [18420 h]; TATA Projects Ltd-25 | 552,951 |
| RB2-F-Terrace45 |  | Fixing of Facade Support | 15d | 2028-12-14 | 2029-01-02 | RB2-F-Terrace40 SS+2d | Facade [2764754 INR]; Physical Progress [27630 h]; TATA Projects Ltd-25 | 2,764,754 |
| RB2-F-Terrace65 |  | Fixing of Facade | 20d | 2029-01-03 | 2029-01-25 | RB2-F-Terrace45 | Facade [6635410 INR]; Physical Progress [36840 h]; TATA Projects Ltd-25 | 6,635,410 |
| RB2-F-Terrace80 |  | Integration of Services After Facade | 10d | 2029-01-27 | 2029-02-07 | RB2-F-Terrace65 | Facade [1105902 INR]; Physical Progress [18420 h]; TATA Projects Ltd-25 | 1,105,902 |
|  | 3 | **Side Face** |  | 2028-12-23 | 2029-02-13 |  |  |  |
| RB2-F-Terrace50 |  | Integration of Services Before Facade | 5d | 2028-12-23 | 2028-12-29 | RB2-F-Terrace40, RB2-F-6th50 | Facade [252778 INR]; Physical Progress [18420 h]; TATA Projects Ltd-25 | 252,778 |
| RB2-F-Terrace60 |  | Fixing of Facade Support | 15d | 2028-12-27 | 2029-01-13 | RB2-F-Terrace50 SS+2d | Facade [1263888 INR]; Physical Progress [27630 h]; TATA Projects Ltd-25 | 1,263,888 |
| RB2-F-Terrace75 |  | Fixing of Facade | 20d | 2029-01-15 | 2029-02-07 | RB2-F-Terrace60 | Facade [3033330 INR]; Physical Progress [36840 h]; TATA Projects Ltd-25 | 3,033,330 |
| RB2-F-Terrace85 |  | Integration of Services After Facade | 5d | 2029-02-08 | 2029-02-13 | RB2-F-Terrace75 | Facade [505555 INR]; Physical Progress [18420 h]; TATA Projects Ltd-25 | 505,555 |
|  | 4 | **Rooftop** |  | 2028-09-09 | 2029-01-15 |  |  |  |
| RB2-F-Terrace10 |  | Integration of Services Before Facade | 4d | 2028-09-09 | 2028-09-13 | RB2-Terrace15, RB2-F-(2nd-5th)50 | Facade [3701848 INR]; Physical Progress [7370 h]; TATA Projects Ltd-25 | 3,701,848 |
| RB2-F-Terrace15 |  | Fixing of Facade Support | 45d | 2028-09-12 | 2028-11-09 | RB2-F-Terrace10 SS+2d, P-F-FRP-15, SSF20 | Facade [18509240 INR]; Physical Progress [82900 h]; TATA Projects Ltd-25 | 18,509,240 |
| RB2-F-Terrace20 |  | Fixing of FRP Facade with aluminium bars and louvers | 40d | 2028-11-10 | 2028-12-27 | RB2-F-Terrace15 | Facade [44422175 INR]; Physical Progress [73680 h]; TATA Projects Ltd-25 | 44,422,175 |
| RB2-F-Terrace25 |  | Integration of Services After Facade | 15d | 2028-12-28 | 2029-01-15 | RB2-F-Terrace20 | Facade [7403696 INR]; Physical Progress [27630 h]; TATA Projects Ltd-25 | 7,403,696 |

| ID | WBS | Activity | Duration | Start | Finish | Predecessors | Calendar | Resources | Cost |
| --- | --- | --- | --- | --- | --- | --- | --- | --- | --- |
|  | 3 | **Terrace Works** |  | 2028-01-22 | 2029-03-12 |  |  |  |  |
| RB2-Terrace10 |  | Waterproofing | 45d | 2028-01-22 | 2028-03-18 | RB2-SS-Roof40 |  | Waterproofing [8564838 INR]; Waterprrofing Mason [8160 h]; Helper [4080 h]; Physical Progress [157500 h]; TATA Projects Ltd-25 | 8,564,838 |
| RB2-Terrace15 |  | Flooring | 30d | 2028-03-18 | 2028-04-24 | RB2-Terrace10, E-GFC-AR-RB2-245 |  | ID Work [2210466 INR]; Physical Progress [105000 h]; TATA Projects Ltd-25 | 2,210,466 |
| RB2-Terrace20 |  | Installation of Fans, Solar and other MEP Equipments | 45d | 2029-01-16 | 2029-03-12 | RB2-Terrace15, RB2-F-Terrace25, E-GFC-MEP-RB2-245 |  | Physical Progress [157500 h]; MEP Equipments on Terrace [3000000 INR]; TATA Projects Ltd-25 | 3,000,000 |
|  | 10 | **Vertical Transport** |  | 2028-01-22 | 2028-08-22 |  |  |  |  |
| RB2-VT10 |  | Wait for Strength Gain | 6d | 2028-01-22 | 2028-01-31 | RB2-SS-Roof40 |  | Physical Progress [153930 h]; TATA Projects Ltd-25 |  |
| RB2-VT15 |  | Deshuttering | 5d | 2028-01-31 | 2028-02-05 | RB2-VT10 | CSD-LKO Calender (6 day + Holiday)-25 | Physical Progress [36650 h]; TATA Projects Ltd-25 |  |
| RB2-VT20 |  | Plaster | 15d | 2028-02-05 | 2028-02-23 | RB2-VT15 | CSD-LKO Calender (6 day + Holiday)-25 | Plaster [1000 Sqr Mtr]; Mason [670 h]; Helper [340 h]; Physical Progress [109950 h]; TATA Projects Ltd-25 | 553,910 |
| RB2-VT25 |  | Installation of Lift/Escalator | 120d | 2028-02-23 | 2028-07-17 | P-MEP-VT-20, RB2-VT20 | CSD-LKO Calender (6 day + Holiday)-25 | Physical Progress [879580 h]; Lift [69300000 INR]; TATA Projects Ltd-25 | 69,300,000 |
| RB2-VT30 |  | Testing & Commissioning | 30d | 2028-07-17 | 2028-08-22 | RB2-VT25 | CSD-LKO Calender (6 day + Holiday)-25 | Physical Progress [219900 h]; Testing & Commissioing [7700000 INR]; TATA Projects Ltd-25 | 7,700,000 |
|  | 7 | **Testing, Commissioning, HO** |  | 2029-01-04 | 2029-06-07 |  |  |  |  |
|  | 1 | **Ground Floor** |  | 2029-01-04 | 2029-04-25 |  |  |  |  |
| RB2-T&C-GF10 |  | Testing & Commissioning | 45d | 2029-01-04 | 2029-02-27 | RB2-WMI-GF330, RB2-WMI-GF295, RB2-WMI-GF300, RB2-WMI-GF335, RB2-WMI-GF260, RB2-WMI-GF285, RB2-WMI-GF280, RB2-WMI-GF325, RB2-WMI-GF290, RB2-WMI-GF315, RB2-WMI-GF320, RB2-WMI-GF350, RB2-WMI-GF340, RB2-WMI-GF345, RB2-WMI-GF365, RB2-WMI-GF370, RB2-WMI-GF375, RB2-WMI-GF380, RB2-WMI-GF385 | CSD-LKO Calender (6 day + Holiday)-25 | Physical Progress [43570 h]; Testing & Commissioing [2776883 INR]; TATA Projects Ltd-25 | 2,776,883 |
| RB2-T&C-GF15 |  | Snagging & Desnagging | 45d | 2029-02-28 | 2029-04-23 | RB2-T&C-GF10 | CSD-LKO Calender (6 day + Holiday)-25 | Physical Progress [43570 h]; TATA Projects Ltd-25 |  |
| RB2-T&C-GF20 |  | Handing Over | 1d | 2029-04-25 | 2029-04-25 | RB2-T&C-GF15 | CSD-LKO Calender (6 day + Holiday)-25 | Physical Progress [1450 h]; TATA Projects Ltd-25 |  |
|  | 2 | **First Floor** |  | 2029-01-04 | 2029-04-25 |  |  |  |  |
| RB2-T&C-1st10 |  | Testing & Commissioning | 45d | 2029-01-04 | 2029-02-27 | RB2-WMI-1st330, RB2-WMI-1st295, RB2-WMI-1st300, RB2-WMI-1st335, RB2-WMI-1st260, RB2-WMI-1st285, RB2-WMI-1st280, RB2-WMI-1st325, RB2-WMI-1st290, RB2-WMI-1st315, RB2-WMI-1st320, RB2-WMI-1st350, RB2-WMI-1st340, RB2-WMI-1st345, RB2-WMI-1st365, RB2-WMI-1st370, RB2-WMI-1st375, RB2-WMI-1st380, RB2-WMI-1st385 | CSD-LKO Calender (6 day + Holiday)-25 | Physical Progress [43570 h]; Testing & Commissioing [2776883 INR]; TATA Projects Ltd-25 | 2,776,883 |
| RB2-T&C-1st15 |  | Snagging & Desnagging | 45d | 2029-02-28 | 2029-04-23 | RB2-T&C-1st10 | CSD-LKO Calender (6 day + Holiday)-25 | Physical Progress [43570 h]; TATA Projects Ltd-25 |  |
| RB2-T&C-1st20 |  | Handing Over | 1d | 2029-04-25 | 2029-04-25 | RB2-T&C-1st15 | CSD-LKO Calender (6 day + Holiday)-25 | Physical Progress [1450 h]; TATA Projects Ltd-25 |  |
|  | 3 | **Second Floor** |  | 2029-02-20 | 2029-05-05 |  |  |  |  |
| RB2-T&C-2nd10 |  | Testing & Commissioning | 30d | 2029-02-20 | 2029-03-27 | RB2-WMI-2nd325, RB2-WMI-2nd290, RB2-WMI-2nd295, RB2-WMI-2nd355, RB2-WMI-2nd260, RB2-WMI-2nd310, RB2-WMI-2nd280, RB2-WMI-2nd350, RB2-WMI-2nd285, RB2-WMI-2nd315, RB2-WMI-2nd320, RB2-WMI-2nd340, RB2-WMI-2nd330, RB2-WMI-2nd360, RB2-WMI-2nd335, RB2-WMI-2nd365, RB2-WMI-2nd370, RB2-WMI-2nd375, RB2-WMI-2nd385 | CSD-LKO Calender (6 day + Holiday)-25 | Physical Progress [43570 h]; Testing & Commissioing [2776883 INR]; TATA Projects Ltd-25 | 2,776,883 |
| RB2-T&C-2nd15 |  | Snagging & Desnagging | 30d | 2029-03-28 | 2029-05-04 | RB2-T&C-2nd10 | CSD-LKO Calender (6 day + Holiday)-25 | Physical Progress [43570 h]; TATA Projects Ltd-25 |  |
| RB2-T&C-2nd20 |  | Handing Over | 1d | 2029-05-05 | 2029-05-05 | RB2-T&C-2nd15 | CSD-LKO Calender (6 day + Holiday)-25 | Physical Progress [1450 h]; TATA Projects Ltd-25 |  |
|  | 4 | **Third Floor** |  | 2029-03-14 | 2029-05-26 |  |  |  |  |
| RB2-T&C-3rd10 |  | Testing & Commissioning | 30d | 2029-03-14 | 2029-04-18 | RB2-WMI-3rd325, RB2-WMI-3rd290, RB2-WMI-3rd295, RB2-WMI-3rd355, RB2-WMI-3rd255, RB2-WMI-3rd315, RB2-WMI-3rd280, RB2-WMI-3rd350, RB2-WMI-3rd285, RB2-WMI-3rd310, RB2-WMI-3rd320, RB2-WMI-3rd340, RB2-WMI-3rd330, RB2-WMI-3rd360, RB2-WMI-3rd335, RB2-WMI-3rd365, RB2-WMI-3rd370, RB2-WMI-3rd375, RB2-WMI-3rd380 | CSD-LKO Calender (6 day + Holiday)-25 | Physical Progress [43570 h]; Testing & Commissioing [2776883 INR]; TATA Projects Ltd-25 | 2,776,883 |
| RB2-T&C-3rd15 |  | Snagging & Desnagging | 30d | 2029-04-19 | 2029-05-25 | RB2-T&C-3rd10 | CSD-LKO Calender (6 day + Holiday)-25 | Physical Progress [43570 h]; TATA Projects Ltd-25 |  |
| RB2-T&C-3rd20 |  | Handing Over | 1d | 2029-05-26 | 2029-05-26 | RB2-T&C-3rd15 | CSD-LKO Calender (6 day + Holiday)-25 | Physical Progress [1450 h]; TATA Projects Ltd-25 |  |

| ID | WBS | Activity | Duration | Start | Finish | Predecessors | Calendar | Resources | Cost |
| --- | --- | --- | --- | --- | --- | --- | --- | --- | --- |
|  | 6 | **Fourth Floor** |  | 2029-02-10 | 2029-04-26 |  |  |  |  |
| RB2-T&C-4th10 |  | Testing & Commissioning | 30d | 2029-02-10 | 2029-03-19 | RB2-WMI-4th320, RB2-WMI-4th285, RB2-WMI-4th290, RB2-WMI-4th350, RB2-WMI-4th250, RB2-WMI-4th375, RB2-WMI-4th275, RB2-WMI-4th345, RB2-WMI-4th280, RB2-WMI-4th310, RB2-WMI-4th315, RB2-WMI-4th335, RB2-WMI-4th325, RB2-WMI-4th355, RB2-WMI-4th330, RB2-WMI-4th360, RB2-WMI-4th365, RB2-WMI-4th370, RB2-WMI-4th380 | CSD-LKO Calender (6 day + Holiday)-25 | Physical Progress [43570 h]; Testing & Commissioing [2776883 INR]; TATA Projects Ltd-25 | 2,776,883 |
| RB2-T&C-4th15 |  | Snagging & Desnagging | 30d | 2029-03-20 | 2029-04-25 | RB2-T&C-4th10 | CSD-LKO Calender (6 day + Holiday)-25 | Physical Progress [43570 h]; TATA Projects Ltd-25 |  |
| RB2-T&C-4th20 |  | Handing Over | 1d | 2029-04-26 | 2029-04-26 | RB2-T&C-4th15 | CSD-LKO Calender (6 day + Holiday)-25 | Physical Progress [1450 h]; TATA Projects Ltd-25 |  |
|  | 7 | **Fifth Floor** |  | 2029-03-26 | 2029-06-01 |  |  |  |  |
| RB2-T&C-5th10 |  | Testing & Commissioning | 30d | 2029-03-26 | 2029-05-02 | RB2-WMI-5th325, RB2-WMI-5th290, RB2-WMI-5th295, RB2-WMI-5th355, RB2-F-Terrace85, RB2-WMI-5th260, RB2-WMI-5th310, RB2-WMI-5th280, RB2-WMI-5th350, RB2-WMI-5th285, RB2-WMI-5th315, RB2-WMI-5th320, RB2-WMI-5th340, RB2-WMI-5th330, RB2-WMI-5th360, RB2-WMI-5th335, RB2-WMI-5th365, RB2-WMI-5th370, RB2-WMI-5th375, RB2-WMI-5th385 | CSD-LKO Calender (6 day + Holiday)-25 | Physical Progress [43570 h]; Testing & Commissioing [2776883 INR]; TATA Projects Ltd-25 | 2,776,883 |
| RB2-T&C-5th15 |  | Snagging & Desnagging | 25d | 2029-05-03 | 2029-05-31 | RB2-T&C-5th10 | CSD-LKO Calender (6 day + Holiday)-25 | Physical Progress [43570 h]; TATA Projects Ltd-25 |  |
| RB2-T&C-5th20 |  | Handing Over | 1d | 2029-06-01 | 2029-06-01 | RB2-T&C-5th15 | CSD-LKO Calender (6 day + Holiday)-25 | Physical Progress [1450 h]; TATA Projects Ltd-25 |  |
|  | 8 | **Sixth Floor** |  | 2029-04-04 | 2029-06-04 |  |  |  |  |
| RB2-T&C-6th10 |  | Testing & Commissioning | 30d | 2029-04-04 | 2029-05-10 | RB2-WMI-6th320, RB2-WMI-6th290, RB2-WMI-6th295, RB2-WMI-6th325, RB2-F-Terrace85, RB2-WMI-6th260, RB2-WMI-6th310, RB2-WMI-6th280, RB2-WMI-6th375, RB2-WMI-6th285, RB2-WMI-6th315, RB2-WMI-6th350, RB2-WMI-6th340, RB2-WMI-6th330, RB2-WMI-6th355, RB2-WMI-6th335, RB2-WMI-6th360, RB2-WMI-6th365, RB2-WMI-6th370, RB2-WMI-6th380 | CSD-LKO Calender (6 day + Holiday)-25 | Physical Progress [43570 h]; Testing & Commissioing [2776883 INR]; TATA Projects Ltd-25 | 2,776,883 |
| RB2-T&C-6th15 |  | Snagging & Desnagging | 20d | 2029-05-11 | 2029-06-02 | RB2-T&C-6th10 | CSD-LKO Calender (6 day + Holiday)-25 | Physical Progress [34860 h]; TATA Projects Ltd-25 |  |
| RB2-T&C-6th20 |  | Handing Over | 1d | 2029-06-04 | 2029-06-04 | RB2-T&C-6th15 | CSD-LKO Calender (6 day + Holiday)-25 | Physical Progress [1450 h]; TATA Projects Ltd-25 |  |
|  | 9 | **Terrace Floor** |  | 2029-03-13 | 2029-06-07 |  |  |  |  |
| RB2-T&C-Terrace10 |  | Testing & Commissioning | 36d | 2029-03-13 | 2029-04-25 | RB2-Terrace20, RB2-VT30, RB2-F-Terrace85 |  | Physical Progress [43570 h]; Testing & Commissioing [1000000 INR]; TATA Projects Ltd-25 | 1,000,000 |
| RB2-T&C-Terrace15 |  | Snagging & Desnagging | 35d | 2029-04-26 | 2029-06-06 | RB2-T&C-Terrace10 |  | Physical Progress [43570 h]; TATA Projects Ltd-25 |  |
| RB2-T&C-Terrace20 |  | Handing Over | 1d | 2029-06-07 | 2029-06-07 | RB2-T&C-Terrace15 |  | Physical Progress [1450 h]; TATA Projects Ltd-25 |  |
|  | 9 | **Retail Block 1** |  | 2026-09-09 | 2029-06-06 |  |  |  |  |
|  | 6 | **Substructure** |  | 2026-09-09 | 2027-06-21 |  |  |  |  |
|  | 4 | **Foundation** |  | 2026-09-09 | 2027-01-05 |  |  |  |  |
|  | 2 | **Pour 1** |  | 2026-09-09 | 2026-12-15 |  |  |  |  |
|  | 1 | **CF18** |  | 2026-10-12 | 2026-12-15 |  |  |  |  |
| RB1-SS-FN10 |  | Pocket Excavation | 4d | 2026-10-12 | 2026-10-15 | Milestones-95 |  | Physical Progress [1190 h]; Pocket Excavation; TATA Projects Ltd-25 |  |
| RB1-SS-FN15 |  | Surface dressing | 1d | 2026-10-16 | 2026-10-16 | RB1-SS-FN10 |  | Helper [30 h]; Physical Progress [590 h]; Surface Dressing [712 Sq m]; TATA Projects Ltd-25 | 32,040 |
| RB1-SS-FN20 |  | ATT | 1d | 2026-10-17 | 2026-10-17 | RB1-SS-FN15 |  | Physical Progress [590 h]; ATT [783 Sq m]; TATA Projects Ltd-25 | 107,271 |
| RB1-SS-FN25 |  | PCC | 1d | 2026-10-17 | 2026-10-17 | RB1-SS-FN20 FF, RB1-SS-FN15 |  | Mason [10 h]; Helper [10 h]; Physical Progress [590 h]; Concrete M10 [53 m3]; TATA Projects Ltd-25 | 457,867 |
| RB1-SS-FN35 |  | Blockwork/Brickwork | 1d | 2026-10-19 | 2026-10-19 | RB1-SS-FN10, RB1-SS-FN25 |  | Brickwork for the footing [64 CuM]; Mason [430 h]; Helper [220 h]; Physical Progress [1190 h]; TATA Projects Ltd-25 | 531,200 |
| RB1-SS-FN30 |  | Shuttering | 10d | 2026-11-09 | 2026-11-19 | RB1-SS-FN25, RB1-SS-FN205 |  | Carpenter [2190 h]; Helper [1100 h]; Physical Progress [1190 h]; Formwork [1314 Sq m]; TATA Projects Ltd-25 | 1,531,020.24 |
| RB1-SS-FN40 |  | Waterproofing | 0d | 2026-11-20 | 2026-11-20 | RB1-SS-FN25, RB1-SS-FN30 |  | Waterproofing (Raft/Grade Slab); Waterprrofing Mason; Helper; Physical Progress; TATA Projects Ltd-25 |  |
| RB1-SS-FN85 |  | Reinforcement | 20d | 2026-11-20 | 2026-12-12 | RB1-SS-FN40 |  | Barbender [14270 h]; Helper [7140 h]; Physical Progress [1190 h]; Reinforcement Steel [214 MT1]; TATA Projects Ltd-25 | 20,653,675 |
| RB1-SS-FN105 |  | Concrete | 2d | 2026-12-14 | 2026-12-15 | RB1-SS-FN85 |  | Mason [50 h]; Helper [50 h]; Physical Progress [590 h]; Concrete M40 [1780 m3]; TATA Projects Ltd-25 | 17,563,260 |

| ID | WBS | Activity | Duration | Start | Finish | Predecessors | Complete | Remaining | Planned start | Planned finish | Resources | Cost | Actual cost |
| --- | --- | --- | --- | --- | --- | --- | --- | --- | --- | --- | --- | --- | --- |
|  | 4 | **Sump** |  | 2026-10-21 | 2026-11-17 |  |  |  |  |  |  |  |  |
| RB1-SS-FN50 |  | Pocket Excavation | 1d | 2026-10-21 | 2026-10-21 | RB1-SS-FN35 |  |  |  |  | Physical Progress [590 h]; Pocket Excavation; TATA Projects Ltd-25 |  |  |
| RB1-SS-FN55 |  | Surface dressing | 1d | 2026-10-22 | 2026-10-22 | RB1-SS-FN50 |  |  |  |  | Helper [30 h]; Physical Progress [590 h]; Surface Dressing [22 Sq m]; TATA Projects Ltd-25 | 990 |  |
| RB1-SS-FN70 |  | ATT | 1d | 2026-10-23 | 2026-10-23 | RB1-SS-FN55 |  |  |  |  | Physical Progress [590 h]; ATT [24 Sq m]; TATA Projects Ltd-25 | 3,288 |  |
| RB1-SS-FN75 |  | PCC | 1d | 2026-10-23 | 2026-10-23 | RB1-SS-FN70 FF |  |  |  |  | Mason [10 h]; Helper [10 h]; Physical Progress [590 h]; Concrete M10 [2 m3]; TATA Projects Ltd-25 | 17,278 |  |
| RB1-SS-FN95 |  | Shuttering | 2d | 2026-11-09 | 2026-11-10 | RB1-SS-FN75, RB1-SS-FN205 |  |  |  |  | Carpenter [40 h]; Helper [20 h]; Physical Progress [1190 h]; Formwork [24 Sq m]; TATA Projects Ltd-25 | 27,963.84 |  |
| RB1-SS-FN110 |  | Waterproofing | 0d | 2026-11-11 | 2026-11-11 | RB1-SS-FN75, RB1-SS-FN95 |  |  |  |  | Waterproofing (Raft/Grade Slab); Waterprrofing Mason; Helper; Physical Progress; TATA Projects Ltd-25 |  |  |
| RB1-SS-FN135 |  | Reinforcement | 2d | 2026-11-11 | 2026-11-12 | RB1-SS-FN110 |  |  |  |  | Barbender [70 h]; Helper [40 h]; Physical Progress [1190 h]; Reinforcement Steel [1 MT1]; TATA Projects Ltd-25 | 96,512.5 |  |
| RB1-SS-FN155 |  | MEP Services | 3d | 2026-11-13 | 2026-11-16 | RB1-SS-FN135 |  |  |  |  | Physical Progress [1780 h]; TATA Projects Ltd-25 |  |  |
| RB1-SS-FN180 |  | Concrete | 1d | 2026-11-17 | 2026-11-17 | RB1-SS-FN135, RB1-SS-FN155 |  |  |  |  | Mason [50 h]; Helper [50 h]; Physical Progress [590 h]; Concrete M40 [8 m3]; TATA Projects Ltd-25 | 78,936 |  |
|  | 3 | **F8 - 3, F14 - 2, F5, F1, F8, F10** |  | 2026-09-09 | 2026-11-07 |  |  |  |  |  |  |  |  |
| RB1-SS-FN45 |  | Pocket Excavation | 27d | 2026-09-09 A | 2026-10-19 | RB1-SS-FN35 FF | 20% | 1.6d | 2026-09-10 | 2026-10-19 | Physical Progress [1190 h]; Pocket Excavation; TATA Projects Ltd-25 |  |  |
| RB1-SS-FN100 |  | Shuttering | 42d | 2026-09-11 A | 2026-11-07 | RB1-SS-FN90, RB1-SS-FN205 FF | 20% | 1.6d | 2026-09-12 | 2026-11-07 | Carpenter [420 h]; Helper [210 h]; Physical Progress [1190 h]; Formwork [250 Sq m]; TATA Projects Ltd-25 | 291,290 | 280,193.24 |
| RB1-SS-FN60 |  | Surface dressing | 25.2d | 2026-09-11 A | 2026-10-19 | RB1-SS-FN45 SS | 20% | 0.8d | 2026-09-12 | 2026-10-19 | Helper [30 h]; Physical Progress [590 h]; Surface Dressing [249 Sq m]; TATA Projects Ltd-25 | 11,205 | 10,849.29 |
| RB1-SS-FN65 |  | ATT | 25.2d | 2026-09-11 A | 2026-10-19 | RB1-SS-FN45 SS | 20% | 0.8d | 2026-09-12 | 2026-10-19 | Physical Progress [590 h]; ATT [274 Sq m]; TATA Projects Ltd-25 | 37,538 | 36,346.32 |
| RB1-SS-FN90 |  | PCC | 6d | 2026-09-12 A | 2026-09-23 A | RB1-SS-FN65 SS, RB1-SS-FN60 SS | 100% |  | 2026-09-12 | 2026-09-22 | Mason [10 h]; Helper [10 h]; Physical Progress [590 h]; Concrete M10 [19 m3]; TATA Projects Ltd-25 | 164,141 | 164,141 |
| RB1-SS-FN120 |  | Waterproofing | 0d | 2026-09-16 A | 2026-09-17 A | RB1-SS-FN90, RB1-SS-FN100 SS | 100% |  | 2026-09-17 | 2026-09-17 | Waterproofing (Raft/Grade Slab); Waterprrofing Mason; Helper; Physical Progress; TATA Projects Ltd-25 |  |  |
| RB1-SS-FN150 |  | Reinforcement | 37.4d | 2026-09-18 A | 2026-11-06 | RB1-SS-FN120 FF | 20% | 8d | 2026-09-19 | 2026-11-06 | Barbender [2740 h]; Helper [1370 h]; Physical Progress [1190 h]; Reinforcement Steel [41 MT1]; TATA Projects Ltd-25 | 3,957,012.5 | 3,110,592.71 |
| RB1-SS-FN170 |  | Concrete | 31.4d | 2026-09-29 A | 2026-11-06 | RB1-SS-FN150 FF |  | 0.82d |  |  | Mason [50 h]; Helper [50 h]; Physical Progress [590 h]; Concrete M40 [339 m3]; TATA Projects Ltd-25 | 3,344,913 | 3,257,561.77 |
|  | 1 | **Pour 2** |  | 2026-10-21 | 2026-11-25 |  |  |  |  |  |  |  |  |
|  | 1 | **CF7, CF8, CF10B** |  | 2026-10-21 | 2026-11-25 |  |  |  |  |  |  |  |  |
| RB1-SS-FN80 |  | Pocket Excavation | 3d | 2026-10-21 | 2026-10-23 | RB1-SS-FN45 |  |  |  |  | Physical Progress [1780 h]; Pocket Excavation; TATA Projects Ltd-25 |  |  |
| RB1-SS-FN115 |  | Surface dressing | 1d | 2026-10-24 | 2026-10-24 | RB1-SS-FN80 |  |  |  |  | Helper [30 h]; Physical Progress [590 h]; Surface Dressing [1187 Sq m]; TATA Projects Ltd-25 | 53,415 |  |
| RB1-SS-FN125 |  | ATT | 1d | 2026-10-26 | 2026-10-26 | RB1-SS-FN115 |  |  |  |  | Physical Progress [590 h]; ATT [1306 Sq m]; TATA Projects Ltd-25 | 178,922 |  |
| RB1-SS-FN130 |  | PCC | 1d | 2026-10-26 | 2026-10-26 | RB1-SS-FN125 FF, RB1-SS-FN115 |  |  |  |  | Mason [10 h]; Helper [10 h]; Physical Progress [590 h]; Concrete M10 [89 m3]; TATA Projects Ltd-25 | 768,871 |  |
| RB1-SS-FN140 |  | Shuttering | 5d | 2026-10-27 | 2026-10-31 | RB1-SS-FN130 |  |  |  |  | Carpenter [2920 h]; Helper [1460 h]; Physical Progress [1190 h]; Formwork [1751 Sq m]; TATA Projects Ltd-25 | 2,040,195.16 |  |
| RB1-SS-FN145 |  | Blockwork/Brickwork | 1d | 2026-10-27 | 2026-10-27 | RB1-SS-FN80, RB1-SS-FN130 |  |  |  |  | Brickwork for the footing [64 CuM]; Mason [430 h]; Helper [220 h]; Physical Progress [1190 h]; TATA Projects Ltd-25 | 531,200 |  |
| RB1-SS-FN165 |  | Waterproofing | 0d | 2026-11-02 | 2026-11-02 | RB1-SS-FN130, RB1-SS-FN140 |  |  |  |  | Waterproofing (Raft/Grade Slab); Waterprrofing Mason; Helper; Physical Progress; TATA Projects Ltd-25 |  |  |
| RB1-SS-FN195 |  | Reinforcement | 20d | 2026-11-02 | 2026-11-24 | RB1-SS-FN165 |  |  |  |  | Barbender [19000 h]; Helper [9500 h]; Physical Progress [1190 h]; Reinforcement Steel [285 MT1]; TATA Projects Ltd-25 | 27,506,062.5 |  |
| RB1-SS-FN210 |  | Concrete | 1d | 2026-11-25 | 2026-11-25 | RB1-SS-FN195 |  |  |  |  | Mason [50 h]; Helper [50 h]; Physical Progress [590 h]; Concrete M40 [2373 m3]; TATA Projects Ltd-25 | 23,414,391 |  |

| ID | WBS | Activity | Duration | Start | Finish | Predecessors | Resources | Cost |
| --- | --- | --- | --- | --- | --- | --- | --- | --- |
|  | 3 | **CF10, CF10A, CF11A, F9, F13** |  | 2026-10-28 | 2026-11-23 |  |  |  |
| RB1-SS-FN160 |  | Pocket Excavation | 3d | 2026-10-28 | 2026-10-30 | RB1-SS-FN145 | Physical Progress [1780 h]; Pocket Excavation; TATA Projects Ltd-25 |  |
| RB1-SS-FN185 |  | Surface dressing | 1d | 2026-10-31 | 2026-10-31 | RB1-SS-FN160 | Helper [30 h]; Physical Progress [590 h]; Surface Dressing [541 Sq m]; TATA Projects Ltd-25 | 24,345 |
| RB1-SS-FN190 |  | ATT | 1d | 2026-10-31 | 2026-10-31 | RB1-SS-FN160 | Physical Progress [590 h]; ATT [595 Sq m]; TATA Projects Ltd-25 | 81,515 |
| RB1-SS-FN200 |  | PCC | 1d | 2026-11-02 | 2026-11-02 | RB1-SS-FN190 FF, RB1-SS-FN185 | Mason [10 h]; Helper [10 h]; Physical Progress [590 h]; Concrete M10 [41 m3]; TATA Projects Ltd-25 | 354,199 |
| RB1-SS-FN205 |  | Shuttering | 5d | 2026-11-03 | 2026-11-07 | RB1-SS-FN200 | Carpenter [740 h]; Helper [370 h]; Physical Progress [1780 h]; Formwork [441 Sq m]; TATA Projects Ltd-25 | 513,835.56 |
| RB1-SS-FN230 |  | Waterproofing | 0d | 2026-11-09 | 2026-11-09 | RB1-SS-FN200, RB1-SS-FN205 | Waterproofing (Raft/Grade Slab); Waterprrofing Mason; Helper; Physical Progress; TATA Projects Ltd-25 |  |
| RB1-SS-FN255 |  | Reinforcement | 12d | 2026-11-09 | 2026-11-21 | RB1-SS-FN230 | Barbender [4800 h]; Helper [2400 h]; Physical Progress [1780 h]; Reinforcement Steel [72 MT1]; TATA Projects Ltd-25 | 6,948,900 |
| RB1-SS-FN285 |  | Concrete | 1d | 2026-11-23 | 2026-11-23 | RB1-SS-FN255 | Mason [50 h]; Helper [50 h]; Physical Progress [590 h]; Concrete M40 [598 m3]; TATA Projects Ltd-25 | 5,900,466 |
|  | 3 | **Pour 3** |  | 2026-10-31 | 2026-12-12 |  |  |  |
|  | 1 | **CF11, CF14, CF1J, F10, F11 - 2, F12, CF14B, F13** |  | 2026-10-31 | 2026-12-12 |  |  |  |
| RB1-SS-FN175 |  | Pocket Excavation | 4d | 2026-10-31 | 2026-11-04 | Mob-P&M-TC85 SS, RB1-SS-FN160 | Physical Progress [2370 h]; Pocket Excavation; TATA Projects Ltd-25 |  |
| RB1-SS-FN215 |  | Surface dressing | 1d | 2026-11-05 | 2026-11-05 | RB1-SS-FN175 | Helper [30 h]; Physical Progress [590 h]; Surface Dressing [830 Sq m]; TATA Projects Ltd-25 | 37,350 |
| RB1-SS-FN220 |  | ATT | 1d | 2026-11-06 | 2026-11-06 | RB1-SS-FN215 | Physical Progress [590 h]; ATT [913 Sq m]; TATA Projects Ltd-25 | 125,081 |
| RB1-SS-FN225 |  | PCC | 1d | 2026-11-06 | 2026-11-06 | RB1-SS-FN220 FF, RB1-SS-FN215 | Mason [10 h]; Helper [10 h]; Physical Progress [590 h]; Concrete M10 [62 m3]; TATA Projects Ltd-25 | 535,618 |
| RB1-SS-FN235 |  | Shuttering | 10d | 2026-11-07 | 2026-11-18 | RB1-SS-FN225 | Carpenter [1540 h]; Helper [770 h]; Physical Progress [1780 h]; Formwork [924 Sq m]; TATA Projects Ltd-25 | 1,076,607.84 |
| RB1-SS-FN240 |  | Blockwork/Brickwork | 1d | 2026-11-07 | 2026-11-07 | RB1-SS-FN175, RB1-SS-FN225 | Brickwork for the footing [64 CuM]; Mason [430 h]; Helper [220 h]; Physical Progress [1780 h]; TATA Projects Ltd-25 | 531,200 |
| RB1-SS-FN245 |  | Waterproofing | 0d | 2026-11-19 | 2026-11-19 | RB1-SS-FN225, RB1-SS-FN235 | Waterproofing (Raft/Grade Slab); Waterprrofing Mason; Helper; Physical Progress; TATA Projects Ltd-25 |  |
| RB1-SS-FN290 |  | Reinforcement | 20d | 2026-11-19 | 2026-12-11 | RB1-SS-FN245 | Barbender [10000 h]; Helper [5000 h]; Physical Progress [1780 h]; Reinforcement Steel [150 MT1]; TATA Projects Ltd-25 | 14,476,875 |
| RB1-SS-FN315 |  | Concrete | 1d | 2026-12-12 | 2026-12-12 | RB1-SS-FN290 | Mason [50 h]; Helper [50 h]; Physical Progress [590 h]; Concrete M40 [1252 m3]; TATA Projects Ltd-25 | 12,353,484 |
|  | 4 | **F8 - 3, CF1A** |  | 2026-11-09 | 2026-11-20 |  |  |  |
| RB1-SS-FN250 |  | Pocket Excavation | 2d | 2026-11-09 | 2026-11-10 | RB1-SS-FN240 | Physical Progress [1190 h]; Pocket Excavation; TATA Projects Ltd-25 |  |
| RB1-SS-FN260 |  | Surface dressing | 1d | 2026-11-11 | 2026-11-11 | RB1-SS-FN250 | Helper [30 h]; Physical Progress [590 h]; Surface Dressing [131 Sq m]; TATA Projects Ltd-25 | 5,895 |
| RB1-SS-FN270 |  | ATT | 1d | 2026-11-12 | 2026-11-12 | RB1-SS-FN260 | Physical Progress [590 h]; ATT [144 Sq m]; TATA Projects Ltd-25 | 19,728 |
| RB1-SS-FN275 |  | PCC | 1d | 2026-11-12 | 2026-11-12 | RB1-SS-FN270 FF | Mason [10 h]; Helper [10 h]; Physical Progress [590 h]; Concrete M10 [10 m3]; TATA Projects Ltd-25 | 86,390 |
| RB1-SS-FN280 |  | Shuttering | 2d | 2026-11-13 | 2026-11-14 | RB1-SS-FN275 | Carpenter [190 h]; Helper [100 h]; Physical Progress [1190 h]; Formwork [114 Sq m]; TATA Projects Ltd-25 | 132,828.24 |
| RB1-SS-FN295 |  | Waterproofing | 0d | 2026-11-16 | 2026-11-16 | RB1-SS-FN275, RB1-SS-FN280 | Waterproofing (Raft/Grade Slab); Waterprrofing Mason; Helper; Physical Progress; TATA Projects Ltd-25 |  |
| RB1-SS-FN330 |  | Reinforcement | 4d | 2026-11-16 | 2026-11-19 | RB1-SS-FN295 | Barbender [1270 h]; Helper [640 h]; Physical Progress [1190 h]; Reinforcement Steel [19 MT1]; TATA Projects Ltd-25 | 1,833,737.5 |
| RB1-SS-FN345 |  | Concrete | 1d | 2026-11-20 | 2026-11-20 | RB1-SS-FN330 | Mason [50 h]; Helper [50 h]; Physical Progress [590 h]; Concrete M40 [155 m3]; TATA Projects Ltd-25 | 1,529,385 |

| ID | WBS | Activity | Duration | Start | Finish | Predecessors | Resources | Cost |
| --- | --- | --- | --- | --- | --- | --- | --- | --- |
|  | 5 | **Pour 4** |  | 2026-11-11 | 2026-12-12 |  |  |  |
|  | 1 | **F13, F10 - 5, F14, CF9A, F11 - 4, F13 - 2, CF9B** |  | 2026-11-11 | 2026-12-11 |  |  |  |
| RB1-SS-FN265 |  | Pocket Excavation | 4d | 2026-11-11 | 2026-11-14 | RB1-SS-FN250 | Physical Progress [2370 h]; Pocket Excavation; TATA Projects Ltd-25 |  |
| RB1-SS-FN300 |  | Surface dressing | 1d | 2026-11-16 | 2026-11-16 | RB1-SS-FN265 | Helper [30 h]; Physical Progress [590 h]; Surface Dressing [776 Sq m]; TATA Projects Ltd-25 | 34,920 |
| RB1-SS-FN305 |  | ATT | 1d | 2026-11-17 | 2026-11-17 | RB1-SS-FN300 | Physical Progress [590 h]; ATT [854 Sq m]; TATA Projects Ltd-25 | 116,998 |
| RB1-SS-FN310 |  | PCC | 1d | 2026-11-17 | 2026-11-17 | RB1-SS-FN305 FF, RB1-SS-FN300 | Mason [10 h]; Helper [10 h]; Physical Progress [590 h]; Concrete M10 [58 m3]; TATA Projects Ltd-25 | 501,062 |
| RB1-SS-FN320 |  | Shuttering | 9d | 2026-11-18 | 2026-11-27 | RB1-SS-FN310 | Carpenter [1470 h]; Helper [740 h]; Physical Progress [1780 h]; Formwork [878 Sq m]; TATA Projects Ltd-25 | 1,023,010.48 |
| RB1-SS-FN325 |  | Blockwork/Brickwork | 1d | 2026-11-18 | 2026-11-18 | RB1-SS-FN265, RB1-SS-FN310 | Brickwork for the footing [64 CuM]; Mason [430 h]; Helper [220 h]; Physical Progress [1780 h]; TATA Projects Ltd-25 | 531,200 |
| RB1-SS-FN335 |  | Waterproofing | 0d | 2026-11-28 | 2026-11-28 | RB1-SS-FN310, RB1-SS-FN320 | Waterproofing (Raft/Grade Slab); Waterprrofing Mason; Helper; Physical Progress; TATA Projects Ltd-25 |  |
| RB1-SS-FN370 |  | Reinforcement | 11d | 2026-11-28 | 2026-12-10 | RB1-SS-FN335 | Barbender [9540 h]; Helper [4770 h]; Physical Progress [1780 h]; Reinforcement Steel [143 MT1]; TATA Projects Ltd-25 | 13,801,287.5 |
| RB1-SS-FN395 |  | Concrete | 1d | 2026-12-11 | 2026-12-11 | RB1-SS-FN370 | Mason [50 h]; Helper [50 h]; Physical Progress [590 h]; Concrete M40 [1190 m3]; TATA Projects Ltd-25 | 11,741,730 |
|  | 3 | **F8 -4, F9 - 2, F6 - 2, F5 - 2 F7 - 3, F3,** |  | 2026-11-19 | 2026-12-12 |  |  |  |
| RB1-SS-FN340 |  | Pocket Excavation | 3d | 2026-11-19 | 2026-11-21 | RB1-SS-FN325 | Physical Progress [1780 h]; Pocket Excavation; TATA Projects Ltd-25 |  |
| RB1-SS-FN350 |  | Surface dressing | 1d | 2026-11-23 | 2026-11-23 | RB1-SS-FN340 | Helper [30 h]; Physical Progress [590 h]; Surface Dressing [332 Sq m]; TATA Projects Ltd-25 | 14,940 |
| RB1-SS-FN355 |  | ATT | 1d | 2026-11-23 | 2026-11-23 | RB1-SS-FN340 | Physical Progress [590 h]; ATT [365 Sq m]; TATA Projects Ltd-25 | 50,005 |
| RB1-SS-FN365 |  | PCC | 1d | 2026-11-24 | 2026-11-24 | RB1-SS-FN355 FF, RB1-SS-FN350 | Mason [10 h]; Helper [10 h]; Physical Progress [590 h]; Concrete M10 [25 m3]; TATA Projects Ltd-25 | 215,975 |
| RB1-SS-FN375 |  | Shuttering | 5d | 2026-11-25 | 2026-11-30 | RB1-SS-FN365 | Carpenter [450 h]; Helper [230 h]; Physical Progress [1780 h]; Formwork [265 Sq m]; TATA Projects Ltd-25 | 308,767.4 |
| RB1-SS-FN400 |  | Waterproofing | 0d | 2026-12-01 | 2026-12-01 | RB1-SS-FN365, RB1-SS-FN375 | Waterproofing (Raft/Grade Slab); Waterprrofing Mason; Helper; Physical Progress; TATA Projects Ltd-25 |  |
| RB1-SS-FN425 |  | Reinforcement | 10d | 2026-12-01 | 2026-12-11 | RB1-SS-FN400 | Barbender [2870 h]; Helper [1440 h]; Physical Progress [1780 h]; Reinforcement Steel [43 MT1]; TATA Projects Ltd-25 | 4,150,037.5 |
| RB1-SS-FN455 |  | Concrete | 1d | 2026-12-12 | 2026-12-12 | RB1-SS-FN425 | Mason [50 h]; Helper [50 h]; Physical Progress [590 h]; Concrete M40 [359 m3]; TATA Projects Ltd-25 | 3,542,253 |
|  | 6 | **Pour 5** |  | 2026-11-06 | 2027-01-05 |  |  |  |
|  | 1 | **F11 - 4, F10 -3, CF9C, CF15** |  | 2026-11-23 | 2027-01-05 |  |  |  |
| RB1-SS-FN360 |  | Pocket Excavation | 3d | 2026-11-23 | 2026-11-25 | RB1-SS-FN340 | Physical Progress [1780 h]; Pocket Excavation; TATA Projects Ltd-25 |  |
| RB1-SS-FN380 |  | Surface dressing | 1d | 2026-11-26 | 2026-11-26 | RB1-SS-FN360 | Helper [30 h]; Physical Progress [590 h]; Surface Dressing [554 Sq m]; TATA Projects Ltd-25 | 24,930 |
| RB1-SS-FN385 |  | ATT | 1d | 2026-11-27 | 2026-11-27 | RB1-SS-FN380 | Physical Progress [590 h]; ATT [609 Sq m]; TATA Projects Ltd-25 | 83,433 |
| RB1-SS-FN390 |  | PCC | 1d | 2026-11-27 | 2026-11-27 | RB1-SS-FN385 FF, RB1-SS-FN380 | Mason [10 h]; Helper [10 h]; Physical Progress [590 h]; Concrete M10 [42 m3]; TATA Projects Ltd-25 | 362,838 |
| RB1-SS-FN405 |  | Shuttering | 10d | 2026-11-28 | 2026-12-09 | RB1-SS-FN390 | Carpenter [1030 h]; Helper [520 h]; Physical Progress [1780 h]; Formwork [613 Sq m]; TATA Projects Ltd-25 | 714,243.08 |
| RB1-SS-FN460 |  | Reinforcement | 20d | 2026-12-10 | 2027-01-04 | RB1-SS-FN405 | Barbender [6670 h]; Helper [3340 h]; Physical Progress [1780 h]; Reinforcement Steel [100 MT1]; TATA Projects Ltd-25 | 9,651,250 |
| RB1-SS-FN490 |  | Concrete | 1d | 2027-01-05 | 2027-01-05 | RB1-SS-FN460, RB1-SS-FN405 | Mason [50 h]; Helper [50 h]; Physical Progress [590 h]; Concrete M40 [831 m3]; TATA Projects Ltd-25 | 8,199,477 |

| ID | WBS | Activity | Duration | Start | Finish | Predecessors | Resources | Cost |
| --- | --- | --- | --- | --- | --- | --- | --- | --- |
|  | 3 | **F5, F7 -5, F6 -1, F3-3, CF16, F8 -3** |  | 2026-11-06 | 2026-12-05 |  |  |  |
| RB1-SS-FN420 |  | Pocket Excavation | 3d | 2026-11-06 | 2026-11-09 | Mob-P&M-TC65 SS | Physical Progress [1780 h]; Pocket Excavation; TATA Projects Ltd-25 |  |
| RB1-SS-FN435 |  | Surface dressing | 1d | 2026-11-10 | 2026-11-10 | RB1-SS-FN420 | Helper [30 h]; Physical Progress [590 h]; Surface Dressing [351 Sq m]; TATA Projects Ltd-25 | 15,795 |
| RB1-SS-FN440 |  | ATT | 1d | 2026-11-10 | 2026-11-10 | RB1-SS-FN420 | Physical Progress [590 h]; ATT [386 Sq m]; TATA Projects Ltd-25 | 52,882 |
| RB1-SS-FN445 |  | PCC | 1d | 2026-11-11 | 2026-11-11 | RB1-SS-FN440 FF, RB1-SS-FN435 | Mason [10 h]; Helper [10 h]; Physical Progress [590 h]; Concrete M10 [26 m3]; TATA Projects Ltd-25 | 224,614 |
| RB1-SS-FN465 |  | Shuttering | 5d | 2026-11-12 | 2026-11-17 | RB1-SS-FN445 | Carpenter [470 h]; Helper [240 h]; Physical Progress [1780 h]; Formwork [280 Sq m]; TATA Projects Ltd-25 | 326,244.8 |
| RB1-SS-FN515 |  | Reinforcement | 15d | 2026-11-18 | 2026-12-04 | RB1-SS-FN465 | Barbender [3070 h]; Helper [1540 h]; Physical Progress [1780 h]; Reinforcement Steel [46 MT1]; TATA Projects Ltd-25 | 4,439,575 |
| RB1-SS-FN570 |  | Concrete | 1d | 2026-12-05 | 2026-12-05 | RB1-SS-FN515, RB1-SS-FN465 | Mason [50 h]; Helper [50 h]; Physical Progress [590 h]; Concrete M40 [380 m3]; TATA Projects Ltd-25 | 3,749,460 |
|  | 4 | **Pour 6** |  | 2026-11-10 | 2026-12-11 |  |  |  |
|  | 1 | **CF7A, F10** |  | 2026-11-10 | 2026-12-08 |  |  |  |
| RB1-SS-FN430 |  | Pocket Excavation | 2d | 2026-11-10 | 2026-11-11 | RB1-SS-FN420 | Physical Progress [1190 h]; Pocket Excavation; TATA Projects Ltd-25 |  |
| RB1-SS-FN450 |  | Surface dressing | 1d | 2026-11-12 | 2026-11-12 | RB1-SS-FN430 | Helper [30 h]; Physical Progress [590 h]; Surface Dressing [198 Sq m]; TATA Projects Ltd-25 | 8,910 |
| RB1-SS-FN470 |  | ATT | 1d | 2026-11-13 | 2026-11-13 | RB1-SS-FN450 | Physical Progress [590 h]; ATT [218 Sq m]; TATA Projects Ltd-25 | 29,866 |
| RB1-SS-FN475 |  | PCC | 1d | 2026-11-13 | 2026-11-13 | RB1-SS-FN470 FF, RB1-SS-FN450 | Mason [10 h]; Helper [10 h]; Physical Progress [590 h]; Concrete M10 [15 m3]; TATA Projects Ltd-25 | 129,585 |
| RB1-SS-FN480 |  | Shuttering | 5d | 2026-11-14 | 2026-11-19 | RB1-SS-FN475 | Carpenter [370 h]; Helper [190 h]; Physical Progress [1780 h]; Formwork [219 Sq m]; TATA Projects Ltd-25 | 255,170.04 |
| RB1-SS-FN545 |  | Reinforcement | 15d | 2026-11-20 | 2026-12-07 | RB1-SS-FN480, RB1-SS-FN475 | Barbender [2400 h]; Helper [1200 h]; Physical Progress [1780 h]; Reinforcement Steel [36 MT1]; TATA Projects Ltd-25 | 3,474,450 |
| RB1-SS-FN600 |  | Concrete | 1d | 2026-12-08 | 2026-12-08 | RB1-SS-FN545, RB1-SS-FN480 | Mason [50 h]; Helper [50 h]; Physical Progress [590 h]; Concrete M40 [297 m3]; TATA Projects Ltd-25 | 2,930,499 |
|  | 4 | **F2 - 3, F3 - 3, F9 -3, CF2 - 2** |  | 2026-11-12 | 2026-12-11 |  |  |  |
| RB1-SS-FN505 |  | Pocket Excavation | 3d | 2026-11-12 | 2026-11-14 | RB1-SS-FN430 | Physical Progress [1780 h]; Pocket Excavation; TATA Projects Ltd-25 |  |
| RB1-SS-FN510 |  | Surface dressing | 1d | 2026-11-16 | 2026-11-16 | RB1-SS-FN505 | Helper [30 h]; Physical Progress [590 h]; Surface Dressing [244 Sq m]; TATA Projects Ltd-25 | 10,980 |
| RB1-SS-FN530 |  | ATT | 1d | 2026-11-17 | 2026-11-17 | RB1-SS-FN510 | Physical Progress [590 h]; ATT [268 Sq m]; TATA Projects Ltd-25 | 36,716 |
| RB1-SS-FN535 |  | PCC | 1d | 2026-11-17 | 2026-11-17 | RB1-SS-FN530 FF | Mason [10 h]; Helper [10 h]; Physical Progress [590 h]; Concrete M10 [18 m3]; TATA Projects Ltd-25 | 155,502 |
| RB1-SS-FN550 |  | Shuttering | 5d | 2026-11-18 | 2026-11-23 | RB1-SS-FN535 | Carpenter [330 h]; Helper [170 h]; Physical Progress [1780 h]; Formwork [196 Sq m]; TATA Projects Ltd-25 | 228,371.36 |
| RB1-SS-FN605 |  | Waterproofing | 0d | 2026-11-24 | 2026-11-24 | RB1-SS-FN535, RB1-SS-FN550 | Waterproofing (Raft/Grade Slab); Waterprrofing Mason; Helper; Physical Progress; TATA Projects Ltd-25 |  |
| RB1-SS-FN635 |  | Reinforcement | 15d | 2026-11-24 | 2026-12-10 | RB1-SS-FN605 | Barbender [2140 h]; Helper [1070 h]; Physical Progress [1780 h]; Reinforcement Steel [32 MT1]; TATA Projects Ltd-25 | 3,088,400 |
| RB1-SS-FN670 |  | Concrete | 1d | 2026-12-11 | 2026-12-11 | RB1-SS-FN635, RB1-SS-FN550 | Mason [50 h]; Helper [50 h]; Physical Progress [590 h]; Concrete M40 [266 m3]; TATA Projects Ltd-25 | 2,624,622 |

| ID | WBS | Activity | Duration | Start | Finish | Predecessors | Complete | Remaining | Planned start | Planned finish | Resources | Cost | Actual cost |
| --- | --- | --- | --- | --- | --- | --- | --- | --- | --- | --- | --- | --- | --- |
|  | 7 | **Pour 7** |  | 2026-09-09 | 2026-12-28 |  |  |  |  |  |  |  |  |
|  | 1 | **CF1B - 3, CF1 - 2, CF13** |  | 2026-09-09 | 2026-11-30 |  |  |  |  |  |  |  |  |
| RB1-SS-FN520 |  | Pocket Excavation | 49d | 2026-09-09 A | 2026-11-14 | RB1-SS-FN505 FF | 33% | 1.34d | 2026-09-10 | 2026-11-14 | Physical Progress [1190 h]; Pocket Excavation; TATA Projects Ltd-25 |  |  |
| RB1-SS-FN615 |  | Waterproofing | 0d | 2026-09-09 A | 2026-09-09 A | RB1-SS-FN520 SS | 100% |  | 2026-09-10 | 2026-09-10 | Waterproofing (Raft/Grade Slab); Waterprrofing Mason; Helper; Physical Progress; TATA Projects Ltd-25 |  |  |
| RB1-SS-FN555 |  | Surface dressing | 47.33d | 2026-09-11 A | 2026-11-14 | RB1-SS-FN520 SS | 33% | 0.67d | 2026-09-12 | 2026-11-14 | Helper [30 h]; Physical Progress [590 h]; Surface Dressing [404 Sq m]; TATA Projects Ltd-25 | 18,180 | 17,922.65 |
| RB1-SS-FN575 |  | ATT | 47.33d | 2026-09-11 A | 2026-11-14 | RB1-SS-FN555 SS | 33% | 0.67d | 2026-09-12 | 2026-11-14 | Physical Progress [590 h]; ATT [444 Sq m]; TATA Projects Ltd-25 | 60,828 | 59,966.92 |
| RB1-SS-FN580 |  | PCC | 47.33d | 2026-09-12 A | 2026-11-14 | RB1-SS-FN575 FF, RB1-SS-FN555 SS | 33% | 0.67d |  |  | Mason [10 h]; Helper [10 h]; Physical Progress [590 h]; Concrete M10 [30 m3]; TATA Projects Ltd-25 | 259,170 | 255,501.21 |
| RB1-SS-FN595 |  | Blockwork/Brickwork | 47.33d | 2026-09-12 A | 2026-11-14 | RB1-SS-FN520 SS, RB1-SS-FN580 SS | 33% | 0.67d |  |  | Brickwork for the footing [64 CuM]; Mason [430 h]; Helper [220 h]; Physical Progress [1780 h]; TATA Projects Ltd-25 | 531,200 | 523,680.37 |
| RB1-SS-FN590 |  | Shuttering | 46.01d | 2026-09-20 A | 2026-11-18 | RB1-SS-FN655 SS | 33% | 3.35d | 2026-09-21 | 2026-11-18 | Carpenter [750 h]; Helper [380 h]; Physical Progress [1780 h]; Formwork [446 Sq m]; TATA Projects Ltd-25 | 519,661.36 | 481,824.68 |
| RB1-SS-FN655 |  | Reinforcement | 53.06d | 2026-09-25 A | 2026-11-30 | RB1-SS-FN580 SS | 33% | 13.4d | 2026-09-26 | 2026-11-30 | Barbender [4870 h]; Helper [2440 h]; Physical Progress [1780 h]; Reinforcement Steel [73 MT1]; TATA Projects Ltd-25 | 7,045,412.5 | 5,266,133.81 |
| RB1-SS-FN675 |  | Concrete | 1d | 2026-11-18 | 2026-11-19 | RB1-SS-FN590 |  |  |  |  | Mason [50 h]; Helper [50 h]; Physical Progress [590 h]; Concrete M40 [605 m3]; TATA Projects Ltd-25 | 5,969,535 |  |
|  | 4 | **Sump** |  | 2026-11-16 | 2026-11-27 |  |  |  |  |  |  |  |  |
| RB1-SS-FN525 |  | Pocket Excavation | 1d | 2026-11-16 | 2026-11-16 | RB1-SS-FN505 |  |  |  |  | Physical Progress [590 h]; Pocket Excavation; TATA Projects Ltd-25 |  |  |
| RB1-SS-FN540 |  | Surface dressing | 1d | 2026-11-17 | 2026-11-17 | RB1-SS-FN525 |  |  |  |  | Helper [30 h]; Physical Progress [590 h]; Surface Dressing [22 Sq m]; TATA Projects Ltd-25 | 990 |  |
| RB1-SS-FN560 |  | ATT | 1d | 2026-11-18 | 2026-11-18 | RB1-SS-FN540 |  |  |  |  | Physical Progress [590 h]; ATT [24 Sq m]; TATA Projects Ltd-25 | 3,288 |  |
| RB1-SS-FN565 |  | PCC | 1d | 2026-11-18 | 2026-11-18 | RB1-SS-FN560 FF |  |  |  |  | Mason [10 h]; Helper [10 h]; Physical Progress [590 h]; Concrete M10 [2 m3]; TATA Projects Ltd-25 | 17,278 |  |
| RB1-SS-FN585 |  | Shuttering | 2d | 2026-11-19 | 2026-11-20 | RB1-SS-FN565 |  |  |  |  | Carpenter [40 h]; Helper [20 h]; Physical Progress [1190 h]; Formwork [24 Sq m]; TATA Projects Ltd-25 | 27,963.84 |  |
| RB1-SS-FN610 |  | Waterproofing | 0d | 2026-11-21 | 2026-11-21 | RB1-SS-FN565, RB1-SS-FN585, RB1-SS-FN615 |  |  |  |  | Waterproofing (Raft/Grade Slab); Waterprrofing Mason; Helper; Physical Progress; TATA Projects Ltd-25 |  |  |
| RB1-SS-FN625 |  | Reinforcement | 2d | 2026-11-21 | 2026-11-23 | RB1-SS-FN610 |  |  |  |  | Barbender [70 h]; Helper [40 h]; Physical Progress [1190 h]; Reinforcement Steel [1 MT1]; TATA Projects Ltd-25 | 96,512.5 |  |
| RB1-SS-FN630 |  | MEP Services | 3d | 2026-11-24 | 2026-11-26 | RB1-SS-FN625 |  |  |  |  | Physical Progress [1780 h]; TATA Projects Ltd-25 |  |  |
| RB1-SS-FN665 |  | Concrete | 1d | 2026-11-27 | 2026-11-27 | RB1-SS-FN625, RB1-SS-FN630 |  |  |  |  | Mason [50 h]; Helper [50 h]; Physical Progress [590 h]; Concrete M40 [8 m3]; TATA Projects Ltd-25 | 78,936 |  |
|  | 3 | **CF10, CF1L, F1, F2 - 6, F3, F4, F7 -5** |  | 2026-11-14 | 2026-12-28 |  |  |  |  |  |  |  |  |
| RB1-SS-FN620 |  | Pocket Excavation | 3d | 2026-11-14 | 2026-11-18 | RB1-SS-FN595, Mob-P&M-TC85 SS |  |  |  |  | Physical Progress [1780 h]; Pocket Excavation; TATA Projects Ltd-25 |  |  |
| RB1-SS-FN640 |  | Surface dressing | 1d | 2026-11-18 | 2026-11-19 | RB1-SS-FN620 |  |  |  |  | Helper [30 h]; Physical Progress [590 h]; Surface Dressing [623 Sq m]; TATA Projects Ltd-25 | 28,035 |  |
| RB1-SS-FN645 |  | ATT | 1d | 2026-11-18 | 2026-11-19 | RB1-SS-FN620 |  |  |  |  | Physical Progress [590 h]; ATT [685 Sq m]; TATA Projects Ltd-25 | 93,845 |  |
| RB1-SS-FN650 |  | PCC | 1d | 2026-11-19 | 2026-11-20 | RB1-SS-FN645 FF, RB1-SS-FN640 |  |  |  |  | Mason [10 h]; Helper [10 h]; Physical Progress [590 h]; Concrete M10 [47 m3]; TATA Projects Ltd-25 | 406,033 |  |
| RB1-SS-FN660 |  | Shuttering | 10d | 2026-11-20 | 2026-12-02 | RB1-SS-FN650 |  |  |  |  | Carpenter [1050 h]; Helper [530 h]; Physical Progress [1780 h]; Formwork [627 Sq m]; TATA Projects Ltd-25 | 730,555.32 |  |
| RB1-SS-FN680 |  | Waterproofing | 0d | 2026-12-02 | 2026-12-02 | RB1-SS-FN650, RB1-SS-FN660 |  |  |  |  | Waterproofing (Raft/Grade Slab); Waterprrofing Mason; Helper; Physical Progress; TATA Projects Ltd-25 |  |  |
| RB1-SS-FN685 |  | Reinforcement | 20d | 2026-12-02 | 2026-12-26 | RB1-SS-FN680 |  |  |  |  | Barbender [6800 h]; Helper [3400 h]; Physical Progress [1780 h]; Reinforcement Steel [102 MT1]; TATA Projects Ltd-25 | 9,844,275 |  |
| RB1-SS-FN690 |  | Concrete | 1d | 2026-12-26 | 2026-12-28 | RB1-SS-FN685 |  |  |  |  | Mason [50 h]; Helper [50 h]; Physical Progress [590 h]; Concrete M40 [850 m3]; TATA Projects Ltd-25 | 8,386,950 |  |

| ID | WBS | Activity | Duration | Start | Finish | Predecessors | Resources | Cost |
| --- | --- | --- | --- | --- | --- | --- | --- | --- |
|  | 5 | **Basement 03(Grade Slab)** |  | 2027-04-17 | 2027-06-21 |  |  |  |
|  | 1 | **Pour 1** |  | 2027-05-08 | 2027-06-02 |  |  |  |
| RB1-SS-GS10 |  | Deshuttering | 4d | 2027-05-08 | 2027-05-12 | RB1-SS-B01.495 | Physical Progress [2370 h]; TATA Projects Ltd-25 |  |
| RB1-SS-GS15 |  | Waterproofing | 5d | 2027-05-13 | 2027-05-18 | RB1-SS-GS10 | Waterproofing (Raft/Grade Slab) [1560.86 Sq m]; Waterprrofing Mason [1300.72 h]; Helper [650.36 h]; Physical Progress [12594.2 h]; TATA Projects Ltd-25 | 973,978.39 |
| RB1-SS-GS20 |  | Reinforcement | 10d | 2027-05-19 | 2027-05-29 | RB1-SS-GS15, RB1-SS-GS10 | Barbender [270 h]; Helper [140 h]; Physical Progress [5920 h]; Reinforcement Steel [4 MT1]; TATA Projects Ltd-25 | 386,050 |
| RB1-SS-GS35 |  | Shuttering | 2d | 2027-05-31 | 2027-06-01 | RB1-SS-GS20 | Carpenter [20 h]; Helper [10 h]; Physical Progress [1190 h]; Formwork [10 Sq m]; TATA Projects Ltd-25 | 11,651.6 |
| RB1-SS-GS40 |  | MEP Coordination | 2d | 2027-05-31 | 2027-06-01 | RB1-SS-GS20 | Physical Progress [1190 h]; TATA Projects Ltd-25 |  |
| RB1-SS-GS45 |  | Concrete | 1d | 2027-06-02 | 2027-06-02 | RB1-SS-GS40, RB1-SS-GS35 | Mason [50 h]; Helper [50 h]; Physical Progress [590 h]; Concrete M40 [237 m3]; TATA Projects Ltd-25 | 2,338,479 |
|  | 2 | **Pour 2** |  | 2027-04-17 | 2027-05-13 |  |  |  |
| RB1-SS-GS25 |  | Deshuttering | 4d | 2027-04-17 | 2027-04-21 | RB1-SS-B01.730 | Physical Progress [2370 h]; TATA Projects Ltd-25 |  |
| RB1-SS-GS30 |  | Waterproofing | 5d | 2027-04-22 | 2027-04-27 | RB1-SS-GS25 | Waterproofing (Raft/Grade Slab) [2199 Sq m]; Waterprrofing Mason [1832.14 h]; Helper [916.07 h]; Physical Progress [12594.2 h]; TATA Projects Ltd-25 | 1,372,176 |
| RB1-SS-GS50 |  | Reinforcement | 10d | 2027-04-28 | 2027-05-10 | RB1-SS-GS30 | Barbender [400 h]; Helper [200 h]; Physical Progress [5920 h]; Reinforcement Steel [6 MT1]; TATA Projects Ltd-25 | 579,075 |
| RB1-SS-GS70 |  | Shuttering | 2d | 2027-05-11 | 2027-05-12 | RB1-SS-GS50 | Carpenter [20 h]; Helper [10 h]; Physical Progress [1190 h]; Formwork [10 Sq m]; TATA Projects Ltd-25 | 11,651.6 |
| RB1-SS-GS75 |  | MEP Coordination | 2d | 2027-05-11 | 2027-05-12 | RB1-SS-GS50 | Physical Progress [1190 h]; TATA Projects Ltd-25 |  |
| RB1-SS-GS80 |  | Concrete | 1d | 2027-05-13 | 2027-05-13 | RB1-SS-GS75, RB1-SS-GS70 | Mason [50 h]; Helper [50 h]; Physical Progress [590 h]; Concrete M40 [333 m3]; TATA Projects Ltd-25 | 3,285,711 |
|  | 3 | **Pour 3** |  | 2027-05-06 | 2027-05-31 |  |  |  |
| RB1-SS-GS55 |  | Deshuttering | 4d | 2027-05-06 | 2027-05-10 | RB1-SS-B01.830 | Physical Progress [2370 h]; TATA Projects Ltd-25 |  |
| RB1-SS-GS60 |  | Waterproofing | 5d | 2027-05-11 | 2027-05-15 | RB1-SS-GS55 | Waterproofing (Raft/Grade Slab) [2120 Sq m]; Waterprrofing Mason [1767.51 h]; Helper [883.75 h]; Physical Progress [12604.2 h]; TATA Projects Ltd-25 | 1,322,880 |
| RB1-SS-GS65 |  | Reinforcement | 10d | 2027-05-17 | 2027-05-27 | RB1-SS-GS60, RB1-SS-GS55 | Barbender [340 h]; Helper [170 h]; Physical Progress [5920 h]; Reinforcement Steel [5 MT1]; TATA Projects Ltd-25 | 482,562.5 |
| RB1-SS-GS100 |  | MEP Coordination | 2d | 2027-05-28 | 2027-05-29 | RB1-SS-GS65 | Physical Progress [1190 h]; TATA Projects Ltd-25 |  |
| RB1-SS-GS95 |  | Shuttering | 2d | 2027-05-28 | 2027-05-29 | RB1-SS-GS65 | Carpenter [20 h]; Helper [10 h]; Physical Progress [1190 h]; Formwork [10 Sq m]; TATA Projects Ltd-25 | 11,651.6 |
| RB1-SS-GS105 |  | Concrete | 1d | 2027-05-31 | 2027-05-31 | RB1-SS-GS100, RB1-SS-GS95 | Mason [50 h]; Helper [50 h]; Physical Progress [590 h]; Concrete M40 [322 m3]; TATA Projects Ltd-25 | 3,177,174 |
|  | 4 | **Pour 4** |  | 2027-05-08 | 2027-06-02 |  |  |  |
| RB1-SS-GS85 |  | Deshuttering | 4d | 2027-05-08 | 2027-05-12 | RB1-SS-B01.920 | Physical Progress [2370 h]; TATA Projects Ltd-25 |  |
| RB1-SS-GS90 |  | Waterproofing | 5d | 2027-05-13 | 2027-05-18 | RB1-SS-GS85 | Waterproofing (Raft/Grade Slab) [1878.64 Sq m]; Waterprrofing Mason [1565.53 h]; Helper [782.77 h]; Physical Progress [12604.2 h]; TATA Projects Ltd-25 | 1,172,269.36 |
| RB1-SS-GS110 |  | Reinforcement | 10d | 2027-05-19 | 2027-05-29 | RB1-SS-GS90, RB1-SS-GS85 | Barbender [340 h]; Helper [170 h]; Physical Progress [5920 h]; Reinforcement Steel [5 MT1]; TATA Projects Ltd-25 | 482,562.5 |
| RB1-SS-GS125 |  | Shuttering | 2d | 2027-05-31 | 2027-06-01 | RB1-SS-GS110 | Carpenter [20 h]; Helper [10 h]; Physical Progress [1190 h]; Formwork [10 Sq m]; TATA Projects Ltd-25 | 11,651.6 |
| RB1-SS-GS130 |  | MEP Coordination | 2d | 2027-05-31 | 2027-06-01 | RB1-SS-GS110 | Physical Progress [1190 h]; TATA Projects Ltd-25 |  |
| RB1-SS-GS140 |  | Concrete | 1d | 2027-06-02 | 2027-06-02 | RB1-SS-GS130, RB1-SS-GS125 | Mason [50 h]; Helper [50 h]; Physical Progress [590 h]; Concrete M40 [285 m3]; TATA Projects Ltd-25 | 2,812,095 |

| ID | WBS | Activity | Duration | Start | Finish | Predecessors | Resources | Cost |
| --- | --- | --- | --- | --- | --- | --- | --- | --- |
|  | 5 | **Pour 5** |  | 2027-05-27 | 2027-06-21 |  |  |  |
| RB1-SS-GS115 |  | Deshuttering | 4d | 2027-05-27 | 2027-05-31 | RB1-SS-B01.1000 | Physical Progress [2370 h]; TATA Projects Ltd-25 |  |
| RB1-SS-GS120 |  | Waterproofing | 5d | 2027-06-01 | 2027-06-05 | RB1-SS-GS115 | Waterproofing (Raft/Grade Slab) [2094.08 Sq m]; Waterprrofing Mason [1745.06 h]; Helper [872.53 h]; Physical Progress [12604.2 h]; TATA Projects Ltd-25 | 1,306,703.92 |
| RB1-SS-GS135 |  | Reinforcement | 10d | 2027-06-07 | 2027-06-17 | RB1-SS-GS120, RB1-SS-GS115 | Barbender [340 h]; Helper [170 h]; Physical Progress [5920 h]; Reinforcement Steel [5 MT1]; TATA Projects Ltd-25 | 482,562.5 |
| RB1-SS-GS155 |  | Shuttering | 2d | 2027-06-18 | 2027-06-19 | RB1-SS-GS135 | Carpenter [20 h]; Helper [10 h]; Physical Progress [1190 h]; Formwork [10 Sq m]; TATA Projects Ltd-25 | 11,651.6 |
| RB1-SS-GS160 |  | MEP Coordination | 2d | 2027-06-18 | 2027-06-19 | RB1-SS-GS135 | Physical Progress [1190 h]; TATA Projects Ltd-25 |  |
| RB1-SS-GS175 |  | Concrete | 1d | 2027-06-21 | 2027-06-21 | RB1-SS-GS160, RB1-SS-GS155 | Mason [50 h]; Helper [50 h]; Physical Progress [590 h]; Concrete M40 [318 m3]; TATA Projects Ltd-25 | 3,137,706 |
|  | 6 | **Pour 6** |  | 2027-05-05 | 2027-05-29 |  |  |  |
| RB1-SS-GS145 |  | Deshuttering | 4d | 2027-05-05 | 2027-05-08 | RB1-SS-B01.1045 | Physical Progress [2370 h]; TATA Projects Ltd-25 |  |
| RB1-SS-GS150 |  | Waterproofing | 5d | 2027-05-10 | 2027-05-14 | RB1-SS-GS145 | Waterproofing (Raft/Grade Slab) [1369.12 Sq m]; Waterprrofing Mason [1140.93 h]; Helper [570.47 h]; Physical Progress [12604.2 h]; TATA Projects Ltd-25 | 854,331.63 |
| RB1-SS-GS165 |  | Reinforcement | 10d | 2027-05-15 | 2027-05-26 | RB1-SS-GS150, RB1-SS-GS145 | Barbender [270 h]; Helper [140 h]; Physical Progress [5920 h]; Reinforcement Steel [4 MT1]; TATA Projects Ltd-25 | 386,050 |
| RB1-SS-GS185 |  | Shuttering | 2d | 2027-05-27 | 2027-05-28 | RB1-SS-GS165 | Carpenter [20 h]; Helper [10 h]; Physical Progress [1190 h]; Formwork [10 Sq m]; TATA Projects Ltd-25 | 11,651.6 |
| RB1-SS-GS190 |  | MEP Coordination | 2d | 2027-05-27 | 2027-05-28 | RB1-SS-GS165 | Physical Progress [1190 h]; TATA Projects Ltd-25 |  |
| RB1-SS-GS200 |  | Concrete | 1d | 2027-05-29 | 2027-05-29 | RB1-SS-GS190, RB1-SS-GS185 | Mason [50 h]; Helper [50 h]; Physical Progress [590 h]; Concrete M40 [208 m3]; TATA Projects Ltd-25 | 2,052,336 |
|  | 7 | **Pour 7** |  | 2027-05-19 | 2027-06-14 |  |  |  |
| RB1-SS-GS170 |  | Deshuttering | 4d | 2027-05-19 | 2027-05-24 | RB1-SS-B01.1075 | Physical Progress [2370 h]; TATA Projects Ltd-25 |  |
| RB1-SS-GS180 |  | Waterproofing | 5d | 2027-05-24 | 2027-05-29 | RB1-SS-GS170 | Waterproofing (Raft/Grade Slab) [2586.36 Sq m]; Waterprrofing Mason [2155.3 h]; Helper [1077.65 h]; Physical Progress [12604.2 h]; TATA Projects Ltd-25 | 1,613,886.89 |
| RB1-SS-GS195 |  | Reinforcement | 10d | 2027-05-29 | 2027-06-10 | RB1-SS-GS180, RB1-SS-GS170 | Barbender [470 h]; Helper [240 h]; Physical Progress [5920 h]; Reinforcement Steel [7 MT1]; TATA Projects Ltd-25 | 675,587.5 |
| RB1-SS-GS205 |  | Shuttering | 2d | 2027-06-10 | 2027-06-12 | RB1-SS-GS195 | Carpenter [20 h]; Helper [10 h]; Physical Progress [1190 h]; Formwork [10 Sq m]; TATA Projects Ltd-25 | 11,651.6 |
| RB1-SS-GS210 |  | MEP Coordination | 2d | 2027-06-10 | 2027-06-12 | RB1-SS-GS195 | Physical Progress [1190 h]; TATA Projects Ltd-25 |  |
| RB1-SS-GS215 |  | Concrete | 1d | 2027-06-12 | 2027-06-14 | RB1-SS-GS210, RB1-SS-GS205 | Mason [50 h]; Helper [50 h]; Physical Progress [590 h]; Concrete M40 [392 m3]; TATA Projects Ltd-25 | 3,867,864 |
|  | 3 | **Basement 03** |  | 2026-11-06 | 2027-03-16 |  |  |  |
|  | 1 | **Pour 1** |  | 2026-11-06 | 2027-02-24 |  |  |  |
|  | 6 | **Soil Filling & PCC up to Grade Slab** |  | 2026-12-24 | 2027-01-20 |  |  |  |
| RB1-SS-B03.40 |  | LPS | 5d | 2026-12-24 | 2026-12-30 | RB1-SS-B03.15 | LPS [735054 INR]; Physical Progress [2960 h]; TATA Projects Ltd-25 | 735,054 |
| RB1-SS-B03.90 |  | Soil Filling/Plum Concrete | 10d | 2027-01-06 | 2027-01-16 | RB1-SS-FN170, RB1-SS-FN105, RB1-SS-FN180, RB1-SS-B03.85, RB1-SS-B03.40 | Physical Progress [5920 h]; Plum Concrete [130 m3]; Soil Filling [782 m3]; Sand Filling [580 m3]; TATA Projects Ltd-25 | 2,663,820 |
| RB1-SS-B03.155 |  | Surface dressing | 6d | 2027-01-12 | 2027-01-18 | RB1-SS-B03.90 FF+1d | Helper [180 h]; Physical Progress [3550 h]; Surface Dressing [560 Sq m]; TATA Projects Ltd-25 | 25,200 |
| RB1-SS-B03.185 |  | ATT | 3d | 2027-01-16 | 2027-01-19 | RB1-SS-B03.155 FF+1d | Physical Progress [1780 h]; ATT [619 Sq m]; TATA Projects Ltd-25 | 84,803 |
| RB1-SS-B03.195 |  | PCC | 3d | 2027-01-18 | 2027-01-20 | RB1-SS-B03.185 FF+1d | Mason [30 h]; Helper [30 h]; Physical Progress [1780 h]; Concrete M10 [141 m3]; TATA Projects Ltd-25 | 1,218,099 |

| ID | WBS | Activity | Duration | Start | Finish | Predecessors | Resources | Cost |
| --- | --- | --- | --- | --- | --- | --- | --- | --- |
|  | 1 | **Column, Core Wall, Shear Wall** |  | 2026-12-16 | 2027-01-05 |  |  |  |
| RB1-SS-B03.15 |  | Reinforcement | 7d | 2026-12-16 | 2026-12-23 | RB1-SS-FN170, RB1-SS-FN105, RB1-SS-FN180 | Barbender [3940 h]; Helper [1970 h]; Physical Progress [4150 h]; Reinforcement Steel [59 MT1]; TATA Projects Ltd-25 | 5,694,237.5 |
| RB1-SS-B03.35 |  | LPS | 1d | 2026-12-24 | 2026-12-24 | RB1-SS-B03.15 | LPS [36235 INR]; Physical Progress [590 h]; TATA Projects Ltd-25 | 36,235 |
| RB1-SS-B03.45 |  | Shuttering | 7d | 2026-12-26 | 2027-01-04 | RB1-SS-B03.15, RB1-SS-B03.35 | Carpenter [2280 h]; Helper [1140 h]; Physical Progress [4150 h]; Formwork [1368 Sq m]; TATA Projects Ltd-25 | 1,593,938.88 |
| RB1-SS-B03.85 |  | Concrete | 1d | 2027-01-05 | 2027-01-05 | RB1-SS-B03.45 | Mason [50 h]; Helper [50 h]; Physical Progress [590 h]; Concrete M40 [367 m3]; TATA Projects Ltd-25 | 3,621,189 |
|  | 4 | **Staircase** |  | 2026-11-06 | 2026-12-09 |  |  |  |
| RB1-SS-B03.10 |  | Reinforcement of wall upto Flight 1 | 3d | 2026-11-06 | 2026-11-10 | RB1-SS-FN170 | Barbender [70 h]; Helper [40 h]; Physical Progress [1780 h]; Reinforcement Steel [1 MT1]; TATA Projects Ltd-25 | 96,512.5 |
| RB1-SS-B03.20 |  | Shuttering of wall upto Flight 1 | 3d | 2026-11-10 | 2026-11-13 | RB1-SS-B03.10 | Carpenter [20 h]; Helper [10 h]; Physical Progress [1780 h]; Formwork [10 Sq m]; TATA Projects Ltd-25 | 11,651.6 |
| RB1-SS-B03.25 |  | Casting of wall upto Flight 1 | 1d | 2026-11-13 | 2026-11-14 | RB1-SS-B03.20 | Mason; Helper; Physical Progress [590 h]; Concrete M40 [3 m3]; TATA Projects Ltd-25 | 29,601 |
| RB1-SS-B03.30 |  | Shuttering of Staircase upto Flight 1 | 3d | 2026-11-14 | 2026-11-18 | RB1-SS-B03.25 | Carpenter [20 h]; Helper [10 h]; Physical Progress [1780 h]; Formwork [10 Sq m]; TATA Projects Ltd-25 | 11,651.6 |
| RB1-SS-B03.50 |  | Reinforcement of Staircase upto Flight 1 | 3d | 2026-11-18 | 2026-11-21 | RB1-SS-B03.30 | Barbender [70 h]; Helper [40 h]; Physical Progress [1780 h]; Reinforcement Steel [1 MT1]; TATA Projects Ltd-25 | 96,512.5 |
| RB1-SS-B03.55 |  | MEP coordination upto Flight 1 | 1d | 2026-11-21 | 2026-11-23 | RB1-SS-B03.50 | Physical Progress [590 h]; TATA Projects Ltd-25 |  |
| RB1-SS-B03.65 |  | Casting of Staircase upto Flight 1 | 1d | 2026-11-23 | 2026-11-24 | RB1-SS-B03.55 | Mason; Helper; Physical Progress [590 h]; Concrete M40 [3 m3]; TATA Projects Ltd-25 | 29,601 |
| RB1-SS-B03.80 |  | Reinforcement of wall upto Flight 2 | 3d | 2026-11-24 | 2026-11-27 | RB1-SS-B03.65 | Barbender [70 h]; Helper [40 h]; Physical Progress [1780 h]; Reinforcement Steel [1 MT1]; TATA Projects Ltd-25 | 96,512.5 |
| RB1-SS-B03.105 |  | Shuttering of wall upto Flight 2 | 3d | 2026-11-27 | 2026-12-01 | RB1-SS-B03.80 | Carpenter [20 h]; Helper [10 h]; Physical Progress [1780 h]; Formwork [10 Sq m]; TATA Projects Ltd-25 | 11,651.6 |
| RB1-SS-B03.125 |  | Casting of wall upto Flight 2 | 1d | 2026-12-01 | 2026-12-02 | RB1-SS-B03.105 | Mason; Helper; Physical Progress [590 h]; Concrete M40 [3 m3]; TATA Projects Ltd-25 | 29,601 |
| RB1-SS-B03.150 |  | Shuttering of Staircase upto Flight 2 | 3d | 2026-12-02 | 2026-12-05 | RB1-SS-B03.125 | Carpenter [20 h]; Helper [10 h]; Physical Progress [1780 h]; Formwork [10 Sq m]; TATA Projects Ltd-25 | 11,651.6 |
| RB1-SS-B03.180 |  | Reinforcement of Staircase upto Flight 2 | 3d | 2026-12-05 | 2026-12-09 | RB1-SS-B03.150 | Barbender [70 h]; Helper [40 h]; Physical Progress [1780 h]; Reinforcement Steel [1 MT1]; TATA Projects Ltd-25 | 96,512.5 |
|  | 3 | **Slab** |  | 2027-01-21 | 2027-02-24 |  |  |  |
| RB1-SS-B03.240 |  | Shuttering | 5d | 2027-01-21 | 2027-01-27 | RB1-SS-B03.85, RB1-SS-B03.195 | Carpenter [3150 h]; Helper [1580 h]; Physical Progress [2950 h]; Formwork [1889 Sq m]; TATA Projects Ltd-25 | 2,200,987.24 |
| RB1-SS-B03.285 |  | Reinforcement Bottom Net with chairs | 3d | 2027-01-28 | 2027-01-30 | RB1-SS-B03.240 | Barbender [800 h]; Helper [400 h]; Physical Progress [1780 h]; Reinforcement Steel [12 MT1]; TATA Projects Ltd-25 | 1,158,150 |
| RB1-SS-B03.330 |  | Laying of PT Tendon | 4d | 2027-02-01 | 2027-02-04 | RB1-SS-B03.285 | Physical Progress [2370 h]; TATA Projects Ltd-25 |  |
| RB1-SS-B03.375 |  | Reinforcement Top Net | 3d | 2027-02-05 | 2027-02-08 | RB1-SS-B03.330 | Barbender [800 h]; Helper [400 h]; Physical Progress [1780 h]; Reinforcement Steel [12 MT1]; TATA Projects Ltd-25 | 1,158,150 |
| RB1-SS-B03.405 |  | MEP Coordination | 1d | 2027-02-09 | 2027-02-09 | RB1-SS-B03.375, RB1-SS-B03.180 | Physical Progress [590 h]; TATA Projects Ltd-25 |  |
| RB1-SS-B03.420 |  | Concrete of Slab | 1d | 2027-02-10 | 2027-02-10 | RB1-SS-B03.405 | Mason [50 h]; Helper [50 h]; Physical Progress [590 h]; Concrete M40 [472 m3]; TATA Projects Ltd-25 | 4,657,224 |
| RB1-SS-B03.425 |  | Wait for Strength Gain | 6d | 2027-02-11 | 2027-02-17 | RB1-SS-B03.420 | Physical Progress [3550 h]; TATA Projects Ltd-25 |  |
| RB1-SS-B03.470 |  | PT Work | 6d | 2027-02-18 | 2027-02-24 | RB1-SS-B03.425 | PT [6 MT1]; Helper [100 h]; PT Fitter [100 h]; Physical Progress [5920 h]; TATA Projects Ltd-25 | 1,140,000 |

| ID | WBS | Activity | Duration | Start | Finish | Predecessors | Resources | Cost |
| --- | --- | --- | --- | --- | --- | --- | --- | --- |
|  | 2 | **Pour 2** |  | 2026-11-24 | 2027-02-04 |  |  |  |
|  | 6 | **Soil Filling & PCC up to Grade Slab** |  | 2026-12-04 | 2026-12-30 |  |  |  |
| RB1-SS-B03.140 |  | LPS | 5d | 2026-12-04 | 2026-12-09 | RB1-SS-B03.60 | LPS [1035366 INR]; Physical Progress [2960 h]; TATA Projects Ltd-25 | 1,035,366 |
| RB1-SS-B03.245 |  | Soil Filling/Plum Concrete | 10d | 2026-12-15 | 2026-12-26 | RB1-SS-FN285, RB1-SS-FN210, RB1-SS-B03.220, RB1-SS-B03.140 | Physical Progress [5920 h]; Plum Concrete [184 m3]; Soil Filling [1102 m3]; Sand Filling [816 m3]; TATA Projects Ltd-25 | 3,755,584 |
| RB1-SS-B03.300 |  | Surface dressing | 6d | 2026-12-21 | 2026-12-28 | RB1-SS-B03.245 FF+1d | Helper [180 h]; Physical Progress [3550 h]; Surface Dressing [788 Sq m]; TATA Projects Ltd-25 | 35,460 |
| RB1-SS-B03.360 |  | ATT | 2d | 2026-12-28 | 2026-12-29 | RB1-SS-B03.300 FF+1d | Physical Progress [1190 h]; ATT [872 Sq m]; TATA Projects Ltd-25 | 119,464 |
| RB1-SS-B03.365 |  | PCC | 2d | 2026-12-29 | 2026-12-30 | RB1-SS-B03.360 FF+1d | Mason [20 h]; Helper [20 h]; Physical Progress [1190 h]; Concrete M10 [199 m3]; TATA Projects Ltd-25 | 1,719,161 |
|  | 1 | **Column, Core Wall, Shear Wall** |  | 2026-11-26 | 2026-12-14 |  |  |  |
| RB1-SS-B03.60 |  | Reinforcement | 7d | 2026-11-26 | 2026-12-03 | RB1-SS-FN285, RB1-SS-FN210 | Barbender [5540 h]; Helper [2770 h]; Physical Progress [4150 h]; Reinforcement Steel [83 MT1]; TATA Projects Ltd-25 | 8,010,537.5 |
| RB1-SS-B03.120 |  | LPS | 1d | 2026-12-04 | 2026-12-04 | RB1-SS-B03.60 | LPS [36235 INR]; Physical Progress [590 h]; TATA Projects Ltd-25 | 36,235 |
| RB1-SS-B03.145 |  | Shuttering | 7d | 2026-12-05 | 2026-12-12 | RB1-SS-B03.60, RB1-SS-B03.120 | Carpenter [3220 h]; Helper [1610 h]; Physical Progress [4150 h]; Formwork [1927 Sq m]; TATA Projects Ltd-25 | 2,245,263.32 |
| RB1-SS-B03.220 |  | Concrete | 1d | 2026-12-14 | 2026-12-14 | RB1-SS-B03.145 | Mason [50 h]; Helper [50 h]; Physical Progress [590 h]; Concrete M40 [517 m3]; TATA Projects Ltd-25 | 5,101,239 |
|  | 2 | **Staircase-1** |  | 2026-11-24 | 2026-12-26 |  |  |  |
| RB1-SS-B03.75 |  | Reinforcement of wall upto Flight 1 | 3d | 2026-11-24 | 2026-11-26 | RB1-SS-FN285 | Barbender [70 h]; Helper [40 h]; Physical Progress [1780 h]; Reinforcement Steel [1 MT1]; TATA Projects Ltd-25 | 96,512.5 |
| RB1-SS-B03.100 |  | Shuttering of wall upto Flight 1 | 3d | 2026-11-27 | 2026-11-30 | RB1-SS-B03.75 | Carpenter [20 h]; Helper [10 h]; Physical Progress [1780 h]; Formwork [10 Sq m]; TATA Projects Ltd-25 | 11,651.6 |
| RB1-SS-B03.115 |  | Casting of wall upto Flight 1 | 1d | 2026-12-01 | 2026-12-01 | RB1-SS-B03.100 | Mason; Helper; Physical Progress [590 h]; Concrete M40 [3 m3]; TATA Projects Ltd-25 | 29,601 |
| RB1-SS-B03.135 |  | Shuttering of Staircase upto Flight 1 | 3d | 2026-12-02 | 2026-12-04 | RB1-SS-B03.115 | Carpenter [20 h]; Helper [10 h]; Physical Progress [1780 h]; Formwork [10 Sq m]; TATA Projects Ltd-25 | 11,651.6 |
| RB1-SS-B03.175 |  | Reinforcement of Staircase upto Flight 1 | 3d | 2026-12-05 | 2026-12-08 | RB1-SS-B03.135 | Barbender [70 h]; Helper [40 h]; Physical Progress [1780 h]; Reinforcement Steel [1 MT1]; TATA Projects Ltd-25 | 96,512.5 |
| RB1-SS-B03.205 |  | MEP coordination upto Flight 1 | 1d | 2026-12-09 | 2026-12-09 | RB1-SS-B03.175 | Physical Progress [590 h]; TATA Projects Ltd-25 |  |
| RB1-SS-B03.215 |  | Casting of Staircase upto Flight 1 | 1d | 2026-12-10 | 2026-12-10 | RB1-SS-B03.205 | Mason; Helper; Physical Progress [590 h]; Concrete M40 [3 m3]; TATA Projects Ltd-25 | 29,601 |
| RB1-SS-B03.230 |  | Reinforcement of wall upto Flight 2 | 3d | 2026-12-11 | 2026-12-14 | RB1-SS-B03.215 | Barbender [70 h]; Helper [40 h]; Physical Progress [1780 h]; Reinforcement Steel [1 MT1]; TATA Projects Ltd-25 | 96,512.5 |
| RB1-SS-B03.275 |  | Shuttering of wall upto Flight 2 | 3d | 2026-12-15 | 2026-12-17 | RB1-SS-B03.230 | Carpenter [20 h]; Helper [10 h]; Physical Progress [1780 h]; Formwork [10 Sq m]; TATA Projects Ltd-25 | 11,651.6 |
| RB1-SS-B03.295 |  | Casting of wall upto Flight 2 | 1d | 2026-12-18 | 2026-12-18 | RB1-SS-B03.275 | Mason; Helper; Physical Progress [590 h]; Concrete M40 [3 m3]; TATA Projects Ltd-25 | 29,601 |
| RB1-SS-B03.310 |  | Shuttering of Staircase upto Flight 2 | 3d | 2026-12-19 | 2026-12-22 | RB1-SS-B03.295 | Carpenter [20 h]; Helper [10 h]; Physical Progress [1780 h]; Formwork [10 Sq m]; TATA Projects Ltd-25 | 11,651.6 |
| RB1-SS-B03.355 |  | Reinforcement of Staircase upto Flight 2 | 3d | 2026-12-23 | 2026-12-26 | RB1-SS-B03.310 | Barbender [70 h]; Helper [40 h]; Physical Progress [1780 h]; Reinforcement Steel [1 MT1]; TATA Projects Ltd-25 | 96,512.5 |

| ID | WBS | Activity | Duration | Start | Finish | Predecessors | Resources | Cost |
| --- | --- | --- | --- | --- | --- | --- | --- | --- |
|  | 4 | **Staircase-2** |  | 2026-11-24 | 2026-12-26 |  |  |  |
| RB1-SS-B03.70 |  | Reinforcement of wall upto Flight 1 | 3d | 2026-11-24 | 2026-11-26 | RB1-SS-FN285 | Barbender [70 h]; Helper [40 h]; Physical Progress [1780 h]; Reinforcement Steel [1 MT1]; TATA Projects Ltd-25 | 96,512.5 |
| RB1-SS-B03.95 |  | Shuttering of wall upto Flight 1 | 3d | 2026-11-27 | 2026-11-30 | RB1-SS-B03.70 | Carpenter [20 h]; Helper [10 h]; Physical Progress [1780 h]; Formwork [10 Sq m]; TATA Projects Ltd-25 | 11,651.6 |
| RB1-SS-B03.110 |  | Casting of wall upto Flight 1 | 1d | 2026-12-01 | 2026-12-01 | RB1-SS-B03.95 | Mason; Helper; Physical Progress [590 h]; Concrete M40 [3 m3]; TATA Projects Ltd-25 | 29,601 |
| RB1-SS-B03.130 |  | Shuttering of Staircase upto Flight 1 | 3d | 2026-12-02 | 2026-12-04 | RB1-SS-B03.110 | Carpenter [20 h]; Helper [10 h]; Physical Progress [1780 h]; Formwork [10 Sq m]; TATA Projects Ltd-25 | 11,651.6 |
| RB1-SS-B03.170 |  | Reinforcement of Staircase upto Flight 1 | 3d | 2026-12-05 | 2026-12-08 | RB1-SS-B03.130 | Barbender [70 h]; Helper [40 h]; Physical Progress [1780 h]; Reinforcement Steel [1 MT1]; TATA Projects Ltd-25 | 96,512.5 |
| RB1-SS-B03.200 |  | MEP coordination upto Flight 1 | 1d | 2026-12-09 | 2026-12-09 | RB1-SS-B03.170 | Physical Progress [590 h]; TATA Projects Ltd-25 |  |
| RB1-SS-B03.210 |  | Casting of Staircase upto Flight 1 | 1d | 2026-12-10 | 2026-12-10 | RB1-SS-B03.200 | Mason; Helper; Physical Progress [590 h]; Concrete M40 [3 m3]; TATA Projects Ltd-25 | 29,601 |
| RB1-SS-B03.225 |  | Reinforcement of wall upto Flight 2 | 3d | 2026-12-11 | 2026-12-14 | RB1-SS-B03.210 | Barbender [70 h]; Helper [40 h]; Physical Progress [1780 h]; Reinforcement Steel [1 MT1]; TATA Projects Ltd-25 | 96,512.5 |
| RB1-SS-B03.270 |  | Shuttering of wall upto Flight 2 | 3d | 2026-12-15 | 2026-12-17 | RB1-SS-B03.225 | Carpenter [20 h]; Helper [10 h]; Physical Progress [1780 h]; Formwork [10 Sq m]; TATA Projects Ltd-25 | 11,651.6 |
| RB1-SS-B03.290 |  | Casting of wall upto Flight 2 | 1d | 2026-12-18 | 2026-12-18 | RB1-SS-B03.270 | Mason; Helper; Physical Progress [590 h]; Concrete M40 [3 m3]; TATA Projects Ltd-25 | 29,601 |
| RB1-SS-B03.305 |  | Shuttering of Staircase upto Flight 2 | 3d | 2026-12-19 | 2026-12-22 | RB1-SS-B03.290 | Carpenter [20 h]; Helper [10 h]; Physical Progress [1780 h]; Formwork [10 Sq m]; TATA Projects Ltd-25 | 11,651.6 |
| RB1-SS-B03.350 |  | Reinforcement of Staircase upto Flight 2 | 3d | 2026-12-23 | 2026-12-26 | RB1-SS-B03.305 | Barbender [70 h]; Helper [40 h]; Physical Progress [1780 h]; Reinforcement Steel [1 MT1]; TATA Projects Ltd-25 | 96,512.5 |
|  | 3 | **Slab** |  | 2026-12-31 | 2027-02-04 |  |  |  |
| RB1-SS-B03.380 |  | Shuttering | 5d | 2026-12-31 | 2027-01-06 | RB1-SS-B03.220, RB1-SS-B03.365 | Carpenter [4440 h]; Helper [2220 h]; Physical Progress [2950 h]; Formwork [2661 Sq m]; TATA Projects Ltd-25 | 3,100,490.76 |
| RB1-SS-B03.430 |  | Reinforcement Bottom Net with chairs | 3d | 2027-01-07 | 2027-01-09 | RB1-SS-B03.380 | Barbender [1070 h]; Helper [540 h]; Physical Progress [1780 h]; Reinforcement Steel [16 MT1]; TATA Projects Ltd-25 | 1,544,200 |
| RB1-SS-B03.455 |  | Laying of PT Tendon | 4d | 2027-01-11 | 2027-01-14 | RB1-SS-B03.430 | Physical Progress [2370 h]; TATA Projects Ltd-25 |  |
| RB1-SS-B03.480 |  | Reinforcement Top Net | 3d | 2027-01-15 | 2027-01-18 | RB1-SS-B03.455 | Barbender [1070 h]; Helper [540 h]; Physical Progress [1780 h]; Reinforcement Steel [16 MT1]; TATA Projects Ltd-25 | 1,544,200 |
| RB1-SS-B03.505 |  | MEP Coordination | 1d | 2027-01-19 | 2027-01-19 | RB1-SS-B03.480, RB1-SS-B03.350, RB1-SS-B03.355 | Physical Progress [590 h]; TATA Projects Ltd-25 |  |
| RB1-SS-B03.520 |  | Concrete of Slab | 1d | 2027-01-20 | 2027-01-20 | RB1-SS-B03.505 | Mason [50 h]; Helper [50 h]; Physical Progress [590 h]; Concrete M40 [665 m3]; TATA Projects Ltd-25 | 6,561,555 |
| RB1-SS-B03.525 |  | Wait for Strength Gain | 6d | 2027-01-21 | 2027-01-28 | RB1-SS-B03.520 | Physical Progress [3550 h]; TATA Projects Ltd-25 |  |
| RB1-SS-B03.570 |  | PT Work | 6d | 2027-01-29 | 2027-02-04 | RB1-SS-B03.525 | PT [9 MT1]; Helper [100 h]; PT Fitter [100 h]; Physical Progress [5920 h]; TATA Projects Ltd-25 | 1,710,000 |
|  | 3 | **Pour 3** |  | 2026-11-21 | 2027-02-22 |  |  |  |
|  | 6 | **Soil Filling & PCC up to Grade Slab** |  | 2026-12-22 | 2027-01-18 |  |  |  |
| RB1-SS-B03.260 |  | LPS | 5d | 2026-12-22 | 2026-12-28 | RB1-SS-B03.160 | LPS [998842 INR]; Physical Progress [2960 h]; TATA Projects Ltd-25 | 998,842 |
| RB1-SS-B03.345 |  | Soil Filling/Plum Concrete | 10d | 2027-01-04 | 2027-01-14 | RB1-SS-FN345, RB1-SS-FN315, RB1-SS-B03.335, RB1-SS-B03.260 | Physical Progress [5920 h]; Plum Concrete [177 m3]; Soil Filling [1063 m3]; Sand Filling [788 m3]; TATA Projects Ltd-25 | 3,621,812 |
| RB1-SS-B03.395 |  | Surface dressing | 6d | 2027-01-09 | 2027-01-15 | RB1-SS-B03.345 FF+1d | Helper [180 h]; Physical Progress [3550 h]; Surface Dressing [760 Sq m]; TATA Projects Ltd-25 | 34,200 |
| RB1-SS-B03.435 |  | ATT | 3d | 2027-01-14 | 2027-01-16 | RB1-SS-B03.395 FF+1d | Physical Progress [1780 h]; ATT [842 Sq m]; TATA Projects Ltd-25 | 115,354 |
| RB1-SS-B03.450 |  | PCC | 3d | 2027-01-15 | 2027-01-18 | RB1-SS-B03.435 FF+1d | Mason [30 h]; Helper [30 h]; Physical Progress [1780 h]; Concrete M10 [192 m3]; TATA Projects Ltd-25 | 1,658,688 |

| ID | WBS | Activity | Duration | Start | Finish | Predecessors | Resources | Cost |
| --- | --- | --- | --- | --- | --- | --- | --- | --- |
|  | 1 | **Column, Core Wall, Shear Wall** |  | 2026-12-14 | 2027-01-02 |  |  |  |
| RB1-SS-B03.160 |  | Reinforcement | 7d | 2026-12-14 | 2026-12-21 | RB1-SS-FN345, RB1-SS-FN315 | Barbender [5340 h]; Helper [2670 h]; Physical Progress [4150 h]; Reinforcement Steel [80 MT1]; TATA Projects Ltd-25 | 7,721,000 |
| RB1-SS-B03.250 |  | LPS | 1d | 2026-12-22 | 2026-12-22 | RB1-SS-B03.160 | LPS [36235 INR]; Physical Progress [590 h]; TATA Projects Ltd-25 | 36,235 |
| RB1-SS-B03.265 |  | Shuttering | 7d | 2026-12-23 | 2026-12-31 | RB1-SS-B03.160, RB1-SS-B03.250 | Carpenter [3100 h]; Helper [1550 h]; Physical Progress [4150 h]; Formwork [1859 Sq m]; TATA Projects Ltd-25 | 2,166,032.44 |
| RB1-SS-B03.335 |  | Concrete | 1d | 2027-01-02 | 2027-01-02 | RB1-SS-B03.265 | Mason [50 h]; Helper [50 h]; Physical Progress [590 h]; Concrete M40 [499 m3]; TATA Projects Ltd-25 | 4,923,633 |
|  | 4 | **Staircase** |  | 2026-11-21 | 2026-12-23 |  |  |  |
| RB1-SS-B03.165 |  | Reinforcement of wall upto Flight 1 | 3d | 2026-11-21 | 2026-11-24 | RB1-SS-FN345 | Barbender [70 h]; Helper [40 h]; Physical Progress [1780 h]; Reinforcement Steel [1 MT1]; TATA Projects Ltd-25 | 96,512.5 |
| RB1-SS-B03.190 |  | Shuttering of wall upto Flight 1 | 3d | 2026-11-25 | 2026-11-27 | RB1-SS-B03.165 | Carpenter [20 h]; Helper [10 h]; Physical Progress [1780 h]; Formwork [10 Sq m]; TATA Projects Ltd-25 | 11,651.6 |
| RB1-SS-B03.235 |  | Casting of wall upto Flight 1 | 1d | 2026-11-28 | 2026-11-28 | RB1-SS-B03.190 | Mason; Helper; Physical Progress [590 h]; Concrete M40 [3 m3]; TATA Projects Ltd-25 | 29,601 |
| RB1-SS-B03.255 |  | Shuttering of Staircase upto Flight 1 | 3d | 2026-11-30 | 2026-12-02 | RB1-SS-B03.235 | Carpenter [20 h]; Helper [10 h]; Physical Progress [1780 h]; Formwork [10 Sq m]; TATA Projects Ltd-25 | 11,651.6 |
| RB1-SS-B03.280 |  | Reinforcement of Staircase upto Flight 1 | 3d | 2026-12-03 | 2026-12-05 | RB1-SS-B03.255 | Barbender [70 h]; Helper [40 h]; Physical Progress [1780 h]; Reinforcement Steel [1 MT1]; TATA Projects Ltd-25 | 96,512.5 |
| RB1-SS-B03.315 |  | MEP coordination upto Flight 1 | 1d | 2026-12-07 | 2026-12-07 | RB1-SS-B03.280 | Physical Progress [590 h]; TATA Projects Ltd-25 |  |
| RB1-SS-B03.325 |  | Casting of Staircase upto Flight 1 | 1d | 2026-12-08 | 2026-12-08 | RB1-SS-B03.315 | Mason; Helper; Physical Progress [590 h]; Concrete M40 [3 m3]; TATA Projects Ltd-25 | 29,601 |
| RB1-SS-B03.340 |  | Reinforcement of wall upto Flight 2 | 3d | 2026-12-09 | 2026-12-11 | RB1-SS-B03.325 | Barbender [70 h]; Helper [40 h]; Physical Progress [1780 h]; Reinforcement Steel [1 MT1]; TATA Projects Ltd-25 | 96,512.5 |
| RB1-SS-B03.370 |  | Shuttering of wall upto Flight 2 | 3d | 2026-12-12 | 2026-12-15 | RB1-SS-B03.340 | Carpenter [20 h]; Helper [10 h]; Physical Progress [1780 h]; Formwork [10 Sq m]; TATA Projects Ltd-25 | 11,651.6 |
| RB1-SS-B03.390 |  | Casting of wall upto Flight 2 | 1d | 2026-12-16 | 2026-12-16 | RB1-SS-B03.370 | Mason; Helper; Physical Progress [590 h]; Concrete M40 [3 m3]; TATA Projects Ltd-25 | 29,601 |
| RB1-SS-B03.415 |  | Shuttering of Staircase upto Flight 2 | 3d | 2026-12-17 | 2026-12-19 | RB1-SS-B03.390 | Carpenter [20 h]; Helper [10 h]; Physical Progress [1780 h]; Formwork [10 Sq m]; TATA Projects Ltd-25 | 11,651.6 |
| RB1-SS-B03.445 |  | Reinforcement of Staircase upto Flight 2 | 3d | 2026-12-21 | 2026-12-23 | RB1-SS-B03.415 | Barbender [70 h]; Helper [40 h]; Physical Progress [1780 h]; Reinforcement Steel [1 MT1]; TATA Projects Ltd-25 | 96,512.5 |
|  | 3 | **Slab** |  | 2027-01-19 | 2027-02-22 |  |  |  |
| RB1-SS-B03.460 |  | Shuttering | 5d | 2027-01-19 | 2027-01-23 | RB1-SS-B03.335, RB1-SS-B03.450 | Carpenter [4280 h]; Helper [2140 h]; Physical Progress [2960 h]; Formwork [2567 Sq m]; TATA Projects Ltd-25 | 2,990,965.72 |
| RB1-SS-B03.500 |  | Reinforcement Bottom Net with chairs | 3d | 2027-01-25 | 2027-01-28 | RB1-SS-B03.460 | Barbender [1070 h]; Helper [540 h]; Physical Progress [1780 h]; Reinforcement Steel [16 MT1]; TATA Projects Ltd-25 | 1,544,200 |
| RB1-SS-B03.530 |  | Laying of PT Tendon | 4d | 2027-01-29 | 2027-02-02 | RB1-SS-B03.500 | Physical Progress [2370 h]; TATA Projects Ltd-25 |  |
| RB1-SS-B03.550 |  | Reinforcement Top Net | 3d | 2027-02-03 | 2027-02-05 | RB1-SS-B03.530 | Barbender [1070 h]; Helper [540 h]; Physical Progress [1780 h]; Reinforcement Steel [16 MT1]; TATA Projects Ltd-25 | 1,544,200 |
| RB1-SS-B03.585 |  | MEP Coordination | 1d | 2027-02-06 | 2027-02-06 | RB1-SS-B03.550, RB1-SS-B03.445 | Physical Progress [590 h]; TATA Projects Ltd-25 |  |
| RB1-SS-B03.590 |  | Concrete of Slab | 1d | 2027-02-08 | 2027-02-08 | RB1-SS-B03.585 | Mason [50 h]; Helper [50 h]; Physical Progress [590 h]; Concrete M40 [642 m3]; TATA Projects Ltd-25 | 6,334,614 |
| RB1-SS-B03.600 |  | Wait for Strength Gain | 6d | 2027-02-09 | 2027-02-15 | RB1-SS-B03.590 | Physical Progress [3550 h]; TATA Projects Ltd-25 |  |
| RB1-SS-B03.640 |  | PT Work | 6d | 2027-02-16 | 2027-02-22 | RB1-SS-B03.600 | PT [9 MT1]; Helper [100 h]; PT Fitter [100 h]; Physical Progress [5920 h]; TATA Projects Ltd-25 | 1,710,000 |

| ID | WBS | Activity | Duration | Start | Finish | Predecessors | Resources | Cost |
| --- | --- | --- | --- | --- | --- | --- | --- | --- |
|  | 4 | **Pour 4** |  | 2026-12-14 | 2027-02-22 |  |  |  |
|  | 6 | **Soil Filling & PCC up to Grade Slab** |  | 2026-12-22 | 2027-01-18 |  |  |  |
| RB1-SS-B03.400 |  | LPS | 5d | 2026-12-22 | 2026-12-28 | RB1-SS-B03.320 | LPS [884703 INR]; Physical Progress [2960 h]; TATA Projects Ltd-25 | 884,703 |
| RB1-SS-B03.475 |  | Soil Filling/Plum Concrete | 10d | 2027-01-04 | 2027-01-14 | RB1-SS-FN455, RB1-SS-FN395, RB1-SS-B03.465, RB1-SS-B03.400 | Physical Progress [5920 h]; Plum Concrete [157 m3]; Soil Filling [942 m3]; Sand Filling [698 m3]; TATA Projects Ltd-25 | 3,209,702 |
| RB1-SS-B03.515 |  | Surface dressing | 6d | 2027-01-09 | 2027-01-15 | RB1-SS-B03.475 FF+1d | Helper [180 h]; Physical Progress [3550 h]; Surface Dressing [674 Sq m]; TATA Projects Ltd-25 | 30,330 |
| RB1-SS-B03.535 |  | ATT | 3d | 2027-01-14 | 2027-01-16 | RB1-SS-B03.515 FF+1d | Physical Progress [1780 h]; ATT [745 Sq m]; TATA Projects Ltd-25 | 102,065 |
| RB1-SS-B03.540 |  | PCC | 3d | 2027-01-15 | 2027-01-18 | RB1-SS-B03.535 FF+1d | Mason [30 h]; Helper [30 h]; Physical Progress [1780 h]; Concrete M10 [170 m3]; TATA Projects Ltd-25 | 1,468,630 |
|  | 1 | **Column, Core Wall, Shear Wall** |  | 2026-12-14 | 2027-01-02 |  |  |  |
| RB1-SS-B03.320 |  | Reinforcement | 7d | 2026-12-14 | 2026-12-21 | RB1-SS-FN455, RB1-SS-FN395 | Barbender [4740 h]; Helper [2370 h]; Physical Progress [4150 h]; Reinforcement Steel [71 MT1]; TATA Projects Ltd-25 | 6,852,387.5 |
| RB1-SS-B03.385 |  | LPS | 1d | 2026-12-22 | 2026-12-22 | RB1-SS-B03.320 | LPS [36235 INR]; Physical Progress [590 h]; TATA Projects Ltd-25 | 36,235 |
| RB1-SS-B03.410 |  | Shuttering | 7d | 2026-12-23 | 2026-12-31 | RB1-SS-B03.320, RB1-SS-B03.385 | Carpenter [2750 h]; Helper [1380 h]; Physical Progress [4150 h]; Formwork [1646 Sq m]; TATA Projects Ltd-25 | 1,917,853.36 |
| RB1-SS-B03.465 |  | Concrete | 1d | 2027-01-02 | 2027-01-02 | RB1-SS-B03.410 | Mason [50 h]; Helper [50 h]; Physical Progress [590 h]; Concrete M40 [442 m3]; TATA Projects Ltd-25 | 4,361,214 |
|  | 3 | **Slab** |  | 2027-01-19 | 2027-02-22 |  |  |  |
| RB1-SS-B03.575 |  | Shuttering | 5d | 2027-01-19 | 2027-01-23 | RB1-SS-B03.465, RB1-SS-B03.540 | Carpenter [3790 h]; Helper [1900 h]; Physical Progress [2960 h]; Formwork [2273 Sq m]; TATA Projects Ltd-25 | 2,648,408.68 |
| RB1-SS-B03.610 |  | Reinforcement Bottom Net with chairs | 3d | 2027-01-25 | 2027-01-28 | RB1-SS-B03.575 | Barbender [940 h]; Helper [470 h]; Physical Progress [1780 h]; Reinforcement Steel [14 MT1]; TATA Projects Ltd-25 | 1,351,175 |
| RB1-SS-B03.625 |  | Laying of PT Tendon | 4d | 2027-01-29 | 2027-02-02 | RB1-SS-B03.610 | Physical Progress [2370 h]; TATA Projects Ltd-25 |  |
| RB1-SS-B03.665 |  | Reinforcement Top Net | 3d | 2027-02-03 | 2027-02-05 | RB1-SS-B03.625 | Barbender [940 h]; Helper [470 h]; Physical Progress [1780 h]; Reinforcement Steel [14 MT1]; TATA Projects Ltd-25 | 1,351,175 |
| RB1-SS-B03.675 |  | MEP Coordination | 1d | 2027-02-06 | 2027-02-06 | RB1-SS-B03.665 | Physical Progress [590 h]; TATA Projects Ltd-25 |  |
| RB1-SS-B03.680 |  | Concrete of Slab | 1d | 2027-02-08 | 2027-02-08 | RB1-SS-B03.675 | Mason [50 h]; Helper [50 h]; Physical Progress [590 h]; Concrete M40 [568 m3]; TATA Projects Ltd-25 | 5,604,456 |
| RB1-SS-B03.690 |  | Wait for Strength Gain | 6d | 2027-02-09 | 2027-02-15 | RB1-SS-B03.680 | Physical Progress [3550 h]; TATA Projects Ltd-25 |  |
| RB1-SS-B03.725 |  | PT Work | 6d | 2027-02-16 | 2027-02-22 | RB1-SS-B03.690 | PT [8 MT1]; Helper [100 h]; PT Fitter [100 h]; Physical Progress [5920 h]; TATA Projects Ltd-25 | 1,520,000 |
|  | 5 | **Pour 5** |  | 2027-01-06 | 2027-03-16 |  |  |  |
|  | 6 | **Soil Filling & PCC up to Grade Slab** |  | 2027-01-14 | 2027-02-09 |  |  |  |
| RB1-SS-B03.490 |  | LPS | 5d | 2027-01-14 | 2027-01-19 | RB1-SS-B03.440 | LPS [986160 INR]; Physical Progress [2960 h]; TATA Projects Ltd-25 | 986,160 |
| RB1-SS-B03.555 |  | Soil Filling/Plum Concrete | 10d | 2027-01-25 | 2027-02-05 | RB1-SS-FN570, RB1-SS-FN490, RB1-SS-B03.545, RB1-SS-B03.490 | Physical Progress [5920 h]; Plum Concrete [175 m3]; Soil Filling [1050 m3]; Sand Filling [778 m3]; TATA Projects Ltd-25 | 3,577,622 |
| RB1-SS-B03.605 |  | Surface dressing | 6d | 2027-02-01 | 2027-02-06 | RB1-SS-B03.555 FF+1d | Helper [180 h]; Physical Progress [3550 h]; Surface Dressing [751 Sq m]; TATA Projects Ltd-25 | 33,795 |
| RB1-SS-B03.615 |  | ATT | 3d | 2027-02-05 | 2027-02-08 | RB1-SS-B03.605 FF+1d | Physical Progress [1780 h]; ATT [831 Sq m]; TATA Projects Ltd-25 | 113,847 |
| RB1-SS-B03.630 |  | PCC | 3d | 2027-02-06 | 2027-02-09 | RB1-SS-B03.615 FF+1d | Mason [30 h]; Helper [30 h]; Physical Progress [1780 h]; Concrete M10 [189 m3]; TATA Projects Ltd-25 | 1,632,771 |

| ID | WBS | Activity | Duration | Start | Finish | Predecessors | Resources | Cost |
| --- | --- | --- | --- | --- | --- | --- | --- | --- |
|  | 1 | **Column, Core Wall, Shear Wall** |  | 2027-01-06 | 2027-01-23 |  |  |  |
| RB1-SS-B03.440 |  | Reinforcement | 7d | 2027-01-06 | 2027-01-13 | RB1-SS-FN570, RB1-SS-FN490 | Barbender [5270 h]; Helper [2640 h]; Physical Progress [4150 h]; Reinforcement Steel [79 MT1]; TATA Projects Ltd-25 | 7,624,487.5 |
| RB1-SS-B03.485 |  | LPS | 1d | 2027-01-14 | 2027-01-14 | RB1-SS-B03.440 | LPS [36235 INR]; Physical Progress [590 h]; TATA Projects Ltd-25 | 36,235 |
| RB1-SS-B03.495 |  | Shuttering | 7d | 2027-01-15 | 2027-01-22 | RB1-SS-B03.440, RB1-SS-B03.485 | Carpenter [3060 h]; Helper [1530 h]; Physical Progress [4150 h]; Formwork [1835 Sq m]; TATA Projects Ltd-25 | 2,138,068.6 |
| RB1-SS-B03.545 |  | Concrete | 1d | 2027-01-23 | 2027-01-23 | RB1-SS-B03.495 | Mason [50 h]; Helper [50 h]; Physical Progress [590 h]; Concrete M40 [492 m3]; TATA Projects Ltd-25 | 4,854,564 |
|  | 3 | **Slab** |  | 2027-02-10 | 2027-03-16 |  |  |  |
| RB1-SS-B03.660 |  | Shuttering | 5d | 2027-02-10 | 2027-02-15 | RB1-SS-B03.545, RB1-SS-B03.630 | Carpenter [4230 h]; Helper [2120 h]; Physical Progress [2960 h]; Formwork [2534 Sq m]; TATA Projects Ltd-25 | 2,952,515.44 |
| RB1-SS-B03.685 |  | Reinforcement Bottom Net with chairs | 3d | 2027-02-16 | 2027-02-18 | RB1-SS-B03.660 | Barbender [1070 h]; Helper [540 h]; Physical Progress [1780 h]; Reinforcement Steel [16 MT1]; TATA Projects Ltd-25 | 1,544,200 |
| RB1-SS-B03.715 |  | Laying of PT Tendon | 4d | 2027-02-19 | 2027-02-23 | RB1-SS-B03.685 | Physical Progress [2370 h]; TATA Projects Ltd-25 |  |
| RB1-SS-B03.730 |  | Reinforcement Top Net | 3d | 2027-02-24 | 2027-02-26 | RB1-SS-B03.715 | Barbender [1070 h]; Helper [540 h]; Physical Progress [1780 h]; Reinforcement Steel [16 MT1]; TATA Projects Ltd-25 | 1,544,200 |
| RB1-SS-B03.740 |  | MEP Coordination | 1d | 2027-02-27 | 2027-02-27 | RB1-SS-B03.730 | Physical Progress [590 h]; TATA Projects Ltd-25 |  |
| RB1-SS-B03.750 |  | Concrete of Slab | 1d | 2027-03-01 | 2027-03-01 | RB1-SS-B03.740 | Mason [50 h]; Helper [50 h]; Physical Progress [590 h]; Concrete M40 [634 m3]; TATA Projects Ltd-25 | 6,255,678 |
| RB1-SS-B03.760 |  | Wait for Strength Gain | 6d | 2027-03-02 | 2027-03-08 | RB1-SS-B03.750 | Physical Progress [3550 h]; TATA Projects Ltd-25 |  |
| RB1-SS-B03.785 |  | PT Work | 6d | 2027-03-09 | 2027-03-16 | RB1-SS-B03.760 | PT [9 MT1]; Helper [100 h]; PT Fitter [100 h]; Physical Progress [5920 h]; TATA Projects Ltd-25 | 1,710,000 |
|  | 6 | **Pour 6** |  | 2026-12-12 | 2027-02-20 |  |  |  |
|  | 6 | **Soil Filling & PCC up to Grade Slab** |  | 2026-12-21 | 2027-01-16 |  |  |  |
| RB1-SS-B03.565 |  | LPS | 5d | 2026-12-21 | 2026-12-26 | RB1-SS-B03.510 | LPS [644758 INR]; Physical Progress [2960 h]; TATA Projects Ltd-25 | 644,758 |
| RB1-SS-B03.635 |  | Soil Filling/Plum Concrete | 10d | 2027-01-02 | 2027-01-13 | RB1-SS-FN670, RB1-SS-FN600, RB1-SS-B03.620, RB1-SS-B03.565 | Physical Progress [5920 h]; Plum Concrete [114 m3]; Soil Filling [686 m3]; Sand Filling [508 m3]; TATA Projects Ltd-25 | 2,334,292 |
| RB1-SS-B03.670 |  | Surface dressing | 6d | 2027-01-08 | 2027-01-14 | RB1-SS-B03.635 FF+1d | Helper [180 h]; Physical Progress [3550 h]; Surface Dressing [491 Sq m]; TATA Projects Ltd-25 | 22,095 |
| RB1-SS-B03.695 |  | ATT | 3d | 2027-01-13 | 2027-01-15 | RB1-SS-B03.670 FF+1d | Physical Progress [1780 h]; ATT [543 Sq m]; TATA Projects Ltd-25 | 74,391 |
| RB1-SS-B03.705 |  | PCC | 3d | 2027-01-14 | 2027-01-16 | RB1-SS-B03.695 FF+1d | Mason [30 h]; Helper [30 h]; Physical Progress [1780 h]; Concrete M10 [124 m3]; TATA Projects Ltd-25 | 1,071,236 |
|  | 1 | **Column, Core Wall, Shear Wall** |  | 2026-12-12 | 2026-12-31 |  |  |  |
| RB1-SS-B03.510 |  | Reinforcement | 7d | 2026-12-12 | 2026-12-19 | RB1-SS-FN670, RB1-SS-FN600 | Barbender [3470 h]; Helper [1740 h]; Physical Progress [4150 h]; Reinforcement Steel [52 MT1]; TATA Projects Ltd-25 | 5,018,650 |
| RB1-SS-B03.560 |  | LPS | 1d | 2026-12-21 | 2026-12-21 | RB1-SS-B03.510 | LPS [36235 INR]; Physical Progress [590 h]; TATA Projects Ltd-25 | 36,235 |
| RB1-SS-B03.580 |  | Shuttering | 7d | 2026-12-22 | 2026-12-30 | RB1-SS-B03.510, RB1-SS-B03.560 | Carpenter [2000 h]; Helper [1000 h]; Physical Progress [4150 h]; Formwork [1200 Sq m]; TATA Projects Ltd-25 | 1,398,192 |
| RB1-SS-B03.620 |  | Concrete | 1d | 2026-12-31 | 2026-12-31 | RB1-SS-B03.580 | Mason [50 h]; Helper [50 h]; Physical Progress [590 h]; Concrete M40 [322 m3]; TATA Projects Ltd-25 | 3,177,174 |

| ID | WBS | Activity | Duration | Start | Finish | Predecessors | Resources | Cost |
| --- | --- | --- | --- | --- | --- | --- | --- | --- |
|  | 3 | **Slab** |  | 2027-01-18 | 2027-02-20 |  |  |  |
| RB1-SS-B03.720 |  | Shuttering | 5d | 2027-01-18 | 2027-01-22 | RB1-SS-B03.620, RB1-SS-B03.705 | Carpenter [2770 h]; Helper [1390 h]; Physical Progress [2960 h]; Formwork [1657 Sq m]; TATA Projects Ltd-25 | 1,930,670.12 |
| RB1-SS-B03.745 |  | Reinforcement Bottom Net with chairs | 3d | 2027-01-23 | 2027-01-27 | RB1-SS-B03.720 | Barbender [670 h]; Helper [340 h]; Physical Progress [1780 h]; Reinforcement Steel [10 MT1]; TATA Projects Ltd-25 | 965,125 |
| RB1-SS-B03.770 |  | Laying of PT Tendon | 4d | 2027-01-28 | 2027-02-01 | RB1-SS-B03.745 | Physical Progress [2370 h]; TATA Projects Ltd-25 |  |
| RB1-SS-B03.780 |  | Reinforcement Top Net | 3d | 2027-02-02 | 2027-02-04 | RB1-SS-B03.770 | Barbender [670 h]; Helper [340 h]; Physical Progress [1780 h]; Reinforcement Steel [10 MT1]; TATA Projects Ltd-25 | 965,125 |
| RB1-SS-B03.790 |  | MEP Coordination | 1d | 2027-02-05 | 2027-02-05 | RB1-SS-B03.780 | Physical Progress [590 h]; TATA Projects Ltd-25 |  |
| RB1-SS-B03.800 |  | Concrete of Slab | 1d | 2027-02-06 | 2027-02-06 | RB1-SS-B03.790 | Mason [50 h]; Helper [50 h]; Physical Progress [590 h]; Concrete M40 [414 m3]; TATA Projects Ltd-25 | 4,084,938 |
| RB1-SS-B03.805 |  | Wait for Strength Gain | 6d | 2027-02-08 | 2027-02-13 | RB1-SS-B03.800 | Physical Progress [3550 h]; TATA Projects Ltd-25 |  |
| RB1-SS-B03.820 |  | PT Work | 6d | 2027-02-15 | 2027-02-20 | RB1-SS-B03.805 | PT [6 MT1]; Helper [100 h]; PT Fitter [100 h]; Physical Progress [5920 h]; TATA Projects Ltd-25 | 1,140,000 |
|  | 7 | **Pour 7** |  | 2026-12-28 | 2027-03-08 |  |  |  |
|  | 6 | **Soil Filling & PCC up to Grade Slab** |  | 2027-01-06 | 2027-02-02 |  |  |  |
| RB1-SS-B03.650 |  | LPS | 5d | 2027-01-06 | 2027-01-12 | RB1-SS-B03.595 | LPS [1217989 INR]; Physical Progress [2960 h]; TATA Projects Ltd-25 | 1,217,989 |
| RB1-SS-B03.710 |  | Soil Filling/Plum Concrete | 10d | 2027-01-16 | 2027-01-29 | RB1-SS-FN690, RB1-SS-FN675, RB1-SS-FN665, RB1-SS-B03.700, RB1-SS-B03.650 | Physical Progress [5920 h]; Plum Concrete [216 m3]; Soil Filling [1297 m3]; Sand Filling [960 m3]; TATA Projects Ltd-25 | 4,415,240 |
| RB1-SS-B03.735 |  | Surface dressing | 6d | 2027-01-22 | 2027-01-30 | RB1-SS-B03.710 FF+1d | Helper [180 h]; Physical Progress [3550 h]; Surface Dressing [927 Sq m]; TATA Projects Ltd-25 | 41,715 |
| RB1-SS-B03.755 |  | ATT | 3d | 2027-01-28 | 2027-02-01 | RB1-SS-B03.735 FF+1d | Physical Progress [1780 h]; ATT [1026 Sq m]; TATA Projects Ltd-25 | 140,562 |
| RB1-SS-B03.765 |  | PCC | 3d | 2027-01-29 | 2027-02-02 | RB1-SS-B03.755 FF+1d | Mason [30 h]; Helper [30 h]; Physical Progress [1780 h]; Concrete M10 [234 m3]; TATA Projects Ltd-25 | 2,021,526 |
|  | 1 | **Column, Core Wall, Shear Wall** |  | 2026-12-28 | 2027-01-16 |  |  |  |
| RB1-SS-B03.595 |  | Reinforcement | 7d | 2026-12-28 | 2027-01-06 | RB1-SS-FN690, RB1-SS-FN675, RB1-SS-FN665 | Barbender [6540 h]; Helper [3270 h]; Physical Progress [4150 h]; Reinforcement Steel [98 MT1]; TATA Projects Ltd-25 | 9,458,225 |
| RB1-SS-B03.645 |  | LPS | 1d | 2027-01-06 | 2027-01-07 | RB1-SS-B03.595 | LPS [36235 INR]; Physical Progress [590 h]; TATA Projects Ltd-25 | 36,235 |
| RB1-SS-B03.655 |  | Shuttering | 7d | 2027-01-07 | 2027-01-15 | RB1-SS-B03.595, RB1-SS-B03.645 | Carpenter [3780 h]; Helper [1890 h]; Physical Progress [4150 h]; Formwork [2267 Sq m]; TATA Projects Ltd-25 | 2,641,417.72 |
| RB1-SS-B03.700 |  | Concrete | 1d | 2027-01-15 | 2027-01-16 | RB1-SS-B03.655 | Mason [50 h]; Helper [50 h]; Physical Progress [590 h]; Concrete M40 [608 m3]; TATA Projects Ltd-25 | 5,999,136 |
|  | 3 | **Slab** |  | 2027-02-02 | 2027-03-08 |  |  |  |
| RB1-SS-B03.775 |  | Shuttering | 5d | 2027-02-02 | 2027-02-08 | RB1-SS-B03.700, RB1-SS-B03.765 | Carpenter [5220 h]; Helper [2610 h]; Physical Progress [2960 h]; Formwork [3130 Sq m]; TATA Projects Ltd-25 | 3,646,950.8 |
| RB1-SS-B03.795 |  | Reinforcement Bottom Net with chairs | 3d | 2027-02-08 | 2027-02-11 | RB1-SS-B03.775 | Barbender [1270 h]; Helper [640 h]; Physical Progress [1780 h]; Reinforcement Steel [19 MT1]; TATA Projects Ltd-25 | 1,833,737.5 |
| RB1-SS-B03.810 |  | Laying of PT Tendon | 4d | 2027-02-11 | 2027-02-16 | RB1-SS-B03.795 | Physical Progress [2370 h]; TATA Projects Ltd-25 |  |
| RB1-SS-B03.815 |  | Reinforcement Top Net | 3d | 2027-02-16 | 2027-02-19 | RB1-SS-B03.810 | Barbender [1270 h]; Helper [640 h]; Physical Progress [1780 h]; Reinforcement Steel [19 MT1]; TATA Projects Ltd-25 | 1,833,737.5 |
| RB1-SS-B03.825 |  | MEP Coordination | 1d | 2027-02-19 | 2027-02-20 | RB1-SS-B03.815 | Physical Progress [590 h]; TATA Projects Ltd-25 |  |
| RB1-SS-B03.830 |  | Concrete of Slab | 1d | 2027-02-20 | 2027-02-22 | RB1-SS-B03.825 | Mason [50 h]; Helper [50 h]; Physical Progress [590 h]; Concrete M40 [782 m3]; TATA Projects Ltd-25 | 7,715,994 |
| RB1-SS-B03.835 |  | Wait for Strength Gain | 6d | 2027-02-22 | 2027-03-01 | RB1-SS-B03.830 | Physical Progress [3550 h]; TATA Projects Ltd-25 |  |
| RB1-SS-B03.840 |  | PT Work | 6d | 2027-03-01 | 2027-03-08 | RB1-SS-B03.835 | PT [11 MT1]; Helper [100 h]; PT Fitter [100 h]; Physical Progress [5920 h]; TATA Projects Ltd-25 | 2,090,000 |

| ID | WBS | Activity | Duration | Start | Finish | Predecessors | Resources | Cost |
| --- | --- | --- | --- | --- | --- | --- | --- | --- |
|  | 1 | **Basement 02** |  | 2027-01-21 | 2027-04-26 |  |  |  |
|  | 1 | **Pour 1** |  | 2027-02-11 | 2027-04-07 |  |  |  |
|  | 1 | **Column, Core Wall, Shear Wall** |  | 2027-02-11 | 2027-03-01 |  |  |  |
| RB1-SS-B02.10 |  | Reinforcement | 7d | 2027-02-11 | 2027-02-18 | RB1-SS-B03.420 | Barbender [3340 h]; Helper [1670 h]; Physical Progress [4150 h]; Reinforcement Steel [50 MT1]; TATA Projects Ltd-25 | 4,825,625 |
| RB1-SS-B02.30 |  | LPS | 1d | 2027-02-19 | 2027-02-19 | RB1-SS-B02.10 | LPS [36235 INR]; Physical Progress [590 h]; TATA Projects Ltd-25 | 36,235 |
| RB1-SS-B02.40 |  | Shuttering | 7d | 2027-02-20 | 2027-02-27 | RB1-SS-B02.10, RB1-SS-B02.30 | Carpenter [1600 h]; Helper [800 h]; Physical Progress [4150 h]; Formwork [955 Sq m]; TATA Projects Ltd-25 | 1,112,727.8 |
| RB1-SS-B02.75 |  | Concrete | 1d | 2027-03-01 | 2027-03-01 | RB1-SS-B02.40 | Mason [50 h]; Helper [50 h]; Physical Progress [590 h]; Concrete M40 [239 m3]; TATA Projects Ltd-25 | 2,358,213 |
|  | 3 | **Staircase** |  | 2027-02-11 | 2027-03-16 |  |  |  |
| RB1-SS-B02.15 |  | Reinforcement of wall upto Flight 1 | 3d | 2027-02-11 | 2027-02-13 | RB1-SS-B03.420 | Barbender [70 h]; Helper [40 h]; Physical Progress [1780 h]; Reinforcement Steel [1 MT1]; TATA Projects Ltd-25 | 96,512.5 |
| RB1-SS-B02.20 |  | Shuttering of wall upto Flight 1 | 3d | 2027-02-15 | 2027-02-17 | RB1-SS-B02.15 | Carpenter [20 h]; Helper [10 h]; Physical Progress [1780 h]; Formwork [10 Sq m]; TATA Projects Ltd-25 | 11,651.6 |
| RB1-SS-B02.25 |  | Casting of wall upto Flight 1 | 1d | 2027-02-18 | 2027-02-18 | RB1-SS-B02.20 | Mason; Helper; Physical Progress [590 h]; Concrete M40 [3 m3]; TATA Projects Ltd-25 | 29,601 |
| RB1-SS-B02.35 |  | Shuttering of Staircase upto Flight 1 | 3d | 2027-02-19 | 2027-02-22 | RB1-SS-B02.25 | Carpenter [20 h]; Helper [10 h]; Physical Progress [1780 h]; Formwork [10 Sq m]; TATA Projects Ltd-25 | 11,651.6 |
| RB1-SS-B02.45 |  | Reinforcement of Staircase upto Flight 1 | 3d | 2027-02-23 | 2027-02-25 | RB1-SS-B02.35 | Barbender [70 h]; Helper [40 h]; Physical Progress [1780 h]; Reinforcement Steel [1 MT1]; TATA Projects Ltd-25 | 96,512.5 |
| RB1-SS-B02.55 |  | MEP coordination upto Flight 1 | 1d | 2027-02-26 | 2027-02-26 | RB1-SS-B02.45 | Physical Progress [590 h]; TATA Projects Ltd-25 |  |
| RB1-SS-B02.70 |  | Casting of Staircase upto Flight 1 | 1d | 2027-02-27 | 2027-02-27 | RB1-SS-B02.55 | Mason; Helper; Physical Progress [590 h]; Concrete M40 [3 m3]; TATA Projects Ltd-25 | 29,601 |
| RB1-SS-B02.80 |  | Reinforcement of wall upto Flight 2 | 3d | 2027-03-01 | 2027-03-03 | RB1-SS-B02.70 | Barbender [70 h]; Helper [40 h]; Physical Progress [1780 h]; Reinforcement Steel [1 MT1]; TATA Projects Ltd-25 | 96,512.5 |
| RB1-SS-B02.100 |  | Shuttering of wall upto Flight 2 | 3d | 2027-03-04 | 2027-03-06 | RB1-SS-B02.80 | Carpenter [20 h]; Helper [10 h]; Physical Progress [1780 h]; Formwork [10 Sq m]; TATA Projects Ltd-25 | 11,651.6 |
| RB1-SS-B02.140 |  | Casting of wall upto Flight 2 | 1d | 2027-03-08 | 2027-03-08 | RB1-SS-B02.100 | Mason; Helper; Physical Progress [590 h]; Concrete M40 [3 m3]; TATA Projects Ltd-25 | 29,601 |
| RB1-SS-B02.150 |  | Shuttering of Staircase upto Flight 2 | 3d | 2027-03-09 | 2027-03-12 | RB1-SS-B02.140 | Carpenter [20 h]; Helper [10 h]; Physical Progress [1780 h]; Formwork [10 Sq m]; TATA Projects Ltd-25 | 11,651.6 |
| RB1-SS-B02.175 |  | Reinforcement of Staircase upto Flight 2 | 3d | 2027-03-13 | 2027-03-16 | RB1-SS-B02.150 | Barbender [70 h]; Helper [40 h]; Physical Progress [1780 h]; Reinforcement Steel [1 MT1]; TATA Projects Ltd-25 | 96,512.5 |
|  | 2 | **Slab** |  | 2027-03-02 | 2027-04-07 |  |  |  |
| RB1-SS-B02.85 |  | Shuttering | 5d | 2027-03-02 | 2027-03-06 | RB1-SS-B02.75 | Carpenter [4100 h]; Helper [2050 h]; Physical Progress [2950 h]; Formwork [2456 Sq m]; TATA Projects Ltd-25 | 2,861,632.96 |
| RB1-SS-B02.130 |  | Reinforcement Bottom Net with chairs | 3d | 2027-03-08 | 2027-03-11 | RB1-SS-B02.85 | Barbender [940 h]; Helper [470 h]; Physical Progress [1780 h]; Reinforcement Steel [14 MT1]; TATA Projects Ltd-25 | 1,351,175 |
| RB1-SS-B02.170 |  | Laying of PT Tendon | 4d | 2027-03-12 | 2027-03-16 | RB1-SS-B02.130 | Physical Progress [2370 h]; TATA Projects Ltd-25 |  |
| RB1-SS-B02.210 |  | Reinforcement Top Net | 3d | 2027-03-17 | 2027-03-19 | RB1-SS-B02.170 | Barbender [940 h]; Helper [470 h]; Physical Progress [1780 h]; Reinforcement Steel [14 MT1]; TATA Projects Ltd-25 | 1,351,175 |
| RB1-SS-B02.250 |  | MEP Coordination | 1d | 2027-03-20 | 2027-03-20 | RB1-SS-B02.130, RB1-SS-B02.210, RB1-SS-B02.175 | Physical Progress [590 h]; TATA Projects Ltd-25 |  |
| RB1-SS-B02.265 |  | Concrete of Slab | 1d | 2027-03-23 | 2027-03-23 | RB1-SS-B02.250 | Mason [50 h]; Helper [50 h]; Physical Progress [590 h]; Concrete M40 [614 m3]; TATA Projects Ltd-25 | 6,058,338 |
| RB1-SS-B02.275 |  | Wait for Strength Gain | 6d | 2027-03-24 | 2027-03-31 | RB1-SS-B02.265 | Physical Progress [3550 h]; TATA Projects Ltd-25 |  |
| RB1-SS-B02.350 |  | PT Work | 6d | 2027-04-01 | 2027-04-07 | RB1-SS-B02.275, RB1-SS-B03.470 | PT [7 MT1]; Helper [100 h]; PT Fitter [100 h]; Physical Progress [4740 h]; TATA Projects Ltd-25 | 1,330,000 |

| ID | WBS | Activity | Duration | Start | Finish | Predecessors | Resources | Cost |
| --- | --- | --- | --- | --- | --- | --- | --- | --- |
|  | 2 | **Pour 2** |  | 2027-01-21 | 2027-03-16 |  |  |  |
|  | 1 | **Column, Core Wall, Shear Wall** |  | 2027-01-21 | 2027-02-09 |  |  |  |
| RB1-SS-B02.50 |  | Reinforcement | 7d | 2027-01-21 | 2027-01-29 | RB1-SS-B03.520 | Barbender [4740 h]; Helper [2370 h]; Physical Progress [4150 h]; Reinforcement Steel [71 MT1]; TATA Projects Ltd-25 | 6,852,387.5 |
| RB1-SS-B02.115 |  | LPS | 1d | 2027-01-30 | 2027-01-30 | RB1-SS-B02.50 | LPS [36235 INR]; Physical Progress [590 h]; TATA Projects Ltd-25 | 36,235 |
| RB1-SS-B02.135 |  | Shuttering | 7d | 2027-02-01 | 2027-02-08 | RB1-SS-B02.50, RB1-SS-B02.115 | Carpenter [2250 h]; Helper [1130 h]; Physical Progress [4150 h]; Formwork [1345 Sq m]; TATA Projects Ltd-25 | 1,567,140.2 |
| RB1-SS-B02.205 |  | Concrete | 1d | 2027-02-09 | 2027-02-09 | RB1-SS-B02.135 | Mason [50 h]; Helper [50 h]; Physical Progress [590 h]; Concrete M40 [336 m3]; TATA Projects Ltd-25 | 3,315,312 |
|  | 4 | **Staircase-1** |  | 2027-01-21 | 2027-02-23 |  |  |  |
| RB1-SS-B02.65 |  | Reinforcement of wall upto Flight 1 | 3d | 2027-01-21 | 2027-01-23 | RB1-SS-B03.520 | Barbender [70 h]; Helper [40 h]; Physical Progress [1780 h]; Reinforcement Steel [1 MT1]; TATA Projects Ltd-25 | 96,512.5 |
| RB1-SS-B02.95 |  | Shuttering of wall upto Flight 1 | 3d | 2027-01-25 | 2027-01-28 | RB1-SS-B02.65 | Carpenter [20 h]; Helper [10 h]; Physical Progress [1780 h]; Formwork [10 Sq m]; TATA Projects Ltd-25 | 11,651.6 |
| RB1-SS-B02.110 |  | Casting of wall upto Flight 1 | 1d | 2027-01-29 | 2027-01-29 | RB1-SS-B02.95 | Mason; Helper; Physical Progress [590 h]; Concrete M40 [3 m3]; TATA Projects Ltd-25 | 29,601 |
| RB1-SS-B02.125 |  | Shuttering of Staircase upto Flight 1 | 3d | 2027-01-30 | 2027-02-02 | RB1-SS-B02.110 | Carpenter [20 h]; Helper [10 h]; Physical Progress [1780 h]; Formwork [10 Sq m]; TATA Projects Ltd-25 | 11,651.6 |
| RB1-SS-B02.165 |  | Reinforcement of Staircase upto Flight 1 | 3d | 2027-02-03 | 2027-02-05 | RB1-SS-B02.125 | Barbender [70 h]; Helper [40 h]; Physical Progress [1780 h]; Reinforcement Steel [1 MT1]; TATA Projects Ltd-25 | 96,512.5 |
| RB1-SS-B02.190 |  | MEP coordination upto Flight 1 | 1d | 2027-02-06 | 2027-02-06 | RB1-SS-B02.165 | Physical Progress [590 h]; TATA Projects Ltd-25 |  |
| RB1-SS-B02.200 |  | Casting of Staircase upto Flight 1 | 1d | 2027-02-08 | 2027-02-08 | RB1-SS-B02.190 | Mason; Helper; Physical Progress [590 h]; Concrete M40 [3 m3]; TATA Projects Ltd-25 | 29,601 |
| RB1-SS-B02.220 |  | Reinforcement of wall upto Flight 2 | 3d | 2027-02-09 | 2027-02-11 | RB1-SS-B02.200 | Barbender [70 h]; Helper [40 h]; Physical Progress [1780 h]; Reinforcement Steel [1 MT1]; TATA Projects Ltd-25 | 96,512.5 |
| RB1-SS-B02.260 |  | Shuttering of wall upto Flight 2 | 3d | 2027-02-12 | 2027-02-15 | RB1-SS-B02.220 | Carpenter [20 h]; Helper [10 h]; Physical Progress [1780 h]; Formwork [10 Sq m]; TATA Projects Ltd-25 | 11,651.6 |
| RB1-SS-B02.290 |  | Casting of wall upto Flight 2 | 1d | 2027-02-16 | 2027-02-16 | RB1-SS-B02.260 | Mason; Helper; Physical Progress [590 h]; Concrete M40 [3 m3]; TATA Projects Ltd-25 | 29,601 |
| RB1-SS-B02.300 |  | Shuttering of Staircase upto Flight 2 | 3d | 2027-02-17 | 2027-02-19 | RB1-SS-B02.290 | Carpenter [20 h]; Helper [10 h]; Physical Progress [1780 h]; Formwork [10 Sq m]; TATA Projects Ltd-25 | 11,651.6 |
| RB1-SS-B02.345 |  | Reinforcement of Staircase upto Flight 2 | 3d | 2027-02-20 | 2027-02-23 | RB1-SS-B02.300 | Barbender [70 h]; Helper [40 h]; Physical Progress [1780 h]; Reinforcement Steel [1 MT1]; TATA Projects Ltd-25 | 96,512.5 |
|  | 3 | **Staircase-2** |  | 2027-01-21 | 2027-02-23 |  |  |  |
| RB1-SS-B02.60 |  | Reinforcement of wall upto Flight 1 | 3d | 2027-01-21 | 2027-01-23 | RB1-SS-B03.520 | Barbender [70 h]; Helper [40 h]; Physical Progress [1780 h]; Reinforcement Steel [1 MT1]; TATA Projects Ltd-25 | 96,512.5 |
| RB1-SS-B02.90 |  | Shuttering of wall upto Flight 1 | 3d | 2027-01-25 | 2027-01-28 | RB1-SS-B02.60 | Carpenter [20 h]; Helper [10 h]; Physical Progress [1780 h]; Formwork [10 Sq m]; TATA Projects Ltd-25 | 11,651.6 |
| RB1-SS-B02.105 |  | Casting of wall upto Flight 1 | 1d | 2027-01-29 | 2027-01-29 | RB1-SS-B02.90 | Mason; Helper; Physical Progress [590 h]; Concrete M40 [3 m3]; TATA Projects Ltd-25 | 29,601 |
| RB1-SS-B02.120 |  | Shuttering of Staircase upto Flight 1 | 3d | 2027-01-30 | 2027-02-02 | RB1-SS-B02.105 | Carpenter [20 h]; Helper [10 h]; Physical Progress [1780 h]; Formwork [10 Sq m]; TATA Projects Ltd-25 | 11,651.6 |
| RB1-SS-B02.160 |  | Reinforcement of Staircase upto Flight 1 | 3d | 2027-02-03 | 2027-02-05 | RB1-SS-B02.120 | Barbender [70 h]; Helper [40 h]; Physical Progress [1780 h]; Reinforcement Steel [1 MT1]; TATA Projects Ltd-25 | 96,512.5 |
| RB1-SS-B02.185 |  | MEP coordination upto Flight 1 | 1d | 2027-02-06 | 2027-02-06 | RB1-SS-B02.160 | Physical Progress [590 h]; TATA Projects Ltd-25 |  |
| RB1-SS-B02.195 |  | Casting of Staircase upto Flight 1 | 1d | 2027-02-08 | 2027-02-08 | RB1-SS-B02.185 | Mason; Helper; Physical Progress [590 h]; Concrete M40 [3 m3]; TATA Projects Ltd-25 | 29,601 |
| RB1-SS-B02.215 |  | Reinforcement of wall upto Flight 2 | 3d | 2027-02-09 | 2027-02-11 | RB1-SS-B02.195 | Barbender [70 h]; Helper [40 h]; Physical Progress [1780 h]; Reinforcement Steel [1 MT1]; TATA Projects Ltd-25 | 96,512.5 |
| RB1-SS-B02.255 |  | Shuttering of wall upto Flight 2 | 3d | 2027-02-12 | 2027-02-15 | RB1-SS-B02.215 | Carpenter [20 h]; Helper [10 h]; Physical Progress [1780 h]; Formwork [10 Sq m]; TATA Projects Ltd-25 | 11,651.6 |
| RB1-SS-B02.285 |  | Casting of wall upto Flight 2 | 1d | 2027-02-16 | 2027-02-16 | RB1-SS-B02.255 | Mason; Helper; Physical Progress [590 h]; Concrete M40 [3 m3]; TATA Projects Ltd-25 | 29,601 |
| RB1-SS-B02.295 |  | Shuttering of Staircase upto Flight 2 | 3d | 2027-02-17 | 2027-02-19 | RB1-SS-B02.285 | Carpenter [20 h]; Helper [10 h]; Physical Progress [1780 h]; Formwork [10 Sq m]; TATA Projects Ltd-25 | 11,651.6 |
| RB1-SS-B02.340 |  | Reinforcement of Staircase upto Flight 2 | 3d | 2027-02-20 | 2027-02-23 | RB1-SS-B02.295 | Barbender [70 h]; Helper [40 h]; Physical Progress [1780 h]; Reinforcement Steel [1 MT1]; TATA Projects Ltd-25 | 96,512.5 |

| ID | WBS | Activity | Duration | Start | Finish | Predecessors | Resources | Cost |
| --- | --- | --- | --- | --- | --- | --- | --- | --- |
|  | 2 | **Slab** |  | 2027-02-10 | 2027-03-16 |  |  |  |
| RB1-SS-B02.230 |  | Shuttering | 5d | 2027-02-10 | 2027-02-15 | RB1-SS-B02.205 | Carpenter [5770 h]; Helper [2890 h]; Physical Progress [2950 h]; Formwork [3460 Sq m]; TATA Projects Ltd-25 | 4,031,453.6 |
| RB1-SS-B02.280 |  | Reinforcement Bottom Net with chairs | 3d | 2027-02-16 | 2027-02-18 | RB1-SS-B02.230 | Barbender [1270 h]; Helper [640 h]; Physical Progress [1780 h]; Reinforcement Steel [19 MT1]; TATA Projects Ltd-25 | 1,833,737.5 |
| RB1-SS-B02.320 |  | Laying of PT Tendon | 4d | 2027-02-19 | 2027-02-23 | RB1-SS-B02.280 | Physical Progress [2370 h]; TATA Projects Ltd-25 |  |
| RB1-SS-B02.360 |  | Reinforcement Top Net | 3d | 2027-02-24 | 2027-02-26 | RB1-SS-B02.320 | Barbender [1270 h]; Helper [640 h]; Physical Progress [1780 h]; Reinforcement Steel [19 MT1]; TATA Projects Ltd-25 | 1,833,737.5 |
| RB1-SS-B02.380 |  | MEP Coordination | 1d | 2027-02-27 | 2027-02-27 | RB1-SS-B02.280, RB1-SS-B02.360, RB1-SS-B02.340, RB1-SS-B02.345 | Physical Progress [590 h]; TATA Projects Ltd-25 |  |
| RB1-SS-B02.395 |  | Concrete of Slab | 1d | 2027-03-01 | 2027-03-01 | RB1-SS-B02.380 | Mason [50 h]; Helper [50 h]; Physical Progress [590 h]; Concrete M40 [865 m3]; TATA Projects Ltd-25 | 8,534,955 |
| RB1-SS-B02.400 |  | Wait for Strength Gain | 6d | 2027-03-02 | 2027-03-08 | RB1-SS-B02.395 | Physical Progress [3550 h]; TATA Projects Ltd-25 |  |
| RB1-SS-B02.430 |  | PT Work | 6d | 2027-03-09 | 2027-03-16 | RB1-SS-B02.400, RB1-SS-B03.570 | PT [9 MT1]; Helper [100 h]; PT Fitter [100 h]; Physical Progress [4740 h]; TATA Projects Ltd-25 | 1,710,000 |
|  | 3 | **Pour 3** |  | 2027-02-09 | 2027-04-05 |  |  |  |
|  | 1 | **Column, Core Wall, Shear Wall** |  | 2027-02-09 | 2027-02-26 |  |  |  |
| RB1-SS-B02.145 |  | Reinforcement | 7d | 2027-02-09 | 2027-02-16 | RB1-SS-B03.590 | Barbender [4540 h]; Helper [2270 h]; Physical Progress [4150 h]; Reinforcement Steel [68 MT1]; TATA Projects Ltd-25 | 6,562,850 |
| RB1-SS-B02.235 |  | LPS | 1d | 2027-02-17 | 2027-02-17 | RB1-SS-B02.145 | LPS [36235 INR]; Physical Progress [590 h]; TATA Projects Ltd-25 | 36,235 |
| RB1-SS-B02.245 |  | Shuttering | 7d | 2027-02-18 | 2027-02-25 | RB1-SS-B02.145, RB1-SS-B02.235 | Carpenter [2170 h]; Helper [1090 h]; Physical Progress [4150 h]; Formwork [1297 Sq m]; TATA Projects Ltd-25 | 1,511,212.52 |
| RB1-SS-B02.325 |  | Concrete | 1d | 2027-02-26 | 2027-02-26 | RB1-SS-B02.245 | Mason [50 h]; Helper [50 h]; Physical Progress [590 h]; Concrete M40 [324 m3]; TATA Projects Ltd-25 | 3,196,908 |
|  | 3 | **Staircase** |  | 2027-02-09 | 2027-03-13 |  |  |  |
| RB1-SS-B02.155 |  | Reinforcement of wall upto Flight 1 | 3d | 2027-02-09 | 2027-02-11 | RB1-SS-B03.590 | Barbender [70 h]; Helper [40 h]; Physical Progress [1780 h]; Reinforcement Steel [1 MT1]; TATA Projects Ltd-25 | 96,512.5 |
| RB1-SS-B02.180 |  | Shuttering of wall upto Flight 1 | 3d | 2027-02-12 | 2027-02-15 | RB1-SS-B02.155 | Carpenter [20 h]; Helper [10 h]; Physical Progress [1780 h]; Formwork [10 Sq m]; TATA Projects Ltd-25 | 11,651.6 |
| RB1-SS-B02.225 |  | Casting of wall upto Flight 1 | 1d | 2027-02-16 | 2027-02-16 | RB1-SS-B02.180 | Mason; Helper; Physical Progress [590 h]; Concrete M40 [3 m3]; TATA Projects Ltd-25 | 29,601 |
| RB1-SS-B02.240 |  | Shuttering of Staircase upto Flight 1 | 3d | 2027-02-17 | 2027-02-19 | RB1-SS-B02.225 | Carpenter [20 h]; Helper [10 h]; Physical Progress [1780 h]; Formwork [10 Sq m]; TATA Projects Ltd-25 | 11,651.6 |
| RB1-SS-B02.270 |  | Reinforcement of Staircase upto Flight 1 | 3d | 2027-02-20 | 2027-02-23 | RB1-SS-B02.240 | Barbender [70 h]; Helper [40 h]; Physical Progress [1780 h]; Reinforcement Steel [1 MT1]; TATA Projects Ltd-25 | 96,512.5 |
| RB1-SS-B02.305 |  | MEP coordination upto Flight 1 | 1d | 2027-02-24 | 2027-02-24 | RB1-SS-B02.270 | Physical Progress [590 h]; TATA Projects Ltd-25 |  |
| RB1-SS-B02.315 |  | Casting of Staircase upto Flight 1 | 1d | 2027-02-25 | 2027-02-25 | RB1-SS-B02.305 | Mason; Helper; Physical Progress [590 h]; Concrete M40 [3 m3]; TATA Projects Ltd-25 | 29,601 |
| RB1-SS-B02.330 |  | Reinforcement of wall upto Flight 2 | 3d | 2027-02-26 | 2027-03-01 | RB1-SS-B02.315 | Barbender [70 h]; Helper [40 h]; Physical Progress [1780 h]; Reinforcement Steel [1 MT1]; TATA Projects Ltd-25 | 96,512.5 |
| RB1-SS-B02.355 |  | Shuttering of wall upto Flight 2 | 3d | 2027-03-02 | 2027-03-04 | RB1-SS-B02.330 | Carpenter [20 h]; Helper [10 h]; Physical Progress [1780 h]; Formwork [10 Sq m]; TATA Projects Ltd-25 | 11,651.6 |
| RB1-SS-B02.375 |  | Casting of wall upto Flight 2 | 1d | 2027-03-05 | 2027-03-05 | RB1-SS-B02.355 | Mason; Helper; Physical Progress [590 h]; Concrete M40 [3 m3]; TATA Projects Ltd-25 | 29,601 |
| RB1-SS-B02.390 |  | Shuttering of Staircase upto Flight 2 | 3d | 2027-03-06 | 2027-03-09 | RB1-SS-B02.375 | Carpenter [20 h]; Helper [10 h]; Physical Progress [1780 h]; Formwork [10 Sq m]; TATA Projects Ltd-25 | 11,651.6 |
| RB1-SS-B02.415 |  | Reinforcement of Staircase upto Flight 2 | 3d | 2027-03-11 | 2027-03-13 | RB1-SS-B02.390 | Barbender [70 h]; Helper [40 h]; Physical Progress [1780 h]; Reinforcement Steel [1 MT1]; TATA Projects Ltd-25 | 96,512.5 |

| ID | WBS | Activity | Duration | Start | Finish | Predecessors | Resources | Cost |
| --- | --- | --- | --- | --- | --- | --- | --- | --- |
|  | 2 | **Slab** |  | 2027-02-27 | 2027-04-05 |  |  |  |
| RB1-SS-B02.335 |  | Shuttering | 5d | 2027-02-27 | 2027-03-04 | RB1-SS-B02.325 | Carpenter [5570 h]; Helper [2790 h]; Physical Progress [2960 h]; Formwork [3338 Sq m]; TATA Projects Ltd-25 | 3,889,304.08 |
| RB1-SS-B02.365 |  | Reinforcement Bottom Net with chairs | 3d | 2027-03-05 | 2027-03-08 | RB1-SS-B02.335 | Barbender [1270 h]; Helper [640 h]; Physical Progress [1780 h]; Reinforcement Steel [19 MT1]; TATA Projects Ltd-25 | 1,833,737.5 |
| RB1-SS-B02.405 |  | Laying of PT Tendon | 4d | 2027-03-09 | 2027-03-13 | RB1-SS-B02.365 | Physical Progress [2370 h]; TATA Projects Ltd-25 |  |
| RB1-SS-B02.420 |  | Reinforcement Top Net | 3d | 2027-03-15 | 2027-03-17 | RB1-SS-B02.405 | Barbender [1270 h]; Helper [640 h]; Physical Progress [1780 h]; Reinforcement Steel [19 MT1]; TATA Projects Ltd-25 | 1,833,737.5 |
| RB1-SS-B02.440 |  | MEP Coordination | 1d | 2027-03-18 | 2027-03-18 | RB1-SS-B02.365, RB1-SS-B02.420, RB1-SS-B02.415 | Physical Progress [590 h]; TATA Projects Ltd-25 |  |
| RB1-SS-B02.445 |  | Concrete of Slab | 1d | 2027-03-19 | 2027-03-19 | RB1-SS-B02.440 | Mason [50 h]; Helper [50 h]; Physical Progress [590 h]; Concrete M40 [834 m3]; TATA Projects Ltd-25 | 8,229,078 |
| RB1-SS-B02.455 |  | Wait for Strength Gain | 6d | 2027-03-20 | 2027-03-29 | RB1-SS-B02.445 | Physical Progress [3550 h]; TATA Projects Ltd-25 |  |
| RB1-SS-B02.480 |  | PT Work | 6d | 2027-03-30 | 2027-04-05 | RB1-SS-B02.455, RB1-SS-B03.640 | PT [9 MT1]; Helper [100 h]; PT Fitter [100 h]; Physical Progress [4740 h]; TATA Projects Ltd-25 | 1,710,000 |
|  | 4 | **Pour 4** |  | 2027-02-09 | 2027-04-05 |  |  |  |
|  | 1 | **Column, Core Wall, Shear Wall** |  | 2027-02-09 | 2027-02-26 |  |  |  |
| RB1-SS-B02.310 |  | Reinforcement | 7d | 2027-02-09 | 2027-02-16 | RB1-SS-B03.680 | Barbender [4000 h]; Helper [2000 h]; Physical Progress [4150 h]; Reinforcement Steel [60 MT1]; TATA Projects Ltd-25 | 5,790,750 |
| RB1-SS-B02.370 |  | LPS | 1d | 2027-02-17 | 2027-02-17 | RB1-SS-B02.310 | LPS [36235 INR]; Physical Progress [590 h]; TATA Projects Ltd-25 | 36,235 |
| RB1-SS-B02.385 |  | Shuttering | 7d | 2027-02-18 | 2027-02-25 | RB1-SS-B02.310, RB1-SS-B02.370 | Carpenter [1920 h]; Helper [960 h]; Physical Progress [4150 h]; Formwork [1149 Sq m]; TATA Projects Ltd-25 | 1,338,768.84 |
| RB1-SS-B02.425 |  | Concrete | 1d | 2027-02-26 | 2027-02-26 | RB1-SS-B02.385 | Mason [50 h]; Helper [50 h]; Physical Progress [590 h]; Concrete M40 [287 m3]; TATA Projects Ltd-25 | 2,831,829 |
|  | 2 | **Slab** |  | 2027-02-27 | 2027-04-05 |  |  |  |
| RB1-SS-B02.435 |  | Shuttering | 5d | 2027-02-27 | 2027-03-04 | RB1-SS-B02.425 | Carpenter [4930 h]; Helper [2470 h]; Physical Progress [2960 h]; Formwork [2956 Sq m]; TATA Projects Ltd-25 | 3,444,212.96 |
| RB1-SS-B02.465 |  | Reinforcement Bottom Net with chairs | 3d | 2027-03-05 | 2027-03-08 | RB1-SS-B02.435 | Barbender [1070 h]; Helper [540 h]; Physical Progress [1780 h]; Reinforcement Steel [16 MT1]; TATA Projects Ltd-25 | 1,544,200 |
| RB1-SS-B02.475 |  | Laying of PT Tendon | 4d | 2027-03-09 | 2027-03-13 | RB1-SS-B02.465 | Physical Progress [2370 h]; TATA Projects Ltd-25 |  |
| RB1-SS-B02.495 |  | Reinforcement Top Net | 3d | 2027-03-15 | 2027-03-17 | RB1-SS-B02.475 | Barbender [1070 h]; Helper [540 h]; Physical Progress [1780 h]; Reinforcement Steel [16 MT1]; TATA Projects Ltd-25 | 1,544,200 |
| RB1-SS-B02.510 |  | MEP Coordination | 1d | 2027-03-18 | 2027-03-18 | RB1-SS-B02.465, RB1-SS-B02.495 | Physical Progress [590 h]; TATA Projects Ltd-25 |  |
| RB1-SS-B02.520 |  | Concrete of Slab | 1d | 2027-03-19 | 2027-03-19 | RB1-SS-B02.510 | Mason [50 h]; Helper [50 h]; Physical Progress [590 h]; Concrete M40 [739 m3]; TATA Projects Ltd-25 | 7,291,713 |
| RB1-SS-B02.530 |  | Wait for Strength Gain | 6d | 2027-03-20 | 2027-03-29 | RB1-SS-B02.520 | Physical Progress [3550 h]; TATA Projects Ltd-25 |  |
| RB1-SS-B02.555 |  | PT Work | 6d | 2027-03-30 | 2027-04-05 | RB1-SS-B02.530, RB1-SS-B03.725 | PT [8 MT1]; Helper [100 h]; PT Fitter [100 h]; Physical Progress [4740 h]; TATA Projects Ltd-25 | 1,520,000 |

| ID | WBS | Activity | Duration | Start | Finish | Predecessors | Resources | Cost |
| --- | --- | --- | --- | --- | --- | --- | --- | --- |
|  | 5 | **Pour 5** |  | 2027-03-02 | 2027-04-26 |  |  |  |
|  | 1 | **Column, Core Wall, Shear Wall** |  | 2027-03-02 | 2027-03-20 |  |  |  |
| RB1-SS-B02.410 |  | Reinforcement | 7d | 2027-03-02 | 2027-03-09 | RB1-SS-B03.750 | Barbender [4470 h]; Helper [2240 h]; Physical Progress [4150 h]; Reinforcement Steel [67 MT1]; TATA Projects Ltd-25 | 6,466,337.5 |
| RB1-SS-B02.450 |  | LPS | 1d | 2027-03-11 | 2027-03-11 | RB1-SS-B02.410 | LPS [36235 INR]; Physical Progress [590 h]; TATA Projects Ltd-25 | 36,235 |
| RB1-SS-B02.460 |  | Shuttering | 7d | 2027-03-12 | 2027-03-19 | RB1-SS-B02.410, RB1-SS-B02.450 | Carpenter [2140 h]; Helper [1070 h]; Physical Progress [4150 h]; Formwork [1281 Sq m]; TATA Projects Ltd-25 | 1,492,569.96 |
| RB1-SS-B02.485 |  | Concrete | 1d | 2027-03-20 | 2027-03-20 | RB1-SS-B02.460 | Mason [50 h]; Helper [50 h]; Physical Progress [590 h]; Concrete M40 [320 m3]; TATA Projects Ltd-25 | 3,157,440 |
|  | 2 | **Slab** |  | 2027-03-23 | 2027-04-26 |  |  |  |
| RB1-SS-B02.490 |  | Shuttering | 5d | 2027-03-23 | 2027-03-29 | RB1-SS-B02.485 | Carpenter [5500 h]; Helper [2750 h]; Physical Progress [2960 h]; Formwork [3295 Sq m]; TATA Projects Ltd-25 | 3,839,202.2 |
| RB1-SS-B02.525 |  | Reinforcement Bottom Net with chairs | 3d | 2027-03-30 | 2027-04-01 | RB1-SS-B02.490 | Barbender [1200 h]; Helper [600 h]; Physical Progress [1780 h]; Reinforcement Steel [18 MT1]; TATA Projects Ltd-25 | 1,737,225 |
| RB1-SS-B02.535 |  | Laying of PT Tendon | 4d | 2027-04-02 | 2027-04-06 | RB1-SS-B02.525 | Physical Progress [2370 h]; TATA Projects Ltd-25 |  |
| RB1-SS-B02.560 |  | Reinforcement Top Net | 3d | 2027-04-07 | 2027-04-09 | RB1-SS-B02.535 | Barbender [1200 h]; Helper [600 h]; Physical Progress [1780 h]; Reinforcement Steel [18 MT1]; TATA Projects Ltd-25 | 1,737,225 |
| RB1-SS-B02.570 |  | MEP Coordination | 1d | 2027-04-10 | 2027-04-10 | RB1-SS-B02.525, RB1-SS-B02.560 | Physical Progress [590 h]; TATA Projects Ltd-25 |  |
| RB1-SS-B02.580 |  | Concrete of Slab | 1d | 2027-04-12 | 2027-04-12 | RB1-SS-B02.570 | Mason [50 h]; Helper [50 h]; Physical Progress [590 h]; Concrete M40 [824 m3]; TATA Projects Ltd-25 | 8,130,408 |
| RB1-SS-B02.585 |  | Wait for Strength Gain | 6d | 2027-04-13 | 2027-04-19 | RB1-SS-B02.580 | Physical Progress [3550 h]; TATA Projects Ltd-25 |  |
| RB1-SS-B02.610 |  | PT Work | 6d | 2027-04-20 | 2027-04-26 | RB1-SS-B02.585, RB1-SS-B03.785 | PT [9 MT1]; Helper [100 h]; PT Fitter [100 h]; Physical Progress [4740 h]; TATA Projects Ltd-25 | 1,710,000 |
|  | 6 | **Pour 6** |  | 2027-02-08 | 2027-04-03 |  |  |  |
|  | 1 | **Column, Core Wall, Shear Wall** |  | 2027-02-08 | 2027-02-25 |  |  |  |
| RB1-SS-B02.470 |  | Reinforcement | 7d | 2027-02-08 | 2027-02-15 | RB1-SS-B03.800 | Barbender [2940 h]; Helper [1470 h]; Physical Progress [4150 h]; Reinforcement Steel [44 MT1]; TATA Projects Ltd-25 | 4,246,550 |
| RB1-SS-B02.500 |  | LPS | 1d | 2027-02-16 | 2027-02-16 | RB1-SS-B02.470 | LPS [36235 INR]; Physical Progress [590 h]; TATA Projects Ltd-25 | 36,235 |
| RB1-SS-B02.505 |  | Shuttering | 7d | 2027-02-17 | 2027-02-24 | RB1-SS-B02.470, RB1-SS-B02.500 | Carpenter [1400 h]; Helper [700 h]; Physical Progress [4150 h]; Formwork [838 Sq m]; TATA Projects Ltd-25 | 976,404.08 |
| RB1-SS-B02.540 |  | Concrete | 1d | 2027-02-25 | 2027-02-25 | RB1-SS-B02.505 | Mason [50 h]; Helper [50 h]; Physical Progress [590 h]; Concrete M40 [209 m3]; TATA Projects Ltd-25 | 2,062,203 |
|  | 2 | **Slab** |  | 2027-02-26 | 2027-04-03 |  |  |  |
| RB1-SS-B02.545 |  | Shuttering | 5d | 2027-02-26 | 2027-03-03 | RB1-SS-B02.540 | Carpenter [3590 h]; Helper [1800 h]; Physical Progress [2960 h]; Formwork [2154 Sq m]; TATA Projects Ltd-25 | 2,509,754.64 |
| RB1-SS-B02.575 |  | Reinforcement Bottom Net with chairs | 3d | 2027-03-04 | 2027-03-06 | RB1-SS-B02.545 | Barbender [800 h]; Helper [400 h]; Physical Progress [1780 h]; Reinforcement Steel [12 MT1]; TATA Projects Ltd-25 | 1,158,150 |
| RB1-SS-B02.590 |  | Laying of PT Tendon | 4d | 2027-03-08 | 2027-03-12 | RB1-SS-B02.575 | Physical Progress [2370 h]; TATA Projects Ltd-25 |  |
| RB1-SS-B02.605 |  | Reinforcement Top Net | 3d | 2027-03-13 | 2027-03-16 | RB1-SS-B02.590 | Barbender [800 h]; Helper [400 h]; Physical Progress [1780 h]; Reinforcement Steel [12 MT1]; TATA Projects Ltd-25 | 1,158,150 |
| RB1-SS-B02.615 |  | MEP Coordination | 1d | 2027-03-17 | 2027-03-17 | RB1-SS-B02.575, RB1-SS-B02.605 | Physical Progress [590 h]; TATA Projects Ltd-25 |  |
| RB1-SS-B02.625 |  | Concrete of Slab | 1d | 2027-03-18 | 2027-03-18 | RB1-SS-B02.615 | Mason [50 h]; Helper [50 h]; Physical Progress [590 h]; Concrete M40 [539 m3]; TATA Projects Ltd-25 | 5,318,313 |
| RB1-SS-B02.630 |  | Wait for Strength Gain | 6d | 2027-03-19 | 2027-03-27 | RB1-SS-B02.625 | Physical Progress [3550 h]; TATA Projects Ltd-25 |  |
| RB1-SS-B02.645 |  | PT Work | 6d | 2027-03-29 | 2027-04-03 | RB1-SS-B02.630, RB1-SS-B03.820 | PT [6 MT1]; Helper [100 h]; PT Fitter [100 h]; Physical Progress [4740 h]; TATA Projects Ltd-25 | 1,140,000 |

| ID | WBS | Activity | Duration | Start | Finish | Predecessors | Resources | Cost |
| --- | --- | --- | --- | --- | --- | --- | --- | --- |
|  | 7 | **Pour 7** |  | 2027-02-22 | 2027-04-19 |  |  |  |
|  | 1 | **Column, Core Wall, Shear Wall** |  | 2027-02-22 | 2027-03-13 |  |  |  |
| RB1-SS-B02.515 |  | Reinforcement | 7d | 2027-02-22 | 2027-03-02 | RB1-SS-B03.830 | Barbender [5540 h]; Helper [2770 h]; Physical Progress [4150 h]; Reinforcement Steel [83 MT1]; TATA Projects Ltd-25 | 8,010,537.5 |
| RB1-SS-B02.550 |  | LPS | 1d | 2027-03-02 | 2027-03-03 | RB1-SS-B02.515 | LPS [36235 INR]; Physical Progress [590 h]; TATA Projects Ltd-25 | 36,235 |
| RB1-SS-B02.565 |  | Shuttering | 7d | 2027-03-03 | 2027-03-12 | RB1-SS-B02.515, RB1-SS-B02.550 | Carpenter [2640 h]; Helper [1320 h]; Physical Progress [4150 h]; Formwork [1582 Sq m]; TATA Projects Ltd-25 | 1,843,283.12 |
| RB1-SS-B02.595 |  | Concrete | 1d | 2027-03-12 | 2027-03-13 | RB1-SS-B02.565 | Mason [50 h]; Helper [50 h]; Physical Progress [590 h]; Concrete M40 [396 m3]; TATA Projects Ltd-25 | 3,907,332 |
|  | 2 | **Slab** |  | 2027-03-13 | 2027-04-19 |  |  |  |
| RB1-SS-B02.600 |  | Shuttering | 5d | 2027-03-13 | 2027-03-19 | RB1-SS-B02.595 | Carpenter [6790 h]; Helper [3400 h]; Physical Progress [2960 h]; Formwork [4070 Sq m]; TATA Projects Ltd-25 | 4,742,201.2 |
| RB1-SS-B02.620 |  | Reinforcement Bottom Net with chairs | 3d | 2027-03-19 | 2027-03-24 | RB1-SS-B02.600 | Barbender [1540 h]; Helper [770 h]; Physical Progress [1780 h]; Reinforcement Steel [23 MT1]; TATA Projects Ltd-25 | 2,219,787.5 |
| RB1-SS-B02.635 |  | Laying of PT Tendon | 4d | 2027-03-24 | 2027-03-30 | RB1-SS-B02.620 | Physical Progress [2370 h]; TATA Projects Ltd-25 |  |
| RB1-SS-B02.640 |  | Reinforcement Top Net | 3d | 2027-03-30 | 2027-04-02 | RB1-SS-B02.635 | Barbender [1540 h]; Helper [770 h]; Physical Progress [1780 h]; Reinforcement Steel [23 MT1]; TATA Projects Ltd-25 | 2,219,787.5 |
| RB1-SS-B02.650 |  | MEP Coordination | 1d | 2027-04-02 | 2027-04-03 | RB1-SS-B02.620, RB1-SS-B02.640 | Physical Progress [590 h]; TATA Projects Ltd-25 |  |
| RB1-SS-B02.655 |  | Concrete of Slab | 1d | 2027-04-03 | 2027-04-05 | RB1-SS-B02.650 | Mason [50 h]; Helper [50 h]; Physical Progress [590 h]; Concrete M40 [1017 m3]; TATA Projects Ltd-25 | 10,034,739 |
| RB1-SS-B02.660 |  | Wait for Strength Gain | 6d | 2027-04-05 | 2027-04-12 | RB1-SS-B02.655 | Physical Progress [3550 h]; TATA Projects Ltd-25 |  |
| RB1-SS-B02.665 |  | PT Work | 6d | 2027-04-12 | 2027-04-19 | RB1-SS-B02.660, RB1-SS-B03.840 | PT [11 MT1]; Helper [100 h]; PT Fitter [100 h]; Physical Progress [4740 h]; TATA Projects Ltd-25 | 2,090,000 |
|  | 2 | **Basement 01** |  | 2027-03-02 | 2027-06-09 |  |  |  |
|  | 1 | **Pour 1** |  | 2027-03-24 | 2027-05-21 |  |  |  |
|  | 1 | **Column, Core Wall, Shear Wall - First Lift** |  | 2027-03-24 | 2027-04-05 |  |  |  |
| RB1-SS-B01.10 |  | Reinforcement | 4d | 2027-03-24 | 2027-03-29 | RB1-SS-B02.265 | Barbender [1670 h]; Helper [840 h]; Physical Progress [2370 h]; Reinforcement Steel [25 MT1]; TATA Projects Ltd-25 | 2,412,812.5 |
| RB1-SS-B01.25 |  | LPS | 1d | 2027-03-30 | 2027-03-30 | RB1-SS-B01.10 | LPS [36235 INR]; Physical Progress [590 h]; TATA Projects Ltd-25 | 36,235 |
| RB1-SS-B01.35 |  | Shuttering | 4d | 2027-03-31 | 2027-04-03 | RB1-SS-B01.10, RB1-SS-B01.25 | Carpenter [800 h]; Helper [400 h]; Physical Progress [2370 h]; Formwork [477 Sq m]; TATA Projects Ltd-25 | 555,781.32 |
| RB1-SS-B01.60 |  | Concrete | 1d | 2027-04-05 | 2027-04-05 | RB1-SS-B01.35 | Mason [50 h]; Helper [50 h]; Physical Progress [590 h]; Concrete M40 [119 m3]; TATA Projects Ltd-25 | 1,174,173 |
|  | 4 | **Column, Core Wall, Shear Wall - Second Lift** |  | 2027-04-06 | 2027-04-16 |  |  |  |
| RB1-SS-B01.70 |  | Reinforcement | 4d | 2027-04-06 | 2027-04-09 | RB1-SS-B01.60 | Barbender [1670 h]; Helper [840 h]; Physical Progress [2370 h]; Reinforcement Steel [25 MT1]; TATA Projects Ltd-25 | 2,412,812.5 |
| RB1-SS-B01.100 |  | LPS | 1d | 2027-04-10 | 2027-04-10 | RB1-SS-B01.70 | LPS [36235 INR]; Physical Progress [590 h]; TATA Projects Ltd-25 | 36,235 |
| RB1-SS-B01.110 |  | Shuttering | 4d | 2027-04-12 | 2027-04-15 | RB1-SS-B01.70, RB1-SS-B01.100 | Carpenter [800 h]; Helper [400 h]; Physical Progress [2370 h]; Formwork [477 Sq m]; TATA Projects Ltd-25 | 555,781.32 |
| RB1-SS-B01.175 |  | Concrete | 1d | 2027-04-16 | 2027-04-16 | RB1-SS-B01.110 | Mason [50 h]; Helper [50 h]; Physical Progress [590 h]; Concrete M40 [119 m3]; TATA Projects Ltd-25 | 1,174,173 |

| ID | WBS | Activity | Duration | Start | Finish | Predecessors | Resources | Cost |
| --- | --- | --- | --- | --- | --- | --- | --- | --- |
|  | 3 | **Staircase** |  | 2027-03-24 | 2027-05-04 |  |  |  |
| RB1-SS-B01.15 |  | Reinforcement of wall upto Flight 1 | 2d | 2027-03-24 | 2027-03-25 | RB1-SS-B02.265 | Barbender [70 h]; Helper [40 h]; Physical Progress [1190 h]; Reinforcement Steel [1 MT1]; TATA Projects Ltd-25 | 96,512.5 |
| RB1-SS-B01.20 |  | Shuttering of wall upto Flight 1 | 2d | 2027-03-27 | 2027-03-29 | RB1-SS-B01.15 | Carpenter [20 h]; Helper [10 h]; Physical Progress [1190 h]; Formwork [10 Sq m]; TATA Projects Ltd-25 | 11,651.6 |
| RB1-SS-B01.30 |  | Casting of wall upto Flight 1 | 1d | 2027-03-30 | 2027-03-30 | RB1-SS-B01.20 | Mason; Helper; Physical Progress [590 h]; Concrete M40 [3 m3]; TATA Projects Ltd-25 | 29,601 |
| RB1-SS-B01.40 |  | Shuttering of Staircase upto Flight 1 | 1d | 2027-03-31 | 2027-03-31 | RB1-SS-B01.30 | Carpenter [20 h]; Helper [10 h]; Physical Progress [590 h]; Formwork [10 Sq m]; TATA Projects Ltd-25 | 11,651.6 |
| RB1-SS-B01.45 |  | Reinforcement of Staircase upto Flight 1 | 1d | 2027-04-01 | 2027-04-01 | RB1-SS-B01.40 | Barbender [70 h]; Helper [40 h]; Physical Progress [590 h]; Reinforcement Steel [1 MT1]; TATA Projects Ltd-25 | 96,512.5 |
| RB1-SS-B01.50 |  | MEP coordination upto Flight 1 | 1d | 2027-04-02 | 2027-04-02 | RB1-SS-B01.45 | Physical Progress [590 h]; TATA Projects Ltd-25 |  |
| RB1-SS-B01.55 |  | Casting of Staircase upto Flight 1 | 1d | 2027-04-03 | 2027-04-03 | RB1-SS-B01.50 | Mason; Helper; Physical Progress [590 h]; Concrete M40 [3 m3]; TATA Projects Ltd-25 | 29,601 |
| RB1-SS-B01.65 |  | Reinforcement of wall upto Flight 2 | 2d | 2027-04-05 | 2027-04-06 | RB1-SS-B01.55 | Barbender [70 h]; Helper [40 h]; Physical Progress [1190 h]; Reinforcement Steel [1 MT1]; TATA Projects Ltd-25 | 96,512.5 |
| RB1-SS-B01.75 |  | Shuttering of wall upto Flight 2 | 2d | 2027-04-07 | 2027-04-08 | RB1-SS-B01.65 | Carpenter [20 h]; Helper [10 h]; Physical Progress [1190 h]; Formwork [10 Sq m]; TATA Projects Ltd-25 | 11,651.6 |
| RB1-SS-B01.85 |  | Casting of wall upto Flight 2 | 1d | 2027-04-09 | 2027-04-09 | RB1-SS-B01.75 | Mason; Helper; Physical Progress [590 h]; Concrete M40 [3 m3]; TATA Projects Ltd-25 | 29,601 |
| RB1-SS-B01.105 |  | Shuttering of Staircase upto Flight 2 | 1d | 2027-04-10 | 2027-04-10 | RB1-SS-B01.85 | Carpenter [20 h]; Helper [10 h]; Physical Progress [590 h]; Formwork [10 Sq m]; TATA Projects Ltd-25 | 11,651.6 |
| RB1-SS-B01.115 |  | Reinforcement of Staircase upto Flight 2 | 1d | 2027-04-12 | 2027-04-12 | RB1-SS-B01.105 | Barbender [70 h]; Helper [40 h]; Physical Progress [590 h]; Reinforcement Steel [1 MT1]; TATA Projects Ltd-25 | 96,512.5 |
| RB1-SS-B01.130 |  | MEP coordination upto Flight 2 | 1d | 2027-04-13 | 2027-04-13 | RB1-SS-B01.115 | Physical Progress [590 h]; TATA Projects Ltd-25 |  |
| RB1-SS-B01.140 |  | Casting of Staircase upto Flight 2 | 1d | 2027-04-14 | 2027-04-14 | RB1-SS-B01.130 | Mason; Helper; Physical Progress [590 h]; Concrete M40 [3 m3]; TATA Projects Ltd-25 | 29,601 |
| RB1-SS-B01.160 |  | Reinforcement of wall upto Flight 3 | 2d | 2027-04-15 | 2027-04-16 | RB1-SS-B01.140 | Barbender [70 h]; Helper [40 h]; Physical Progress [1190 h]; Reinforcement Steel [1 MT1]; TATA Projects Ltd-25 | 96,512.5 |
| RB1-SS-B01.195 |  | Shuttering of wall upto Flight 3 | 2d | 2027-04-17 | 2027-04-19 | RB1-SS-B01.160 | Carpenter [20 h]; Helper [10 h]; Physical Progress [1190 h]; Formwork [10 Sq m]; TATA Projects Ltd-25 | 11,651.6 |
| RB1-SS-B01.230 |  | Casting of wall upto Flight 3 | 1d | 2027-04-20 | 2027-04-20 | RB1-SS-B01.195 | Mason; Helper; Physical Progress [590 h]; Concrete M40 [3 m3]; TATA Projects Ltd-25 | 29,601 |
| RB1-SS-B01.255 |  | Shuttering of Staircase upto Flight 3 | 1d | 2027-04-21 | 2027-04-21 | RB1-SS-B01.230 | Carpenter [20 h]; Helper [10 h]; Physical Progress [590 h]; Formwork [10 Sq m]; TATA Projects Ltd-25 | 11,651.6 |
| RB1-SS-B01.260 |  | Reinforcement of Staircase upto Flight 3 | 1d | 2027-04-22 | 2027-04-22 | RB1-SS-B01.255 | Barbender [70 h]; Helper [40 h]; Physical Progress [590 h]; Reinforcement Steel [1 MT1]; TATA Projects Ltd-25 | 96,512.5 |
| RB1-SS-B01.285 |  | MEP coordination upto Flight 3 | 1d | 2027-04-23 | 2027-04-23 | RB1-SS-B01.260 | Physical Progress [590 h]; TATA Projects Ltd-25 |  |
| RB1-SS-B01.295 |  | Casting of Staircase upto Flight 3 | 1d | 2027-04-24 | 2027-04-24 | RB1-SS-B01.285 | Mason; Helper; Physical Progress [590 h]; Concrete M40 [3 m3]; TATA Projects Ltd-25 | 29,601 |
| RB1-SS-B01.325 |  | Reinforcement of wall upto Flight 4 | 2d | 2027-04-26 | 2027-04-27 | RB1-SS-B01.295 | Barbender [70 h]; Helper [40 h]; Physical Progress [1190 h]; Reinforcement Steel [1 MT1]; TATA Projects Ltd-25 | 96,512.5 |
| RB1-SS-B01.370 |  | Shuttering of wall upto Flight 4 | 2d | 2027-04-28 | 2027-04-29 | RB1-SS-B01.325 | Carpenter [20 h]; Helper [10 h]; Physical Progress [1190 h]; Formwork [10 Sq m]; TATA Projects Ltd-25 | 11,651.6 |
| RB1-SS-B01.410 |  | Casting of wall upto Flight 4 | 1d | 2027-04-30 | 2027-04-30 | RB1-SS-B01.370 | Mason; Helper; Physical Progress [590 h]; Concrete M40 [3 m3]; TATA Projects Ltd-25 | 29,601 |
| RB1-SS-B01.445 |  | Shuttering of Staircase upto Flight 4 | 1d | 2027-05-03 | 2027-05-03 | RB1-SS-B01.410 | Carpenter [20 h]; Helper [10 h]; Physical Progress [590 h]; Formwork [10 Sq m]; TATA Projects Ltd-25 | 11,651.6 |
| RB1-SS-B01.455 |  | Reinforcement of Staircase upto Flight 4 | 1d | 2027-05-04 | 2027-05-04 | RB1-SS-B01.445 | Barbender [70 h]; Helper [40 h]; Physical Progress [590 h]; Reinforcement Steel [1 MT1]; TATA Projects Ltd-25 | 96,512.5 |

| ID | WBS | Activity | Duration | Start | Finish | Predecessors | Resources | Cost |
| --- | --- | --- | --- | --- | --- | --- | --- | --- |
|  | 2 | **Slab** |  | 2027-04-17 | 2027-05-21 |  |  |  |
| RB1-SS-B01.190 |  | Shuttering | 5d | 2027-04-17 | 2027-04-22 | RB1-SS-B01.175 | Carpenter [4970 h]; Helper [2490 h]; Physical Progress [2950 h]; Formwork [2981 Sq m]; TATA Projects Ltd-25 | 3,473,341.96 |
| RB1-SS-B01.280 |  | Reinforcement Bottom Net with chairs | 3d | 2027-04-23 | 2027-04-26 | RB1-SS-B01.190 | Barbender [1200 h]; Helper [600 h]; Physical Progress [1780 h]; Reinforcement Steel [18 MT1]; TATA Projects Ltd-25 | 1,737,225 |
| RB1-SS-B01.345 |  | Laying of PT Tendon | 4d | 2027-04-27 | 2027-04-30 | RB1-SS-B01.280 | Physical Progress [2370 h]; TATA Projects Ltd-25 |  |
| RB1-SS-B01.430 |  | Reinforcement Top Net | 3d | 2027-05-03 | 2027-05-05 | RB1-SS-B01.345 | Barbender [1200 h]; Helper [600 h]; Physical Progress [1780 h]; Reinforcement Steel [18 MT1]; TATA Projects Ltd-25 | 1,737,225 |
| RB1-SS-B01.475 |  | MEP Coordination | 1d | 2027-05-06 | 2027-05-06 | RB1-SS-B01.280, RB1-SS-B01.430, RB1-SS-B01.455 | Physical Progress [590 h]; TATA Projects Ltd-25 |  |
| RB1-SS-B01.495 |  | Concrete of Slab | 1d | 2027-05-07 | 2027-05-07 | RB1-SS-B01.475 | Mason [50 h]; Helper [50 h]; Physical Progress [590 h]; Concrete M40 [745 m3]; TATA Projects Ltd-25 | 7,350,915 |
| RB1-SS-B01.525 |  | Wait for Strength Gain | 6d | 2027-05-08 | 2027-05-14 | RB1-SS-B01.495 | Physical Progress [3550 h]; TATA Projects Ltd-25 |  |
| RB1-SS-B01.640 |  | PT Work | 6d | 2027-05-15 | 2027-05-21 | RB1-SS-B01.525, RB1-SS-B02.350 | PT [8 MT1]; Helper [100 h]; PT Fitter [100 h]; Physical Progress [4740 h]; TATA Projects Ltd-25 | 1,520,000 |
|  | 2 | **Pour 2** |  | 2027-03-02 | 2027-04-30 |  |  |  |
|  | 1 | **Column, Core Wall, Shear Wall - First Lift** |  | 2027-03-02 | 2027-03-13 |  |  |  |
| RB1-SS-B01.80 |  | Reinforcement | 4d | 2027-03-02 | 2027-03-05 | RB1-SS-B02.395 | Barbender [2340 h]; Helper [1170 h]; Physical Progress [2370 h]; Reinforcement Steel [35 MT1]; TATA Projects Ltd-25 | 3,377,937.5 |
| RB1-SS-B01.135 |  | LPS | 1d | 2027-03-06 | 2027-03-06 | RB1-SS-B01.80 | LPS [36235 INR]; Physical Progress [590 h]; TATA Projects Ltd-25 | 36,235 |
| RB1-SS-B01.155 |  | Shuttering | 4d | 2027-03-08 | 2027-03-12 | RB1-SS-B01.80, RB1-SS-B01.135 | Carpenter [1120 h]; Helper [560 h]; Physical Progress [2370 h]; Formwork [672 Sq m]; TATA Projects Ltd-25 | 782,987.52 |
| RB1-SS-B01.220 |  | Concrete | 1d | 2027-03-13 | 2027-03-13 | RB1-SS-B01.155 | Mason [50 h]; Helper [50 h]; Physical Progress [590 h]; Concrete M40 [168 m3]; TATA Projects Ltd-25 | 1,657,656 |
|  | 3 | **Staircase - 1** |  | 2027-03-02 | 2027-04-13 |  |  |  |
| RB1-SS-B01.90 |  | Reinforcement of wall upto Flight 1 | 2d | 2027-03-02 | 2027-03-03 | RB1-SS-B02.395 | Barbender [70 h]; Helper [40 h]; Physical Progress [1190 h]; Reinforcement Steel [1 MT1]; TATA Projects Ltd-25 | 96,512.5 |
| RB1-SS-B01.120 |  | Shuttering of wall upto Flight 1 | 2d | 2027-03-04 | 2027-03-05 | RB1-SS-B01.90 | Carpenter [20 h]; Helper [10 h]; Physical Progress [1190 h]; Formwork [10 Sq m]; TATA Projects Ltd-25 | 11,651.6 |
| RB1-SS-B01.145 |  | Casting of wall upto Flight 1 | 1d | 2027-03-06 | 2027-03-06 | RB1-SS-B01.120 | Mason; Helper; Physical Progress [590 h]; Concrete M40 [3 m3]; TATA Projects Ltd-25 | 29,601 |
| RB1-SS-B01.165 |  | Shuttering of Staircase upto Flight 1 | 1d | 2027-03-08 | 2027-03-08 | RB1-SS-B01.145 | Carpenter [20 h]; Helper [10 h]; Physical Progress [590 h]; Formwork [10 Sq m]; TATA Projects Ltd-25 | 11,651.6 |
| RB1-SS-B01.180 |  | Reinforcement of Staircase upto Flight 1 | 1d | 2027-03-09 | 2027-03-09 | RB1-SS-B01.165 | Barbender [70 h]; Helper [40 h]; Physical Progress [590 h]; Reinforcement Steel [1 MT1]; TATA Projects Ltd-25 | 96,512.5 |
| RB1-SS-B01.200 |  | MEP coordination upto Flight 1 | 1d | 2027-03-11 | 2027-03-11 | RB1-SS-B01.180 | Physical Progress [590 h]; TATA Projects Ltd-25 |  |
| RB1-SS-B01.210 |  | Casting of Staircase upto Flight 1 | 1d | 2027-03-12 | 2027-03-12 | RB1-SS-B01.200 | Mason; Helper; Physical Progress [590 h]; Concrete M40 [3 m3]; TATA Projects Ltd-25 | 29,601 |
| RB1-SS-B01.240 |  | Reinforcement of wall upto Flight 2 | 2d | 2027-03-13 | 2027-03-15 | RB1-SS-B01.210 | Barbender [70 h]; Helper [40 h]; Physical Progress [1190 h]; Reinforcement Steel [1 MT1]; TATA Projects Ltd-25 | 96,512.5 |
| RB1-SS-B01.270 |  | Shuttering of wall upto Flight 2 | 2d | 2027-03-16 | 2027-03-17 | RB1-SS-B01.240 | Carpenter [20 h]; Helper [10 h]; Physical Progress [1190 h]; Formwork [10 Sq m]; TATA Projects Ltd-25 | 11,651.6 |
| RB1-SS-B01.305 |  | Casting of wall upto Flight 2 | 1d | 2027-03-18 | 2027-03-18 | RB1-SS-B01.270 | Mason; Helper; Physical Progress [590 h]; Concrete M40 [3 m3]; TATA Projects Ltd-25 | 29,601 |
| RB1-SS-B01.335 |  | Shuttering of Staircase upto Flight 2 | 1d | 2027-03-19 | 2027-03-19 | RB1-SS-B01.305 | Carpenter [20 h]; Helper [10 h]; Physical Progress [590 h]; Formwork [10 Sq m]; TATA Projects Ltd-25 | 11,651.6 |
| RB1-SS-B01.360 |  | Reinforcement of Staircase upto Flight 2 | 1d | 2027-03-20 | 2027-03-20 | RB1-SS-B01.335 | Barbender [70 h]; Helper [40 h]; Physical Progress [590 h]; Reinforcement Steel [1 MT1]; TATA Projects Ltd-25 | 96,512.5 |
| RB1-SS-B01.380 |  | MEP coordination upto Flight 2 | 1d | 2027-03-23 | 2027-03-23 | RB1-SS-B01.360 | Physical Progress [590 h]; TATA Projects Ltd-25 |  |
| RB1-SS-B01.395 |  | Casting of Staircase upto Flight 2 | 1d | 2027-03-24 | 2027-03-24 | RB1-SS-B01.380 | Mason; Helper; Physical Progress [590 h]; Concrete M40 [3 m3]; TATA Projects Ltd-25 | 29,601 |
| RB1-SS-B01.420 |  | Reinforcement of wall upto Flight 3 | 2d | 2027-03-25 | 2027-03-27 | RB1-SS-B01.395 | Barbender [70 h]; Helper [40 h]; Physical Progress [1190 h]; Reinforcement Steel [1 MT1]; TATA Projects Ltd-25 | 96,512.5 |
| RB1-SS-B01.465 |  | Shuttering of wall upto Flight 3 | 2d | 2027-03-29 | 2027-03-30 | RB1-SS-B01.420 | Carpenter [20 h]; Helper [10 h]; Physical Progress [1190 h]; Formwork [10 Sq m]; TATA Projects Ltd-25 | 11,651.6 |
| RB1-SS-B01.485 |  | Casting of wall upto Flight 3 | 1d | 2027-03-31 | 2027-03-31 | RB1-SS-B01.465 | Mason; Helper; Physical Progress [590 h]; Concrete M40 [3 m3]; TATA Projects Ltd-25 | 29,601 |
| RB1-SS-B01.515 |  | Shuttering of Staircase upto Flight 3 | 1d | 2027-04-01 | 2027-04-01 | RB1-SS-B01.485 | Carpenter [20 h]; Helper [10 h]; Physical Progress [590 h]; Formwork [10 Sq m]; TATA Projects Ltd-25 | 11,651.6 |
| RB1-SS-B01.540 |  | Reinforcement of Staircase upto Flight 3 | 1d | 2027-04-02 | 2027-04-02 | RB1-SS-B01.515 | Barbender [70 h]; Helper [40 h]; Physical Progress [590 h]; Reinforcement Steel [1 MT1]; TATA Projects Ltd-25 | 96,512.5 |
| RB1-SS-B01.560 |  | MEP coordination upto Flight 3 | 1d | 2027-04-03 | 2027-04-03 | RB1-SS-B01.540 | Physical Progress [590 h]; TATA Projects Ltd-25 |  |
| RB1-SS-B01.575 |  | Casting of Staircase upto Flight 3 | 1d | 2027-04-05 | 2027-04-05 | RB1-SS-B01.560 | Mason; Helper; Physical Progress [590 h]; Concrete M40 [3 m3]; TATA Projects Ltd-25 | 29,601 |
| RB1-SS-B01.595 |  | Reinforcement of wall upto Flight 4 | 2d | 2027-04-06 | 2027-04-07 | RB1-SS-B01.575 | Barbender [70 h]; Helper [40 h]; Physical Progress [1190 h]; Reinforcement Steel [1 MT1]; TATA Projects Ltd-25 | 96,512.5 |
| RB1-SS-B01.630 |  | Shuttering of wall upto Flight 4 | 2d | 2027-04-08 | 2027-04-09 | RB1-SS-B01.595 | Carpenter [20 h]; Helper [10 h]; Physical Progress [1190 h]; Formwork [10 Sq m]; TATA Projects Ltd-25 | 11,651.6 |
| RB1-SS-B01.650 |  | Casting of wall upto Flight 4 | 1d | 2027-04-10 | 2027-04-10 | RB1-SS-B01.630 | Mason; Helper; Physical Progress [590 h]; Concrete M40 [3 m3]; TATA Projects Ltd-25 | 29,601 |
| RB1-SS-B01.675 |  | Shuttering of Staircase upto Flight 4 | 1d | 2027-04-12 | 2027-04-12 | RB1-SS-B01.650 | Carpenter [20 h]; Helper [10 h]; Physical Progress [590 h]; Formwork [10 Sq m]; TATA Projects Ltd-25 | 11,651.6 |
| RB1-SS-B01.695 |  | Reinforcement of Staircase upto Flight 4 | 1d | 2027-04-13 | 2027-04-13 | RB1-SS-B01.675 | Barbender [70 h]; Helper [40 h]; Physical Progress [590 h]; Reinforcement Steel [1 MT1]; TATA Projects Ltd-25 | 96,512.5 |

| ID | WBS | Activity | Duration | Start | Finish | Predecessors | Resources | Cost |
| --- | --- | --- | --- | --- | --- | --- | --- | --- |
|  | 4 | **Column, Core Wall, Shear Wall - Second Lift** |  | 2027-03-15 | 2027-03-27 |  |  |  |
| RB1-SS-B01.250 |  | Reinforcement | 4d | 2027-03-15 | 2027-03-18 | RB1-SS-B01.220 | Barbender [2340 h]; Helper [1170 h]; Physical Progress [2370 h]; Reinforcement Steel [35 MT1]; TATA Projects Ltd-25 | 3,377,937.5 |
| RB1-SS-B01.315 |  | LPS | 1d | 2027-03-19 | 2027-03-19 | RB1-SS-B01.250 | LPS [36235 INR]; Physical Progress [590 h]; TATA Projects Ltd-25 | 36,235 |
| RB1-SS-B01.350 |  | Shuttering | 4d | 2027-03-20 | 2027-03-25 | RB1-SS-B01.250, RB1-SS-B01.315 | Carpenter [1120 h]; Helper [560 h]; Physical Progress [2370 h]; Formwork [672 Sq m]; TATA Projects Ltd-25 | 782,987.52 |
| RB1-SS-B01.435 |  | Concrete | 1d | 2027-03-27 | 2027-03-27 | RB1-SS-B01.350 | Mason [50 h]; Helper [50 h]; Physical Progress [590 h]; Concrete M40 [168 m3]; TATA Projects Ltd-25 | 1,657,656 |
|  | 5 | **Staircase - 2** |  | 2027-03-02 | 2027-04-13 |  |  |  |
| RB1-SS-B01.95 |  | Reinforcement of wall upto Flight 1 | 2d | 2027-03-02 | 2027-03-03 | RB1-SS-B02.395 | Barbender [70 h]; Helper [40 h]; Physical Progress [1190 h]; Reinforcement Steel [1 MT1]; TATA Projects Ltd-25 | 96,512.5 |
| RB1-SS-B01.125 |  | Shuttering of wall upto Flight 1 | 2d | 2027-03-04 | 2027-03-05 | RB1-SS-B01.95 | Carpenter [20 h]; Helper [10 h]; Physical Progress [1190 h]; Formwork [10 Sq m]; TATA Projects Ltd-25 | 11,651.6 |
| RB1-SS-B01.150 |  | Casting of wall upto Flight 1 | 1d | 2027-03-06 | 2027-03-06 | RB1-SS-B01.125 | Mason; Helper; Physical Progress [590 h]; Concrete M40 [3 m3]; TATA Projects Ltd-25 | 29,601 |
| RB1-SS-B01.170 |  | Shuttering of Staircase upto Flight 1 | 1d | 2027-03-08 | 2027-03-08 | RB1-SS-B01.150 | Carpenter [20 h]; Helper [10 h]; Physical Progress [590 h]; Formwork [10 Sq m]; TATA Projects Ltd-25 | 11,651.6 |
| RB1-SS-B01.185 |  | Reinforcement of Staircase upto Flight 1 | 1d | 2027-03-09 | 2027-03-09 | RB1-SS-B01.170 | Barbender [70 h]; Helper [40 h]; Physical Progress [590 h]; Reinforcement Steel [1 MT1]; TATA Projects Ltd-25 | 96,512.5 |
| RB1-SS-B01.205 |  | MEP coordination upto Flight 1 | 1d | 2027-03-11 | 2027-03-11 | RB1-SS-B01.185 | Physical Progress [590 h]; TATA Projects Ltd-25 |  |
| RB1-SS-B01.215 |  | Casting of Staircase upto Flight 1 | 1d | 2027-03-12 | 2027-03-12 | RB1-SS-B01.205 | Mason; Helper; Physical Progress [590 h]; Concrete M40 [3 m3]; TATA Projects Ltd-25 | 29,601 |
| RB1-SS-B01.245 |  | Reinforcement of wall upto Flight 2 | 2d | 2027-03-13 | 2027-03-15 | RB1-SS-B01.215 | Barbender [70 h]; Helper [40 h]; Physical Progress [1190 h]; Reinforcement Steel [1 MT1]; TATA Projects Ltd-25 | 96,512.5 |
| RB1-SS-B01.275 |  | Shuttering of wall upto Flight 2 | 2d | 2027-03-16 | 2027-03-17 | RB1-SS-B01.245 | Carpenter [20 h]; Helper [10 h]; Physical Progress [1190 h]; Formwork [10 Sq m]; TATA Projects Ltd-25 | 11,651.6 |
| RB1-SS-B01.310 |  | Casting of wall upto Flight 2 | 1d | 2027-03-18 | 2027-03-18 | RB1-SS-B01.275 | Mason; Helper; Physical Progress [590 h]; Concrete M40 [3 m3]; TATA Projects Ltd-25 | 29,601 |
| RB1-SS-B01.340 |  | Shuttering of Staircase upto Flight 2 | 1d | 2027-03-19 | 2027-03-19 | RB1-SS-B01.310 | Carpenter [20 h]; Helper [10 h]; Physical Progress [590 h]; Formwork [10 Sq m]; TATA Projects Ltd-25 | 11,651.6 |
| RB1-SS-B01.365 |  | Reinforcement of Staircase upto Flight 2 | 1d | 2027-03-20 | 2027-03-20 | RB1-SS-B01.340 | Barbender [70 h]; Helper [40 h]; Physical Progress [590 h]; Reinforcement Steel [1 MT1]; TATA Projects Ltd-25 | 96,512.5 |
| RB1-SS-B01.385 |  | MEP coordination upto Flight 2 | 1d | 2027-03-23 | 2027-03-23 | RB1-SS-B01.365 | Physical Progress [590 h]; TATA Projects Ltd-25 |  |
| RB1-SS-B01.400 |  | Casting of Staircase upto Flight 2 | 1d | 2027-03-24 | 2027-03-24 | RB1-SS-B01.385 | Mason; Helper; Physical Progress [590 h]; Concrete M40 [3 m3]; TATA Projects Ltd-25 | 29,601 |
| RB1-SS-B01.425 |  | Reinforcement of wall upto Flight 3 | 2d | 2027-03-25 | 2027-03-27 | RB1-SS-B01.400 | Barbender [70 h]; Helper [40 h]; Physical Progress [1190 h]; Reinforcement Steel [1 MT1]; TATA Projects Ltd-25 | 96,512.5 |
| RB1-SS-B01.470 |  | Shuttering of wall upto Flight 3 | 2d | 2027-03-29 | 2027-03-30 | RB1-SS-B01.425 | Carpenter [20 h]; Helper [10 h]; Physical Progress [1190 h]; Formwork [10 Sq m]; TATA Projects Ltd-25 | 11,651.6 |
| RB1-SS-B01.490 |  | Casting of wall upto Flight 3 | 1d | 2027-03-31 | 2027-03-31 | RB1-SS-B01.470 | Mason; Helper; Physical Progress [590 h]; Concrete M40 [3 m3]; TATA Projects Ltd-25 | 29,601 |
| RB1-SS-B01.520 |  | Shuttering of Staircase upto Flight 3 | 1d | 2027-04-01 | 2027-04-01 | RB1-SS-B01.490 | Carpenter [20 h]; Helper [10 h]; Physical Progress [590 h]; Formwork [10 Sq m]; TATA Projects Ltd-25 | 11,651.6 |
| RB1-SS-B01.545 |  | Reinforcement of Staircase upto Flight 3 | 1d | 2027-04-02 | 2027-04-02 | RB1-SS-B01.520 | Barbender [70 h]; Helper [40 h]; Physical Progress [590 h]; Reinforcement Steel [1 MT1]; TATA Projects Ltd-25 | 96,512.5 |
| RB1-SS-B01.565 |  | MEP coordination upto Flight 3 | 1d | 2027-04-03 | 2027-04-03 | RB1-SS-B01.545 | Physical Progress [590 h]; TATA Projects Ltd-25 |  |
| RB1-SS-B01.580 |  | Casting of Staircase upto Flight 3 | 1d | 2027-04-05 | 2027-04-05 | RB1-SS-B01.565 | Mason; Helper; Physical Progress [590 h]; Concrete M40 [3 m3]; TATA Projects Ltd-25 | 29,601 |
| RB1-SS-B01.600 |  | Reinforcement of wall upto Flight 4 | 2d | 2027-04-06 | 2027-04-07 | RB1-SS-B01.580 | Barbender [70 h]; Helper [40 h]; Physical Progress [1190 h]; Reinforcement Steel [1 MT1]; TATA Projects Ltd-25 | 96,512.5 |
| RB1-SS-B01.635 |  | Shuttering of wall upto Flight 4 | 2d | 2027-04-08 | 2027-04-09 | RB1-SS-B01.600 | Carpenter [20 h]; Helper [10 h]; Physical Progress [1190 h]; Formwork [10 Sq m]; TATA Projects Ltd-25 | 11,651.6 |
| RB1-SS-B01.655 |  | Casting of wall upto Flight 4 | 1d | 2027-04-10 | 2027-04-10 | RB1-SS-B01.635 | Mason; Helper; Physical Progress [590 h]; Concrete M40 [3 m3]; TATA Projects Ltd-25 | 29,601 |
| RB1-SS-B01.680 |  | Shuttering of Staircase upto Flight 4 | 1d | 2027-04-12 | 2027-04-12 | RB1-SS-B01.655 | Carpenter [20 h]; Helper [10 h]; Physical Progress [590 h]; Formwork [10 Sq m]; TATA Projects Ltd-25 | 11,651.6 |
| RB1-SS-B01.700 |  | Reinforcement of Staircase upto Flight 4 | 1d | 2027-04-13 | 2027-04-13 | RB1-SS-B01.680 | Barbender [70 h]; Helper [40 h]; Physical Progress [590 h]; Reinforcement Steel [1 MT1]; TATA Projects Ltd-25 | 96,512.5 |

| ID | WBS | Activity | Duration | Start | Finish | Predecessors | Resources | Cost |
| --- | --- | --- | --- | --- | --- | --- | --- | --- |
|  | 2 | **Slab** |  | 2027-03-29 | 2027-04-30 |  |  |  |
| RB1-SS-B01.450 |  | Shuttering | 5d | 2027-03-29 | 2027-04-02 | RB1-SS-B01.435 | Carpenter [7000 h]; Helper [3500 h]; Physical Progress [2950 h]; Formwork [4198 Sq m]; TATA Projects Ltd-25 | 4,891,341.68 |
| RB1-SS-B01.550 |  | Reinforcement Bottom Net with chairs | 3d | 2027-04-03 | 2027-04-06 | RB1-SS-B01.450 | Barbender [1740 h]; Helper [870 h]; Physical Progress [1780 h]; Reinforcement Steel [26 MT1]; TATA Projects Ltd-25 | 2,509,325 |
| RB1-SS-B01.605 |  | Laying of PT Tendon | 4d | 2027-04-07 | 2027-04-10 | RB1-SS-B01.550 | Physical Progress [2370 h]; TATA Projects Ltd-25 |  |
| RB1-SS-B01.660 |  | Reinforcement Top Net | 3d | 2027-04-12 | 2027-04-14 | RB1-SS-B01.605 | Barbender [1740 h]; Helper [870 h]; Physical Progress [1780 h]; Reinforcement Steel [26 MT1]; TATA Projects Ltd-25 | 2,509,325 |
| RB1-SS-B01.720 |  | MEP Coordination | 1d | 2027-04-15 | 2027-04-15 | RB1-SS-B01.550, RB1-SS-B01.660, RB1-SS-B01.700, RB1-SS-B01.695 | Physical Progress [590 h]; TATA Projects Ltd-25 |  |
| RB1-SS-B01.730 |  | Concrete of Slab | 1d | 2027-04-16 | 2027-04-16 | RB1-SS-B01.720 | Mason [50 h]; Helper [50 h]; Physical Progress [590 h]; Concrete M40 [1050 m3]; TATA Projects Ltd-25 | 10,360,350 |
| RB1-SS-B01.740 |  | Wait for Strength Gain | 6d | 2027-04-17 | 2027-04-23 | RB1-SS-B01.730 | Physical Progress [3550 h]; TATA Projects Ltd-25 |  |
| RB1-SS-B01.800 |  | PT Work | 6d | 2027-04-24 | 2027-04-30 | RB1-SS-B01.740, RB1-SS-B02.430 | PT [11 MT1]; Helper [100 h]; PT Fitter [100 h]; Physical Progress [4740 h]; TATA Projects Ltd-25 | 2,090,000 |
|  | 3 | **Pour 3** |  | 2027-03-20 | 2027-05-19 |  |  |  |
|  | 1 | **Column, Core Wall, Shear Wall - First Lift** |  | 2027-03-20 | 2027-04-02 |  |  |  |
| RB1-SS-B01.225 |  | Reinforcement | 4d | 2027-03-20 | 2027-03-25 | RB1-SS-B02.445 | Barbender [2270 h]; Helper [1140 h]; Physical Progress [2370 h]; Reinforcement Steel [34 MT1]; TATA Projects Ltd-25 | 3,281,425 |
| RB1-SS-B01.290 |  | LPS | 1d | 2027-03-27 | 2027-03-27 | RB1-SS-B01.225 | LPS [36235 INR]; Physical Progress [590 h]; TATA Projects Ltd-25 | 36,235 |
| RB1-SS-B01.320 |  | Shuttering | 4d | 2027-03-29 | 2027-04-01 | RB1-SS-B01.225, RB1-SS-B01.290 | Carpenter [1090 h]; Helper [550 h]; Physical Progress [2370 h]; Formwork [649 Sq m]; TATA Projects Ltd-25 | 756,188.84 |
| RB1-SS-B01.405 |  | Concrete | 1d | 2027-04-02 | 2027-04-02 | RB1-SS-B01.320 | Mason [50 h]; Helper [50 h]; Physical Progress [590 h]; Concrete M40 [162 m3]; TATA Projects Ltd-25 | 1,598,454 |
|  | 4 | **Column, Core Wall, Shear Wall - Second Lift** |  | 2027-04-03 | 2027-04-14 |  |  |  |
| RB1-SS-B01.440 |  | Reinforcement | 4d | 2027-04-03 | 2027-04-07 | RB1-SS-B01.405 | Barbender [2270 h]; Helper [1140 h]; Physical Progress [2370 h]; Reinforcement Steel [34 MT1]; TATA Projects Ltd-25 | 3,281,425 |
| RB1-SS-B01.500 |  | LPS | 1d | 2027-04-08 | 2027-04-08 | RB1-SS-B01.440 | LPS [36235 INR]; Physical Progress [590 h]; TATA Projects Ltd-25 | 36,235 |
| RB1-SS-B01.530 |  | Shuttering | 4d | 2027-04-09 | 2027-04-13 | RB1-SS-B01.440, RB1-SS-B01.500 | Carpenter [1090 h]; Helper [550 h]; Physical Progress [2370 h]; Formwork [649 Sq m]; TATA Projects Ltd-25 | 756,188.84 |
| RB1-SS-B01.610 |  | Concrete | 1d | 2027-04-14 | 2027-04-14 | RB1-SS-B01.530 | Mason [50 h]; Helper [50 h]; Physical Progress [590 h]; Concrete M40 [162 m3]; TATA Projects Ltd-25 | 1,598,454 |
|  | 3 | **Staircase** |  | 2027-03-20 | 2027-04-30 |  |  |  |
| RB1-SS-B01.235 |  | Reinforcement of wall upto Flight 1 | 2d | 2027-03-20 | 2027-03-23 | RB1-SS-B02.445 | Barbender [70 h]; Helper [40 h]; Physical Progress [1190 h]; Reinforcement Steel [1 MT1]; TATA Projects Ltd-25 | 96,512.5 |
| RB1-SS-B01.265 |  | Shuttering of wall upto Flight 1 | 2d | 2027-03-24 | 2027-03-25 | RB1-SS-B01.235 | Carpenter [20 h]; Helper [10 h]; Physical Progress [1190 h]; Formwork [10 Sq m]; TATA Projects Ltd-25 | 11,651.6 |
| RB1-SS-B01.300 |  | Casting of wall upto Flight 1 | 1d | 2027-03-27 | 2027-03-27 | RB1-SS-B01.265 | Mason; Helper; Physical Progress [590 h]; Concrete M40 [3 m3]; TATA Projects Ltd-25 | 29,601 |
| RB1-SS-B01.330 |  | Shuttering of Staircase upto Flight 1 | 1d | 2027-03-29 | 2027-03-29 | RB1-SS-B01.300 | Carpenter [20 h]; Helper [10 h]; Physical Progress [590 h]; Formwork [10 Sq m]; TATA Projects Ltd-25 | 11,651.6 |
| RB1-SS-B01.355 |  | Reinforcement of Staircase upto Flight 1 | 1d | 2027-03-30 | 2027-03-30 | RB1-SS-B01.330 | Barbender [70 h]; Helper [40 h]; Physical Progress [590 h]; Reinforcement Steel [1 MT1]; TATA Projects Ltd-25 | 96,512.5 |
| RB1-SS-B01.375 |  | MEP coordination upto Flight 1 | 1d | 2027-03-31 | 2027-03-31 | RB1-SS-B01.355 | Physical Progress [590 h]; TATA Projects Ltd-25 |  |
| RB1-SS-B01.390 |  | Casting of Staircase upto Flight 1 | 1d | 2027-04-01 | 2027-04-01 | RB1-SS-B01.375 | Mason; Helper; Physical Progress [590 h]; Concrete M40 [3 m3]; TATA Projects Ltd-25 | 29,601 |
| RB1-SS-B01.415 |  | Reinforcement of wall upto Flight 2 | 2d | 2027-04-02 | 2027-04-03 | RB1-SS-B01.390 | Barbender [70 h]; Helper [40 h]; Physical Progress [1190 h]; Reinforcement Steel [1 MT1]; TATA Projects Ltd-25 | 96,512.5 |
| RB1-SS-B01.460 |  | Shuttering of wall upto Flight 2 | 2d | 2027-04-05 | 2027-04-06 | RB1-SS-B01.415 | Carpenter [20 h]; Helper [10 h]; Physical Progress [1190 h]; Formwork [10 Sq m]; TATA Projects Ltd-25 | 11,651.6 |
| RB1-SS-B01.480 |  | Casting of wall upto Flight 2 | 1d | 2027-04-07 | 2027-04-07 | RB1-SS-B01.460 | Mason; Helper; Physical Progress [590 h]; Concrete M40 [3 m3]; TATA Projects Ltd-25 | 29,601 |
| RB1-SS-B01.510 |  | Shuttering of Staircase upto Flight 2 | 1d | 2027-04-08 | 2027-04-08 | RB1-SS-B01.480 | Carpenter [20 h]; Helper [10 h]; Physical Progress [590 h]; Formwork [10 Sq m]; TATA Projects Ltd-25 | 11,651.6 |
| RB1-SS-B01.535 |  | Reinforcement of Staircase upto Flight 2 | 1d | 2027-04-09 | 2027-04-09 | RB1-SS-B01.510 | Barbender [70 h]; Helper [40 h]; Physical Progress [590 h]; Reinforcement Steel [1 MT1]; TATA Projects Ltd-25 | 96,512.5 |
| RB1-SS-B01.555 |  | MEP coordination upto Flight 2 | 1d | 2027-04-10 | 2027-04-10 | RB1-SS-B01.535 | Physical Progress [590 h]; TATA Projects Ltd-25 |  |
| RB1-SS-B01.570 |  | Casting of Staircase upto Flight 2 | 1d | 2027-04-12 | 2027-04-12 | RB1-SS-B01.555 | Mason; Helper; Physical Progress [590 h]; Concrete M40 [3 m3]; TATA Projects Ltd-25 | 29,601 |
| RB1-SS-B01.590 |  | Reinforcement of wall upto Flight 3 | 2d | 2027-04-13 | 2027-04-14 | RB1-SS-B01.570 | Barbender [70 h]; Helper [40 h]; Physical Progress [1190 h]; Reinforcement Steel [1 MT1]; TATA Projects Ltd-25 | 96,512.5 |
| RB1-SS-B01.625 |  | Shuttering of wall upto Flight 3 | 2d | 2027-04-15 | 2027-04-16 | RB1-SS-B01.590 | Carpenter [20 h]; Helper [10 h]; Physical Progress [1190 h]; Formwork [10 Sq m]; TATA Projects Ltd-25 | 11,651.6 |
| RB1-SS-B01.645 |  | Casting of wall upto Flight 3 | 1d | 2027-04-17 | 2027-04-17 | RB1-SS-B01.625 | Mason; Helper; Physical Progress [590 h]; Concrete M40 [3 m3]; TATA Projects Ltd-25 | 29,601 |
| RB1-SS-B01.670 |  | Shuttering of Staircase upto Flight 3 | 1d | 2027-04-19 | 2027-04-19 | RB1-SS-B01.645 | Carpenter [20 h]; Helper [10 h]; Physical Progress [590 h]; Formwork [10 Sq m]; TATA Projects Ltd-25 | 11,651.6 |
| RB1-SS-B01.690 |  | Reinforcement of Staircase upto Flight 3 | 1d | 2027-04-20 | 2027-04-20 | RB1-SS-B01.670 | Barbender [70 h]; Helper [40 h]; Physical Progress [590 h]; Reinforcement Steel [1 MT1]; TATA Projects Ltd-25 | 96,512.5 |
| RB1-SS-B01.715 |  | MEP coordination upto Flight 3 | 1d | 2027-04-21 | 2027-04-21 | RB1-SS-B01.690 | Physical Progress [590 h]; TATA Projects Ltd-25 |  |
| RB1-SS-B01.725 |  | Casting of Staircase upto Flight 3 | 1d | 2027-04-22 | 2027-04-22 | RB1-SS-B01.715 | Mason; Helper; Physical Progress [590 h]; Concrete M40 [3 m3]; TATA Projects Ltd-25 | 29,601 |
| RB1-SS-B01.735 |  | Reinforcement of wall upto Flight 4 | 2d | 2027-04-23 | 2027-04-24 | RB1-SS-B01.725 | Barbender [70 h]; Helper [40 h]; Physical Progress [1190 h]; Reinforcement Steel [1 MT1]; TATA Projects Ltd-25 | 96,512.5 |
| RB1-SS-B01.765 |  | Shuttering of wall upto Flight 4 | 2d | 2027-04-26 | 2027-04-27 | RB1-SS-B01.735 | Carpenter [20 h]; Helper [10 h]; Physical Progress [1190 h]; Formwork [10 Sq m]; TATA Projects Ltd-25 | 11,651.6 |
| RB1-SS-B01.775 |  | Casting of wall upto Flight 4 | 1d | 2027-04-28 | 2027-04-28 | RB1-SS-B01.765 | Mason; Helper; Physical Progress [590 h]; Concrete M40 [3 m3]; TATA Projects Ltd-25 | 29,601 |
| RB1-SS-B01.785 |  | Shuttering of Staircase upto Flight 4 | 1d | 2027-04-29 | 2027-04-29 | RB1-SS-B01.775 | Carpenter [20 h]; Helper [10 h]; Physical Progress [590 h]; Formwork [10 Sq m]; TATA Projects Ltd-25 | 11,651.6 |
| RB1-SS-B01.795 |  | Reinforcement of Staircase upto Flight 4 | 1d | 2027-04-30 | 2027-04-30 | RB1-SS-B01.785 | Barbender [70 h]; Helper [40 h]; Physical Progress [590 h]; Reinforcement Steel [1 MT1]; TATA Projects Ltd-25 | 96,512.5 |

| ID | WBS | Activity | Duration | Start | Finish | Predecessors | Resources | Cost |
| --- | --- | --- | --- | --- | --- | --- | --- | --- |
|  | 2 | **Slab** |  | 2027-04-15 | 2027-05-19 |  |  |  |
| RB1-SS-B01.620 |  | Shuttering | 5d | 2027-04-15 | 2027-04-20 | RB1-SS-B01.610 | Carpenter [6750 h]; Helper [3380 h]; Physical Progress [2960 h]; Formwork [4050 Sq m]; TATA Projects Ltd-25 | 4,718,898 |
| RB1-SS-B01.705 |  | Reinforcement Bottom Net with chairs | 3d | 2027-04-21 | 2027-04-23 | RB1-SS-B01.620 | Barbender [1670 h]; Helper [840 h]; Physical Progress [1780 h]; Reinforcement Steel [25 MT1]; TATA Projects Ltd-25 | 2,412,812.5 |
| RB1-SS-B01.745 |  | Laying of PT Tendon | 4d | 2027-04-24 | 2027-04-28 | RB1-SS-B01.705 | Physical Progress [2370 h]; TATA Projects Ltd-25 |  |
| RB1-SS-B01.780 |  | Reinforcement Top Net | 3d | 2027-04-29 | 2027-05-03 | RB1-SS-B01.745 | Barbender [1670 h]; Helper [840 h]; Physical Progress [1780 h]; Reinforcement Steel [25 MT1]; TATA Projects Ltd-25 | 2,412,812.5 |
| RB1-SS-B01.815 |  | MEP Coordination | 1d | 2027-05-04 | 2027-05-04 | RB1-SS-B01.705, RB1-SS-B01.780, RB1-SS-B01.795 | Physical Progress [590 h]; TATA Projects Ltd-25 |  |
| RB1-SS-B01.830 |  | Concrete of Slab | 1d | 2027-05-05 | 2027-05-05 | RB1-SS-B01.815 | Mason [50 h]; Helper [50 h]; Physical Progress [590 h]; Concrete M40 [1013 m3]; TATA Projects Ltd-25 | 9,995,271 |
| RB1-SS-B01.835 |  | Wait for Strength Gain | 6d | 2027-05-06 | 2027-05-12 | RB1-SS-B01.830 | Physical Progress [3550 h]; TATA Projects Ltd-25 |  |
| RB1-SS-B01.870 |  | PT Work | 6d | 2027-05-13 | 2027-05-19 | RB1-SS-B01.835, RB1-SS-B02.480 | PT [11 MT1]; Helper [100 h]; PT Fitter [100 h]; Physical Progress [4740 h]; TATA Projects Ltd-25 | 2,090,000 |
|  | 4 | **Pour 4** |  | 2027-03-24 | 2027-05-21 |  |  |  |
|  | 1 | **Column, Core Wall, Shear Wall - First Lift** |  | 2027-03-24 | 2027-04-05 |  |  |  |
| RB1-SS-B01.505 |  | Reinforcement | 4d | 2027-03-24 | 2027-03-29 | RB1-SS-B02.520, RB1-SS-B02.265 | Barbender [2000 h]; Helper [1000 h]; Physical Progress [2370 h]; Reinforcement Steel [30 MT1]; TATA Projects Ltd-25 | 2,895,375 |
| RB1-SS-B01.585 |  | LPS | 1d | 2027-03-30 | 2027-03-30 | RB1-SS-B01.505 | LPS [36235 INR]; Physical Progress [590 h]; TATA Projects Ltd-25 | 36,235 |
| RB1-SS-B01.615 |  | Shuttering | 4d | 2027-03-31 | 2027-04-03 | RB1-SS-B01.505, RB1-SS-B01.585 | Carpenter [960 h]; Helper [480 h]; Physical Progress [2370 h]; Formwork [575 Sq m]; TATA Projects Ltd-25 | 669,967 |
| RB1-SS-B01.665 |  | Concrete | 1d | 2027-04-05 | 2027-04-05 | RB1-SS-B01.615 | Mason [50 h]; Helper [50 h]; Physical Progress [590 h]; Concrete M40 [144 m3]; TATA Projects Ltd-25 | 1,420,848 |
|  | 4 | **Column, Core Wall, Shear Wall - Second Lift** |  | 2027-04-06 | 2027-04-16 |  |  |  |
| RB1-SS-B01.685 |  | Reinforcement | 4d | 2027-04-06 | 2027-04-09 | RB1-SS-B01.665 | Barbender [2000 h]; Helper [1000 h]; Physical Progress [2370 h]; Reinforcement Steel [30 MT1]; TATA Projects Ltd-25 | 2,895,375 |
| RB1-SS-B01.750 |  | LPS | 1d | 2027-04-10 | 2027-04-10 | RB1-SS-B01.685 | LPS [36235 INR]; Physical Progress [590 h]; TATA Projects Ltd-25 | 36,235 |
| RB1-SS-B01.755 |  | Shuttering | 4d | 2027-04-12 | 2027-04-15 | RB1-SS-B01.685, RB1-SS-B01.750 | Carpenter [960 h]; Helper [480 h]; Physical Progress [2370 h]; Formwork [575 Sq m]; TATA Projects Ltd-25 | 669,967 |
| RB1-SS-B01.790 |  | Concrete | 1d | 2027-04-16 | 2027-04-16 | RB1-SS-B01.755 | Mason [50 h]; Helper [50 h]; Physical Progress [590 h]; Concrete M40 [144 m3]; TATA Projects Ltd-25 | 1,420,848 |
|  | 2 | **Slab** |  | 2027-04-17 | 2027-05-21 |  |  |  |
| RB1-SS-B01.805 |  | Shuttering | 5d | 2027-04-17 | 2027-04-22 | RB1-SS-B01.790 | Carpenter [5980 h]; Helper [2990 h]; Physical Progress [2960 h]; Formwork [3587 Sq m]; TATA Projects Ltd-25 | 4,179,428.92 |
| RB1-SS-B01.840 |  | Reinforcement Bottom Net with chairs | 3d | 2027-04-23 | 2027-04-26 | RB1-SS-B01.805 | Barbender [1470 h]; Helper [740 h]; Physical Progress [1780 h]; Reinforcement Steel [22 MT1]; TATA Projects Ltd-25 | 2,123,275 |
| RB1-SS-B01.865 |  | Laying of PT Tendon | 4d | 2027-04-27 | 2027-04-30 | RB1-SS-B01.840 | Physical Progress [2370 h]; TATA Projects Ltd-25 |  |
| RB1-SS-B01.900 |  | Reinforcement Top Net | 3d | 2027-05-03 | 2027-05-05 | RB1-SS-B01.865 | Barbender [1470 h]; Helper [740 h]; Physical Progress [1780 h]; Reinforcement Steel [22 MT1]; TATA Projects Ltd-25 | 2,123,275 |
| RB1-SS-B01.905 |  | MEP Coordination | 1d | 2027-05-06 | 2027-05-06 | RB1-SS-B01.840, RB1-SS-B01.900 | Physical Progress [590 h]; TATA Projects Ltd-25 |  |
| RB1-SS-B01.920 |  | Concrete of Slab | 1d | 2027-05-07 | 2027-05-07 | RB1-SS-B01.905 | Mason [50 h]; Helper [50 h]; Physical Progress [590 h]; Concrete M40 [897 m3]; TATA Projects Ltd-25 | 8,850,699 |
| RB1-SS-B01.940 |  | Wait for Strength Gain | 6d | 2027-05-08 | 2027-05-14 | RB1-SS-B01.920 | Physical Progress [3550 h]; TATA Projects Ltd-25 |  |
| RB1-SS-B01.970 |  | PT Work | 6d | 2027-05-15 | 2027-05-21 | RB1-SS-B01.940, RB1-SS-B02.555 | PT [9 MT1]; Helper [100 h]; PT Fitter [100 h]; Physical Progress [4740 h]; TATA Projects Ltd-25 | 1,710,000 |

| ID | WBS | Activity | Duration | Start | Finish | Predecessors | Resources | Cost |
| --- | --- | --- | --- | --- | --- | --- | --- | --- |
|  | 5 | **Pour 5** |  | 2027-04-13 | 2027-06-09 |  |  |  |
|  | 1 | **Column, Core Wall, Shear Wall - First Lift** |  | 2027-04-13 | 2027-04-23 |  |  |  |
| RB1-SS-B01.710 |  | Reinforcement | 4d | 2027-04-13 | 2027-04-16 | RB1-SS-B02.580 | Barbender [2270 h]; Helper [1140 h]; Physical Progress [2370 h]; Reinforcement Steel [34 MT1]; TATA Projects Ltd-25 | 3,281,425 |
| RB1-SS-B01.760 |  | LPS | 1d | 2027-04-17 | 2027-04-17 | RB1-SS-B01.710 | LPS [36235 INR]; Physical Progress [590 h]; TATA Projects Ltd-25 | 36,235 |
| RB1-SS-B01.770 |  | Shuttering | 4d | 2027-04-19 | 2027-04-22 | RB1-SS-B01.710, RB1-SS-B01.760 | Carpenter [1070 h]; Helper [540 h]; Physical Progress [2370 h]; Formwork [640 Sq m]; TATA Projects Ltd-25 | 745,702.4 |
| RB1-SS-B01.810 |  | Concrete | 1d | 2027-04-23 | 2027-04-23 | RB1-SS-B01.770 | Mason [50 h]; Helper [50 h]; Physical Progress [590 h]; Concrete M40 [160 m3]; TATA Projects Ltd-25 | 1,578,720 |
|  | 4 | **Column, Core Wall, Shear Wall - Second Lift** |  | 2027-04-24 | 2027-05-06 |  |  |  |
| RB1-SS-B01.820 |  | Reinforcement | 4d | 2027-04-24 | 2027-04-28 | RB1-SS-B01.810 | Barbender [2270 h]; Helper [1140 h]; Physical Progress [2370 h]; Reinforcement Steel [34 MT1]; TATA Projects Ltd-25 | 3,281,425 |
| RB1-SS-B01.845 |  | LPS | 1d | 2027-04-29 | 2027-04-29 | RB1-SS-B01.820 | LPS [36235 INR]; Physical Progress [590 h]; TATA Projects Ltd-25 | 36,235 |
| RB1-SS-B01.855 |  | Shuttering | 4d | 2027-04-30 | 2027-05-05 | RB1-SS-B01.820, RB1-SS-B01.845 | Carpenter [1070 h]; Helper [540 h]; Physical Progress [2370 h]; Formwork [640 Sq m]; TATA Projects Ltd-25 | 745,702.4 |
| RB1-SS-B01.875 |  | Concrete | 1d | 2027-05-06 | 2027-05-06 | RB1-SS-B01.855 | Mason [50 h]; Helper [50 h]; Physical Progress [590 h]; Concrete M40 [160 m3]; TATA Projects Ltd-25 | 1,578,720 |
|  | 2 | **Slab** |  | 2027-05-07 | 2027-06-09 |  |  |  |
| RB1-SS-B01.885 |  | Shuttering | 5d | 2027-05-07 | 2027-05-12 | RB1-SS-B01.875 | Carpenter [6670 h]; Helper [3340 h]; Physical Progress [2960 h]; Formwork [3999 Sq m]; TATA Projects Ltd-25 | 4,659,474.84 |
| RB1-SS-B01.925 |  | Reinforcement Bottom Net with chairs | 3d | 2027-05-13 | 2027-05-15 | RB1-SS-B01.885 | Barbender [1600 h]; Helper [800 h]; Physical Progress [1780 h]; Reinforcement Steel [24 MT1]; TATA Projects Ltd-25 | 2,316,300 |
| RB1-SS-B01.945 |  | Laying of PT Tendon | 4d | 2027-05-17 | 2027-05-20 | RB1-SS-B01.925 | Physical Progress [2370 h]; TATA Projects Ltd-25 |  |
| RB1-SS-B01.975 |  | Reinforcement Top Net | 3d | 2027-05-21 | 2027-05-24 | RB1-SS-B01.945 | Barbender [1600 h]; Helper [800 h]; Physical Progress [1780 h]; Reinforcement Steel [24 MT1]; TATA Projects Ltd-25 | 2,316,300 |
| RB1-SS-B01.985 |  | MEP Coordination | 1d | 2027-05-25 | 2027-05-25 | RB1-SS-B01.925, RB1-SS-B01.975 | Physical Progress [590 h]; TATA Projects Ltd-25 |  |
| RB1-SS-B01.1000 |  | Concrete of Slab | 1d | 2027-05-26 | 2027-05-26 | RB1-SS-B01.985 | Mason [50 h]; Helper [50 h]; Physical Progress [590 h]; Concrete M40 [1000 m3]; TATA Projects Ltd-25 | 9,867,000 |
| RB1-SS-B01.1005 |  | Wait for Strength Gain | 6d | 2027-05-27 | 2027-06-02 | RB1-SS-B01.1000 | Physical Progress [3550 h]; TATA Projects Ltd-25 |  |
| RB1-SS-B01.1030 |  | PT Work | 6d | 2027-06-03 | 2027-06-09 | RB1-SS-B01.1005, RB1-SS-B02.610 | PT [10 MT1]; Helper [100 h]; PT Fitter [100 h]; Physical Progress [4740 h]; TATA Projects Ltd-25 | 1,900,000 |
|  | 6 | **Pour 6** |  | 2027-03-19 | 2027-05-18 |  |  |  |
|  | 1 | **Column, Core Wall, Shear Wall - First Lift** |  | 2027-03-19 | 2027-04-01 |  |  |  |
| RB1-SS-B01.825 |  | Reinforcement | 4d | 2027-03-19 | 2027-03-24 | RB1-SS-B02.625 | Barbender [1470 h]; Helper [740 h]; Physical Progress [2370 h]; Reinforcement Steel [22 MT1]; TATA Projects Ltd-25 | 2,123,275 |
| RB1-SS-B01.850 |  | LPS | 1d | 2027-03-25 | 2027-03-25 | RB1-SS-B01.825 | LPS [36235 INR]; Physical Progress [590 h]; TATA Projects Ltd-25 | 36,235 |
| RB1-SS-B01.860 |  | Shuttering | 4d | 2027-03-27 | 2027-03-31 | RB1-SS-B01.825, RB1-SS-B01.850 | Carpenter [700 h]; Helper [350 h]; Physical Progress [2370 h]; Formwork [419 Sq m]; TATA Projects Ltd-25 | 488,202.04 |
| RB1-SS-B01.880 |  | Concrete | 1d | 2027-04-01 | 2027-04-01 | RB1-SS-B01.860 | Mason [50 h]; Helper [50 h]; Physical Progress [590 h]; Concrete M40 [105 m3]; TATA Projects Ltd-25 | 1,036,035 |

| ID | WBS | Activity | Duration | Start | Finish | Predecessors | Resources | Cost |
| --- | --- | --- | --- | --- | --- | --- | --- | --- |
|  | 4 | **Column, Core Wall, Shear Wall - Second Lift** |  | 2027-04-02 | 2027-04-13 |  |  |  |
| RB1-SS-B01.890 |  | Reinforcement | 4d | 2027-04-02 | 2027-04-06 | RB1-SS-B01.880 | Barbender [1470 h]; Helper [740 h]; Physical Progress [2370 h]; Reinforcement Steel [22 MT1]; TATA Projects Ltd-25 | 2,123,275 |
| RB1-SS-B01.910 |  | LPS | 1d | 2027-04-07 | 2027-04-07 | RB1-SS-B01.890 | LPS [36235 INR]; Physical Progress [590 h]; TATA Projects Ltd-25 | 36,235 |
| RB1-SS-B01.930 |  | Shuttering | 4d | 2027-04-08 | 2027-04-12 | RB1-SS-B01.890, RB1-SS-B01.910 | Carpenter [700 h]; Helper [350 h]; Physical Progress [2370 h]; Formwork [419 Sq m]; TATA Projects Ltd-25 | 488,202.04 |
| RB1-SS-B01.950 |  | Concrete | 1d | 2027-04-13 | 2027-04-13 | RB1-SS-B01.930 | Mason [50 h]; Helper [50 h]; Physical Progress [590 h]; Concrete M40 [105 m3]; TATA Projects Ltd-25 | 1,036,035 |
|  | 2 | **Slab** |  | 2027-04-14 | 2027-05-18 |  |  |  |
| RB1-SS-B01.960 |  | Shuttering | 5d | 2027-04-14 | 2027-04-19 | RB1-SS-B01.950 | Carpenter [4360 h]; Helper [2180 h]; Physical Progress [2960 h]; Formwork [2614 Sq m]; TATA Projects Ltd-25 | 3,045,728.24 |
| RB1-SS-B01.990 |  | Reinforcement Bottom Net with chairs | 3d | 2027-04-20 | 2027-04-22 | RB1-SS-B01.960 | Barbender [1070 h]; Helper [540 h]; Physical Progress [1780 h]; Reinforcement Steel [16 MT1]; TATA Projects Ltd-25 | 1,544,200 |
| RB1-SS-B01.1010 |  | Laying of PT Tendon | 4d | 2027-04-23 | 2027-04-27 | RB1-SS-B01.990 | Physical Progress [2370 h]; TATA Projects Ltd-25 |  |
| RB1-SS-B01.1025 |  | Reinforcement Top Net | 3d | 2027-04-28 | 2027-04-30 | RB1-SS-B01.1010 | Barbender [1070 h]; Helper [540 h]; Physical Progress [1780 h]; Reinforcement Steel [16 MT1]; TATA Projects Ltd-25 | 1,544,200 |
| RB1-SS-B01.1035 |  | MEP Coordination | 1d | 2027-05-03 | 2027-05-03 | RB1-SS-B01.990, RB1-SS-B01.1025 | Physical Progress [590 h]; TATA Projects Ltd-25 |  |
| RB1-SS-B01.1045 |  | Concrete of Slab | 1d | 2027-05-04 | 2027-05-04 | RB1-SS-B01.1035 | Mason [50 h]; Helper [50 h]; Physical Progress [590 h]; Concrete M40 [654 m3]; TATA Projects Ltd-25 | 6,453,018 |
| RB1-SS-B01.1050 |  | Wait for Strength Gain | 6d | 2027-05-05 | 2027-05-11 | RB1-SS-B01.1045 | Physical Progress [3550 h]; TATA Projects Ltd-25 |  |
| RB1-SS-B01.1065 |  | PT Work | 6d | 2027-05-12 | 2027-05-18 | RB1-SS-B01.1050, RB1-SS-B02.645 | PT [7 MT1]; Helper [100 h]; PT Fitter [100 h]; Physical Progress [4740 h]; TATA Projects Ltd-25 | 1,330,000 |
|  | 7 | **Pour 7** |  | 2027-04-05 | 2027-06-02 |  |  |  |
|  | 1 | **Column, Core Wall, Shear Wall - First Lift** |  | 2027-04-05 | 2027-04-16 |  |  |  |
| RB1-SS-B01.895 |  | Reinforcement | 4d | 2027-04-05 | 2027-04-09 | RB1-SS-B02.655 | Barbender [2800 h]; Helper [1400 h]; Physical Progress [2370 h]; Reinforcement Steel [42 MT1]; TATA Projects Ltd-25 | 4,053,525 |
| RB1-SS-B01.915 |  | LPS | 1d | 2027-04-09 | 2027-04-10 | RB1-SS-B01.895 | LPS [36235 INR]; Physical Progress [590 h]; TATA Projects Ltd-25 | 36,235 |
| RB1-SS-B01.935 |  | Shuttering | 4d | 2027-04-10 | 2027-04-15 | RB1-SS-B01.895, RB1-SS-B01.915 | Carpenter [1320 h]; Helper [660 h]; Physical Progress [2370 h]; Formwork [791 Sq m]; TATA Projects Ltd-25 | 921,641.56 |
| RB1-SS-B01.955 |  | Concrete | 1d | 2027-04-15 | 2027-04-16 | RB1-SS-B01.935 | Mason [50 h]; Helper [50 h]; Physical Progress [590 h]; Concrete M40 [198 m3]; TATA Projects Ltd-25 | 1,953,666 |
|  | 4 | **Column, Core Wall, Shear Wall - Second Lift** |  | 2027-04-16 | 2027-04-28 |  |  |  |
| RB1-SS-B01.965 |  | Reinforcement | 4d | 2027-04-16 | 2027-04-21 | RB1-SS-B01.955 | Barbender [2800 h]; Helper [1400 h]; Physical Progress [2370 h]; Reinforcement Steel [42 MT1]; TATA Projects Ltd-25 | 4,053,525 |
| RB1-SS-B01.980 |  | LPS | 1d | 2027-04-21 | 2027-04-22 | RB1-SS-B01.965 | LPS [36235 INR]; Physical Progress [590 h]; TATA Projects Ltd-25 | 36,235 |
| RB1-SS-B01.995 |  | Shuttering | 4d | 2027-04-22 | 2027-04-27 | RB1-SS-B01.965, RB1-SS-B01.980 | Carpenter [1320 h]; Helper [660 h]; Physical Progress [2370 h]; Formwork [791 Sq m]; TATA Projects Ltd-25 | 921,641.56 |
| RB1-SS-B01.1015 |  | Concrete | 1d | 2027-04-27 | 2027-04-28 | RB1-SS-B01.995 | Mason [50 h]; Helper [50 h]; Physical Progress [590 h]; Concrete M40 [198 m3]; TATA Projects Ltd-25 | 1,953,666 |

| ID | WBS | Activity | Duration | Start | Finish | Predecessors | Resources | Cost |
| --- | --- | --- | --- | --- | --- | --- | --- | --- |
|  | 2 | **Slab** |  | 2027-04-28 | 2027-06-02 |  |  |  |
| RB1-SS-B01.1020 |  | Shuttering | 5d | 2027-04-28 | 2027-05-05 | RB1-SS-B01.1015 | Carpenter [8240 h]; Helper [4120 h]; Physical Progress [2960 h]; Formwork [4939 Sq m]; TATA Projects Ltd-25 | 5,754,725.24 |
| RB1-SS-B01.1040 |  | Reinforcement Bottom Net with chairs | 3d | 2027-05-05 | 2027-05-08 | RB1-SS-B01.1020 | Barbender [2000 h]; Helper [1000 h]; Physical Progress [1780 h]; Reinforcement Steel [30 MT1]; TATA Projects Ltd-25 | 2,895,375 |
| RB1-SS-B01.1055 |  | Laying of PT Tendon | 4d | 2027-05-08 | 2027-05-13 | RB1-SS-B01.1040 | Physical Progress [2370 h]; TATA Projects Ltd-25 |  |
| RB1-SS-B01.1060 |  | Reinforcement Top Net | 3d | 2027-05-13 | 2027-05-17 | RB1-SS-B01.1055 | Barbender [2000 h]; Helper [1000 h]; Physical Progress [1780 h]; Reinforcement Steel [30 MT1]; TATA Projects Ltd-25 | 2,895,375 |
| RB1-SS-B01.1070 |  | MEP Coordination | 1d | 2027-05-17 | 2027-05-18 | RB1-SS-B01.1040, RB1-SS-B01.1060 | Physical Progress [590 h]; TATA Projects Ltd-25 |  |
| RB1-SS-B01.1075 |  | Concrete of Slab | 1d | 2027-05-18 | 2027-05-19 | RB1-SS-B01.1070 | Mason [50 h]; Helper [50 h]; Physical Progress [590 h]; Concrete M40 [1235 m3]; TATA Projects Ltd-25 | 12,185,745 |
| RB1-SS-B01.1080 |  | Wait for Strength Gain | 6d | 2027-05-19 | 2027-05-26 | RB1-SS-B01.1075 | Physical Progress [3550 h]; TATA Projects Ltd-25 |  |
| RB1-SS-B01.1085 |  | PT Work | 6d | 2027-05-26 | 2027-06-02 | RB1-SS-B01.1080, RB1-SS-B02.665 | PT [13 MT1]; Helper [100 h]; PT Fitter [100 h]; Physical Progress [4740 h]; TATA Projects Ltd-25 | 2,470,000 |
|  | 1 | **Superstructure** |  | 2027-04-17 | 2028-02-14 |  |  |  |
|  | 1 | **Ground Floor** |  | 2027-04-17 | 2027-07-01 |  |  |  |
|  | 2 | **Pour 1** |  | 2027-04-17 | 2027-06-11 |  |  |  |
|  | 1 | **Column, Core Wall, Shear Wall - First Lift** |  | 2027-04-17 | 2027-04-28 |  |  |  |
| RB1-SS-GF.10 |  | Reinforcement | 4d | 2027-04-17 | 2027-04-21 | RB1-SS-B01.730, E-GFC-ST-RB1-100 | Barbender [2400 h]; Helper [1200 h]; Physical Progress [5940 h]; Reinforcement Steel [36 MT1]; TATA Projects Ltd-25 | 3,474,450 |
| RB1-SS-GF.35 |  | LPS | 1d | 2027-04-22 | 2027-04-22 | RB1-SS-GF.10 | LPS [36235 INR]; Physical Progress [1490 h]; TATA Projects Ltd-25 | 36,235 |
| RB1-SS-GF.50 |  | Shuttering | 4d | 2027-04-23 | 2027-04-27 | RB1-SS-GF.10, RB1-SS-GF.35 | Carpenter [1200 h]; Helper [600 h]; Physical Progress [5940 h]; Formwork [715 Sq m]; TATA Projects Ltd-25 | 833,089.4 |
| RB1-SS-GF.95 |  | Concrete | 1d | 2027-04-28 | 2027-04-28 | RB1-SS-GF.50 | Mason [50 h]; Helper [50 h]; Physical Progress [1490 h]; Concrete M40 [179 m3]; TATA Projects Ltd-25 | 1,766,193 |
|  | 3 | **Staircase - 1** |  | 2027-04-17 | 2027-05-17 |  |  |  |
| RB1-SS-GF.15 |  | Reinforcement of wall upto Flight 1 | 2d | 2027-04-17 | 2027-04-19 | RB1-SS-B01.730 | Barbender [70 h]; Helper [40 h]; Physical Progress [2970 h]; Reinforcement Steel [1 MT1]; TATA Projects Ltd-25 | 96,512.5 |
| RB1-SS-GF.25 |  | Shuttering of wall upto Flight 1 | 2d | 2027-04-20 | 2027-04-21 | RB1-SS-GF.15 | Carpenter [20 h]; Helper [10 h]; Physical Progress [2970 h]; Formwork [10 Sq m]; TATA Projects Ltd-25 | 11,651.6 |
| RB1-SS-GF.40 |  | Casting of wall upto Flight 1 | 1d | 2027-04-22 | 2027-04-22 | RB1-SS-GF.25 | Mason; Helper; Physical Progress [1490 h]; Concrete M40 [3 m3]; TATA Projects Ltd-25 | 29,601 |
| RB1-SS-GF.55 |  | Shuttering of Staircase upto Flight 1 | 1d | 2027-04-23 | 2027-04-23 | RB1-SS-GF.40 | Carpenter [20 h]; Helper [10 h]; Physical Progress [1490 h]; Formwork [10 Sq m]; TATA Projects Ltd-25 | 11,651.6 |
| RB1-SS-GF.65 |  | Reinforcement of Staircase upto Flight 1 | 1d | 2027-04-24 | 2027-04-24 | RB1-SS-GF.55 | Barbender [70 h]; Helper [40 h]; Physical Progress [1490 h]; Reinforcement Steel [1 MT1]; TATA Projects Ltd-25 | 96,512.5 |
| RB1-SS-GF.75 |  | MEP coordination upto Flight 1 | 1d | 2027-04-26 | 2027-04-26 | RB1-SS-GF.65 | Physical Progress [1490 h]; TATA Projects Ltd-25 |  |
| RB1-SS-GF.85 |  | Casting of Staircase upto Flight 1 | 1d | 2027-04-27 | 2027-04-27 | RB1-SS-GF.75 | Mason; Helper; Physical Progress [1490 h]; Concrete M40 [3 m3]; TATA Projects Ltd-25 | 29,601 |
| RB1-SS-GF.105 |  | Reinforcement of wall upto Flight 2 | 2d | 2027-04-28 | 2027-04-29 | RB1-SS-GF.85 | Barbender [70 h]; Helper [40 h]; Physical Progress [2970 h]; Reinforcement Steel [1 MT1]; TATA Projects Ltd-25 | 96,512.5 |
| RB1-SS-GF.125 |  | Shuttering of wall upto Flight 2 | 2d | 2027-04-30 | 2027-05-03 | RB1-SS-GF.105 | Carpenter [20 h]; Helper [10 h]; Physical Progress [2970 h]; Formwork [10 Sq m]; TATA Projects Ltd-25 | 11,651.6 |
| RB1-SS-GF.145 |  | Casting of wall upto Flight 2 | 1d | 2027-05-04 | 2027-05-04 | RB1-SS-GF.125 | Mason; Helper; Physical Progress [1490 h]; Concrete M40 [3 m3]; TATA Projects Ltd-25 | 29,601 |
| RB1-SS-GF.170 |  | Shuttering of Staircase upto Flight 2 | 1d | 2027-05-05 | 2027-05-05 | RB1-SS-GF.145 | Carpenter [20 h]; Helper [10 h]; Physical Progress [1490 h]; Formwork [10 Sq m]; TATA Projects Ltd-25 | 11,651.6 |
| RB1-SS-GF.190 |  | Reinforcement of Staircase upto Flight 2 | 1d | 2027-05-06 | 2027-05-06 | RB1-SS-GF.170 | Barbender [70 h]; Helper [40 h]; Physical Progress [1490 h]; Reinforcement Steel [1 MT1]; TATA Projects Ltd-25 | 96,512.5 |
| RB1-SS-GF.205 |  | MEP coordination upto Flight 2 | 1d | 2027-05-07 | 2027-05-07 | RB1-SS-GF.190 | Physical Progress [1490 h]; TATA Projects Ltd-25 |  |
| RB1-SS-GF.220 |  | Casting of Staircase upto Flight 2 | 1d | 2027-05-08 | 2027-05-08 | RB1-SS-GF.205 | Mason; Helper; Physical Progress [1490 h]; Concrete M40 [3 m3]; TATA Projects Ltd-25 | 29,601 |
| RB1-SS-GF.240 |  | Reinforcement of wall upto Flight 3 | 2d | 2027-05-10 | 2027-05-11 | RB1-SS-GF.220 | Barbender [70 h]; Helper [40 h]; Physical Progress [2970 h]; Reinforcement Steel [1 MT1]; TATA Projects Ltd-25 | 96,512.5 |
| RB1-SS-GF.270 |  | Shuttering of wall upto Flight 3 | 2d | 2027-05-12 | 2027-05-13 | RB1-SS-GF.240 | Carpenter [20 h]; Helper [10 h]; Physical Progress [2970 h]; Formwork [10 Sq m]; TATA Projects Ltd-25 | 11,651.6 |
| RB1-SS-GF.285 |  | Casting of wall upto Flight 3 | 1d | 2027-05-14 | 2027-05-14 | RB1-SS-GF.270 | Mason; Helper; Physical Progress [1490 h]; Concrete M40 [3 m3]; TATA Projects Ltd-25 | 29,601 |
| RB1-SS-GF.310 |  | Shuttering of Staircase upto Flight 3 | 1d | 2027-05-15 | 2027-05-15 | RB1-SS-GF.285 | Carpenter [20 h]; Helper [10 h]; Physical Progress [1490 h]; Formwork [10 Sq m]; TATA Projects Ltd-25 | 11,651.6 |
| RB1-SS-GF.335 |  | Reinforcement of Staircase upto Flight 3 | 1d | 2027-05-17 | 2027-05-17 | RB1-SS-GF.310 | Barbender [70 h]; Helper [40 h]; Physical Progress [1490 h]; Reinforcement Steel [1 MT1]; TATA Projects Ltd-25 | 96,512.5 |

| ID | WBS | Activity | Duration | Start | Finish | Predecessors | Resources | Cost |
| --- | --- | --- | --- | --- | --- | --- | --- | --- |
|  | 5 | **Column, Core Wall, Shear Wall - Second Lift** |  | 2027-04-29 | 2027-05-11 |  |  |  |
| RB1-SS-GF.120 |  | Reinforcement | 4d | 2027-04-29 | 2027-05-04 | RB1-SS-GF.95 | Barbender [2400 h]; Helper [1200 h]; Physical Progress [5940 h]; Reinforcement Steel [36 MT1]; TATA Projects Ltd-25 | 3,474,450 |
| RB1-SS-GF.165 |  | LPS | 1d | 2027-05-05 | 2027-05-05 | RB1-SS-GF.120 | LPS [36235 INR]; Physical Progress [1490 h]; TATA Projects Ltd-25 | 36,235 |
| RB1-SS-GF.185 |  | Shuttering | 4d | 2027-05-06 | 2027-05-10 | RB1-SS-GF.120, RB1-SS-GF.165 | Carpenter [1200 h]; Helper [600 h]; Physical Progress [5940 h]; Formwork [715 Sq m]; TATA Projects Ltd-25 | 833,089.4 |
| RB1-SS-GF.255 |  | Concrete | 1d | 2027-05-11 | 2027-05-11 | RB1-SS-GF.185 | Mason [50 h]; Helper [50 h]; Physical Progress [1490 h]; Concrete M40 [179 m3]; TATA Projects Ltd-25 | 1,766,193 |
|  | 4 | **Staircase - 2** |  | 2027-04-17 | 2027-05-17 |  |  |  |
| RB1-SS-GF.20 |  | Reinforcement of wall upto Flight 1 | 2d | 2027-04-17 | 2027-04-19 | RB1-SS-B01.730 | Barbender [70 h]; Helper [40 h]; Physical Progress [2970 h]; Reinforcement Steel [1 MT1]; TATA Projects Ltd-25 | 96,512.5 |
| RB1-SS-GF.30 |  | Shuttering of wall upto Flight 1 | 2d | 2027-04-20 | 2027-04-21 | RB1-SS-GF.20 | Carpenter [20 h]; Helper [10 h]; Physical Progress [2970 h]; Formwork [10 Sq m]; TATA Projects Ltd-25 | 11,651.6 |
| RB1-SS-GF.45 |  | Casting of wall upto Flight 1 | 1d | 2027-04-22 | 2027-04-22 | RB1-SS-GF.30 | Mason; Helper; Physical Progress [1490 h]; Concrete M40 [3 m3]; TATA Projects Ltd-25 | 29,601 |
| RB1-SS-GF.60 |  | Shuttering of Staircase upto Flight 1 | 1d | 2027-04-23 | 2027-04-23 | RB1-SS-GF.45 | Carpenter [20 h]; Helper [10 h]; Physical Progress [1490 h]; Formwork [10 Sq m]; TATA Projects Ltd-25 | 11,651.6 |
| RB1-SS-GF.70 |  | Reinforcement of Staircase upto Flight 1 | 1d | 2027-04-24 | 2027-04-24 | RB1-SS-GF.60 | Barbender [70 h]; Helper [40 h]; Physical Progress [1490 h]; Reinforcement Steel [1 MT1]; TATA Projects Ltd-25 | 96,512.5 |
| RB1-SS-GF.80 |  | MEP coordination upto Flight 1 | 1d | 2027-04-26 | 2027-04-26 | RB1-SS-GF.70 | Physical Progress [1490 h]; TATA Projects Ltd-25 |  |
| RB1-SS-GF.90 |  | Casting of Staircase upto Flight 1 | 1d | 2027-04-27 | 2027-04-27 | RB1-SS-GF.80 | Mason; Helper; Physical Progress [1490 h]; Concrete M40 [3 m3]; TATA Projects Ltd-25 | 29,601 |
| RB1-SS-GF.110 |  | Reinforcement of wall upto Flight 2 | 2d | 2027-04-28 | 2027-04-29 | RB1-SS-GF.90 | Barbender [70 h]; Helper [40 h]; Physical Progress [2970 h]; Reinforcement Steel [1 MT1]; TATA Projects Ltd-25 | 96,512.5 |
| RB1-SS-GF.130 |  | Shuttering of wall upto Flight 2 | 2d | 2027-04-30 | 2027-05-03 | RB1-SS-GF.110 | Carpenter [20 h]; Helper [10 h]; Physical Progress [2970 h]; Formwork [10 Sq m]; TATA Projects Ltd-25 | 11,651.6 |
| RB1-SS-GF.150 |  | Casting of wall upto Flight 2 | 1d | 2027-05-04 | 2027-05-04 | RB1-SS-GF.130 | Mason; Helper; Physical Progress [1490 h]; Concrete M40 [3 m3]; TATA Projects Ltd-25 | 29,601 |
| RB1-SS-GF.175 |  | Shuttering of Staircase upto Flight 2 | 1d | 2027-05-05 | 2027-05-05 | RB1-SS-GF.150 | Carpenter [20 h]; Helper [10 h]; Physical Progress [1490 h]; Formwork [10 Sq m]; TATA Projects Ltd-25 | 11,651.6 |
| RB1-SS-GF.195 |  | Reinforcement of Staircase upto Flight 2 | 1d | 2027-05-06 | 2027-05-06 | RB1-SS-GF.175 | Barbender [70 h]; Helper [40 h]; Physical Progress [1490 h]; Reinforcement Steel [1 MT1]; TATA Projects Ltd-25 | 96,512.5 |
| RB1-SS-GF.210 |  | MEP coordination upto Flight 2 | 1d | 2027-05-07 | 2027-05-07 | RB1-SS-GF.195 | Physical Progress [1490 h]; TATA Projects Ltd-25 |  |
| RB1-SS-GF.225 |  | Casting of Staircase upto Flight 2 | 1d | 2027-05-08 | 2027-05-08 | RB1-SS-GF.210 | Mason; Helper; Physical Progress [1490 h]; Concrete M40 [3 m3]; TATA Projects Ltd-25 | 29,601 |
| RB1-SS-GF.245 |  | Reinforcement of wall upto Flight 3 | 2d | 2027-05-10 | 2027-05-11 | RB1-SS-GF.225 | Barbender [70 h]; Helper [40 h]; Physical Progress [2970 h]; Reinforcement Steel [1 MT1]; TATA Projects Ltd-25 | 96,512.5 |
| RB1-SS-GF.275 |  | Shuttering of wall upto Flight 3 | 2d | 2027-05-12 | 2027-05-13 | RB1-SS-GF.245 | Carpenter [20 h]; Helper [10 h]; Physical Progress [2970 h]; Formwork [10 Sq m]; TATA Projects Ltd-25 | 11,651.6 |
| RB1-SS-GF.290 |  | Casting of wall upto Flight 3 | 1d | 2027-05-14 | 2027-05-14 | RB1-SS-GF.275 | Mason; Helper; Physical Progress [1490 h]; Concrete M40 [3 m3]; TATA Projects Ltd-25 | 29,601 |
| RB1-SS-GF.315 |  | Shuttering of Staircase upto Flight 3 | 1d | 2027-05-15 | 2027-05-15 | RB1-SS-GF.290 | Carpenter [20 h]; Helper [10 h]; Physical Progress [1490 h]; Formwork [10 Sq m]; TATA Projects Ltd-25 | 11,651.6 |
| RB1-SS-GF.340 |  | Reinforcement of Staircase upto Flight 3 | 1d | 2027-05-17 | 2027-05-17 | RB1-SS-GF.315 | Barbender [70 h]; Helper [40 h]; Physical Progress [1490 h]; Reinforcement Steel [1 MT1]; TATA Projects Ltd-25 | 96,512.5 |

| ID | WBS | Activity | Duration | Start | Finish | Predecessors | Resources | Cost |
| --- | --- | --- | --- | --- | --- | --- | --- | --- |
|  | 2 | **Slab** |  | 2027-05-12 | 2027-06-11 |  |  |  |
| RB1-SS-GF.265 |  | Shuttering | 5d | 2027-05-12 | 2027-05-17 | RB1-SS-GF.95, RB1-SS-GF.255 | Carpenter [2740 h]; Helper [1370 h]; Physical Progress [7420 h]; Formwork [1640 Sq m]; TATA Projects Ltd-25 | 1,910,862.4 |
| RB1-SS-GF.350 |  | Reinforcement Bottom Net with chairs | 3d | 2027-05-18 | 2027-05-20 | RB1-SS-GF.265 | Barbender [1270 h]; Helper [640 h]; Physical Progress [4450 h]; Reinforcement Steel [19 MT1]; TATA Projects Ltd-25 | 1,833,737.5 |
| RB1-SS-GF.385 |  | Laying of PT Tendon | 4d | 2027-05-21 | 2027-05-25 | RB1-SS-GF.350 | Physical Progress [5940 h]; TATA Projects Ltd-25 |  |
| RB1-SS-GF.435 |  | Reinforcement Top Net | 2d | 2027-05-26 | 2027-05-27 | RB1-SS-GF.385 | Barbender [1270 h]; Helper [640 h]; Physical Progress [2970 h]; Reinforcement Steel [19 MT1]; TATA Projects Ltd-25 | 1,833,737.5 |
| RB1-SS-GF.465 |  | MEP Coordination | 1d | 2027-05-28 | 2027-05-28 | RB1-SS-GF.350, RB1-SS-GF.435, RB1-SS-GF.340, RB1-SS-GF.335 | Physical Progress [1490 h]; TATA Projects Ltd-25 |  |
| RB1-SS-GF.480 |  | Concrete of Slab | 1d | 2027-05-29 | 2027-05-29 | RB1-SS-GF.465 | Mason [50 h]; Helper [50 h]; Physical Progress [1490 h]; Concrete M40 [410 m3]; TATA Projects Ltd-25 | 4,045,470 |
| RB1-SS-GF.485 |  | Wait for Strength Gain | 6d | 2027-05-31 | 2027-06-05 | RB1-SS-GF.480 | Physical Progress [8900 h]; TATA Projects Ltd-25 |  |
| RB1-SS-GF.540 |  | PT Work | 5d | 2027-06-07 | 2027-06-11 | RB1-SS-GF.485, RB1-SS-B01.640 | PT [23 MT1]; Helper [100 h]; PT Fitter [100 h]; Physical Progress [11880 h]; TATA Projects Ltd-25 | 4,370,000 |
|  | 4 | **Pour 2** |  | 2027-05-06 | 2027-06-29 |  |  |  |
|  | 1 | **Column, Core Wall, Shear Wall - First Lift** |  | 2027-05-06 | 2027-05-17 |  |  |  |
| RB1-SS-GF.100 |  | Reinforcement | 4d | 2027-05-06 | 2027-05-10 | RB1-SS-B01.830 | Barbender [2600 h]; Helper [1300 h]; Physical Progress [5940 h]; Reinforcement Steel [39 MT1]; TATA Projects Ltd-25 | 3,763,987.5 |
| RB1-SS-GF.140 |  | LPS | 1d | 2027-05-11 | 2027-05-11 | RB1-SS-GF.100 | LPS [36235 INR]; Physical Progress [1490 h]; TATA Projects Ltd-25 | 36,235 |
| RB1-SS-GF.160 |  | Shuttering | 4d | 2027-05-12 | 2027-05-15 | RB1-SS-GF.100, RB1-SS-GF.140 | Carpenter [1280 h]; Helper [640 h]; Physical Progress [5940 h]; Formwork [766 Sq m]; TATA Projects Ltd-25 | 892,512.56 |
| RB1-SS-GF.235 |  | Concrete | 1d | 2027-05-17 | 2027-05-17 | RB1-SS-GF.160 | Mason [50 h]; Helper [50 h]; Physical Progress [1490 h]; Concrete M40 [192 m3]; TATA Projects Ltd-25 | 1,894,464 |
|  | 5 | **Column, Core Wall, Shear Wall - Second Lift** |  | 2027-05-18 | 2027-05-28 |  |  |  |
| RB1-SS-GF.260 |  | Reinforcement | 4d | 2027-05-18 | 2027-05-21 | RB1-SS-GF.235 | Barbender [2600 h]; Helper [1300 h]; Physical Progress [5940 h]; Reinforcement Steel [39 MT1]; TATA Projects Ltd-25 | 3,763,987.5 |
| RB1-SS-GF.305 |  | LPS | 1d | 2027-05-22 | 2027-05-22 | RB1-SS-GF.260 | LPS [36235 INR]; Physical Progress [1490 h]; TATA Projects Ltd-25 | 36,235 |
| RB1-SS-GF.330 |  | Shuttering | 4d | 2027-05-24 | 2027-05-27 | RB1-SS-GF.260, RB1-SS-GF.305 | Carpenter [1280 h]; Helper [640 h]; Physical Progress [5940 h]; Formwork [766 Sq m]; TATA Projects Ltd-25 | 892,512.56 |
| RB1-SS-GF.395 |  | Concrete | 1d | 2027-05-28 | 2027-05-28 | RB1-SS-GF.330 | Mason [50 h]; Helper [50 h]; Physical Progress [1490 h]; Concrete M40 [192 m3]; TATA Projects Ltd-25 | 1,894,464 |
|  | 3 | **Staircase** |  | 2027-05-06 | 2027-06-03 |  |  |  |
| RB1-SS-GF.115 |  | Reinforcement of wall upto Flight 1 | 2d | 2027-05-06 | 2027-05-07 | RB1-SS-B01.830 | Barbender [70 h]; Helper [40 h]; Physical Progress [2970 h]; Reinforcement Steel [1 MT1]; TATA Projects Ltd-25 | 96,512.5 |
| RB1-SS-GF.135 |  | Shuttering of wall upto Flight 1 | 2d | 2027-05-08 | 2027-05-10 | RB1-SS-GF.115 | Carpenter [20 h]; Helper [10 h]; Physical Progress [2970 h]; Formwork [10 Sq m]; TATA Projects Ltd-25 | 11,651.6 |
| RB1-SS-GF.155 |  | Casting of wall upto Flight 1 | 1d | 2027-05-11 | 2027-05-11 | RB1-SS-GF.135 | Mason; Helper; Physical Progress [1490 h]; Concrete M40 [3 m3]; TATA Projects Ltd-25 | 29,601 |
| RB1-SS-GF.180 |  | Shuttering of Staircase upto Flight 1 | 1d | 2027-05-12 | 2027-05-12 | RB1-SS-GF.155 | Carpenter [20 h]; Helper [10 h]; Physical Progress [1490 h]; Formwork [10 Sq m]; TATA Projects Ltd-25 | 11,651.6 |
| RB1-SS-GF.200 |  | Reinforcement of Staircase upto Flight 1 | 1d | 2027-05-13 | 2027-05-13 | RB1-SS-GF.180 | Barbender [70 h]; Helper [40 h]; Physical Progress [1490 h]; Reinforcement Steel [1 MT1]; TATA Projects Ltd-25 | 96,512.5 |
| RB1-SS-GF.215 |  | MEP coordination upto Flight 1 | 1d | 2027-05-14 | 2027-05-14 | RB1-SS-GF.200 | Physical Progress [1490 h]; TATA Projects Ltd-25 |  |
| RB1-SS-GF.230 |  | Casting of Staircase upto Flight 1 | 1d | 2027-05-15 | 2027-05-15 | RB1-SS-GF.215 | Mason; Helper; Physical Progress [1490 h]; Concrete M40 [3 m3]; TATA Projects Ltd-25 | 29,601 |
| RB1-SS-GF.250 |  | Reinforcement of wall upto Flight 2 | 2d | 2027-05-17 | 2027-05-18 | RB1-SS-GF.230 | Barbender [70 h]; Helper [40 h]; Physical Progress [2970 h]; Reinforcement Steel [1 MT1]; TATA Projects Ltd-25 | 96,512.5 |
| RB1-SS-GF.280 |  | Shuttering of wall upto Flight 2 | 2d | 2027-05-19 | 2027-05-20 | RB1-SS-GF.250 | Carpenter [20 h]; Helper [10 h]; Physical Progress [2970 h]; Formwork [10 Sq m]; TATA Projects Ltd-25 | 11,651.6 |
| RB1-SS-GF.295 |  | Casting of wall upto Flight 2 | 1d | 2027-05-21 | 2027-05-21 | RB1-SS-GF.280 | Mason; Helper; Physical Progress [1490 h]; Concrete M40 [3 m3]; TATA Projects Ltd-25 | 29,601 |
| RB1-SS-GF.320 |  | Shuttering of Staircase upto Flight 2 | 1d | 2027-05-22 | 2027-05-22 | RB1-SS-GF.295 | Carpenter [20 h]; Helper [10 h]; Physical Progress [1490 h]; Formwork [10 Sq m]; TATA Projects Ltd-25 | 11,651.6 |
| RB1-SS-GF.345 |  | Reinforcement of Staircase upto Flight 2 | 1d | 2027-05-24 | 2027-05-24 | RB1-SS-GF.320 | Barbender [70 h]; Helper [40 h]; Physical Progress [1490 h]; Reinforcement Steel [1 MT1]; TATA Projects Ltd-25 | 96,512.5 |
| RB1-SS-GF.355 |  | MEP coordination upto Flight 2 | 1d | 2027-05-25 | 2027-05-25 | RB1-SS-GF.345 | Physical Progress [1490 h]; TATA Projects Ltd-25 |  |
| RB1-SS-GF.365 |  | Casting of Staircase upto Flight 2 | 1d | 2027-05-26 | 2027-05-26 | RB1-SS-GF.355 | Mason; Helper; Physical Progress [1490 h]; Concrete M40 [3 m3]; TATA Projects Ltd-25 | 29,601 |
| RB1-SS-GF.375 |  | Reinforcement of wall upto Flight 3 | 2d | 2027-05-27 | 2027-05-28 | RB1-SS-GF.365 | Barbender [70 h]; Helper [40 h]; Physical Progress [2970 h]; Reinforcement Steel [1 MT1]; TATA Projects Ltd-25 | 96,512.5 |
| RB1-SS-GF.410 |  | Shuttering of wall upto Flight 3 | 2d | 2027-05-29 | 2027-05-31 | RB1-SS-GF.375 | Carpenter [20 h]; Helper [10 h]; Physical Progress [2970 h]; Formwork [10 Sq m]; TATA Projects Ltd-25 | 11,651.6 |
| RB1-SS-GF.425 |  | Casting of wall upto Flight 3 | 1d | 2027-06-01 | 2027-06-01 | RB1-SS-GF.410 | Mason; Helper; Physical Progress [1490 h]; Concrete M40 [3 m3]; TATA Projects Ltd-25 | 29,601 |
| RB1-SS-GF.445 |  | Shuttering of Staircase upto Flight 3 | 1d | 2027-06-02 | 2027-06-02 | RB1-SS-GF.425 | Carpenter [20 h]; Helper [10 h]; Physical Progress [1490 h]; Formwork [10 Sq m]; TATA Projects Ltd-25 | 11,651.6 |
| RB1-SS-GF.460 |  | Reinforcement of Staircase upto Flight 3 | 1d | 2027-06-03 | 2027-06-03 | RB1-SS-GF.445 | Barbender [70 h]; Helper [40 h]; Physical Progress [1490 h]; Reinforcement Steel [1 MT1]; TATA Projects Ltd-25 | 96,512.5 |

| ID | WBS | Activity | Duration | Start | Finish | Predecessors | Resources | Cost |
| --- | --- | --- | --- | --- | --- | --- | --- | --- |
|  | 2 | **Slab** |  | 2027-05-29 | 2027-06-29 |  |  |  |
| RB1-SS-GF.405 |  | Shuttering | 5d | 2027-05-29 | 2027-06-03 | RB1-SS-GF.235, RB1-SS-GF.395 | Carpenter [2930 h]; Helper [1470 h]; Physical Progress [7420 h]; Formwork [1758 Sq m]; TATA Projects Ltd-25 | 2,048,351.28 |
| RB1-SS-GF.470 |  | Reinforcement Bottom Net with chairs | 3d | 2027-06-04 | 2027-06-07 | RB1-SS-GF.405 | Barbender [1400 h]; Helper [700 h]; Physical Progress [4450 h]; Reinforcement Steel [21 MT1]; TATA Projects Ltd-25 | 2,026,762.5 |
| RB1-SS-GF.495 |  | Laying of PT Tendon | 4d | 2027-06-08 | 2027-06-11 | RB1-SS-GF.470 | Physical Progress [5940 h]; TATA Projects Ltd-25 |  |
| RB1-SS-GF.530 |  | Reinforcement Top Net | 2d | 2027-06-12 | 2027-06-14 | RB1-SS-GF.495 | Barbender [1400 h]; Helper [700 h]; Physical Progress [2970 h]; Reinforcement Steel [21 MT1]; TATA Projects Ltd-25 | 2,026,762.5 |
| RB1-SS-GF.550 |  | MEP Coordination | 1d | 2027-06-15 | 2027-06-15 | RB1-SS-GF.470, RB1-SS-GF.530, RB1-SS-GF.460 | Physical Progress [1490 h]; TATA Projects Ltd-25 |  |
| RB1-SS-GF.565 |  | Concrete of Slab | 1d | 2027-06-16 | 2027-06-16 | RB1-SS-GF.550 | Mason [50 h]; Helper [50 h]; Physical Progress [1490 h]; Concrete M40 [439 m3]; TATA Projects Ltd-25 | 4,331,613 |
| RB1-SS-GF.570 |  | Wait for Strength Gain | 6d | 2027-06-17 | 2027-06-23 | RB1-SS-GF.565 | Physical Progress [8900 h]; TATA Projects Ltd-25 |  |
| RB1-SS-GF.595 |  | PT Work | 5d | 2027-06-24 | 2027-06-29 | RB1-SS-GF.570, RB1-SS-B01.800 | PT [24 MT1]; Helper [100 h]; PT Fitter [100 h]; Physical Progress [11880 h]; TATA Projects Ltd-25 | 4,560,000 |
|  | 3 | **Pour 3** |  | 2027-05-08 | 2027-07-01 |  |  |  |
|  | 1 | **Column, Core Wall, Shear Wall - First Lift** |  | 2027-05-08 | 2027-05-19 |  |  |  |
| RB1-SS-GF.300 |  | Reinforcement | 4d | 2027-05-08 | 2027-05-12 | RB1-SS-B01.920 | Barbender [3140 h]; Helper [1570 h]; Physical Progress [5940 h]; Reinforcement Steel [47 MT1]; TATA Projects Ltd-25 | 4,536,087.5 |
| RB1-SS-GF.370 |  | LPS | 1d | 2027-05-13 | 2027-05-13 | RB1-SS-GF.300 | LPS [36235 INR]; Physical Progress [1490 h]; TATA Projects Ltd-25 | 36,235 |
| RB1-SS-GF.390 |  | Shuttering | 4d | 2027-05-14 | 2027-05-18 | RB1-SS-GF.300, RB1-SS-GF.370 | Carpenter [1540 h]; Helper [770 h]; Physical Progress [5940 h]; Formwork [924 Sq m]; TATA Projects Ltd-25 | 1,076,607.84 |
| RB1-SS-GF.440 |  | Concrete | 1d | 2027-05-19 | 2027-05-19 | RB1-SS-GF.390 | Mason [50 h]; Helper [50 h]; Physical Progress [1490 h]; Concrete M40 [231 m3]; TATA Projects Ltd-25 | 2,279,277 |
|  | 5 | **Column, Core Wall, Shear Wall - Second Lift** |  | 2027-05-20 | 2027-05-31 |  |  |  |
| RB1-SS-GF.455 |  | Reinforcement | 4d | 2027-05-20 | 2027-05-24 | RB1-SS-GF.440 | Barbender [3140 h]; Helper [1570 h]; Physical Progress [5940 h]; Reinforcement Steel [47 MT1]; TATA Projects Ltd-25 | 4,536,087.5 |
| RB1-SS-GF.500 |  | LPS | 1d | 2027-05-25 | 2027-05-25 | RB1-SS-GF.455 | LPS [36235 INR]; Physical Progress [1490 h]; TATA Projects Ltd-25 | 36,235 |
| RB1-SS-GF.510 |  | Shuttering | 4d | 2027-05-26 | 2027-05-29 | RB1-SS-GF.455, RB1-SS-GF.500 | Carpenter [1540 h]; Helper [770 h]; Physical Progress [5940 h]; Formwork [924 Sq m]; TATA Projects Ltd-25 | 1,076,607.84 |
| RB1-SS-GF.545 |  | Concrete | 1d | 2027-05-31 | 2027-05-31 | RB1-SS-GF.510 | Mason [50 h]; Helper [50 h]; Physical Progress [1490 h]; Concrete M40 [231 m3]; TATA Projects Ltd-25 | 2,279,277 |
|  | 3 | **Staircase** |  | 2027-05-08 | 2027-06-05 |  |  |  |
| RB1-SS-GF.325 |  | Reinforcement of wall upto Flight 1 | 2d | 2027-05-08 | 2027-05-10 | RB1-SS-B01.920 | Barbender [70 h]; Helper [40 h]; Physical Progress [2970 h]; Reinforcement Steel [1 MT1]; TATA Projects Ltd-25 | 96,512.5 |
| RB1-SS-GF.360 |  | Shuttering of wall upto Flight 1 | 2d | 2027-05-11 | 2027-05-12 | RB1-SS-GF.325 | Carpenter [20 h]; Helper [10 h]; Physical Progress [2970 h]; Formwork [10 Sq m]; TATA Projects Ltd-25 | 11,651.6 |
| RB1-SS-GF.380 |  | Casting of wall upto Flight 1 | 1d | 2027-05-13 | 2027-05-13 | RB1-SS-GF.360 | Mason; Helper; Physical Progress [1490 h]; Concrete M40 [3 m3]; TATA Projects Ltd-25 | 29,601 |
| RB1-SS-GF.400 |  | Shuttering of Staircase upto Flight 1 | 1d | 2027-05-14 | 2027-05-14 | RB1-SS-GF.380 | Carpenter [20 h]; Helper [10 h]; Physical Progress [1490 h]; Formwork [10 Sq m]; TATA Projects Ltd-25 | 11,651.6 |
| RB1-SS-GF.415 |  | Reinforcement of Staircase upto Flight 1 | 1d | 2027-05-15 | 2027-05-15 | RB1-SS-GF.400 | Barbender [70 h]; Helper [40 h]; Physical Progress [1490 h]; Reinforcement Steel [1 MT1]; TATA Projects Ltd-25 | 96,512.5 |
| RB1-SS-GF.420 |  | MEP coordination upto Flight 1 | 1d | 2027-05-17 | 2027-05-17 | RB1-SS-GF.415 | Physical Progress [1490 h]; TATA Projects Ltd-25 |  |
| RB1-SS-GF.430 |  | Casting of Staircase upto Flight 1 | 1d | 2027-05-18 | 2027-05-18 | RB1-SS-GF.420 | Mason; Helper; Physical Progress [1490 h]; Concrete M40 [3 m3]; TATA Projects Ltd-25 | 29,601 |
| RB1-SS-GF.450 |  | Reinforcement of wall upto Flight 2 | 2d | 2027-05-19 | 2027-05-20 | RB1-SS-GF.430 | Barbender [70 h]; Helper [40 h]; Physical Progress [2970 h]; Reinforcement Steel [1 MT1]; TATA Projects Ltd-25 | 96,512.5 |
| RB1-SS-GF.475 |  | Shuttering of wall upto Flight 2 | 2d | 2027-05-21 | 2027-05-22 | RB1-SS-GF.450 | Carpenter [20 h]; Helper [10 h]; Physical Progress [2970 h]; Formwork [10 Sq m]; TATA Projects Ltd-25 | 11,651.6 |
| RB1-SS-GF.490 |  | Casting of wall upto Flight 2 | 1d | 2027-05-24 | 2027-05-24 | RB1-SS-GF.475 | Mason; Helper; Physical Progress [1490 h]; Concrete M40 [3 m3]; TATA Projects Ltd-25 | 29,601 |
| RB1-SS-GF.505 |  | Shuttering of Staircase upto Flight 2 | 1d | 2027-05-25 | 2027-05-25 | RB1-SS-GF.490 | Carpenter [20 h]; Helper [10 h]; Physical Progress [1490 h]; Formwork [10 Sq m]; TATA Projects Ltd-25 | 11,651.6 |
| RB1-SS-GF.515 |  | Reinforcement of Staircase upto Flight 2 | 1d | 2027-05-26 | 2027-05-26 | RB1-SS-GF.505 | Barbender [70 h]; Helper [40 h]; Physical Progress [1490 h]; Reinforcement Steel [1 MT1]; TATA Projects Ltd-25 | 96,512.5 |
| RB1-SS-GF.520 |  | MEP coordination upto Flight 2 | 1d | 2027-05-27 | 2027-05-27 | RB1-SS-GF.515 | Physical Progress [1490 h]; TATA Projects Ltd-25 |  |
| RB1-SS-GF.525 |  | Casting of Staircase upto Flight 2 | 1d | 2027-05-28 | 2027-05-28 | RB1-SS-GF.520 | Mason; Helper; Physical Progress [1490 h]; Concrete M40 [3 m3]; TATA Projects Ltd-25 | 29,601 |
| RB1-SS-GF.535 |  | Reinforcement of wall upto Flight 3 | 2d | 2027-05-29 | 2027-05-31 | RB1-SS-GF.525 | Barbender [70 h]; Helper [40 h]; Physical Progress [2970 h]; Reinforcement Steel [1 MT1]; TATA Projects Ltd-25 | 96,512.5 |
| RB1-SS-GF.560 |  | Shuttering of wall upto Flight 3 | 2d | 2027-06-01 | 2027-06-02 | RB1-SS-GF.535 | Carpenter [20 h]; Helper [10 h]; Physical Progress [2970 h]; Formwork [10 Sq m]; TATA Projects Ltd-25 | 11,651.6 |
| RB1-SS-GF.575 |  | Casting of wall upto Flight 3 | 1d | 2027-06-03 | 2027-06-03 | RB1-SS-GF.560 | Mason; Helper; Physical Progress [1490 h]; Concrete M40 [3 m3]; TATA Projects Ltd-25 | 29,601 |
| RB1-SS-GF.580 |  | Shuttering of Staircase upto Flight 3 | 1d | 2027-06-04 | 2027-06-04 | RB1-SS-GF.575 | Carpenter [20 h]; Helper [10 h]; Physical Progress [1490 h]; Formwork [10 Sq m]; TATA Projects Ltd-25 | 11,651.6 |
| RB1-SS-GF.585 |  | Reinforcement of Staircase upto Flight 3 | 1d | 2027-06-05 | 2027-06-05 | RB1-SS-GF.580 | Barbender [70 h]; Helper [40 h]; Physical Progress [1490 h]; Reinforcement Steel [1 MT1]; TATA Projects Ltd-25 | 96,512.5 |

| ID | WBS | Activity | Duration | Start | Finish | Predecessors | Resources | Cost |
| --- | --- | --- | --- | --- | --- | --- | --- | --- |
|  | 2 | **Slab** |  | 2027-06-01 | 2027-07-01 |  |  |  |
| RB1-SS-GF.555 |  | Shuttering | 5d | 2027-06-01 | 2027-06-05 | RB1-SS-GF.440, RB1-SS-GF.545 | Carpenter [3540 h]; Helper [1770 h]; Physical Progress [7420 h]; Formwork [2119 Sq m]; TATA Projects Ltd-25 | 2,468,974.04 |
| RB1-SS-GF.590 |  | Reinforcement Bottom Net with chairs | 3d | 2027-06-07 | 2027-06-09 | RB1-SS-GF.555 | Barbender [1670 h]; Helper [840 h]; Physical Progress [4450 h]; Reinforcement Steel [25 MT1]; TATA Projects Ltd-25 | 2,412,812.5 |
| RB1-SS-GF.600 |  | Laying of PT Tendon | 4d | 2027-06-10 | 2027-06-14 | RB1-SS-GF.590 | Physical Progress [5940 h]; TATA Projects Ltd-25 |  |
| RB1-SS-GF.605 |  | Reinforcement Top Net | 2d | 2027-06-15 | 2027-06-16 | RB1-SS-GF.600 | Barbender [1670 h]; Helper [840 h]; Physical Progress [2970 h]; Reinforcement Steel [25 MT1]; TATA Projects Ltd-25 | 2,412,812.5 |
| RB1-SS-GF.610 |  | MEP Coordination | 1d | 2027-06-17 | 2027-06-17 | RB1-SS-GF.590, RB1-SS-GF.605, RB1-SS-GF.585 | Physical Progress [1490 h]; TATA Projects Ltd-25 |  |
| RB1-SS-GF.615 |  | Concrete of Slab | 1d | 2027-06-18 | 2027-06-18 | RB1-SS-GF.610 | Mason [50 h]; Helper [50 h]; Physical Progress [1490 h]; Concrete M40 [530 m3]; TATA Projects Ltd-25 | 5,229,510 |
| RB1-SS-GF.620 |  | Wait for Strength Gain | 6d | 2027-06-19 | 2027-06-25 | RB1-SS-GF.615 | Physical Progress [8900 h]; TATA Projects Ltd-25 |  |
| RB1-SS-GF.625 |  | PT Work | 5d | 2027-06-26 | 2027-07-01 | RB1-SS-GF.620, RB1-SS-B01.870, RB1-SS-B01.970 | PT [29 MT1]; Helper [100 h]; PT Fitter [100 h]; Physical Progress [11880 h]; TATA Projects Ltd-25 | 5,510,000 |
|  | 2 | **First Floor** |  | 2027-05-31 | 2027-08-23 |  |  |  |
|  | 2 | **Pour 1** |  | 2027-05-31 | 2027-07-24 |  |  |  |
|  | 1 | **Column, Core Wall, Shear Wall - First Lift** |  | 2027-05-31 | 2027-06-08 |  |  |  |
| RB1-SS-1st.10 |  | Reinforcement | 3d | 2027-05-31 | 2027-06-02 | RB1-SS-GF.480, E-GFC-ST-RB1-105 | Barbender [2400 h]; Helper [1200 h]; Physical Progress [4450 h]; Reinforcement Steel [36 MT1]; TATA Projects Ltd-25 | 3,474,450 |
| RB1-SS-1st.35 |  | LPS | 1d | 2027-06-03 | 2027-06-03 | RB1-SS-1st.10 | LPS [36235 INR]; Physical Progress [1490 h]; TATA Projects Ltd-25 | 36,235 |
| RB1-SS-1st.40 |  | Shuttering | 3d | 2027-06-04 | 2027-06-07 | RB1-SS-1st.10, RB1-SS-1st.35 | Carpenter [1170 h]; Helper [590 h]; Physical Progress [4450 h]; Formwork [702 Sq m]; TATA Projects Ltd-25 | 817,942.32 |
| RB1-SS-1st.75 |  | Concrete | 1d | 2027-06-08 | 2027-06-08 | RB1-SS-1st.40 | Mason [50 h]; Helper [50 h]; Physical Progress [1490 h]; Concrete M40 [176 m3]; TATA Projects Ltd-25 | 1,736,592 |
|  | 3 | **Staircase - 1** |  | 2027-05-31 | 2027-06-28 |  |  |  |
| RB1-SS-1st.15 |  | Reinforcement of wall upto Flight 1 | 2d | 2027-05-31 | 2027-06-01 | RB1-SS-GF.480 | Barbender [70 h]; Helper [40 h]; Physical Progress [2970 h]; Reinforcement Steel [1 MT1]; TATA Projects Ltd-25 | 96,512.5 |
| RB1-SS-1st.25 |  | Shuttering of wall upto Flight 1 | 2d | 2027-06-02 | 2027-06-03 | RB1-SS-1st.15 | Carpenter [20 h]; Helper [10 h]; Physical Progress [2970 h]; Formwork [10 Sq m]; TATA Projects Ltd-25 | 11,651.6 |
| RB1-SS-1st.45 |  | Casting of wall upto Flight 1 | 1d | 2027-06-04 | 2027-06-04 | RB1-SS-1st.25 | Mason; Helper; Physical Progress [1490 h]; Concrete M40 [3 m3]; TATA Projects Ltd-25 | 29,601 |
| RB1-SS-1st.55 |  | Shuttering of Staircase upto Flight 1 | 1d | 2027-06-05 | 2027-06-05 | RB1-SS-1st.45 | Carpenter [20 h]; Helper [10 h]; Physical Progress [1490 h]; Formwork [10 Sq m]; TATA Projects Ltd-25 | 11,651.6 |
| RB1-SS-1st.65 |  | Reinforcement of Staircase upto Flight 1 | 1d | 2027-06-07 | 2027-06-07 | RB1-SS-1st.55 | Barbender [70 h]; Helper [40 h]; Physical Progress [1490 h]; Reinforcement Steel [1 MT1]; TATA Projects Ltd-25 | 96,512.5 |
| RB1-SS-1st.80 |  | MEP coordination upto Flight 1 | 1d | 2027-06-08 | 2027-06-08 | RB1-SS-1st.65 | Physical Progress [1490 h]; TATA Projects Ltd-25 |  |
| RB1-SS-1st.95 |  | Casting of Staircase upto Flight 1 | 1d | 2027-06-09 | 2027-06-09 | RB1-SS-1st.80 | Mason; Helper; Physical Progress [1490 h]; Concrete M40 [3 m3]; TATA Projects Ltd-25 | 29,601 |
| RB1-SS-1st.110 |  | Reinforcement of wall upto Flight 2 | 2d | 2027-06-10 | 2027-06-11 | RB1-SS-1st.95 | Barbender [70 h]; Helper [40 h]; Physical Progress [2970 h]; Reinforcement Steel [1 MT1]; TATA Projects Ltd-25 | 96,512.5 |
| RB1-SS-1st.130 |  | Shuttering of wall upto Flight 2 | 2d | 2027-06-12 | 2027-06-14 | RB1-SS-1st.110 | Carpenter [20 h]; Helper [10 h]; Physical Progress [2970 h]; Formwork [10 Sq m]; TATA Projects Ltd-25 | 11,651.6 |
| RB1-SS-1st.160 |  | Casting of wall upto Flight 2 | 1d | 2027-06-15 | 2027-06-15 | RB1-SS-1st.130 | Mason; Helper; Physical Progress [1490 h]; Concrete M40 [3 m3]; TATA Projects Ltd-25 | 29,601 |
| RB1-SS-1st.175 |  | Shuttering of Staircase upto Flight 2 | 1d | 2027-06-16 | 2027-06-16 | RB1-SS-1st.160 | Carpenter [20 h]; Helper [10 h]; Physical Progress [1490 h]; Formwork [10 Sq m]; TATA Projects Ltd-25 | 11,651.6 |
| RB1-SS-1st.195 |  | Reinforcement of Staircase upto Flight 2 | 1d | 2027-06-17 | 2027-06-17 | RB1-SS-1st.175 | Barbender [70 h]; Helper [40 h]; Physical Progress [1490 h]; Reinforcement Steel [1 MT1]; TATA Projects Ltd-25 | 96,512.5 |
| RB1-SS-1st.220 |  | MEP coordination upto Flight 2 | 1d | 2027-06-18 | 2027-06-18 | RB1-SS-1st.195 | Physical Progress [1490 h]; TATA Projects Ltd-25 |  |
| RB1-SS-1st.240 |  | Casting of Staircase upto Flight 2 | 1d | 2027-06-19 | 2027-06-19 | RB1-SS-1st.220 | Mason; Helper; Physical Progress [1490 h]; Concrete M40 [3 m3]; TATA Projects Ltd-25 | 29,601 |
| RB1-SS-1st.255 |  | Reinforcement of wall upto Flight 3 | 2d | 2027-06-21 | 2027-06-22 | RB1-SS-1st.240 | Barbender [70 h]; Helper [40 h]; Physical Progress [2970 h]; Reinforcement Steel [1 MT1]; TATA Projects Ltd-25 | 96,512.5 |
| RB1-SS-1st.280 |  | Shuttering of wall upto Flight 3 | 2d | 2027-06-23 | 2027-06-24 | RB1-SS-1st.255 | Carpenter [20 h]; Helper [10 h]; Physical Progress [2970 h]; Formwork [10 Sq m]; TATA Projects Ltd-25 | 11,651.6 |
| RB1-SS-1st.300 |  | Casting of wall upto Flight 3 | 1d | 2027-06-25 | 2027-06-25 | RB1-SS-1st.280 | Mason; Helper; Physical Progress [1490 h]; Concrete M40 [3 m3]; TATA Projects Ltd-25 | 29,601 |
| RB1-SS-1st.325 |  | Shuttering of Staircase upto Flight 3 | 1d | 2027-06-26 | 2027-06-26 | RB1-SS-1st.300 | Carpenter [20 h]; Helper [10 h]; Physical Progress [1490 h]; Formwork [10 Sq m]; TATA Projects Ltd-25 | 11,651.6 |
| RB1-SS-1st.350 |  | Reinforcement of Staircase upto Flight 3 | 1d | 2027-06-28 | 2027-06-28 | RB1-SS-1st.325 | Barbender [70 h]; Helper [40 h]; Physical Progress [1490 h]; Reinforcement Steel [1 MT1]; TATA Projects Ltd-25 | 96,512.5 |

| ID | WBS | Activity | Duration | Start | Finish | Predecessors | Resources | Cost |
| --- | --- | --- | --- | --- | --- | --- | --- | --- |
|  | 5 | **Column, Core Wall, Shear Wall - Second Lift** |  | 2027-06-09 | 2027-06-17 |  |  |  |
| RB1-SS-1st.90 |  | Reinforcement | 3d | 2027-06-09 | 2027-06-11 | RB1-SS-1st.75 | Barbender [2400 h]; Helper [1200 h]; Physical Progress [4450 h]; Reinforcement Steel [36 MT1]; TATA Projects Ltd-25 | 3,474,450 |
| RB1-SS-1st.125 |  | LPS | 1d | 2027-06-12 | 2027-06-12 | RB1-SS-1st.90 | LPS [36235 INR]; Physical Progress [1490 h]; TATA Projects Ltd-25 | 36,235 |
| RB1-SS-1st.150 |  | Shuttering | 3d | 2027-06-14 | 2027-06-16 | RB1-SS-1st.90, RB1-SS-1st.125 | Carpenter [1170 h]; Helper [590 h]; Physical Progress [4450 h]; Formwork [702 Sq m]; TATA Projects Ltd-25 | 817,942.32 |
| RB1-SS-1st.190 |  | Concrete | 1d | 2027-06-17 | 2027-06-17 | RB1-SS-1st.150 | Mason [50 h]; Helper [50 h]; Physical Progress [1490 h]; Concrete M40 [176 m3]; TATA Projects Ltd-25 | 1,736,592 |
|  | 4 | **Staircase - 2** |  | 2027-05-31 | 2027-06-28 |  |  |  |
| RB1-SS-1st.20 |  | Reinforcement of wall upto Flight 1 | 2d | 2027-05-31 | 2027-06-01 | RB1-SS-GF.480 | Barbender [70 h]; Helper [40 h]; Physical Progress [2970 h]; Reinforcement Steel [1 MT1]; TATA Projects Ltd-25 | 96,512.5 |
| RB1-SS-1st.30 |  | Shuttering of wall upto Flight 1 | 2d | 2027-06-02 | 2027-06-03 | RB1-SS-1st.20 | Carpenter [20 h]; Helper [10 h]; Physical Progress [2970 h]; Formwork [10 Sq m]; TATA Projects Ltd-25 | 11,651.6 |
| RB1-SS-1st.50 |  | Casting of wall upto Flight 1 | 1d | 2027-06-04 | 2027-06-04 | RB1-SS-1st.30 | Mason; Helper; Physical Progress [1490 h]; Concrete M40 [3 m3]; TATA Projects Ltd-25 | 29,601 |
| RB1-SS-1st.60 |  | Shuttering of Staircase upto Flight 1 | 1d | 2027-06-05 | 2027-06-05 | RB1-SS-1st.50 | Carpenter [20 h]; Helper [10 h]; Physical Progress [1490 h]; Formwork [10 Sq m]; TATA Projects Ltd-25 | 11,651.6 |
| RB1-SS-1st.70 |  | Reinforcement of Staircase upto Flight 1 | 1d | 2027-06-07 | 2027-06-07 | RB1-SS-1st.60 | Barbender [70 h]; Helper [40 h]; Physical Progress [1490 h]; Reinforcement Steel [1 MT1]; TATA Projects Ltd-25 | 96,512.5 |
| RB1-SS-1st.85 |  | MEP coordination upto Flight 1 | 1d | 2027-06-08 | 2027-06-08 | RB1-SS-1st.70 | Physical Progress [1490 h]; TATA Projects Ltd-25 |  |
| RB1-SS-1st.100 |  | Casting of Staircase upto Flight 1 | 1d | 2027-06-09 | 2027-06-09 | RB1-SS-1st.85 | Mason; Helper; Physical Progress [1490 h]; Concrete M40 [3 m3]; TATA Projects Ltd-25 | 29,601 |
| RB1-SS-1st.115 |  | Reinforcement of wall upto Flight 2 | 2d | 2027-06-10 | 2027-06-11 | RB1-SS-1st.100 | Barbender [70 h]; Helper [40 h]; Physical Progress [2970 h]; Reinforcement Steel [1 MT1]; TATA Projects Ltd-25 | 96,512.5 |
| RB1-SS-1st.135 |  | Shuttering of wall upto Flight 2 | 2d | 2027-06-12 | 2027-06-14 | RB1-SS-1st.115 | Carpenter [20 h]; Helper [10 h]; Physical Progress [2970 h]; Formwork [10 Sq m]; TATA Projects Ltd-25 | 11,651.6 |
| RB1-SS-1st.165 |  | Casting of wall upto Flight 2 | 1d | 2027-06-15 | 2027-06-15 | RB1-SS-1st.135 | Mason; Helper; Physical Progress [1490 h]; Concrete M40 [3 m3]; TATA Projects Ltd-25 | 29,601 |
| RB1-SS-1st.180 |  | Shuttering of Staircase upto Flight 2 | 1d | 2027-06-16 | 2027-06-16 | RB1-SS-1st.165 | Carpenter [20 h]; Helper [10 h]; Physical Progress [1490 h]; Formwork [10 Sq m]; TATA Projects Ltd-25 | 11,651.6 |
| RB1-SS-1st.200 |  | Reinforcement of Staircase upto Flight 2 | 1d | 2027-06-17 | 2027-06-17 | RB1-SS-1st.180 | Barbender [70 h]; Helper [40 h]; Physical Progress [1490 h]; Reinforcement Steel [1 MT1]; TATA Projects Ltd-25 | 96,512.5 |
| RB1-SS-1st.225 |  | MEP coordination upto Flight 2 | 1d | 2027-06-18 | 2027-06-18 | RB1-SS-1st.200 | Physical Progress [1490 h]; TATA Projects Ltd-25 |  |
| RB1-SS-1st.245 |  | Casting of Staircase upto Flight 2 | 1d | 2027-06-19 | 2027-06-19 | RB1-SS-1st.225 | Mason; Helper; Physical Progress [1490 h]; Concrete M40 [3 m3]; TATA Projects Ltd-25 | 29,601 |
| RB1-SS-1st.260 |  | Reinforcement of wall upto Flight 3 | 2d | 2027-06-21 | 2027-06-22 | RB1-SS-1st.245 | Barbender [70 h]; Helper [40 h]; Physical Progress [2970 h]; Reinforcement Steel [1 MT1]; TATA Projects Ltd-25 | 96,512.5 |
| RB1-SS-1st.285 |  | Shuttering of wall upto Flight 3 | 2d | 2027-06-23 | 2027-06-24 | RB1-SS-1st.260 | Carpenter [20 h]; Helper [10 h]; Physical Progress [2970 h]; Formwork [10 Sq m]; TATA Projects Ltd-25 | 11,651.6 |
| RB1-SS-1st.305 |  | Casting of wall upto Flight 3 | 1d | 2027-06-25 | 2027-06-25 | RB1-SS-1st.285 | Mason; Helper; Physical Progress [1490 h]; Concrete M40 [3 m3]; TATA Projects Ltd-25 | 29,601 |
| RB1-SS-1st.330 |  | Shuttering of Staircase upto Flight 3 | 1d | 2027-06-26 | 2027-06-26 | RB1-SS-1st.305 | Carpenter [20 h]; Helper [10 h]; Physical Progress [1490 h]; Formwork [10 Sq m]; TATA Projects Ltd-25 | 11,651.6 |
| RB1-SS-1st.355 |  | Reinforcement of Staircase upto Flight 3 | 1d | 2027-06-28 | 2027-06-28 | RB1-SS-1st.330 | Barbender [70 h]; Helper [40 h]; Physical Progress [1490 h]; Reinforcement Steel [1 MT1]; TATA Projects Ltd-25 | 96,512.5 |

| ID | WBS | Activity | Duration | Start | Finish | Predecessors | Resources | Cost |
| --- | --- | --- | --- | --- | --- | --- | --- | --- |
|  | 2 | **Slab** |  | 2027-06-18 | 2027-07-24 |  |  |  |
| RB1-SS-1st.210 |  | Shuttering | 4d | 2027-06-18 | 2027-06-22 | RB1-SS-1st.75, RB1-SS-1st.190 | Carpenter [2660 h]; Helper [1330 h]; Physical Progress [5940 h]; Formwork [1592 Sq m]; TATA Projects Ltd-25 | 1,854,934.72 |
| RB1-SS-1st.270 |  | Reinforcement Bottom Net with chairs | 3d | 2027-06-23 | 2027-06-25 | RB1-SS-1st.210 | Barbender [1200 h]; Helper [600 h]; Physical Progress [4450 h]; Reinforcement Steel [18 MT1]; TATA Projects Ltd-25 | 1,737,225 |
| RB1-SS-1st.315 |  | Laying of PT Tendon | 4d | 2027-06-26 | 2027-06-30 | RB1-SS-1st.270, E-ShopD-Civil-PT-RB1-15 | Physical Progress [5940 h]; TATA Projects Ltd-25 |  |
| RB1-SS-1st.390 |  | Reinforcement Top Net | 2d | 2027-07-01 | 2027-07-02 | RB1-SS-1st.315 | Barbender [1200 h]; Helper [600 h]; Physical Progress [2970 h]; Reinforcement Steel [18 MT1]; TATA Projects Ltd-25 | 1,737,225 |
| RB1-SS-1st.415 |  | MEP Coordination | 1d | 2027-07-03 | 2027-07-03 | RB1-SS-1st.270, RB1-SS-1st.390, RB1-SS-1st.350, RB1-SS-1st.355 | Physical Progress [1490 h]; TATA Projects Ltd-25 |  |
| RB1-SS-1st.435 |  | Concrete of Slab | 1d | 2027-07-05 | 2027-07-05 | RB1-SS-1st.415 | Mason [50 h]; Helper [50 h]; Physical Progress [1490 h]; Concrete M40 [398 m3]; TATA Projects Ltd-25 | 3,927,066 |
| RB1-SS-1st.450 |  | Wait for Strength Gain | 6d | 2027-07-07 | 2027-07-16 | RB1-SS-1st.435 | Physical Progress [8900 h]; TATA Projects Ltd-25 |  |
| RB1-SS-1st.515 |  | PT Work | 5d | 2027-07-17 | 2027-07-24 | RB1-SS-1st.450, RB1-SS-GF.540 | PT [21 MT1]; Helper [100 h]; PT Fitter [100 h]; Physical Progress [7420 h]; TATA Projects Ltd-25 | 3,990,000 |
|  | 4 | **Pour 2** |  | 2027-06-17 | 2027-08-20 |  |  |  |
|  | 1 | **Column, Core Wall, Shear Wall - First Lift** |  | 2027-06-17 | 2027-06-25 |  |  |  |
| RB1-SS-1st.105 |  | Reinforcement | 3d | 2027-06-17 | 2027-06-19 | RB1-SS-GF.565 | Barbender [2600 h]; Helper [1300 h]; Physical Progress [4450 h]; Reinforcement Steel [39 MT1]; TATA Projects Ltd-25 | 3,763,987.5 |
| RB1-SS-1st.145 |  | LPS | 1d | 2027-06-21 | 2027-06-21 | RB1-SS-1st.105 | LPS [36235 INR]; Physical Progress [1490 h]; TATA Projects Ltd-25 | 36,235 |
| RB1-SS-1st.155 |  | Shuttering | 3d | 2027-06-22 | 2027-06-24 | RB1-SS-1st.105, RB1-SS-1st.145 | Carpenter [1260 h]; Helper [630 h]; Physical Progress [4450 h]; Formwork [752 Sq m]; TATA Projects Ltd-25 | 876,200.32 |
| RB1-SS-1st.215 |  | Concrete | 1d | 2027-06-25 | 2027-06-25 | RB1-SS-1st.155 | Mason [50 h]; Helper [50 h]; Physical Progress [1490 h]; Concrete M40 [188 m3]; TATA Projects Ltd-25 | 1,854,996 |
|  | 5 | **Column, Core Wall, Shear Wall - Second Lift** |  | 2027-06-26 | 2027-07-05 |  |  |  |
| RB1-SS-1st.235 |  | Reinforcement | 3d | 2027-06-26 | 2027-06-29 | RB1-SS-1st.215 | Barbender [2600 h]; Helper [1300 h]; Physical Progress [4450 h]; Reinforcement Steel [39 MT1]; TATA Projects Ltd-25 | 3,763,987.5 |
| RB1-SS-1st.275 |  | LPS | 1d | 2027-06-30 | 2027-06-30 | RB1-SS-1st.235 | LPS [36235 INR]; Physical Progress [1490 h]; TATA Projects Ltd-25 | 36,235 |
| RB1-SS-1st.295 |  | Shuttering | 3d | 2027-07-01 | 2027-07-03 | RB1-SS-1st.235, RB1-SS-1st.275 | Carpenter [1260 h]; Helper [630 h]; Physical Progress [4450 h]; Formwork [752 Sq m]; TATA Projects Ltd-25 | 876,200.32 |
| RB1-SS-1st.345 |  | Concrete | 1d | 2027-07-05 | 2027-07-05 | RB1-SS-1st.295 | Mason [50 h]; Helper [50 h]; Physical Progress [1490 h]; Concrete M40 [188 m3]; TATA Projects Ltd-25 | 1,854,996 |
|  | 3 | **Staircase** |  | 2027-06-17 | 2027-07-21 |  |  |  |
| RB1-SS-1st.120 |  | Reinforcement of wall upto Flight 1 | 2d | 2027-06-17 | 2027-06-18 | RB1-SS-GF.565 | Barbender [70 h]; Helper [40 h]; Physical Progress [2970 h]; Reinforcement Steel [1 MT1]; TATA Projects Ltd-25 | 96,512.5 |
| RB1-SS-1st.140 |  | Shuttering of wall upto Flight 1 | 2d | 2027-06-19 | 2027-06-21 | RB1-SS-1st.120 | Carpenter [20 h]; Helper [10 h]; Physical Progress [2970 h]; Formwork [10 Sq m]; TATA Projects Ltd-25 | 11,651.6 |
| RB1-SS-1st.170 |  | Casting of wall upto Flight 1 | 1d | 2027-06-22 | 2027-06-22 | RB1-SS-1st.140 | Mason; Helper; Physical Progress [1490 h]; Concrete M40 [3 m3]; TATA Projects Ltd-25 | 29,601 |
| RB1-SS-1st.185 |  | Shuttering of Staircase upto Flight 1 | 1d | 2027-06-23 | 2027-06-23 | RB1-SS-1st.170 | Carpenter [20 h]; Helper [10 h]; Physical Progress [1490 h]; Formwork [10 Sq m]; TATA Projects Ltd-25 | 11,651.6 |
| RB1-SS-1st.205 |  | Reinforcement of Staircase upto Flight 1 | 1d | 2027-06-24 | 2027-06-24 | RB1-SS-1st.185 | Barbender [70 h]; Helper [40 h]; Physical Progress [1490 h]; Reinforcement Steel [1 MT1]; TATA Projects Ltd-25 | 96,512.5 |
| RB1-SS-1st.230 |  | MEP coordination upto Flight 1 | 1d | 2027-06-25 | 2027-06-25 | RB1-SS-1st.205 | Physical Progress [1490 h]; TATA Projects Ltd-25 |  |
| RB1-SS-1st.250 |  | Casting of Staircase upto Flight 1 | 1d | 2027-06-26 | 2027-06-26 | RB1-SS-1st.230 | Mason; Helper; Physical Progress [1490 h]; Concrete M40 [3 m3]; TATA Projects Ltd-25 | 29,601 |
| RB1-SS-1st.265 |  | Reinforcement of wall upto Flight 2 | 2d | 2027-06-28 | 2027-06-29 | RB1-SS-1st.250 | Barbender [70 h]; Helper [40 h]; Physical Progress [2970 h]; Reinforcement Steel [1 MT1]; TATA Projects Ltd-25 | 96,512.5 |
| RB1-SS-1st.290 |  | Shuttering of wall upto Flight 2 | 2d | 2027-06-30 | 2027-07-01 | RB1-SS-1st.265 | Carpenter [20 h]; Helper [10 h]; Physical Progress [2970 h]; Formwork [10 Sq m]; TATA Projects Ltd-25 | 11,651.6 |
| RB1-SS-1st.310 |  | Casting of wall upto Flight 2 | 1d | 2027-07-02 | 2027-07-02 | RB1-SS-1st.290 | Mason; Helper; Physical Progress [1490 h]; Concrete M40 [3 m3]; TATA Projects Ltd-25 | 29,601 |
| RB1-SS-1st.335 |  | Shuttering of Staircase upto Flight 2 | 1d | 2027-07-03 | 2027-07-03 | RB1-SS-1st.310 | Carpenter [20 h]; Helper [10 h]; Physical Progress [1490 h]; Formwork [10 Sq m]; TATA Projects Ltd-25 | 11,651.6 |
| RB1-SS-1st.360 |  | Reinforcement of Staircase upto Flight 2 | 1d | 2027-07-05 | 2027-07-05 | RB1-SS-1st.335 | Barbender [70 h]; Helper [40 h]; Physical Progress [1490 h]; Reinforcement Steel [1 MT1]; TATA Projects Ltd-25 | 96,512.5 |
| RB1-SS-1st.370 |  | MEP coordination upto Flight 2 | 1d | 2027-07-07 | 2027-07-07 | RB1-SS-1st.360 | Physical Progress [1490 h]; TATA Projects Ltd-25 |  |
| RB1-SS-1st.385 |  | Casting of Staircase upto Flight 2 | 1d | 2027-07-09 | 2027-07-09 | RB1-SS-1st.370 | Mason; Helper; Physical Progress [1490 h]; Concrete M40 [3 m3]; TATA Projects Ltd-25 | 29,601 |
| RB1-SS-1st.400 |  | Reinforcement of wall upto Flight 3 | 2d | 2027-07-10 | 2027-07-12 | RB1-SS-1st.385 | Barbender [70 h]; Helper [40 h]; Physical Progress [2970 h]; Reinforcement Steel [1 MT1]; TATA Projects Ltd-25 | 96,512.5 |
| RB1-SS-1st.425 |  | Shuttering of wall upto Flight 3 | 2d | 2027-07-14 | 2027-07-16 | RB1-SS-1st.400 | Carpenter [20 h]; Helper [10 h]; Physical Progress [2970 h]; Formwork [10 Sq m]; TATA Projects Ltd-25 | 11,651.6 |
| RB1-SS-1st.460 |  | Casting of wall upto Flight 3 | 1d | 2027-07-17 | 2027-07-17 | RB1-SS-1st.425 | Mason; Helper; Physical Progress [1490 h]; Concrete M40 [3 m3]; TATA Projects Ltd-25 | 29,601 |
| RB1-SS-1st.475 |  | Shuttering of Staircase upto Flight 3 | 1d | 2027-07-19 | 2027-07-19 | RB1-SS-1st.460 | Carpenter [20 h]; Helper [10 h]; Physical Progress [1490 h]; Formwork [10 Sq m]; TATA Projects Ltd-25 | 11,651.6 |
| RB1-SS-1st.485 |  | Reinforcement of Staircase upto Flight 3 | 1d | 2027-07-21 | 2027-07-21 | RB1-SS-1st.475 | Barbender [70 h]; Helper [40 h]; Physical Progress [1490 h]; Reinforcement Steel [1 MT1]; TATA Projects Ltd-25 | 96,512.5 |

| ID | WBS | Activity | Duration | Start | Finish | Predecessors | Resources | Cost |
| --- | --- | --- | --- | --- | --- | --- | --- | --- |
|  | 2 | **Slab** |  | 2027-07-07 | 2027-08-20 |  |  |  |
| RB1-SS-1st.365 |  | Shuttering | 4d | 2027-07-07 | 2027-07-12 | RB1-SS-1st.215, RB1-SS-1st.345 | Carpenter [2850 h]; Helper [1430 h]; Physical Progress [5940 h]; Formwork [1706 Sq m]; TATA Projects Ltd-25 | 1,987,762.96 |
| RB1-SS-1st.420 |  | Reinforcement Bottom Net with chairs | 3d | 2027-07-14 | 2027-07-17 | RB1-SS-1st.365 | Barbender [1270 h]; Helper [640 h]; Physical Progress [4450 h]; Reinforcement Steel [19 MT1]; TATA Projects Ltd-25 | 1,833,737.5 |
| RB1-SS-1st.470 |  | Laying of PT Tendon | 4d | 2027-07-19 | 2027-07-24 | RB1-SS-1st.420 | Physical Progress [5940 h]; TATA Projects Ltd-25 |  |
| RB1-SS-1st.505 |  | Reinforcement Top Net | 2d | 2027-07-26 | 2027-07-28 | RB1-SS-1st.470 | Barbender [1270 h]; Helper [640 h]; Physical Progress [2970 h]; Reinforcement Steel [19 MT1]; TATA Projects Ltd-25 | 1,833,737.5 |
| RB1-SS-1st.525 |  | MEP Coordination | 1d | 2027-07-30 | 2027-07-30 | RB1-SS-1st.420, RB1-SS-1st.505, RB1-SS-1st.485 | Physical Progress [1490 h]; TATA Projects Ltd-25 |  |
| RB1-SS-1st.540 |  | Concrete of Slab | 1d | 2027-07-31 | 2027-07-31 | RB1-SS-1st.525 | Mason [50 h]; Helper [50 h]; Physical Progress [1490 h]; Concrete M40 [426 m3]; TATA Projects Ltd-25 | 4,203,342 |
| RB1-SS-1st.555 |  | Wait for Strength Gain | 6d | 2027-08-02 | 2027-08-11 | RB1-SS-1st.540 | Physical Progress [8900 h]; TATA Projects Ltd-25 |  |
| RB1-SS-1st.585 |  | PT Work | 5d | 2027-08-13 | 2027-08-20 | RB1-SS-1st.555, RB1-SS-GF.595 | PT [22 MT1]; Helper [100 h]; PT Fitter [100 h]; Physical Progress [7420 h]; TATA Projects Ltd-25 | 4,180,000 |
|  | 3 | **Pour 3** |  | 2027-06-19 | 2027-08-23 |  |  |  |
|  | 1 | **Column, Core Wall, Shear Wall - First Lift** |  | 2027-06-19 | 2027-06-28 |  |  |  |
| RB1-SS-1st.320 |  | Reinforcement | 3d | 2027-06-19 | 2027-06-22 | RB1-SS-GF.615 | Barbender [3140 h]; Helper [1570 h]; Physical Progress [4450 h]; Reinforcement Steel [47 MT1]; TATA Projects Ltd-25 | 4,536,087.5 |
| RB1-SS-1st.380 |  | LPS | 1d | 2027-06-23 | 2027-06-23 | RB1-SS-1st.320 | LPS [36235 INR]; Physical Progress [1490 h]; TATA Projects Ltd-25 | 36,235 |
| RB1-SS-1st.395 |  | Shuttering | 3d | 2027-06-24 | 2027-06-26 | RB1-SS-1st.320, RB1-SS-1st.380 | Carpenter [1520 h]; Helper [760 h]; Physical Progress [4450 h]; Formwork [907 Sq m]; TATA Projects Ltd-25 | 1,056,800.12 |
| RB1-SS-1st.440 |  | Concrete | 1d | 2027-06-28 | 2027-06-28 | RB1-SS-1st.395 | Mason [50 h]; Helper [50 h]; Physical Progress [1490 h]; Concrete M40 [227 m3]; TATA Projects Ltd-25 | 2,239,809 |
|  | 5 | **Column, Core Wall, Shear Wall - Second Lift** |  | 2027-06-29 | 2027-07-09 |  |  |  |
| RB1-SS-1st.455 |  | Reinforcement | 3d | 2027-06-29 | 2027-07-01 | RB1-SS-1st.440 | Barbender [3140 h]; Helper [1570 h]; Physical Progress [4450 h]; Reinforcement Steel [47 MT1]; TATA Projects Ltd-25 | 4,536,087.5 |
| RB1-SS-1st.490 |  | LPS | 1d | 2027-07-02 | 2027-07-02 | RB1-SS-1st.455 | LPS [36235 INR]; Physical Progress [1490 h]; TATA Projects Ltd-25 | 36,235 |
| RB1-SS-1st.500 |  | Shuttering | 3d | 2027-07-03 | 2027-07-07 | RB1-SS-1st.455, RB1-SS-1st.490 | Carpenter [1520 h]; Helper [760 h]; Physical Progress [4450 h]; Formwork [907 Sq m]; TATA Projects Ltd-25 | 1,056,800.12 |
| RB1-SS-1st.530 |  | Concrete | 1d | 2027-07-09 | 2027-07-09 | RB1-SS-1st.500 | Mason [50 h]; Helper [50 h]; Physical Progress [1490 h]; Concrete M40 [227 m3]; TATA Projects Ltd-25 | 2,239,809 |
|  | 3 | **Staircase** |  | 2027-06-19 | 2027-07-24 |  |  |  |
| RB1-SS-1st.340 |  | Reinforcement of wall upto Flight 1 | 2d | 2027-06-19 | 2027-06-21 | RB1-SS-GF.615 | Barbender [70 h]; Helper [40 h]; Physical Progress [2970 h]; Reinforcement Steel [1 MT1]; TATA Projects Ltd-25 | 96,512.5 |
| RB1-SS-1st.375 |  | Shuttering of wall upto Flight 1 | 2d | 2027-06-22 | 2027-06-23 | RB1-SS-1st.340 | Carpenter [20 h]; Helper [10 h]; Physical Progress [2970 h]; Formwork [10 Sq m]; TATA Projects Ltd-25 | 11,651.6 |
| RB1-SS-1st.405 |  | Casting of wall upto Flight 1 | 1d | 2027-06-24 | 2027-06-24 | RB1-SS-1st.375 | Mason; Helper; Physical Progress [1490 h]; Concrete M40 [3 m3]; TATA Projects Ltd-25 | 29,601 |
| RB1-SS-1st.410 |  | Shuttering of Staircase upto Flight 1 | 1d | 2027-06-25 | 2027-06-25 | RB1-SS-1st.405 | Carpenter [20 h]; Helper [10 h]; Physical Progress [1490 h]; Formwork [10 Sq m]; TATA Projects Ltd-25 | 11,651.6 |
| RB1-SS-1st.430 |  | Reinforcement of Staircase upto Flight 1 | 1d | 2027-06-26 | 2027-06-26 | RB1-SS-1st.410 | Barbender [70 h]; Helper [40 h]; Physical Progress [1490 h]; Reinforcement Steel [1 MT1]; TATA Projects Ltd-25 | 96,512.5 |
| RB1-SS-1st.445 |  | MEP coordination upto Flight 1 | 1d | 2027-06-28 | 2027-06-28 | RB1-SS-1st.430 | Physical Progress [1490 h]; TATA Projects Ltd-25 |  |
| RB1-SS-1st.465 |  | Casting of Staircase upto Flight 1 | 1d | 2027-06-29 | 2027-06-29 | RB1-SS-1st.445 | Mason; Helper; Physical Progress [1490 h]; Concrete M40 [3 m3]; TATA Projects Ltd-25 | 29,601 |
| RB1-SS-1st.480 |  | Reinforcement of wall upto Flight 2 | 2d | 2027-06-30 | 2027-07-01 | RB1-SS-1st.465 | Barbender [70 h]; Helper [40 h]; Physical Progress [2970 h]; Reinforcement Steel [1 MT1]; TATA Projects Ltd-25 | 96,512.5 |
| RB1-SS-1st.495 |  | Shuttering of wall upto Flight 2 | 2d | 2027-07-02 | 2027-07-03 | RB1-SS-1st.480 | Carpenter [20 h]; Helper [10 h]; Physical Progress [2970 h]; Formwork [10 Sq m]; TATA Projects Ltd-25 | 11,651.6 |
| RB1-SS-1st.510 |  | Casting of wall upto Flight 2 | 1d | 2027-07-05 | 2027-07-05 | RB1-SS-1st.495 | Mason; Helper; Physical Progress [1490 h]; Concrete M40 [3 m3]; TATA Projects Ltd-25 | 29,601 |
| RB1-SS-1st.520 |  | Shuttering of Staircase upto Flight 2 | 1d | 2027-07-07 | 2027-07-07 | RB1-SS-1st.510 | Carpenter [20 h]; Helper [10 h]; Physical Progress [1490 h]; Formwork [10 Sq m]; TATA Projects Ltd-25 | 11,651.6 |
| RB1-SS-1st.535 |  | Reinforcement of Staircase upto Flight 2 | 1d | 2027-07-09 | 2027-07-09 | RB1-SS-1st.520 | Barbender [70 h]; Helper [40 h]; Physical Progress [1490 h]; Reinforcement Steel [1 MT1]; TATA Projects Ltd-25 | 96,512.5 |
| RB1-SS-1st.550 |  | MEP coordination upto Flight 2 | 1d | 2027-07-10 | 2027-07-10 | RB1-SS-1st.535 | Physical Progress [1490 h]; TATA Projects Ltd-25 |  |
| RB1-SS-1st.560 |  | Casting of Staircase upto Flight 2 | 1d | 2027-07-12 | 2027-07-12 | RB1-SS-1st.550 | Mason; Helper; Physical Progress [1490 h]; Concrete M40 [3 m3]; TATA Projects Ltd-25 | 29,601 |
| RB1-SS-1st.565 |  | Reinforcement of wall upto Flight 3 | 2d | 2027-07-14 | 2027-07-16 | RB1-SS-1st.560 | Barbender [70 h]; Helper [40 h]; Physical Progress [2970 h]; Reinforcement Steel [1 MT1]; TATA Projects Ltd-25 | 96,512.5 |
| RB1-SS-1st.575 |  | Shuttering of wall upto Flight 3 | 2d | 2027-07-17 | 2027-07-19 | RB1-SS-1st.565 | Carpenter [20 h]; Helper [10 h]; Physical Progress [2970 h]; Formwork [10 Sq m]; TATA Projects Ltd-25 | 11,651.6 |
| RB1-SS-1st.580 |  | Casting of wall upto Flight 3 | 1d | 2027-07-21 | 2027-07-21 | RB1-SS-1st.575 | Mason; Helper; Physical Progress [1490 h]; Concrete M40 [3 m3]; TATA Projects Ltd-25 | 29,601 |
| RB1-SS-1st.595 |  | Shuttering of Staircase upto Flight 3 | 1d | 2027-07-23 | 2027-07-23 | RB1-SS-1st.580 | Carpenter [20 h]; Helper [10 h]; Physical Progress [1490 h]; Formwork [10 Sq m]; TATA Projects Ltd-25 | 11,651.6 |
| RB1-SS-1st.600 |  | Reinforcement of Staircase upto Flight 3 | 1d | 2027-07-24 | 2027-07-24 | RB1-SS-1st.595 | Barbender [70 h]; Helper [40 h]; Physical Progress [1490 h]; Reinforcement Steel [1 MT1]; TATA Projects Ltd-25 | 96,512.5 |

| ID | WBS | Activity | Duration | Start | Finish | Predecessors | Resources | Cost |
| --- | --- | --- | --- | --- | --- | --- | --- | --- |
|  | 2 | **Slab** |  | 2027-07-10 | 2027-08-23 |  |  |  |
| RB1-SS-1st.545 |  | Shuttering | 4d | 2027-07-10 | 2027-07-16 | RB1-SS-1st.440, RB1-SS-1st.530 | Carpenter [3430 h]; Helper [1720 h]; Physical Progress [5940 h]; Formwork [2057 Sq m]; TATA Projects Ltd-25 | 2,396,734.12 |
| RB1-SS-1st.570 |  | Reinforcement Bottom Net with chairs | 3d | 2027-07-17 | 2027-07-21 | RB1-SS-1st.545 | Barbender [1540 h]; Helper [770 h]; Physical Progress [4450 h]; Reinforcement Steel [23 MT1]; TATA Projects Ltd-25 | 2,219,787.5 |
| RB1-SS-1st.590 |  | Laying of PT Tendon | 4d | 2027-07-23 | 2027-07-28 | RB1-SS-1st.570 | Physical Progress [5940 h]; TATA Projects Ltd-25 |  |
| RB1-SS-1st.605 |  | Reinforcement Top Net | 2d | 2027-07-30 | 2027-07-31 | RB1-SS-1st.590 | Barbender [1540 h]; Helper [770 h]; Physical Progress [2970 h]; Reinforcement Steel [23 MT1]; TATA Projects Ltd-25 | 2,219,787.5 |
| RB1-SS-1st.610 |  | MEP Coordination | 1d | 2027-08-02 | 2027-08-02 | RB1-SS-1st.570, RB1-SS-1st.605, RB1-SS-1st.600 | Physical Progress [1490 h]; TATA Projects Ltd-25 |  |
| RB1-SS-1st.615 |  | Concrete of Slab | 1d | 2027-08-04 | 2027-08-04 | RB1-SS-1st.610 | Mason [50 h]; Helper [50 h]; Physical Progress [1490 h]; Concrete M40 [514 m3]; TATA Projects Ltd-25 | 5,071,638 |
| RB1-SS-1st.620 |  | Wait for Strength Gain | 6d | 2027-08-06 | 2027-08-14 | RB1-SS-1st.615 | Physical Progress [8900 h]; TATA Projects Ltd-25 |  |
| RB1-SS-1st.625 |  | PT Work | 5d | 2027-08-16 | 2027-08-23 | RB1-SS-1st.620 | PT [27 MT1]; Helper [100 h]; PT Fitter [100 h]; Physical Progress [7420 h]; TATA Projects Ltd-25 | 5,130,000 |
|  | 3 | **Second Floor** |  | 2027-07-07 | 2027-10-08 |  |  |  |
|  | 2 | **Pour 1** |  | 2027-07-07 | 2027-09-14 |  |  |  |
|  | 1 | **Column, Core Wall, Shear Wall - First Lift** |  | 2027-07-07 | 2027-07-19 |  |  |  |
| RB1-SS-2nd.10 |  | Reinforcement | 3d | 2027-07-07 | 2027-07-10 | RB1-SS-1st.435, E-GFC-ST-RB1-110 | Barbender [2670 h]; Helper [1340 h]; Physical Progress [4450 h]; Reinforcement Steel [40 MT1]; TATA Projects Ltd-25 | 3,860,500 |
| RB1-SS-2nd.35 |  | LPS | 1d | 2027-07-12 | 2027-07-12 | RB1-SS-2nd.10 | LPS [36235 INR]; Physical Progress [1490 h]; TATA Projects Ltd-25 | 36,235 |
| RB1-SS-2nd.40 |  | Shuttering | 3d | 2027-07-14 | 2027-07-17 | RB1-SS-2nd.10, RB1-SS-2nd.35 | Carpenter [1310 h]; Helper [660 h]; Physical Progress [4450 h]; Formwork [785 Sq m]; TATA Projects Ltd-25 | 914,650.6 |
| RB1-SS-2nd.75 |  | Concrete | 1d | 2027-07-19 | 2027-07-19 | RB1-SS-2nd.40 | Mason [50 h]; Helper [50 h]; Physical Progress [1490 h]; Concrete M40 [196 m3]; TATA Projects Ltd-25 | 1,933,932 |
|  | 3 | **Staircase - 1** |  | 2027-07-07 | 2027-08-18 |  |  |  |
| RB1-SS-2nd.15 |  | Reinforcement of wall upto Flight 1 | 2d | 2027-07-07 | 2027-07-09 | RB1-SS-1st.435 | Barbender [70 h]; Helper [40 h]; Physical Progress [2970 h]; Reinforcement Steel [1 MT1]; TATA Projects Ltd-25 | 96,512.5 |
| RB1-SS-2nd.25 |  | Shuttering of wall upto Flight 1 | 2d | 2027-07-10 | 2027-07-12 | RB1-SS-2nd.15 | Carpenter [20 h]; Helper [10 h]; Physical Progress [2970 h]; Formwork [10 Sq m]; TATA Projects Ltd-25 | 11,651.6 |
| RB1-SS-2nd.45 |  | Casting of wall upto Flight 1 | 1d | 2027-07-14 | 2027-07-14 | RB1-SS-2nd.25 | Mason; Helper; Physical Progress [1490 h]; Concrete M40 [3 m3]; TATA Projects Ltd-25 | 29,601 |
| RB1-SS-2nd.55 |  | Shuttering of Staircase upto Flight 1 | 1d | 2027-07-16 | 2027-07-16 | RB1-SS-2nd.45 | Carpenter [20 h]; Helper [10 h]; Physical Progress [1490 h]; Formwork [10 Sq m]; TATA Projects Ltd-25 | 11,651.6 |
| RB1-SS-2nd.65 |  | Reinforcement of Staircase upto Flight 1 | 1d | 2027-07-17 | 2027-07-17 | RB1-SS-2nd.55 | Barbender [70 h]; Helper [40 h]; Physical Progress [1490 h]; Reinforcement Steel [1 MT1]; TATA Projects Ltd-25 | 96,512.5 |
| RB1-SS-2nd.80 |  | MEP coordination upto Flight 1 | 1d | 2027-07-19 | 2027-07-19 | RB1-SS-2nd.65 | Physical Progress [1490 h]; TATA Projects Ltd-25 |  |
| RB1-SS-2nd.95 |  | Casting of Staircase upto Flight 1 | 1d | 2027-07-21 | 2027-07-21 | RB1-SS-2nd.80 | Mason; Helper; Physical Progress [1490 h]; Concrete M40 [3 m3]; TATA Projects Ltd-25 | 29,601 |
| RB1-SS-2nd.110 |  | Reinforcement of wall upto Flight 2 | 2d | 2027-07-23 | 2027-07-24 | RB1-SS-2nd.95 | Barbender [70 h]; Helper [40 h]; Physical Progress [2970 h]; Reinforcement Steel [1 MT1]; TATA Projects Ltd-25 | 96,512.5 |
| RB1-SS-2nd.130 |  | Shuttering of wall upto Flight 2 | 2d | 2027-07-26 | 2027-07-28 | RB1-SS-2nd.110 | Carpenter [20 h]; Helper [10 h]; Physical Progress [2970 h]; Formwork [10 Sq m]; TATA Projects Ltd-25 | 11,651.6 |
| RB1-SS-2nd.160 |  | Casting of wall upto Flight 2 | 1d | 2027-07-30 | 2027-07-30 | RB1-SS-2nd.130 | Mason; Helper; Physical Progress [1490 h]; Concrete M40 [3 m3]; TATA Projects Ltd-25 | 29,601 |
| RB1-SS-2nd.175 |  | Shuttering of Staircase upto Flight 2 | 1d | 2027-07-31 | 2027-07-31 | RB1-SS-2nd.160 | Carpenter [20 h]; Helper [10 h]; Physical Progress [1490 h]; Formwork [10 Sq m]; TATA Projects Ltd-25 | 11,651.6 |
| RB1-SS-2nd.195 |  | Reinforcement of Staircase upto Flight 2 | 1d | 2027-08-02 | 2027-08-02 | RB1-SS-2nd.175 | Barbender [70 h]; Helper [40 h]; Physical Progress [1490 h]; Reinforcement Steel [1 MT1]; TATA Projects Ltd-25 | 96,512.5 |
| RB1-SS-2nd.220 |  | MEP coordination upto Flight 2 | 1d | 2027-08-04 | 2027-08-04 | RB1-SS-2nd.195 | Physical Progress [1490 h]; TATA Projects Ltd-25 |  |
| RB1-SS-2nd.240 |  | Casting of Staircase upto Flight 2 | 1d | 2027-08-06 | 2027-08-06 | RB1-SS-2nd.220 | Mason; Helper; Physical Progress [1490 h]; Concrete M40 [3 m3]; TATA Projects Ltd-25 | 29,601 |
| RB1-SS-2nd.255 |  | Reinforcement of wall upto Flight 3 | 2d | 2027-08-07 | 2027-08-09 | RB1-SS-2nd.240 | Barbender [70 h]; Helper [40 h]; Physical Progress [2970 h]; Reinforcement Steel [1 MT1]; TATA Projects Ltd-25 | 96,512.5 |
| RB1-SS-2nd.280 |  | Shuttering of wall upto Flight 3 | 2d | 2027-08-11 | 2027-08-13 | RB1-SS-2nd.255 | Carpenter [20 h]; Helper [10 h]; Physical Progress [2970 h]; Formwork [10 Sq m]; TATA Projects Ltd-25 | 11,651.6 |
| RB1-SS-2nd.300 |  | Casting of wall upto Flight 3 | 1d | 2027-08-14 | 2027-08-14 | RB1-SS-2nd.280 | Mason; Helper; Physical Progress [1490 h]; Concrete M40 [3 m3]; TATA Projects Ltd-25 | 29,601 |
| RB1-SS-2nd.325 |  | Shuttering of Staircase upto Flight 3 | 1d | 2027-08-16 | 2027-08-16 | RB1-SS-2nd.300 | Carpenter [20 h]; Helper [10 h]; Physical Progress [1490 h]; Formwork [10 Sq m]; TATA Projects Ltd-25 | 11,651.6 |
| RB1-SS-2nd.350 |  | Reinforcement of Staircase upto Flight 3 | 1d | 2027-08-18 | 2027-08-18 | RB1-SS-2nd.325 | Barbender [70 h]; Helper [40 h]; Physical Progress [1490 h]; Reinforcement Steel [1 MT1]; TATA Projects Ltd-25 | 96,512.5 |

| ID | WBS | Activity | Duration | Start | Finish | Predecessors | Resources | Cost |
| --- | --- | --- | --- | --- | --- | --- | --- | --- |
|  | 5 | **Column, Core Wall, Shear Wall - Second Lift** |  | 2027-07-21 | 2027-08-02 |  |  |  |
| RB1-SS-2nd.90 |  | Reinforcement | 3d | 2027-07-21 | 2027-07-24 | RB1-SS-2nd.75 | Barbender [2670 h]; Helper [1340 h]; Physical Progress [4450 h]; Reinforcement Steel [40 MT1]; TATA Projects Ltd-25 | 3,860,500 |
| RB1-SS-2nd.125 |  | LPS | 1d | 2027-07-26 | 2027-07-26 | RB1-SS-2nd.90 | LPS [36235 INR]; Physical Progress [1490 h]; TATA Projects Ltd-25 | 36,235 |
| RB1-SS-2nd.150 |  | Shuttering | 3d | 2027-07-28 | 2027-07-31 | RB1-SS-2nd.90, RB1-SS-2nd.125 | Carpenter [1310 h]; Helper [660 h]; Physical Progress [4450 h]; Formwork [785 Sq m]; TATA Projects Ltd-25 | 914,650.6 |
| RB1-SS-2nd.190 |  | Concrete | 1d | 2027-08-02 | 2027-08-02 | RB1-SS-2nd.150 | Mason [50 h]; Helper [50 h]; Physical Progress [1490 h]; Concrete M40 [196 m3]; TATA Projects Ltd-25 | 1,933,932 |
|  | 4 | **Staircase - 2** |  | 2027-07-07 | 2027-08-18 |  |  |  |
| RB1-SS-2nd.20 |  | Reinforcement of wall upto Flight 1 | 2d | 2027-07-07 | 2027-07-09 | RB1-SS-1st.435 | Barbender [70 h]; Helper [40 h]; Physical Progress [2970 h]; Reinforcement Steel [1 MT1]; TATA Projects Ltd-25 | 96,512.5 |
| RB1-SS-2nd.30 |  | Shuttering of wall upto Flight 1 | 2d | 2027-07-10 | 2027-07-12 | RB1-SS-2nd.20 | Carpenter [20 h]; Helper [10 h]; Physical Progress [2970 h]; Formwork [10 Sq m]; TATA Projects Ltd-25 | 11,651.6 |
| RB1-SS-2nd.50 |  | Casting of wall upto Flight 1 | 1d | 2027-07-14 | 2027-07-14 | RB1-SS-2nd.30 | Mason; Helper; Physical Progress [1490 h]; Concrete M40 [3 m3]; TATA Projects Ltd-25 | 29,601 |
| RB1-SS-2nd.60 |  | Shuttering of Staircase upto Flight 1 | 1d | 2027-07-16 | 2027-07-16 | RB1-SS-2nd.50 | Carpenter [20 h]; Helper [10 h]; Physical Progress [1490 h]; Formwork [10 Sq m]; TATA Projects Ltd-25 | 11,651.6 |
| RB1-SS-2nd.70 |  | Reinforcement of Staircase upto Flight 1 | 1d | 2027-07-17 | 2027-07-17 | RB1-SS-2nd.60 | Barbender [70 h]; Helper [40 h]; Physical Progress [1490 h]; Reinforcement Steel [1 MT1]; TATA Projects Ltd-25 | 96,512.5 |
| RB1-SS-2nd.85 |  | MEP coordination upto Flight 1 | 1d | 2027-07-19 | 2027-07-19 | RB1-SS-2nd.70 | Physical Progress [1490 h]; TATA Projects Ltd-25 |  |
| RB1-SS-2nd.100 |  | Casting of Staircase upto Flight 1 | 1d | 2027-07-21 | 2027-07-21 | RB1-SS-2nd.85 | Mason; Helper; Physical Progress [1490 h]; Concrete M40 [3 m3]; TATA Projects Ltd-25 | 29,601 |
| RB1-SS-2nd.115 |  | Reinforcement of wall upto Flight 2 | 2d | 2027-07-23 | 2027-07-24 | RB1-SS-2nd.100 | Barbender [70 h]; Helper [40 h]; Physical Progress [2970 h]; Reinforcement Steel [1 MT1]; TATA Projects Ltd-25 | 96,512.5 |
| RB1-SS-2nd.135 |  | Shuttering of wall upto Flight 2 | 2d | 2027-07-26 | 2027-07-28 | RB1-SS-2nd.115 | Carpenter [20 h]; Helper [10 h]; Physical Progress [2970 h]; Formwork [10 Sq m]; TATA Projects Ltd-25 | 11,651.6 |
| RB1-SS-2nd.165 |  | Casting of wall upto Flight 2 | 1d | 2027-07-30 | 2027-07-30 | RB1-SS-2nd.135 | Mason; Helper; Physical Progress [1490 h]; Concrete M40 [3 m3]; TATA Projects Ltd-25 | 29,601 |
| RB1-SS-2nd.180 |  | Shuttering of Staircase upto Flight 2 | 1d | 2027-07-31 | 2027-07-31 | RB1-SS-2nd.165 | Carpenter [20 h]; Helper [10 h]; Physical Progress [1490 h]; Formwork [10 Sq m]; TATA Projects Ltd-25 | 11,651.6 |
| RB1-SS-2nd.200 |  | Reinforcement of Staircase upto Flight 2 | 1d | 2027-08-02 | 2027-08-02 | RB1-SS-2nd.180 | Barbender [70 h]; Helper [40 h]; Physical Progress [1490 h]; Reinforcement Steel [1 MT1]; TATA Projects Ltd-25 | 96,512.5 |
| RB1-SS-2nd.225 |  | MEP coordination upto Flight 2 | 1d | 2027-08-04 | 2027-08-04 | RB1-SS-2nd.200 | Physical Progress [1490 h]; TATA Projects Ltd-25 |  |
| RB1-SS-2nd.245 |  | Casting of Staircase upto Flight 2 | 1d | 2027-08-06 | 2027-08-06 | RB1-SS-2nd.225 | Mason; Helper; Physical Progress [1490 h]; Concrete M40 [3 m3]; TATA Projects Ltd-25 | 29,601 |
| RB1-SS-2nd.260 |  | Reinforcement of wall upto Flight 3 | 2d | 2027-08-07 | 2027-08-09 | RB1-SS-2nd.245 | Barbender [70 h]; Helper [40 h]; Physical Progress [2970 h]; Reinforcement Steel [1 MT1]; TATA Projects Ltd-25 | 96,512.5 |
| RB1-SS-2nd.285 |  | Shuttering of wall upto Flight 3 | 2d | 2027-08-11 | 2027-08-13 | RB1-SS-2nd.260 | Carpenter [20 h]; Helper [10 h]; Physical Progress [2970 h]; Formwork [10 Sq m]; TATA Projects Ltd-25 | 11,651.6 |
| RB1-SS-2nd.305 |  | Casting of wall upto Flight 3 | 1d | 2027-08-14 | 2027-08-14 | RB1-SS-2nd.285 | Mason; Helper; Physical Progress [1490 h]; Concrete M40 [3 m3]; TATA Projects Ltd-25 | 29,601 |
| RB1-SS-2nd.330 |  | Shuttering of Staircase upto Flight 3 | 1d | 2027-08-16 | 2027-08-16 | RB1-SS-2nd.305 | Carpenter [20 h]; Helper [10 h]; Physical Progress [1490 h]; Formwork [10 Sq m]; TATA Projects Ltd-25 | 11,651.6 |
| RB1-SS-2nd.355 |  | Reinforcement of Staircase upto Flight 3 | 1d | 2027-08-18 | 2027-08-18 | RB1-SS-2nd.330 | Barbender [70 h]; Helper [40 h]; Physical Progress [1490 h]; Reinforcement Steel [1 MT1]; TATA Projects Ltd-25 | 96,512.5 |

| ID | WBS | Activity | Duration | Start | Finish | Predecessors | Resources | Cost |
| --- | --- | --- | --- | --- | --- | --- | --- | --- |
|  | 2 | **Slab** |  | 2027-08-04 | 2027-09-14 |  |  |  |
| RB1-SS-2nd.210 |  | Shuttering | 4d | 2027-08-04 | 2027-08-09 | RB1-SS-2nd.75, RB1-SS-2nd.190 | Carpenter [4640 h]; Helper [2320 h]; Physical Progress [5940 h]; Formwork [2780 Sq m]; TATA Projects Ltd-25 | 3,239,144.8 |
| RB1-SS-2nd.270 |  | Reinforcement Bottom Net with chairs | 3d | 2027-08-11 | 2027-08-14 | RB1-SS-2nd.210 | Barbender [2070 h]; Helper [1040 h]; Physical Progress [4450 h]; Reinforcement Steel [31 MT1]; TATA Projects Ltd-25 | 2,991,887.5 |
| RB1-SS-2nd.315 |  | Laying of PT Tendon | 4d | 2027-08-16 | 2027-08-21 | RB1-SS-2nd.270 | Physical Progress [5940 h]; TATA Projects Ltd-25 |  |
| RB1-SS-2nd.390 |  | Reinforcement Top Net | 2d | 2027-08-23 | 2027-08-25 | RB1-SS-2nd.315 | Barbender [2070 h]; Helper [1040 h]; Physical Progress [2970 h]; Reinforcement Steel [31 MT1]; TATA Projects Ltd-25 | 2,991,887.5 |
| RB1-SS-2nd.415 |  | MEP Coordination | 1d | 2027-08-27 | 2027-08-27 | RB1-SS-2nd.270, RB1-SS-2nd.390, RB1-SS-2nd.350, RB1-SS-2nd.355 | Physical Progress [1490 h]; TATA Projects Ltd-25 |  |
| RB1-SS-2nd.435 |  | Concrete of Slab | 1d | 2027-08-28 | 2027-08-28 | RB1-SS-2nd.415 | Mason [50 h]; Helper [50 h]; Physical Progress [1490 h]; Concrete M40 [695 m3]; TATA Projects Ltd-25 | 6,857,565 |
| RB1-SS-2nd.450 |  | Wait for Strength Gain | 6d | 2027-08-30 | 2027-09-07 | RB1-SS-2nd.435 | Physical Progress [8900 h]; TATA Projects Ltd-25 |  |
| RB1-SS-2nd.515 |  | PT Work | 5d | 2027-09-09 | 2027-09-14 | RB1-SS-2nd.450, RB1-SS-1st.515 | PT [26 MT1]; Helper [100 h]; PT Fitter [100 h]; Physical Progress [7420 h]; TATA Projects Ltd-25 | 4,940,000 |
|  | 4 | **Pour 2** |  | 2027-08-02 | 2027-10-06 |  |  |  |
|  | 1 | **Column, Core Wall, Shear Wall - First Lift** |  | 2027-08-02 | 2027-08-14 |  |  |  |
| RB1-SS-2nd.105 |  | Reinforcement | 3d | 2027-08-02 | 2027-08-06 | RB1-SS-1st.540 | Barbender [2670 h]; Helper [1340 h]; Physical Progress [4450 h]; Reinforcement Steel [40 MT1]; TATA Projects Ltd-25 | 3,860,500 |
| RB1-SS-2nd.145 |  | LPS | 1d | 2027-08-07 | 2027-08-07 | RB1-SS-2nd.105 | LPS [36235 INR]; Physical Progress [1490 h]; TATA Projects Ltd-25 | 36,235 |
| RB1-SS-2nd.155 |  | Shuttering | 3d | 2027-08-09 | 2027-08-13 | RB1-SS-2nd.105, RB1-SS-2nd.145 | Carpenter [1310 h]; Helper [660 h]; Physical Progress [4450 h]; Formwork [783 Sq m]; TATA Projects Ltd-25 | 912,320.28 |
| RB1-SS-2nd.215 |  | Concrete | 1d | 2027-08-14 | 2027-08-14 | RB1-SS-2nd.155 | Mason [50 h]; Helper [50 h]; Physical Progress [1490 h]; Concrete M40 [196 m3]; TATA Projects Ltd-25 | 1,933,932 |
|  | 5 | **Column, Core Wall, Shear Wall - Second Lift** |  | 2027-08-16 | 2027-08-28 |  |  |  |
| RB1-SS-2nd.235 |  | Reinforcement | 3d | 2027-08-16 | 2027-08-20 | RB1-SS-2nd.215 | Barbender [2670 h]; Helper [1340 h]; Physical Progress [4450 h]; Reinforcement Steel [40 MT1]; TATA Projects Ltd-25 | 3,860,500 |
| RB1-SS-2nd.275 |  | LPS | 1d | 2027-08-21 | 2027-08-21 | RB1-SS-2nd.235 | LPS [36235 INR]; Physical Progress [1490 h]; TATA Projects Ltd-25 | 36,235 |
| RB1-SS-2nd.295 |  | Shuttering | 3d | 2027-08-23 | 2027-08-27 | RB1-SS-2nd.235, RB1-SS-2nd.275 | Carpenter [1310 h]; Helper [660 h]; Physical Progress [4450 h]; Formwork [783 Sq m]; TATA Projects Ltd-25 | 912,320.28 |
| RB1-SS-2nd.345 |  | Concrete | 1d | 2027-08-28 | 2027-08-28 | RB1-SS-2nd.295 | Mason [50 h]; Helper [50 h]; Physical Progress [1490 h]; Concrete M40 [196 m3]; TATA Projects Ltd-25 | 1,933,932 |
|  | 3 | **Staircase** |  | 2027-08-02 | 2027-09-11 |  |  |  |
| RB1-SS-2nd.120 |  | Reinforcement of wall upto Flight 1 | 2d | 2027-08-02 | 2027-08-04 | RB1-SS-1st.540 | Barbender [70 h]; Helper [40 h]; Physical Progress [2970 h]; Reinforcement Steel [1 MT1]; TATA Projects Ltd-25 | 96,512.5 |
| RB1-SS-2nd.140 |  | Shuttering of wall upto Flight 1 | 2d | 2027-08-06 | 2027-08-07 | RB1-SS-2nd.120 | Carpenter [20 h]; Helper [10 h]; Physical Progress [2970 h]; Formwork [10 Sq m]; TATA Projects Ltd-25 | 11,651.6 |
| RB1-SS-2nd.170 |  | Casting of wall upto Flight 1 | 1d | 2027-08-09 | 2027-08-09 | RB1-SS-2nd.140 | Mason; Helper; Physical Progress [1490 h]; Concrete M40 [3 m3]; TATA Projects Ltd-25 | 29,601 |
| RB1-SS-2nd.185 |  | Shuttering of Staircase upto Flight 1 | 1d | 2027-08-11 | 2027-08-11 | RB1-SS-2nd.170 | Carpenter [20 h]; Helper [10 h]; Physical Progress [1490 h]; Formwork [10 Sq m]; TATA Projects Ltd-25 | 11,651.6 |
| RB1-SS-2nd.205 |  | Reinforcement of Staircase upto Flight 1 | 1d | 2027-08-13 | 2027-08-13 | RB1-SS-2nd.185 | Barbender [70 h]; Helper [40 h]; Physical Progress [1490 h]; Reinforcement Steel [1 MT1]; TATA Projects Ltd-25 | 96,512.5 |
| RB1-SS-2nd.230 |  | MEP coordination upto Flight 1 | 1d | 2027-08-14 | 2027-08-14 | RB1-SS-2nd.205 | Physical Progress [1490 h]; TATA Projects Ltd-25 |  |
| RB1-SS-2nd.250 |  | Casting of Staircase upto Flight 1 | 1d | 2027-08-16 | 2027-08-16 | RB1-SS-2nd.230 | Mason; Helper; Physical Progress [1490 h]; Concrete M40 [3 m3]; TATA Projects Ltd-25 | 29,601 |
| RB1-SS-2nd.265 |  | Reinforcement of wall upto Flight 2 | 2d | 2027-08-18 | 2027-08-20 | RB1-SS-2nd.250 | Barbender [70 h]; Helper [40 h]; Physical Progress [2970 h]; Reinforcement Steel [1 MT1]; TATA Projects Ltd-25 | 96,512.5 |
| RB1-SS-2nd.290 |  | Shuttering of wall upto Flight 2 | 2d | 2027-08-21 | 2027-08-23 | RB1-SS-2nd.265 | Carpenter [20 h]; Helper [10 h]; Physical Progress [2970 h]; Formwork [10 Sq m]; TATA Projects Ltd-25 | 11,651.6 |
| RB1-SS-2nd.310 |  | Casting of wall upto Flight 2 | 1d | 2027-08-25 | 2027-08-25 | RB1-SS-2nd.290 | Mason; Helper; Physical Progress [1490 h]; Concrete M40 [3 m3]; TATA Projects Ltd-25 | 29,601 |
| RB1-SS-2nd.335 |  | Shuttering of Staircase upto Flight 2 | 1d | 2027-08-27 | 2027-08-27 | RB1-SS-2nd.310 | Carpenter [20 h]; Helper [10 h]; Physical Progress [1490 h]; Formwork [10 Sq m]; TATA Projects Ltd-25 | 11,651.6 |
| RB1-SS-2nd.360 |  | Reinforcement of Staircase upto Flight 2 | 1d | 2027-08-28 | 2027-08-28 | RB1-SS-2nd.335 | Barbender [70 h]; Helper [40 h]; Physical Progress [1490 h]; Reinforcement Steel [1 MT1]; TATA Projects Ltd-25 | 96,512.5 |
| RB1-SS-2nd.370 |  | MEP coordination upto Flight 2 | 1d | 2027-08-30 | 2027-08-30 | RB1-SS-2nd.360 | Physical Progress [1490 h]; TATA Projects Ltd-25 |  |
| RB1-SS-2nd.385 |  | Casting of Staircase upto Flight 2 | 1d | 2027-09-02 | 2027-09-02 | RB1-SS-2nd.370 | Mason; Helper; Physical Progress [1490 h]; Concrete M40 [3 m3]; TATA Projects Ltd-25 | 29,601 |
| RB1-SS-2nd.400 |  | Reinforcement of wall upto Flight 3 | 2d | 2027-09-03 | 2027-09-04 | RB1-SS-2nd.385 | Barbender [70 h]; Helper [40 h]; Physical Progress [2970 h]; Reinforcement Steel [1 MT1]; TATA Projects Ltd-25 | 96,512.5 |
| RB1-SS-2nd.425 |  | Shuttering of wall upto Flight 3 | 2d | 2027-09-06 | 2027-09-07 | RB1-SS-2nd.400 | Carpenter [20 h]; Helper [10 h]; Physical Progress [2970 h]; Formwork [10 Sq m]; TATA Projects Ltd-25 | 11,651.6 |
| RB1-SS-2nd.460 |  | Casting of wall upto Flight 3 | 1d | 2027-09-09 | 2027-09-09 | RB1-SS-2nd.425 | Mason; Helper; Physical Progress [1490 h]; Concrete M40 [3 m3]; TATA Projects Ltd-25 | 29,601 |
| RB1-SS-2nd.475 |  | Shuttering of Staircase upto Flight 3 | 1d | 2027-09-10 | 2027-09-10 | RB1-SS-2nd.460 | Carpenter [20 h]; Helper [10 h]; Physical Progress [1490 h]; Formwork [10 Sq m]; TATA Projects Ltd-25 | 11,651.6 |
| RB1-SS-2nd.485 |  | Reinforcement of Staircase upto Flight 3 | 1d | 2027-09-11 | 2027-09-11 | RB1-SS-2nd.475 | Barbender [70 h]; Helper [40 h]; Physical Progress [1490 h]; Reinforcement Steel [1 MT1]; TATA Projects Ltd-25 | 96,512.5 |

| ID | WBS | Activity | Duration | Start | Finish | Predecessors | Resources | Cost |
| --- | --- | --- | --- | --- | --- | --- | --- | --- |
|  | 2 | **Slab** |  | 2027-08-30 | 2027-10-06 |  |  |  |
| RB1-SS-2nd.365 |  | Shuttering | 4d | 2027-08-30 | 2027-09-04 | RB1-SS-2nd.215, RB1-SS-2nd.345 | Carpenter [4630 h]; Helper [2320 h]; Physical Progress [5940 h]; Formwork [2775 Sq m]; TATA Projects Ltd-25 | 3,233,319 |
| RB1-SS-2nd.420 |  | Reinforcement Bottom Net with chairs | 3d | 2027-09-06 | 2027-09-09 | RB1-SS-2nd.365 | Barbender [2070 h]; Helper [1040 h]; Physical Progress [4450 h]; Reinforcement Steel [31 MT1]; TATA Projects Ltd-25 | 2,991,887.5 |
| RB1-SS-2nd.470 |  | Laying of PT Tendon | 4d | 2027-09-10 | 2027-09-14 | RB1-SS-2nd.420 | Physical Progress [5940 h]; TATA Projects Ltd-25 |  |
| RB1-SS-2nd.505 |  | Reinforcement Top Net | 2d | 2027-09-16 | 2027-09-17 | RB1-SS-2nd.470 | Barbender [2070 h]; Helper [1040 h]; Physical Progress [2970 h]; Reinforcement Steel [31 MT1]; TATA Projects Ltd-25 | 2,991,887.5 |
| RB1-SS-2nd.525 |  | MEP Coordination | 1d | 2027-09-18 | 2027-09-18 | RB1-SS-2nd.420, RB1-SS-2nd.505, RB1-SS-2nd.485 | Physical Progress [1490 h]; TATA Projects Ltd-25 |  |
| RB1-SS-2nd.540 |  | Concrete of Slab | 1d | 2027-09-20 | 2027-09-20 | RB1-SS-2nd.525 | Mason [50 h]; Helper [50 h]; Physical Progress [1490 h]; Concrete M40 [694 m3]; TATA Projects Ltd-25 | 6,847,698 |
| RB1-SS-2nd.555 |  | Wait for Strength Gain | 6d | 2027-09-21 | 2027-09-28 | RB1-SS-2nd.540 | Physical Progress [8900 h]; TATA Projects Ltd-25 |  |
| RB1-SS-2nd.585 |  | PT Work | 5d | 2027-09-30 | 2027-10-06 | RB1-SS-2nd.555, RB1-SS-1st.585 | PT [26 MT1]; Helper [100 h]; PT Fitter [100 h]; Physical Progress [7420 h]; TATA Projects Ltd-25 | 4,940,000 |
|  | 3 | **Pour 3** |  | 2027-08-06 | 2027-10-08 |  |  |  |
|  | 1 | **Column, Core Wall, Shear Wall - First Lift** |  | 2027-08-06 | 2027-08-18 |  |  |  |
| RB1-SS-2nd.320 |  | Reinforcement | 3d | 2027-08-06 | 2027-08-09 | RB1-SS-1st.615 | Barbender [2940 h]; Helper [1470 h]; Physical Progress [4450 h]; Reinforcement Steel [44 MT1]; TATA Projects Ltd-25 | 4,246,550 |
| RB1-SS-2nd.380 |  | LPS | 1d | 2027-08-11 | 2027-08-11 | RB1-SS-2nd.320 | LPS [36235 INR]; Physical Progress [1490 h]; TATA Projects Ltd-25 | 36,235 |
| RB1-SS-2nd.395 |  | Shuttering | 3d | 2027-08-13 | 2027-08-16 | RB1-SS-2nd.320, RB1-SS-2nd.380 | Carpenter [1440 h]; Helper [720 h]; Physical Progress [4450 h]; Formwork [862 Sq m]; TATA Projects Ltd-25 | 1,004,367.92 |
| RB1-SS-2nd.440 |  | Concrete | 1d | 2027-08-18 | 2027-08-18 | RB1-SS-2nd.395 | Mason [50 h]; Helper [50 h]; Physical Progress [1490 h]; Concrete M40 [215 m3]; TATA Projects Ltd-25 | 2,121,405 |
|  | 5 | **Column, Core Wall, Shear Wall - Second Lift** |  | 2027-08-20 | 2027-09-02 |  |  |  |
| RB1-SS-2nd.455 |  | Reinforcement | 3d | 2027-08-20 | 2027-08-23 | RB1-SS-2nd.440 | Barbender [2940 h]; Helper [1470 h]; Physical Progress [4450 h]; Reinforcement Steel [44 MT1]; TATA Projects Ltd-25 | 4,246,550 |
| RB1-SS-2nd.490 |  | LPS | 1d | 2027-08-25 | 2027-08-25 | RB1-SS-2nd.455 | LPS [36235 INR]; Physical Progress [1490 h]; TATA Projects Ltd-25 | 36,235 |
| RB1-SS-2nd.500 |  | Shuttering | 3d | 2027-08-27 | 2027-08-30 | RB1-SS-2nd.455, RB1-SS-2nd.490 | Carpenter [1440 h]; Helper [720 h]; Physical Progress [4450 h]; Formwork [862 Sq m]; TATA Projects Ltd-25 | 1,004,367.92 |
| RB1-SS-2nd.530 |  | Concrete | 1d | 2027-09-02 | 2027-09-02 | RB1-SS-2nd.500 | Mason [50 h]; Helper [50 h]; Physical Progress [1490 h]; Concrete M40 [215 m3]; TATA Projects Ltd-25 | 2,121,405 |
|  | 3 | **Staircase** |  | 2027-08-06 | 2027-09-14 |  |  |  |
| RB1-SS-2nd.340 |  | Reinforcement of wall upto Flight 1 | 2d | 2027-08-06 | 2027-08-07 | RB1-SS-1st.615 | Barbender [70 h]; Helper [40 h]; Physical Progress [2970 h]; Reinforcement Steel [1 MT1]; TATA Projects Ltd-25 | 96,512.5 |
| RB1-SS-2nd.375 |  | Shuttering of wall upto Flight 1 | 2d | 2027-08-09 | 2027-08-11 | RB1-SS-2nd.340 | Carpenter [20 h]; Helper [10 h]; Physical Progress [2970 h]; Formwork [10 Sq m]; TATA Projects Ltd-25 | 11,651.6 |
| RB1-SS-2nd.405 |  | Casting of wall upto Flight 1 | 1d | 2027-08-13 | 2027-08-13 | RB1-SS-2nd.375 | Mason; Helper; Physical Progress [1490 h]; Concrete M40 [3 m3]; TATA Projects Ltd-25 | 29,601 |
| RB1-SS-2nd.410 |  | Shuttering of Staircase upto Flight 1 | 1d | 2027-08-14 | 2027-08-14 | RB1-SS-2nd.405 | Carpenter [20 h]; Helper [10 h]; Physical Progress [1490 h]; Formwork [10 Sq m]; TATA Projects Ltd-25 | 11,651.6 |
| RB1-SS-2nd.430 |  | Reinforcement of Staircase upto Flight 1 | 1d | 2027-08-16 | 2027-08-16 | RB1-SS-2nd.410 | Barbender [70 h]; Helper [40 h]; Physical Progress [1490 h]; Reinforcement Steel [1 MT1]; TATA Projects Ltd-25 | 96,512.5 |
| RB1-SS-2nd.445 |  | MEP coordination upto Flight 1 | 1d | 2027-08-18 | 2027-08-18 | RB1-SS-2nd.430 | Physical Progress [1490 h]; TATA Projects Ltd-25 |  |
| RB1-SS-2nd.465 |  | Casting of Staircase upto Flight 1 | 1d | 2027-08-20 | 2027-08-20 | RB1-SS-2nd.445 | Mason; Helper; Physical Progress [1490 h]; Concrete M40 [3 m3]; TATA Projects Ltd-25 | 29,601 |
| RB1-SS-2nd.480 |  | Reinforcement of wall upto Flight 2 | 2d | 2027-08-21 | 2027-08-23 | RB1-SS-2nd.465 | Barbender [70 h]; Helper [40 h]; Physical Progress [2970 h]; Reinforcement Steel [1 MT1]; TATA Projects Ltd-25 | 96,512.5 |
| RB1-SS-2nd.495 |  | Shuttering of wall upto Flight 2 | 2d | 2027-08-25 | 2027-08-27 | RB1-SS-2nd.480 | Carpenter [20 h]; Helper [10 h]; Physical Progress [2970 h]; Formwork [10 Sq m]; TATA Projects Ltd-25 | 11,651.6 |
| RB1-SS-2nd.510 |  | Casting of wall upto Flight 2 | 1d | 2027-08-28 | 2027-08-28 | RB1-SS-2nd.495 | Mason; Helper; Physical Progress [1490 h]; Concrete M40 [3 m3]; TATA Projects Ltd-25 | 29,601 |
| RB1-SS-2nd.520 |  | Shuttering of Staircase upto Flight 2 | 1d | 2027-08-30 | 2027-08-30 | RB1-SS-2nd.510 | Carpenter [20 h]; Helper [10 h]; Physical Progress [1490 h]; Formwork [10 Sq m]; TATA Projects Ltd-25 | 11,651.6 |
| RB1-SS-2nd.535 |  | Reinforcement of Staircase upto Flight 2 | 1d | 2027-09-02 | 2027-09-02 | RB1-SS-2nd.520 | Barbender [70 h]; Helper [40 h]; Physical Progress [1490 h]; Reinforcement Steel [1 MT1]; TATA Projects Ltd-25 | 96,512.5 |
| RB1-SS-2nd.550 |  | MEP coordination upto Flight 2 | 1d | 2027-09-03 | 2027-09-03 | RB1-SS-2nd.535 | Physical Progress [1490 h]; TATA Projects Ltd-25 |  |
| RB1-SS-2nd.560 |  | Casting of Staircase upto Flight 2 | 1d | 2027-09-04 | 2027-09-04 | RB1-SS-2nd.550 | Mason; Helper; Physical Progress [1490 h]; Concrete M40 [3 m3]; TATA Projects Ltd-25 | 29,601 |
| RB1-SS-2nd.565 |  | Reinforcement of wall upto Flight 3 | 2d | 2027-09-06 | 2027-09-07 | RB1-SS-2nd.560 | Barbender [70 h]; Helper [40 h]; Physical Progress [2970 h]; Reinforcement Steel [1 MT1]; TATA Projects Ltd-25 | 96,512.5 |
| RB1-SS-2nd.575 |  | Shuttering of wall upto Flight 3 | 2d | 2027-09-09 | 2027-09-10 | RB1-SS-2nd.565 | Carpenter [20 h]; Helper [10 h]; Physical Progress [2970 h]; Formwork [10 Sq m]; TATA Projects Ltd-25 | 11,651.6 |
| RB1-SS-2nd.580 |  | Casting of wall upto Flight 3 | 1d | 2027-09-11 | 2027-09-11 | RB1-SS-2nd.575 | Mason; Helper; Physical Progress [1490 h]; Concrete M40 [3 m3]; TATA Projects Ltd-25 | 29,601 |
| RB1-SS-2nd.595 |  | Shuttering of Staircase upto Flight 3 | 1d | 2027-09-13 | 2027-09-13 | RB1-SS-2nd.580 | Carpenter [20 h]; Helper [10 h]; Physical Progress [1490 h]; Formwork [10 Sq m]; TATA Projects Ltd-25 | 11,651.6 |
| RB1-SS-2nd.600 |  | Reinforcement of Staircase upto Flight 3 | 1d | 2027-09-14 | 2027-09-14 | RB1-SS-2nd.595 | Barbender [70 h]; Helper [40 h]; Physical Progress [1490 h]; Reinforcement Steel [1 MT1]; TATA Projects Ltd-25 | 96,512.5 |

| ID | WBS | Activity | Duration | Start | Finish | Predecessors | Resources | Cost |
| --- | --- | --- | --- | --- | --- | --- | --- | --- |
|  | 2 | **Slab** |  | 2027-09-03 | 2027-10-08 |  |  |  |
| RB1-SS-2nd.545 |  | Shuttering | 4d | 2027-09-03 | 2027-09-07 | RB1-SS-2nd.440, RB1-SS-2nd.530 | Carpenter [5090 h]; Helper [2550 h]; Physical Progress [5940 h]; Formwork [3053 Sq m]; TATA Projects Ltd-25 | 3,557,233.48 |
| RB1-SS-2nd.570 |  | Reinforcement Bottom Net with chairs | 3d | 2027-09-09 | 2027-09-11 | RB1-SS-2nd.545 | Barbender [2270 h]; Helper [1140 h]; Physical Progress [4450 h]; Reinforcement Steel [34 MT1]; TATA Projects Ltd-25 | 3,281,425 |
| RB1-SS-2nd.590 |  | Laying of PT Tendon | 4d | 2027-09-13 | 2027-09-17 | RB1-SS-2nd.570 | Physical Progress [5940 h]; TATA Projects Ltd-25 |  |
| RB1-SS-2nd.605 |  | Reinforcement Top Net | 2d | 2027-09-18 | 2027-09-20 | RB1-SS-2nd.590 | Barbender [2270 h]; Helper [1140 h]; Physical Progress [2970 h]; Reinforcement Steel [34 MT1]; TATA Projects Ltd-25 | 3,281,425 |
| RB1-SS-2nd.610 |  | MEP Coordination | 1d | 2027-09-21 | 2027-09-21 | RB1-SS-2nd.570, RB1-SS-2nd.605, RB1-SS-2nd.600 | Physical Progress [1490 h]; TATA Projects Ltd-25 |  |
| RB1-SS-2nd.615 |  | Concrete of Slab | 1d | 2027-09-23 | 2027-09-23 | RB1-SS-2nd.610 | Mason [50 h]; Helper [50 h]; Physical Progress [1490 h]; Concrete M40 [763 m3]; TATA Projects Ltd-25 | 7,528,521 |
| RB1-SS-2nd.620 |  | Wait for Strength Gain | 6d | 2027-09-24 | 2027-10-01 | RB1-SS-2nd.615 | Physical Progress [8900 h]; TATA Projects Ltd-25 |  |
| RB1-SS-2nd.625 |  | PT Work | 5d | 2027-10-04 | 2027-10-08 | RB1-SS-2nd.620 | PT [29 MT1]; Helper [100 h]; PT Fitter [100 h]; Physical Progress [7420 h]; TATA Projects Ltd-25 | 5,510,000 |
|  | 4 | **Third Floor** |  | 2027-08-30 | 2027-11-16 |  |  |  |
|  | 2 | **Pour 1** |  | 2027-08-30 | 2027-10-26 |  |  |  |
|  | 1 | **Column, Core Wall, Shear Wall - First Lift** |  | 2027-08-30 | 2027-09-10 |  |  |  |
| RB1-SS-3rd.10 |  | Reinforcement | 3d | 2027-08-30 | 2027-09-03 | RB1-SS-2nd.435, E-GFC-ST-RB1-180 | Barbender [3070 h]; Helper [1540 h]; Physical Progress [4450 h]; Reinforcement Steel [46 MT1]; TATA Projects Ltd-25 | 4,439,575 |
| RB1-SS-3rd.35 |  | LPS | 1d | 2027-09-04 | 2027-09-04 | RB1-SS-3rd.10 | LPS [36235 INR]; Physical Progress [1490 h]; TATA Projects Ltd-25 | 36,235 |
| RB1-SS-3rd.40 |  | Shuttering | 3d | 2027-09-06 | 2027-09-09 | RB1-SS-3rd.10, RB1-SS-3rd.35 | Carpenter [1390 h]; Helper [700 h]; Physical Progress [4450 h]; Formwork [831 Sq m]; TATA Projects Ltd-25 | 968,247.96 |
| RB1-SS-3rd.75 |  | Concrete | 1d | 2027-09-10 | 2027-09-10 | RB1-SS-3rd.40 | Mason [50 h]; Helper [50 h]; Physical Progress [1490 h]; Concrete M40 [208 m3]; TATA Projects Ltd-25 | 2,052,336 |
|  | 3 | **Staircase - 1** |  | 2027-08-30 | 2027-10-05 |  |  |  |
| RB1-SS-3rd.15 |  | Reinforcement of wall upto Flight 1 | 2d | 2027-08-30 | 2027-09-02 | RB1-SS-2nd.435 | Barbender [70 h]; Helper [40 h]; Physical Progress [2970 h]; Reinforcement Steel [1 MT1]; TATA Projects Ltd-25 | 96,512.5 |
| RB1-SS-3rd.25 |  | Shuttering of wall upto Flight 1 | 2d | 2027-09-03 | 2027-09-04 | RB1-SS-3rd.15 | Carpenter [20 h]; Helper [10 h]; Physical Progress [2970 h]; Formwork [10 Sq m]; TATA Projects Ltd-25 | 11,651.6 |
| RB1-SS-3rd.45 |  | Casting of wall upto Flight 1 | 1d | 2027-09-06 | 2027-09-06 | RB1-SS-3rd.25 | Mason; Helper; Physical Progress [1490 h]; Concrete M40 [3 m3]; TATA Projects Ltd-25 | 29,601 |
| RB1-SS-3rd.55 |  | Shuttering of Staircase upto Flight 1 | 1d | 2027-09-07 | 2027-09-07 | RB1-SS-3rd.45 | Carpenter [20 h]; Helper [10 h]; Physical Progress [1490 h]; Formwork [10 Sq m]; TATA Projects Ltd-25 | 11,651.6 |
| RB1-SS-3rd.65 |  | Reinforcement of Staircase upto Flight 1 | 1d | 2027-09-09 | 2027-09-09 | RB1-SS-3rd.55 | Barbender [70 h]; Helper [40 h]; Physical Progress [1490 h]; Reinforcement Steel [1 MT1]; TATA Projects Ltd-25 | 96,512.5 |
| RB1-SS-3rd.80 |  | MEP coordination upto Flight 1 | 1d | 2027-09-10 | 2027-09-10 | RB1-SS-3rd.65 | Physical Progress [1490 h]; TATA Projects Ltd-25 |  |
| RB1-SS-3rd.95 |  | Casting of Staircase upto Flight 1 | 1d | 2027-09-11 | 2027-09-11 | RB1-SS-3rd.80 | Mason; Helper; Physical Progress [1490 h]; Concrete M40 [3 m3]; TATA Projects Ltd-25 | 29,601 |
| RB1-SS-3rd.110 |  | Reinforcement of wall upto Flight 2 | 2d | 2027-09-13 | 2027-09-14 | RB1-SS-3rd.95 | Barbender [70 h]; Helper [40 h]; Physical Progress [2970 h]; Reinforcement Steel [1 MT1]; TATA Projects Ltd-25 | 96,512.5 |
| RB1-SS-3rd.130 |  | Shuttering of wall upto Flight 2 | 2d | 2027-09-16 | 2027-09-17 | RB1-SS-3rd.110 | Carpenter [20 h]; Helper [10 h]; Physical Progress [2970 h]; Formwork [10 Sq m]; TATA Projects Ltd-25 | 11,651.6 |
| RB1-SS-3rd.160 |  | Casting of wall upto Flight 2 | 1d | 2027-09-18 | 2027-09-18 | RB1-SS-3rd.130 | Mason; Helper; Physical Progress [1490 h]; Concrete M40 [3 m3]; TATA Projects Ltd-25 | 29,601 |
| RB1-SS-3rd.175 |  | Shuttering of Staircase upto Flight 2 | 1d | 2027-09-20 | 2027-09-20 | RB1-SS-3rd.160 | Carpenter [20 h]; Helper [10 h]; Physical Progress [1490 h]; Formwork [10 Sq m]; TATA Projects Ltd-25 | 11,651.6 |
| RB1-SS-3rd.195 |  | Reinforcement of Staircase upto Flight 2 | 1d | 2027-09-21 | 2027-09-21 | RB1-SS-3rd.175 | Barbender [70 h]; Helper [40 h]; Physical Progress [1490 h]; Reinforcement Steel [1 MT1]; TATA Projects Ltd-25 | 96,512.5 |
| RB1-SS-3rd.220 |  | MEP coordination upto Flight 2 | 1d | 2027-09-23 | 2027-09-23 | RB1-SS-3rd.195 | Physical Progress [1490 h]; TATA Projects Ltd-25 |  |
| RB1-SS-3rd.240 |  | Casting of Staircase upto Flight 2 | 1d | 2027-09-24 | 2027-09-24 | RB1-SS-3rd.220 | Mason; Helper; Physical Progress [1490 h]; Concrete M40 [3 m3]; TATA Projects Ltd-25 | 29,601 |
| RB1-SS-3rd.255 |  | Reinforcement of wall upto Flight 3 | 2d | 2027-09-25 | 2027-09-27 | RB1-SS-3rd.240 | Barbender [70 h]; Helper [40 h]; Physical Progress [2970 h]; Reinforcement Steel [1 MT1]; TATA Projects Ltd-25 | 96,512.5 |
| RB1-SS-3rd.280 |  | Shuttering of wall upto Flight 3 | 2d | 2027-09-28 | 2027-09-30 | RB1-SS-3rd.255 | Carpenter [20 h]; Helper [10 h]; Physical Progress [2970 h]; Formwork [10 Sq m]; TATA Projects Ltd-25 | 11,651.6 |
| RB1-SS-3rd.300 |  | Casting of wall upto Flight 3 | 1d | 2027-10-01 | 2027-10-01 | RB1-SS-3rd.280 | Mason; Helper; Physical Progress [1490 h]; Concrete M40 [3 m3]; TATA Projects Ltd-25 | 29,601 |
| RB1-SS-3rd.325 |  | Shuttering of Staircase upto Flight 3 | 1d | 2027-10-04 | 2027-10-04 | RB1-SS-3rd.300 | Carpenter [20 h]; Helper [10 h]; Physical Progress [1490 h]; Formwork [10 Sq m]; TATA Projects Ltd-25 | 11,651.6 |
| RB1-SS-3rd.350 |  | Reinforcement of Staircase upto Flight 3 | 1d | 2027-10-05 | 2027-10-05 | RB1-SS-3rd.325 | Barbender [70 h]; Helper [40 h]; Physical Progress [1490 h]; Reinforcement Steel [1 MT1]; TATA Projects Ltd-25 | 96,512.5 |

| ID | WBS | Activity | Duration | Start | Finish | Predecessors | Resources | Cost |
| --- | --- | --- | --- | --- | --- | --- | --- | --- |
|  | 5 | **Column, Core Wall, Shear Wall - Second Lift** |  | 2027-09-11 | 2027-09-21 |  |  |  |
| RB1-SS-3rd.90 |  | Reinforcement | 3d | 2027-09-11 | 2027-09-14 | RB1-SS-3rd.75 | Barbender [3070 h]; Helper [1540 h]; Physical Progress [4450 h]; Reinforcement Steel [46 MT1]; TATA Projects Ltd-25 | 4,439,575 |
| RB1-SS-3rd.125 |  | LPS | 1d | 2027-09-16 | 2027-09-16 | RB1-SS-3rd.90 | LPS [36235 INR]; Physical Progress [1490 h]; TATA Projects Ltd-25 | 36,235 |
| RB1-SS-3rd.150 |  | Shuttering | 3d | 2027-09-17 | 2027-09-20 | RB1-SS-3rd.90, RB1-SS-3rd.125 | Carpenter [1390 h]; Helper [700 h]; Physical Progress [4450 h]; Formwork [831 Sq m]; TATA Projects Ltd-25 | 968,247.96 |
| RB1-SS-3rd.190 |  | Concrete | 1d | 2027-09-21 | 2027-09-21 | RB1-SS-3rd.150 | Mason [50 h]; Helper [50 h]; Physical Progress [1490 h]; Concrete M40 [208 m3]; TATA Projects Ltd-25 | 2,052,336 |
|  | 4 | **Staircase - 2** |  | 2027-08-30 | 2027-10-05 |  |  |  |
| RB1-SS-3rd.20 |  | Reinforcement of wall upto Flight 1 | 2d | 2027-08-30 | 2027-09-02 | RB1-SS-2nd.435 | Barbender [70 h]; Helper [40 h]; Physical Progress [2970 h]; Reinforcement Steel [1 MT1]; TATA Projects Ltd-25 | 96,512.5 |
| RB1-SS-3rd.30 |  | Shuttering of wall upto Flight 1 | 2d | 2027-09-03 | 2027-09-04 | RB1-SS-3rd.20 | Carpenter [20 h]; Helper [10 h]; Physical Progress [2970 h]; Formwork [10 Sq m]; TATA Projects Ltd-25 | 11,651.6 |
| RB1-SS-3rd.50 |  | Casting of wall upto Flight 1 | 1d | 2027-09-06 | 2027-09-06 | RB1-SS-3rd.30 | Mason; Helper; Physical Progress [1490 h]; Concrete M40 [3 m3]; TATA Projects Ltd-25 | 29,601 |
| RB1-SS-3rd.60 |  | Shuttering of Staircase upto Flight 1 | 1d | 2027-09-07 | 2027-09-07 | RB1-SS-3rd.50 | Carpenter [20 h]; Helper [10 h]; Physical Progress [1490 h]; Formwork [10 Sq m]; TATA Projects Ltd-25 | 11,651.6 |
| RB1-SS-3rd.70 |  | Reinforcement of Staircase upto Flight 1 | 1d | 2027-09-09 | 2027-09-09 | RB1-SS-3rd.60 | Barbender [70 h]; Helper [40 h]; Physical Progress [1490 h]; Reinforcement Steel [1 MT1]; TATA Projects Ltd-25 | 96,512.5 |
| RB1-SS-3rd.85 |  | MEP coordination upto Flight 1 | 1d | 2027-09-10 | 2027-09-10 | RB1-SS-3rd.70 | Physical Progress [1490 h]; TATA Projects Ltd-25 |  |
| RB1-SS-3rd.100 |  | Casting of Staircase upto Flight 1 | 1d | 2027-09-11 | 2027-09-11 | RB1-SS-3rd.85 | Mason; Helper; Physical Progress [1490 h]; Concrete M40 [3 m3]; TATA Projects Ltd-25 | 29,601 |
| RB1-SS-3rd.115 |  | Reinforcement of wall upto Flight 2 | 2d | 2027-09-13 | 2027-09-14 | RB1-SS-3rd.100 | Barbender [70 h]; Helper [40 h]; Physical Progress [2970 h]; Reinforcement Steel [1 MT1]; TATA Projects Ltd-25 | 96,512.5 |
| RB1-SS-3rd.135 |  | Shuttering of wall upto Flight 2 | 2d | 2027-09-16 | 2027-09-17 | RB1-SS-3rd.115 | Carpenter [20 h]; Helper [10 h]; Physical Progress [2970 h]; Formwork [10 Sq m]; TATA Projects Ltd-25 | 11,651.6 |
| RB1-SS-3rd.165 |  | Casting of wall upto Flight 2 | 1d | 2027-09-18 | 2027-09-18 | RB1-SS-3rd.135 | Mason; Helper; Physical Progress [1490 h]; Concrete M40 [3 m3]; TATA Projects Ltd-25 | 29,601 |
| RB1-SS-3rd.180 |  | Shuttering of Staircase upto Flight 2 | 1d | 2027-09-20 | 2027-09-20 | RB1-SS-3rd.165 | Carpenter [20 h]; Helper [10 h]; Physical Progress [1490 h]; Formwork [10 Sq m]; TATA Projects Ltd-25 | 11,651.6 |
| RB1-SS-3rd.200 |  | Reinforcement of Staircase upto Flight 2 | 1d | 2027-09-21 | 2027-09-21 | RB1-SS-3rd.180 | Barbender [70 h]; Helper [40 h]; Physical Progress [1490 h]; Reinforcement Steel [1 MT1]; TATA Projects Ltd-25 | 96,512.5 |
| RB1-SS-3rd.225 |  | MEP coordination upto Flight 2 | 1d | 2027-09-23 | 2027-09-23 | RB1-SS-3rd.200 | Physical Progress [1490 h]; TATA Projects Ltd-25 |  |
| RB1-SS-3rd.245 |  | Casting of Staircase upto Flight 2 | 1d | 2027-09-24 | 2027-09-24 | RB1-SS-3rd.225 | Mason; Helper; Physical Progress [1490 h]; Concrete M40 [3 m3]; TATA Projects Ltd-25 | 29,601 |
| RB1-SS-3rd.260 |  | Reinforcement of wall upto Flight 3 | 2d | 2027-09-25 | 2027-09-27 | RB1-SS-3rd.245 | Barbender [70 h]; Helper [40 h]; Physical Progress [2970 h]; Reinforcement Steel [1 MT1]; TATA Projects Ltd-25 | 96,512.5 |
| RB1-SS-3rd.285 |  | Shuttering of wall upto Flight 3 | 2d | 2027-09-28 | 2027-09-30 | RB1-SS-3rd.260 | Carpenter [20 h]; Helper [10 h]; Physical Progress [2970 h]; Formwork [10 Sq m]; TATA Projects Ltd-25 | 11,651.6 |
| RB1-SS-3rd.305 |  | Casting of wall upto Flight 3 | 1d | 2027-10-01 | 2027-10-01 | RB1-SS-3rd.285 | Mason; Helper; Physical Progress [1490 h]; Concrete M40 [3 m3]; TATA Projects Ltd-25 | 29,601 |
| RB1-SS-3rd.330 |  | Shuttering of Staircase upto Flight 3 | 1d | 2027-10-04 | 2027-10-04 | RB1-SS-3rd.305 | Carpenter [20 h]; Helper [10 h]; Physical Progress [1490 h]; Formwork [10 Sq m]; TATA Projects Ltd-25 | 11,651.6 |
| RB1-SS-3rd.355 |  | Reinforcement of Staircase upto Flight 3 | 1d | 2027-10-05 | 2027-10-05 | RB1-SS-3rd.330 | Barbender [70 h]; Helper [40 h]; Physical Progress [1490 h]; Reinforcement Steel [1 MT1]; TATA Projects Ltd-25 | 96,512.5 |

| ID | WBS | Activity | Duration | Start | Finish | Predecessors | Resources | Cost |
| --- | --- | --- | --- | --- | --- | --- | --- | --- |
|  | 2 | **Slab** |  | 2027-09-23 | 2027-10-26 |  |  |  |
| RB1-SS-3rd.210 |  | Shuttering | 4d | 2027-09-23 | 2027-09-27 | RB1-SS-3rd.75, RB1-SS-3rd.190 | Carpenter [2880 h]; Helper [1440 h]; Physical Progress [5940 h]; Formwork [1724 Sq m]; TATA Projects Ltd-25 | 2,008,735.84 |
| RB1-SS-3rd.270 |  | Reinforcement Bottom Net with chairs | 3d | 2027-09-28 | 2027-10-01 | RB1-SS-3rd.210 | Barbender [1270 h]; Helper [640 h]; Physical Progress [4450 h]; Reinforcement Steel [19 MT1]; TATA Projects Ltd-25 | 1,833,737.5 |
| RB1-SS-3rd.315 |  | Laying of PT Tendon | 4d | 2027-10-04 | 2027-10-07 | RB1-SS-3rd.270 | Physical Progress [5940 h]; TATA Projects Ltd-25 |  |
| RB1-SS-3rd.390 |  | Reinforcement Top Net | 2d | 2027-10-08 | 2027-10-11 | RB1-SS-3rd.315 | Barbender [1270 h]; Helper [640 h]; Physical Progress [2970 h]; Reinforcement Steel [19 MT1]; TATA Projects Ltd-25 | 1,833,737.5 |
| RB1-SS-3rd.415 |  | MEP Coordination | 1d | 2027-10-12 | 2027-10-12 | RB1-SS-3rd.270, RB1-SS-3rd.390, RB1-SS-3rd.355, RB1-SS-3rd.350 | Physical Progress [1490 h]; TATA Projects Ltd-25 |  |
| RB1-SS-3rd.435 |  | Concrete of Slab | 1d | 2027-10-13 | 2027-10-13 | RB1-SS-3rd.415 | Mason [50 h]; Helper [50 h]; Physical Progress [1490 h]; Concrete M40 [431 m3]; TATA Projects Ltd-25 | 4,252,677 |
| RB1-SS-3rd.450 |  | Wait for Strength Gain | 6d | 2027-10-14 | 2027-10-20 | RB1-SS-3rd.435 | Physical Progress [8900 h]; TATA Projects Ltd-25 |  |
| RB1-SS-3rd.515 |  | PT Work | 5d | 2027-10-21 | 2027-10-26 | RB1-SS-3rd.450, RB1-SS-2nd.515 | PT [18 MT1]; Helper [100 h]; PT Fitter [100 h]; Physical Progress [7420 h]; TATA Projects Ltd-25 | 3,420,000 |
|  | 4 | **Pour 2** |  | 2027-09-21 | 2027-11-13 |  |  |  |
|  | 1 | **Column, Core Wall, Shear Wall - First Lift** |  | 2027-09-21 | 2027-10-01 |  |  |  |
| RB1-SS-3rd.105 |  | Reinforcement | 3d | 2027-09-21 | 2027-09-24 | RB1-SS-2nd.540 | Barbender [1940 h]; Helper [970 h]; Physical Progress [4450 h]; Reinforcement Steel [29 MT1]; TATA Projects Ltd-25 | 2,798,862.5 |
| RB1-SS-3rd.145 |  | LPS | 1d | 2027-09-25 | 2027-09-25 | RB1-SS-3rd.105 | LPS [36235 INR]; Physical Progress [1490 h]; TATA Projects Ltd-25 | 36,235 |
| RB1-SS-3rd.155 |  | Shuttering | 3d | 2027-09-27 | 2027-09-30 | RB1-SS-3rd.105, RB1-SS-3rd.145 | Carpenter [880 h]; Helper [440 h]; Physical Progress [4450 h]; Formwork [523 Sq m]; TATA Projects Ltd-25 | 609,378.68 |
| RB1-SS-3rd.215 |  | Concrete | 1d | 2027-10-01 | 2027-10-01 | RB1-SS-3rd.155 | Mason [50 h]; Helper [50 h]; Physical Progress [1490 h]; Concrete M40 [131 m3]; TATA Projects Ltd-25 | 1,292,577 |
|  | 5 | **Column, Core Wall, Shear Wall - Second Lift** |  | 2027-10-04 | 2027-10-13 |  |  |  |
| RB1-SS-3rd.235 |  | Reinforcement | 3d | 2027-10-04 | 2027-10-06 | RB1-SS-3rd.215 | Barbender [1940 h]; Helper [970 h]; Physical Progress [4450 h]; Reinforcement Steel [29 MT1]; TATA Projects Ltd-25 | 2,798,862.5 |
| RB1-SS-3rd.275 |  | LPS | 1d | 2027-10-07 | 2027-10-07 | RB1-SS-3rd.235 | LPS [36235 INR]; Physical Progress [1490 h]; TATA Projects Ltd-25 | 36,235 |
| RB1-SS-3rd.295 |  | Shuttering | 3d | 2027-10-08 | 2027-10-12 | RB1-SS-3rd.235, RB1-SS-3rd.275 | Carpenter [880 h]; Helper [440 h]; Physical Progress [4450 h]; Formwork [523 Sq m]; TATA Projects Ltd-25 | 609,378.68 |
| RB1-SS-3rd.345 |  | Concrete | 1d | 2027-10-13 | 2027-10-13 | RB1-SS-3rd.295 | Mason [50 h]; Helper [50 h]; Physical Progress [1490 h]; Concrete M40 [131 m3]; TATA Projects Ltd-25 | 1,292,577 |
|  | 3 | **Staircase** |  | 2027-09-21 | 2027-10-23 |  |  |  |
| RB1-SS-3rd.120 |  | Reinforcement of wall upto Flight 1 | 2d | 2027-09-21 | 2027-09-23 | RB1-SS-2nd.540 | Barbender [70 h]; Helper [40 h]; Physical Progress [2970 h]; Reinforcement Steel [1 MT1]; TATA Projects Ltd-25 | 96,512.5 |
| RB1-SS-3rd.140 |  | Shuttering of wall upto Flight 1 | 2d | 2027-09-24 | 2027-09-25 | RB1-SS-3rd.120 | Carpenter [20 h]; Helper [10 h]; Physical Progress [2970 h]; Formwork [10 Sq m]; TATA Projects Ltd-25 | 11,651.6 |
| RB1-SS-3rd.170 |  | Casting of wall upto Flight 1 | 1d | 2027-09-27 | 2027-09-27 | RB1-SS-3rd.140 | Mason; Helper; Physical Progress [1490 h]; Concrete M40 [3 m3]; TATA Projects Ltd-25 | 29,601 |
| RB1-SS-3rd.185 |  | Shuttering of Staircase upto Flight 1 | 1d | 2027-09-28 | 2027-09-28 | RB1-SS-3rd.170 | Carpenter [20 h]; Helper [10 h]; Physical Progress [1490 h]; Formwork [10 Sq m]; TATA Projects Ltd-25 | 11,651.6 |
| RB1-SS-3rd.205 |  | Reinforcement of Staircase upto Flight 1 | 1d | 2027-09-30 | 2027-09-30 | RB1-SS-3rd.185 | Barbender [70 h]; Helper [40 h]; Physical Progress [1490 h]; Reinforcement Steel [1 MT1]; TATA Projects Ltd-25 | 96,512.5 |
| RB1-SS-3rd.230 |  | MEP coordination upto Flight 1 | 1d | 2027-10-01 | 2027-10-01 | RB1-SS-3rd.205 | Physical Progress [1490 h]; TATA Projects Ltd-25 |  |
| RB1-SS-3rd.250 |  | Casting of Staircase upto Flight 1 | 1d | 2027-10-04 | 2027-10-04 | RB1-SS-3rd.230 | Mason; Helper; Physical Progress [1490 h]; Concrete M40 [3 m3]; TATA Projects Ltd-25 | 29,601 |
| RB1-SS-3rd.265 |  | Reinforcement of wall upto Flight 2 | 2d | 2027-10-05 | 2027-10-06 | RB1-SS-3rd.250 | Barbender [70 h]; Helper [40 h]; Physical Progress [2970 h]; Reinforcement Steel [1 MT1]; TATA Projects Ltd-25 | 96,512.5 |
| RB1-SS-3rd.290 |  | Shuttering of wall upto Flight 2 | 2d | 2027-10-07 | 2027-10-08 | RB1-SS-3rd.265 | Carpenter [20 h]; Helper [10 h]; Physical Progress [2970 h]; Formwork [10 Sq m]; TATA Projects Ltd-25 | 11,651.6 |
| RB1-SS-3rd.310 |  | Casting of wall upto Flight 2 | 1d | 2027-10-11 | 2027-10-11 | RB1-SS-3rd.290 | Mason; Helper; Physical Progress [1490 h]; Concrete M40 [3 m3]; TATA Projects Ltd-25 | 29,601 |
| RB1-SS-3rd.335 |  | Shuttering of Staircase upto Flight 2 | 1d | 2027-10-12 | 2027-10-12 | RB1-SS-3rd.310 | Carpenter [20 h]; Helper [10 h]; Physical Progress [1490 h]; Formwork [10 Sq m]; TATA Projects Ltd-25 | 11,651.6 |
| RB1-SS-3rd.360 |  | Reinforcement of Staircase upto Flight 2 | 1d | 2027-10-13 | 2027-10-13 | RB1-SS-3rd.335 | Barbender [70 h]; Helper [40 h]; Physical Progress [1490 h]; Reinforcement Steel [1 MT1]; TATA Projects Ltd-25 | 96,512.5 |
| RB1-SS-3rd.370 |  | MEP coordination upto Flight 2 | 1d | 2027-10-14 | 2027-10-14 | RB1-SS-3rd.360 | Physical Progress [1490 h]; TATA Projects Ltd-25 |  |
| RB1-SS-3rd.385 |  | Casting of Staircase upto Flight 2 | 1d | 2027-10-15 | 2027-10-15 | RB1-SS-3rd.370 | Mason; Helper; Physical Progress [1490 h]; Concrete M40 [3 m3]; TATA Projects Ltd-25 | 29,601 |
| RB1-SS-3rd.400 |  | Reinforcement of wall upto Flight 3 | 2d | 2027-10-16 | 2027-10-18 | RB1-SS-3rd.385 | Barbender [70 h]; Helper [40 h]; Physical Progress [2970 h]; Reinforcement Steel [1 MT1]; TATA Projects Ltd-25 | 96,512.5 |
| RB1-SS-3rd.425 |  | Shuttering of wall upto Flight 3 | 2d | 2027-10-19 | 2027-10-20 | RB1-SS-3rd.400 | Carpenter [20 h]; Helper [10 h]; Physical Progress [2970 h]; Formwork [10 Sq m]; TATA Projects Ltd-25 | 11,651.6 |
| RB1-SS-3rd.460 |  | Casting of wall upto Flight 3 | 1d | 2027-10-21 | 2027-10-21 | RB1-SS-3rd.425 | Mason; Helper; Physical Progress [1490 h]; Concrete M40 [3 m3]; TATA Projects Ltd-25 | 29,601 |
| RB1-SS-3rd.475 |  | Shuttering of Staircase upto Flight 3 | 1d | 2027-10-22 | 2027-10-22 | RB1-SS-3rd.460 | Carpenter [20 h]; Helper [10 h]; Physical Progress [1490 h]; Formwork [10 Sq m]; TATA Projects Ltd-25 | 11,651.6 |
| RB1-SS-3rd.485 |  | Reinforcement of Staircase upto Flight 3 | 1d | 2027-10-23 | 2027-10-23 | RB1-SS-3rd.475 | Barbender [70 h]; Helper [40 h]; Physical Progress [1490 h]; Reinforcement Steel [1 MT1]; TATA Projects Ltd-25 | 96,512.5 |

| ID | WBS | Activity | Duration | Start | Finish | Predecessors | Resources | Cost |
| --- | --- | --- | --- | --- | --- | --- | --- | --- |
|  | 2 | **Slab** |  | 2027-10-14 | 2027-11-13 |  |  |  |
| RB1-SS-3rd.365 |  | Shuttering | 4d | 2027-10-14 | 2027-10-18 | RB1-SS-3rd.215, RB1-SS-3rd.345 | Carpenter [1810 h]; Helper [910 h]; Physical Progress [5940 h]; Formwork [1085 Sq m]; TATA Projects Ltd-25 | 1,264,198.6 |
| RB1-SS-3rd.420 |  | Reinforcement Bottom Net with chairs | 3d | 2027-10-19 | 2027-10-21 | RB1-SS-3rd.365 | Barbender [800 h]; Helper [400 h]; Physical Progress [4450 h]; Reinforcement Steel [12 MT1]; TATA Projects Ltd-25 | 1,158,150 |
| RB1-SS-3rd.470 |  | Laying of PT Tendon | 4d | 2027-10-22 | 2027-10-26 | RB1-SS-3rd.420 | Physical Progress [5940 h]; TATA Projects Ltd-25 |  |
| RB1-SS-3rd.505 |  | Reinforcement Top Net | 2d | 2027-10-27 | 2027-10-28 | RB1-SS-3rd.470 | Barbender [800 h]; Helper [400 h]; Physical Progress [2970 h]; Reinforcement Steel [12 MT1]; TATA Projects Ltd-25 | 1,158,150 |
| RB1-SS-3rd.525 |  | MEP Coordination | 1d | 2027-10-30 | 2027-10-30 | RB1-SS-3rd.420, RB1-SS-3rd.505, RB1-SS-3rd.485 | Physical Progress [1490 h]; TATA Projects Ltd-25 |  |
| RB1-SS-3rd.540 |  | Concrete of Slab | 1d | 2027-11-01 | 2027-11-01 | RB1-SS-3rd.525 | Physical Progress [1490 h]; Concrete M40 [271 m3]; Additional for scaff above 4.5m Height [10 LP]; TATA Projects Ltd-25 | 4,481,957 |
| RB1-SS-3rd.555 |  | Wait for Strength Gain | 6d | 2027-11-02 | 2027-11-08 | RB1-SS-3rd.540 | Physical Progress [8900 h]; TATA Projects Ltd-25 |  |
| RB1-SS-3rd.585 |  | PT Work | 5d | 2027-11-09 | 2027-11-13 | RB1-SS-3rd.555, RB1-SS-2nd.585 | PT [11 MT1]; Helper [100 h]; PT Fitter [100 h]; Physical Progress [7420 h]; TATA Projects Ltd-25 | 2,090,000 |
|  | 3 | **Pour 3** |  | 2027-09-24 | 2027-11-16 |  |  |  |
|  | 1 | **Column, Core Wall, Shear Wall - First Lift** |  | 2027-09-24 | 2027-10-05 |  |  |  |
| RB1-SS-3rd.320 |  | Reinforcement | 3d | 2027-09-24 | 2027-09-27 | RB1-SS-2nd.615 | Barbender [2940 h]; Helper [1470 h]; Physical Progress [4450 h]; Reinforcement Steel [44 MT1]; TATA Projects Ltd-25 | 4,246,550 |
| RB1-SS-3rd.380 |  | LPS | 1d | 2027-09-28 | 2027-09-28 | RB1-SS-3rd.320 | LPS [36235 INR]; Physical Progress [1490 h]; TATA Projects Ltd-25 | 36,235 |
| RB1-SS-3rd.395 |  | Shuttering | 3d | 2027-09-30 | 2027-10-04 | RB1-SS-3rd.320, RB1-SS-3rd.380 | Carpenter [1340 h]; Helper [670 h]; Physical Progress [4450 h]; Formwork [803 Sq m]; TATA Projects Ltd-25 | 935,623.48 |
| RB1-SS-3rd.440 |  | Concrete | 1d | 2027-10-05 | 2027-10-05 | RB1-SS-3rd.395 | Mason [50 h]; Helper [50 h]; Physical Progress [1490 h]; Concrete M40 [201 m3]; TATA Projects Ltd-25 | 1,983,267 |
|  | 5 | **Column, Core Wall, Shear Wall - Second Lift** |  | 2027-10-06 | 2027-10-15 |  |  |  |
| RB1-SS-3rd.455 |  | Reinforcement | 3d | 2027-10-06 | 2027-10-08 | RB1-SS-3rd.440 | Barbender [2940 h]; Helper [1470 h]; Physical Progress [4450 h]; Reinforcement Steel [44 MT1]; TATA Projects Ltd-25 | 4,246,550 |
| RB1-SS-3rd.490 |  | LPS | 1d | 2027-10-11 | 2027-10-11 | RB1-SS-3rd.455 | LPS [36235 INR]; Physical Progress [1490 h]; TATA Projects Ltd-25 | 36,235 |
| RB1-SS-3rd.500 |  | Shuttering | 3d | 2027-10-12 | 2027-10-14 | RB1-SS-3rd.455, RB1-SS-3rd.490 | Carpenter [1340 h]; Helper [670 h]; Physical Progress [4450 h]; Formwork [803 Sq m]; TATA Projects Ltd-25 | 935,623.48 |
| RB1-SS-3rd.530 |  | Concrete | 1d | 2027-10-15 | 2027-10-15 | RB1-SS-3rd.500 | Mason [50 h]; Helper [50 h]; Physical Progress [1490 h]; Concrete M40 [201 m3]; TATA Projects Ltd-25 | 1,983,267 |
|  | 3 | **Staircase** |  | 2027-09-24 | 2027-10-26 |  |  |  |
| RB1-SS-3rd.340 |  | Reinforcement of wall upto Flight 1 | 2d | 2027-09-24 | 2027-09-25 | RB1-SS-2nd.615 | Barbender [70 h]; Helper [40 h]; Physical Progress [2970 h]; Reinforcement Steel [1 MT1]; TATA Projects Ltd-25 | 96,512.5 |
| RB1-SS-3rd.375 |  | Shuttering of wall upto Flight 1 | 2d | 2027-09-27 | 2027-09-28 | RB1-SS-3rd.340 | Carpenter [20 h]; Helper [10 h]; Physical Progress [2970 h]; Formwork [10 Sq m]; TATA Projects Ltd-25 | 11,651.6 |
| RB1-SS-3rd.405 |  | Casting of wall upto Flight 1 | 1d | 2027-09-30 | 2027-09-30 | RB1-SS-3rd.375 | Mason; Helper; Physical Progress [1490 h]; Concrete M40 [3 m3]; TATA Projects Ltd-25 | 29,601 |
| RB1-SS-3rd.410 |  | Shuttering of Staircase upto Flight 1 | 1d | 2027-10-01 | 2027-10-01 | RB1-SS-3rd.405 | Carpenter [20 h]; Helper [10 h]; Physical Progress [1490 h]; Formwork [10 Sq m]; TATA Projects Ltd-25 | 11,651.6 |
| RB1-SS-3rd.430 |  | Reinforcement of Staircase upto Flight 1 | 1d | 2027-10-04 | 2027-10-04 | RB1-SS-3rd.410 | Barbender [70 h]; Helper [40 h]; Physical Progress [1490 h]; Reinforcement Steel [1 MT1]; TATA Projects Ltd-25 | 96,512.5 |
| RB1-SS-3rd.445 |  | MEP coordination upto Flight 1 | 1d | 2027-10-05 | 2027-10-05 | RB1-SS-3rd.430 | Physical Progress [1490 h]; TATA Projects Ltd-25 |  |
| RB1-SS-3rd.465 |  | Casting of Staircase upto Flight 1 | 1d | 2027-10-06 | 2027-10-06 | RB1-SS-3rd.445 | Mason; Helper; Physical Progress [1490 h]; Concrete M40 [3 m3]; TATA Projects Ltd-25 | 29,601 |
| RB1-SS-3rd.480 |  | Reinforcement of wall upto Flight 2 | 2d | 2027-10-07 | 2027-10-08 | RB1-SS-3rd.465 | Barbender [70 h]; Helper [40 h]; Physical Progress [2970 h]; Reinforcement Steel [1 MT1]; TATA Projects Ltd-25 | 96,512.5 |
| RB1-SS-3rd.495 |  | Shuttering of wall upto Flight 2 | 2d | 2027-10-11 | 2027-10-12 | RB1-SS-3rd.480 | Carpenter [20 h]; Helper [10 h]; Physical Progress [2970 h]; Formwork [10 Sq m]; TATA Projects Ltd-25 | 11,651.6 |
| RB1-SS-3rd.510 |  | Casting of wall upto Flight 2 | 1d | 2027-10-13 | 2027-10-13 | RB1-SS-3rd.495 | Mason; Helper; Physical Progress [1490 h]; Concrete M40 [3 m3]; TATA Projects Ltd-25 | 29,601 |
| RB1-SS-3rd.520 |  | Shuttering of Staircase upto Flight 2 | 1d | 2027-10-14 | 2027-10-14 | RB1-SS-3rd.510 | Carpenter [20 h]; Helper [10 h]; Physical Progress [1490 h]; Formwork [10 Sq m]; TATA Projects Ltd-25 | 11,651.6 |
| RB1-SS-3rd.535 |  | Reinforcement of Staircase upto Flight 2 | 1d | 2027-10-15 | 2027-10-15 | RB1-SS-3rd.520 | Barbender [70 h]; Helper [40 h]; Physical Progress [1490 h]; Reinforcement Steel [1 MT1]; TATA Projects Ltd-25 | 96,512.5 |
| RB1-SS-3rd.550 |  | MEP coordination upto Flight 2 | 1d | 2027-10-16 | 2027-10-16 | RB1-SS-3rd.535 | Physical Progress [1490 h]; TATA Projects Ltd-25 |  |
| RB1-SS-3rd.560 |  | Casting of Staircase upto Flight 2 | 1d | 2027-10-18 | 2027-10-18 | RB1-SS-3rd.550 | Mason; Helper; Physical Progress [1490 h]; Concrete M40 [3 m3]; TATA Projects Ltd-25 | 29,601 |
| RB1-SS-3rd.565 |  | Reinforcement of wall upto Flight 3 | 2d | 2027-10-19 | 2027-10-20 | RB1-SS-3rd.560 | Barbender [70 h]; Helper [40 h]; Physical Progress [2970 h]; Reinforcement Steel [1 MT1]; TATA Projects Ltd-25 | 96,512.5 |
| RB1-SS-3rd.575 |  | Shuttering of wall upto Flight 3 | 2d | 2027-10-21 | 2027-10-22 | RB1-SS-3rd.565 | Carpenter [20 h]; Helper [10 h]; Physical Progress [2970 h]; Formwork [10 Sq m]; TATA Projects Ltd-25 | 11,651.6 |
| RB1-SS-3rd.580 |  | Casting of wall upto Flight 3 | 1d | 2027-10-23 | 2027-10-23 | RB1-SS-3rd.575 | Mason; Helper; Physical Progress [1490 h]; Concrete M40 [3 m3]; TATA Projects Ltd-25 | 29,601 |
| RB1-SS-3rd.595 |  | Shuttering of Staircase upto Flight 3 | 1d | 2027-10-25 | 2027-10-25 | RB1-SS-3rd.580 | Carpenter [20 h]; Helper [10 h]; Physical Progress [1490 h]; Formwork [10 Sq m]; TATA Projects Ltd-25 | 11,651.6 |
| RB1-SS-3rd.600 |  | Reinforcement of Staircase upto Flight 3 | 1d | 2027-10-26 | 2027-10-26 | RB1-SS-3rd.595 | Barbender [70 h]; Helper [40 h]; Physical Progress [1490 h]; Reinforcement Steel [1 MT1]; TATA Projects Ltd-25 | 96,512.5 |

| ID | WBS | Activity | Duration | Start | Finish | Predecessors | Resources | Cost |
| --- | --- | --- | --- | --- | --- | --- | --- | --- |
|  | 2 | **Slab** |  | 2027-10-16 | 2027-11-16 |  |  |  |
| RB1-SS-3rd.545 |  | Shuttering | 4d | 2027-10-16 | 2027-10-20 | RB1-SS-3rd.440, RB1-SS-3rd.530 | Carpenter [2780 h]; Helper [1390 h]; Physical Progress [5940 h]; Formwork [1667 Sq m]; TATA Projects Ltd-25 | 1,942,321.72 |
| RB1-SS-3rd.570 |  | Reinforcement Bottom Net with chairs | 3d | 2027-10-21 | 2027-10-23 | RB1-SS-3rd.545 | Barbender [1270 h]; Helper [640 h]; Physical Progress [4450 h]; Reinforcement Steel [19 MT1]; TATA Projects Ltd-25 | 1,833,737.5 |
| RB1-SS-3rd.590 |  | Laying of PT Tendon | 4d | 2027-10-25 | 2027-10-28 | RB1-SS-3rd.570 | Physical Progress [5940 h]; TATA Projects Ltd-25 |  |
| RB1-SS-3rd.605 |  | Reinforcement Top Net | 2d | 2027-10-30 | 2027-11-01 | RB1-SS-3rd.590 | Barbender [1270 h]; Helper [640 h]; Physical Progress [2970 h]; Reinforcement Steel [19 MT1]; TATA Projects Ltd-25 | 1,833,737.5 |
| RB1-SS-3rd.610 |  | MEP Coordination | 1d | 2027-11-02 | 2027-11-02 | RB1-SS-3rd.570, RB1-SS-3rd.605, RB1-SS-3rd.600 | Physical Progress [1490 h]; TATA Projects Ltd-25 |  |
| RB1-SS-3rd.615 |  | Concrete of Slab | 1d | 2027-11-03 | 2027-11-03 | RB1-SS-3rd.610 | Physical Progress [1490 h]; Concrete M40 [417 m3]; Additional for scaff above 4.5m Height [10 LP]; TATA Projects Ltd-25 | 5,922,539 |
| RB1-SS-3rd.620 |  | Wait for Strength Gain | 6d | 2027-11-04 | 2027-11-10 | RB1-SS-3rd.615 | Physical Progress [8900 h]; TATA Projects Ltd-25 |  |
| RB1-SS-3rd.625 |  | PT Work | 5d | 2027-11-11 | 2027-11-16 | RB1-SS-3rd.620, RB1-SS-2nd.625 | PT [17 MT1]; Helper [100 h]; PT Fitter [100 h]; Physical Progress [7420 h]; TATA Projects Ltd-25 | 3,230,000 |
|  | 14 | **Roof Top** |  | 2027-12-10 | 2028-01-24 |  |  |  |
|  | 1 | **Column, Shear Wall** |  | 2027-12-10 | 2027-12-28 |  |  |  |
| RB1-SS-Roof10 |  | Reinforcement | 7d | 2027-12-10 | 2027-12-17 | RB1-SS-4th.675, E-GFC-ST-RB1-175 | Barbender; Helper; Physical Progress [10390 h]; Reinforcement Steel; TATA Projects Ltd-25 |  |
| RB1-SS-Roof15 |  | Shuttering | 7d | 2027-12-18 | 2027-12-27 | RB1-SS-Roof10 | Carpenter; Helper; Physical Progress [10390 h]; Formwork; TATA Projects Ltd-25 |  |
| RB1-SS-Roof20 |  | Concrete | 1d | 2027-12-28 | 2027-12-28 | RB1-SS-Roof15 | Mason [50 h]; Helper [50 h]; Physical Progress [1490 h]; Concrete M40; TATA Projects Ltd-25 |  |
|  | 2 | **Slab** |  | 2027-12-29 | 2028-01-24 |  |  |  |
| RB1-SS-Roof25 |  | Shuttering | 10d | 2027-12-29 | 2028-01-10 | RB1-SS-Roof20 | Carpenter [170 h]; Helper [90 h]; Physical Progress [14850 h]; Formwork [100 Sq m]; TATA Projects Ltd-25 | 116,516 |
| RB1-SS-Roof30 |  | Reinforcement | 10d | 2028-01-11 | 2028-01-21 | RB1-SS-Roof25 | Barbender [140 h]; Helper [70 h]; Physical Progress [14850 h]; Reinforcement Steel [2 MT1]; TATA Projects Ltd-25 | 193,025 |
| RB1-SS-Roof35 |  | MEP Coordination | 1d | 2028-01-22 | 2028-01-22 | RB1-SS-Roof30 | Physical Progress [1490 h]; TATA Projects Ltd-25 |  |
| RB1-SS-Roof40 |  | Concrete of Slab | 1d | 2028-01-24 | 2028-01-24 | RB1-SS-Roof35, RB1-SS-4th.525, RB1-SS-4th.685 | Mason [50 h]; Helper [50 h]; Physical Progress [1490 h]; Concrete M40 [10 m3]; TATA Projects Ltd-25 | 98,670 |
|  | 5 | **Fourth Floor** |  | 2027-10-14 | 2028-02-14 |  |  |  |
|  | 2 | **Pour 1** |  | 2027-10-14 | 2027-12-02 |  |  |  |
|  | 1 | **Column, Core Wall, Shear Wall - First Lift** |  | 2027-10-14 | 2027-10-22 |  |  |  |
| RB1-SS-4th.10 |  | Reinforcement | 3d | 2027-10-14 | 2027-10-16 | RB1-SS-3rd.435, E-GFC-ST-RB1-185 | Barbender [2470 h]; Helper [1240 h]; Physical Progress [4450 h]; Reinforcement Steel [37 MT1]; TATA Projects Ltd-25 | 3,570,962.5 |
| RB1-SS-4th.35 |  | LPS | 1d | 2027-10-18 | 2027-10-18 | RB1-SS-4th.10 | LPS [36235 INR]; Physical Progress [1490 h]; TATA Projects Ltd-25 | 36,235 |
| RB1-SS-4th.40 |  | Shuttering | 3d | 2027-10-19 | 2027-10-21 | RB1-SS-4th.10, RB1-SS-4th.35 | Carpenter [1220 h]; Helper [610 h]; Physical Progress [4450 h]; Formwork [731 Sq m]; TATA Projects Ltd-25 | 851,731.96 |
| RB1-SS-4th.75 |  | Concrete | 1d | 2027-10-22 | 2027-10-22 | RB1-SS-4th.40 | Mason [50 h]; Helper [50 h]; Physical Progress [1490 h]; Concrete M40 [183 m3]; TATA Projects Ltd-25 | 1,805,661 |

| ID | WBS | Activity | Duration | Start | Finish | Predecessors | Resources | Cost |
| --- | --- | --- | --- | --- | --- | --- | --- | --- |
|  | 3 | **Staircase - 1** |  | 2027-10-14 | 2027-11-12 |  |  |  |
| RB1-SS-4th.15 |  | Reinforcement of wall upto Flight 1 | 2d | 2027-10-14 | 2027-10-15 | RB1-SS-3rd.435 | Barbender [70 h]; Helper [40 h]; Physical Progress [2970 h]; Reinforcement Steel [1 MT1]; TATA Projects Ltd-25 | 96,512.5 |
| RB1-SS-4th.25 |  | Shuttering of wall upto Flight 1 | 2d | 2027-10-16 | 2027-10-18 | RB1-SS-4th.15 | Carpenter [20 h]; Helper [10 h]; Physical Progress [2970 h]; Formwork [10 Sq m]; TATA Projects Ltd-25 | 11,651.6 |
| RB1-SS-4th.45 |  | Casting of wall upto Flight 1 | 1d | 2027-10-19 | 2027-10-19 | RB1-SS-4th.25 | Mason; Helper; Physical Progress [1490 h]; Concrete M40 [3 m3]; TATA Projects Ltd-25 | 29,601 |
| RB1-SS-4th.55 |  | Shuttering of Staircase upto Flight 1 | 1d | 2027-10-20 | 2027-10-20 | RB1-SS-4th.45 | Carpenter [20 h]; Helper [10 h]; Physical Progress [1490 h]; Formwork [10 Sq m]; TATA Projects Ltd-25 | 11,651.6 |
| RB1-SS-4th.65 |  | Reinforcement of Staircase upto Flight 1 | 1d | 2027-10-21 | 2027-10-21 | RB1-SS-4th.55 | Barbender [70 h]; Helper [40 h]; Physical Progress [1490 h]; Reinforcement Steel [1 MT1]; TATA Projects Ltd-25 | 96,512.5 |
| RB1-SS-4th.80 |  | MEP coordination upto Flight 1 | 1d | 2027-10-22 | 2027-10-22 | RB1-SS-4th.65 | Physical Progress [1490 h]; TATA Projects Ltd-25 |  |
| RB1-SS-4th.95 |  | Casting of Staircase upto Flight 1 | 1d | 2027-10-23 | 2027-10-23 | RB1-SS-4th.80 | Mason; Helper; Physical Progress [1490 h]; Concrete M40 [3 m3]; TATA Projects Ltd-25 | 29,601 |
| RB1-SS-4th.110 |  | Reinforcement of wall upto Flight 2 | 2d | 2027-10-25 | 2027-10-26 | RB1-SS-4th.95 | Barbender [70 h]; Helper [40 h]; Physical Progress [2970 h]; Reinforcement Steel [1 MT1]; TATA Projects Ltd-25 | 96,512.5 |
| RB1-SS-4th.130 |  | Shuttering of wall upto Flight 2 | 2d | 2027-10-27 | 2027-10-28 | RB1-SS-4th.110 | Carpenter [20 h]; Helper [10 h]; Physical Progress [2970 h]; Formwork [10 Sq m]; TATA Projects Ltd-25 | 11,651.6 |
| RB1-SS-4th.150 |  | Casting of wall upto Flight 2 | 1d | 2027-10-30 | 2027-10-30 | RB1-SS-4th.130 | Mason; Helper; Physical Progress [1490 h]; Concrete M40 [3 m3]; TATA Projects Ltd-25 | 29,601 |
| RB1-SS-4th.165 |  | Shuttering of Staircase upto Flight 2 | 1d | 2027-11-01 | 2027-11-01 | RB1-SS-4th.150 | Carpenter [20 h]; Helper [10 h]; Physical Progress [1490 h]; Formwork [10 Sq m]; TATA Projects Ltd-25 | 11,651.6 |
| RB1-SS-4th.185 |  | Reinforcement of Staircase upto Flight 2 | 1d | 2027-11-02 | 2027-11-02 | RB1-SS-4th.165 | Barbender [70 h]; Helper [40 h]; Physical Progress [1490 h]; Reinforcement Steel [1 MT1]; TATA Projects Ltd-25 | 96,512.5 |
| RB1-SS-4th.200 |  | MEP coordination upto Flight 2 | 1d | 2027-11-03 | 2027-11-03 | RB1-SS-4th.185 | Physical Progress [1490 h]; TATA Projects Ltd-25 |  |
| RB1-SS-4th.215 |  | Casting of Staircase upto Flight 2 | 1d | 2027-11-04 | 2027-11-04 | RB1-SS-4th.200 | Mason; Helper; Physical Progress [1490 h]; Concrete M40 [3 m3]; TATA Projects Ltd-25 | 29,601 |
| RB1-SS-4th.230 |  | Reinforcement of wall upto Flight 3 | 2d | 2027-11-05 | 2027-11-06 | RB1-SS-4th.215 | Barbender [70 h]; Helper [40 h]; Physical Progress [2970 h]; Reinforcement Steel [1 MT1]; TATA Projects Ltd-25 | 96,512.5 |
| RB1-SS-4th.250 |  | Shuttering of wall upto Flight 3 | 2d | 2027-11-08 | 2027-11-09 | RB1-SS-4th.230 | Carpenter [20 h]; Helper [10 h]; Physical Progress [2970 h]; Formwork [10 Sq m]; TATA Projects Ltd-25 | 11,651.6 |
| RB1-SS-4th.265 |  | Casting of wall upto Flight 3 | 1d | 2027-11-10 | 2027-11-10 | RB1-SS-4th.250 | Mason; Helper; Physical Progress [1490 h]; Concrete M40 [3 m3]; TATA Projects Ltd-25 | 29,601 |
| RB1-SS-4th.305 |  | Shuttering of Staircase upto Flight 3 | 1d | 2027-11-11 | 2027-11-11 | RB1-SS-4th.265 | Carpenter [20 h]; Helper [10 h]; Physical Progress [1490 h]; Formwork [10 Sq m]; TATA Projects Ltd-25 | 11,651.6 |
| RB1-SS-4th.315 |  | Reinforcement of Staircase upto Flight 3 | 1d | 2027-11-12 | 2027-11-12 | RB1-SS-4th.305 | Barbender [70 h]; Helper [40 h]; Physical Progress [1490 h]; Reinforcement Steel [1 MT1]; TATA Projects Ltd-25 | 96,512.5 |
|  | 5 | **Column, Core Wall, Shear Wall - Second Lift** |  | 2027-10-23 | 2027-11-02 |  |  |  |
| RB1-SS-4th.90 |  | Reinforcement | 3d | 2027-10-23 | 2027-10-26 | RB1-SS-4th.75 | Barbender [2470 h]; Helper [1240 h]; Physical Progress [4450 h]; Reinforcement Steel [37 MT1]; TATA Projects Ltd-25 | 3,570,962.5 |
| RB1-SS-4th.120 |  | LPS | 1d | 2027-10-27 | 2027-10-27 | RB1-SS-4th.90 | LPS [36235 INR]; Physical Progress [1490 h]; TATA Projects Ltd-25 | 36,235 |
| RB1-SS-4th.140 |  | Shuttering | 3d | 2027-10-28 | 2027-11-01 | RB1-SS-4th.90, RB1-SS-4th.120 | Carpenter [1220 h]; Helper [610 h]; Physical Progress [4450 h]; Formwork [731 Sq m]; TATA Projects Ltd-25 | 851,731.96 |
| RB1-SS-4th.175 |  | Concrete | 1d | 2027-11-02 | 2027-11-02 | RB1-SS-4th.140 | Mason [50 h]; Helper [50 h]; Physical Progress [1490 h]; Concrete M40 [183 m3]; TATA Projects Ltd-25 | 1,805,661 |

| ID | WBS | Activity | Duration | Start | Finish | Predecessors | Resources | Cost |
| --- | --- | --- | --- | --- | --- | --- | --- | --- |
|  | 4 | **Staircase - 2** |  | 2027-10-14 | 2027-11-12 |  |  |  |
| RB1-SS-4th.20 |  | Reinforcement of wall upto Flight 1 | 2d | 2027-10-14 | 2027-10-15 | RB1-SS-3rd.435 | Barbender [70 h]; Helper [40 h]; Physical Progress [2970 h]; Reinforcement Steel [1 MT1]; TATA Projects Ltd-25 | 96,512.5 |
| RB1-SS-4th.30 |  | Shuttering of wall upto Flight 1 | 2d | 2027-10-16 | 2027-10-18 | RB1-SS-4th.20 | Carpenter [20 h]; Helper [10 h]; Physical Progress [2970 h]; Formwork [10 Sq m]; TATA Projects Ltd-25 | 11,651.6 |
| RB1-SS-4th.50 |  | Casting of wall upto Flight 1 | 1d | 2027-10-19 | 2027-10-19 | RB1-SS-4th.30 | Mason; Helper; Physical Progress [1490 h]; Concrete M40 [3 m3]; TATA Projects Ltd-25 | 29,601 |
| RB1-SS-4th.60 |  | Shuttering of Staircase upto Flight 1 | 1d | 2027-10-20 | 2027-10-20 | RB1-SS-4th.50 | Carpenter [20 h]; Helper [10 h]; Physical Progress [1490 h]; Formwork [10 Sq m]; TATA Projects Ltd-25 | 11,651.6 |
| RB1-SS-4th.70 |  | Reinforcement of Staircase upto Flight 1 | 1d | 2027-10-21 | 2027-10-21 | RB1-SS-4th.60 | Barbender [70 h]; Helper [40 h]; Physical Progress [1490 h]; Reinforcement Steel [1 MT1]; TATA Projects Ltd-25 | 96,512.5 |
| RB1-SS-4th.85 |  | MEP coordination upto Flight 1 | 1d | 2027-10-22 | 2027-10-22 | RB1-SS-4th.70 | Physical Progress [1490 h]; TATA Projects Ltd-25 |  |
| RB1-SS-4th.100 |  | Casting of Staircase upto Flight 1 | 1d | 2027-10-23 | 2027-10-23 | RB1-SS-4th.85 | Mason; Helper; Physical Progress [1490 h]; Concrete M40 [3 m3]; TATA Projects Ltd-25 | 29,601 |
| RB1-SS-4th.115 |  | Reinforcement of wall upto Flight 2 | 2d | 2027-10-25 | 2027-10-26 | RB1-SS-4th.100 | Barbender [70 h]; Helper [40 h]; Physical Progress [2970 h]; Reinforcement Steel [1 MT1]; TATA Projects Ltd-25 | 96,512.5 |
| RB1-SS-4th.135 |  | Shuttering of wall upto Flight 2 | 2d | 2027-10-27 | 2027-10-28 | RB1-SS-4th.115 | Carpenter [20 h]; Helper [10 h]; Physical Progress [2970 h]; Formwork [10 Sq m]; TATA Projects Ltd-25 | 11,651.6 |
| RB1-SS-4th.155 |  | Casting of wall upto Flight 2 | 1d | 2027-10-30 | 2027-10-30 | RB1-SS-4th.135 | Mason; Helper; Physical Progress [1490 h]; Concrete M40 [3 m3]; TATA Projects Ltd-25 | 29,601 |
| RB1-SS-4th.170 |  | Shuttering of Staircase upto Flight 2 | 1d | 2027-11-01 | 2027-11-01 | RB1-SS-4th.155 | Carpenter [20 h]; Helper [10 h]; Physical Progress [1490 h]; Formwork [10 Sq m]; TATA Projects Ltd-25 | 11,651.6 |
| RB1-SS-4th.190 |  | Reinforcement of Staircase upto Flight 2 | 1d | 2027-11-02 | 2027-11-02 | RB1-SS-4th.170 | Barbender [70 h]; Helper [40 h]; Physical Progress [1490 h]; Reinforcement Steel [1 MT1]; TATA Projects Ltd-25 | 96,512.5 |
| RB1-SS-4th.205 |  | MEP coordination upto Flight 2 | 1d | 2027-11-03 | 2027-11-03 | RB1-SS-4th.190 | Physical Progress [1490 h]; TATA Projects Ltd-25 |  |
| RB1-SS-4th.220 |  | Casting of Staircase upto Flight 2 | 1d | 2027-11-04 | 2027-11-04 | RB1-SS-4th.205 | Mason; Helper; Physical Progress [1490 h]; Concrete M40 [3 m3]; TATA Projects Ltd-25 | 29,601 |
| RB1-SS-4th.235 |  | Reinforcement of wall upto Flight 3 | 2d | 2027-11-05 | 2027-11-06 | RB1-SS-4th.220 | Barbender [70 h]; Helper [40 h]; Physical Progress [2970 h]; Reinforcement Steel [1 MT1]; TATA Projects Ltd-25 | 96,512.5 |
| RB1-SS-4th.255 |  | Shuttering of wall upto Flight 3 | 2d | 2027-11-08 | 2027-11-09 | RB1-SS-4th.235 | Carpenter [20 h]; Helper [10 h]; Physical Progress [2970 h]; Formwork [10 Sq m]; TATA Projects Ltd-25 | 11,651.6 |
| RB1-SS-4th.270 |  | Casting of wall upto Flight 3 | 1d | 2027-11-10 | 2027-11-10 | RB1-SS-4th.255 | Mason; Helper; Physical Progress [1490 h]; Concrete M40 [3 m3]; TATA Projects Ltd-25 | 29,601 |
| RB1-SS-4th.310 |  | Shuttering of Staircase upto Flight 3 | 1d | 2027-11-11 | 2027-11-11 | RB1-SS-4th.270 | Carpenter [20 h]; Helper [10 h]; Physical Progress [1490 h]; Formwork [10 Sq m]; TATA Projects Ltd-25 | 11,651.6 |
| RB1-SS-4th.320 |  | Reinforcement of Staircase upto Flight 3 | 1d | 2027-11-12 | 2027-11-12 | RB1-SS-4th.310 | Barbender [70 h]; Helper [40 h]; Physical Progress [1490 h]; Reinforcement Steel [1 MT1]; TATA Projects Ltd-25 | 96,512.5 |
|  | 2 | **Slab** |  | 2027-11-03 | 2027-12-02 |  |  |  |
| RB1-SS-4th.195 |  | Shuttering | 4d | 2027-11-03 | 2027-11-06 | RB1-SS-4th.75, RB1-SS-4th.175 | Carpenter [5740 h]; Helper [2870 h]; Physical Progress [5940 h]; Formwork [3444 Sq m]; TATA Projects Ltd-25 | 4,012,811.04 |
| RB1-SS-4th.240 |  | Reinforcement Bottom Net with chairs | 3d | 2027-11-08 | 2027-11-10 | RB1-SS-4th.195 | Barbender [1340 h]; Helper [670 h]; Physical Progress [4450 h]; Reinforcement Steel [20 MT1]; TATA Projects Ltd-25 | 1,930,250 |
| RB1-SS-4th.275 |  | Laying of PT Tendon | 4d | 2027-11-11 | 2027-11-15 | RB1-SS-4th.240, E-ShopD-Civil-PT-RB1-25 | Physical Progress [5940 h]; TATA Projects Ltd-25 |  |
| RB1-SS-4th.360 |  | Reinforcement Top Net | 2d | 2027-11-16 | 2027-11-17 | RB1-SS-4th.275 | Barbender [1340 h]; Helper [670 h]; Physical Progress [2970 h]; Reinforcement Steel [20 MT1]; TATA Projects Ltd-25 | 1,930,250 |
| RB1-SS-4th.400 |  | MEP Coordination | 1d | 2027-11-18 | 2027-11-18 | RB1-SS-4th.240, RB1-SS-4th.360, RB1-SS-4th.315, RB1-SS-4th.320 | Physical Progress [1490 h]; TATA Projects Ltd-25 |  |
| RB1-SS-4th.425 |  | Concrete of Slab | 1d | 2027-11-19 | 2027-11-19 | RB1-SS-4th.400 | Mason [50 h]; Helper [50 h]; Physical Progress [1490 h]; Concrete M40 [441 m3]; TATA Projects Ltd-25 | 4,351,347 |
| RB1-SS-4th.445 |  | Wait for Strength Gain | 6d | 2027-11-20 | 2027-11-26 | RB1-SS-4th.425 | Physical Progress [8900 h]; TATA Projects Ltd-25 |  |
| RB1-SS-4th.525 |  | PT Work | 5d | 2027-11-27 | 2027-12-02 | RB1-SS-4th.445, RB1-SS-3rd.515 | PT [24 MT1]; Helper [100 h]; PT Fitter [100 h]; Physical Progress [7420 h]; TATA Projects Ltd-25 | 4,560,000 |

| ID | WBS | Activity | Duration | Start | Finish | Predecessors | Resources | Cost |
| --- | --- | --- | --- | --- | --- | --- | --- | --- |
|  | 1 | **Pour 2** |  | 2027-11-04 | 2027-12-22 |  |  |  |
|  | 1 | **Column, Core Wall, Shear Wall - First Lift** |  | 2027-11-04 | 2027-11-12 |  |  |  |
| RB1-SS-4th.280 |  | Reinforcement | 3d | 2027-11-04 | 2027-11-06 | RB1-SS-3rd.615 | Barbender [1740 h]; Helper [870 h]; Physical Progress [4450 h]; Reinforcement Steel [26 MT1]; TATA Projects Ltd-25 | 2,509,325 |
| RB1-SS-4th.345 |  | LPS | 1d | 2027-11-08 | 2027-11-08 | RB1-SS-4th.280 | LPS [36235 INR]; Physical Progress [1490 h]; TATA Projects Ltd-25 | 36,235 |
| RB1-SS-4th.365 |  | Shuttering | 3d | 2027-11-09 | 2027-11-11 | RB1-SS-4th.280, RB1-SS-4th.345 | Carpenter [860 h]; Helper [430 h]; Physical Progress [4450 h]; Formwork [513 Sq m]; TATA Projects Ltd-25 | 597,727.08 |
| RB1-SS-4th.430 |  | Concrete | 1d | 2027-11-12 | 2027-11-12 | RB1-SS-4th.365 | Mason [50 h]; Helper [50 h]; Physical Progress [1490 h]; Concrete M40 [128 m3]; TATA Projects Ltd-25 | 1,262,976 |
|  | 3 | **Staircase - 1** |  | 2027-11-04 | 2027-12-02 |  |  |  |
| RB1-SS-4th.295 |  | Reinforcement of wall upto Flight 1 | 2d | 2027-11-04 | 2027-11-05 | RB1-SS-3rd.615 | Barbender [70 h]; Helper [40 h]; Physical Progress [2970 h]; Reinforcement Steel [1 MT1]; TATA Projects Ltd-25 | 96,512.5 |
| RB1-SS-4th.335 |  | Shuttering of wall upto Flight 1 | 2d | 2027-11-06 | 2027-11-08 | RB1-SS-4th.295 | Carpenter [20 h]; Helper [10 h]; Physical Progress [2970 h]; Formwork [10 Sq m]; TATA Projects Ltd-25 | 11,651.6 |
| RB1-SS-4th.375 |  | Casting of wall upto Flight 1 | 1d | 2027-11-09 | 2027-11-09 | RB1-SS-4th.335 | Mason; Helper; Physical Progress [1490 h]; Concrete M40 [3 m3]; TATA Projects Ltd-25 | 29,601 |
| RB1-SS-4th.390 |  | Shuttering of Staircase upto Flight 1 | 1d | 2027-11-10 | 2027-11-10 | RB1-SS-4th.375 | Carpenter [20 h]; Helper [10 h]; Physical Progress [1490 h]; Formwork [10 Sq m]; TATA Projects Ltd-25 | 11,651.6 |
| RB1-SS-4th.415 |  | Reinforcement of Staircase upto Flight 1 | 1d | 2027-11-11 | 2027-11-11 | RB1-SS-4th.390 | Barbender [70 h]; Helper [40 h]; Physical Progress [1490 h]; Reinforcement Steel [1 MT1]; TATA Projects Ltd-25 | 96,512.5 |
| RB1-SS-4th.435 |  | MEP coordination upto Flight 1 | 1d | 2027-11-12 | 2027-11-12 | RB1-SS-4th.415 | Physical Progress [1490 h]; TATA Projects Ltd-25 |  |
| RB1-SS-4th.460 |  | Casting of Staircase upto Flight 1 | 1d | 2027-11-13 | 2027-11-13 | RB1-SS-4th.435 | Mason; Helper; Physical Progress [1490 h]; Concrete M40 [3 m3]; TATA Projects Ltd-25 | 29,601 |
| RB1-SS-4th.475 |  | Reinforcement of wall upto Flight 2 | 2d | 2027-11-15 | 2027-11-16 | RB1-SS-4th.460 | Barbender [70 h]; Helper [40 h]; Physical Progress [2970 h]; Reinforcement Steel [1 MT1]; TATA Projects Ltd-25 | 96,512.5 |
| RB1-SS-4th.495 |  | Shuttering of wall upto Flight 2 | 2d | 2027-11-17 | 2027-11-18 | RB1-SS-4th.475 | Carpenter [20 h]; Helper [10 h]; Physical Progress [2970 h]; Formwork [10 Sq m]; TATA Projects Ltd-25 | 11,651.6 |
| RB1-SS-4th.515 |  | Casting of wall upto Flight 2 | 1d | 2027-11-19 | 2027-11-19 | RB1-SS-4th.495 | Mason; Helper; Physical Progress [1490 h]; Concrete M40 [3 m3]; TATA Projects Ltd-25 | 29,601 |
| RB1-SS-4th.535 |  | Shuttering of Staircase upto Flight 2 | 1d | 2027-11-20 | 2027-11-20 | RB1-SS-4th.515 | Carpenter [20 h]; Helper [10 h]; Physical Progress [1490 h]; Formwork [10 Sq m]; TATA Projects Ltd-25 | 11,651.6 |
| RB1-SS-4th.550 |  | Reinforcement of Staircase upto Flight 2 | 1d | 2027-11-22 | 2027-11-22 | RB1-SS-4th.535 | Barbender [70 h]; Helper [40 h]; Physical Progress [1490 h]; Reinforcement Steel [1 MT1]; TATA Projects Ltd-25 | 96,512.5 |
| RB1-SS-4th.570 |  | MEP coordination upto Flight 2 | 1d | 2027-11-23 | 2027-11-23 | RB1-SS-4th.550 | Physical Progress [1490 h]; TATA Projects Ltd-25 |  |
| RB1-SS-4th.585 |  | Casting of Staircase upto Flight 2 | 1d | 2027-11-24 | 2027-11-24 | RB1-SS-4th.570 | Mason; Helper; Physical Progress [1490 h]; Concrete M40 [3 m3]; TATA Projects Ltd-25 | 29,601 |
| RB1-SS-4th.600 |  | Reinforcement of wall upto Flight 3 | 2d | 2027-11-25 | 2027-11-26 | RB1-SS-4th.585 | Barbender [70 h]; Helper [40 h]; Physical Progress [2970 h]; Reinforcement Steel [1 MT1]; TATA Projects Ltd-25 | 96,512.5 |
| RB1-SS-4th.620 |  | Shuttering of wall upto Flight 3 | 2d | 2027-11-27 | 2027-11-29 | RB1-SS-4th.600 | Carpenter [20 h]; Helper [10 h]; Physical Progress [2970 h]; Formwork [10 Sq m]; TATA Projects Ltd-25 | 11,651.6 |
| RB1-SS-4th.630 |  | Casting of wall upto Flight 3 | 1d | 2027-11-30 | 2027-11-30 | RB1-SS-4th.620 | Mason; Helper; Physical Progress [1490 h]; Concrete M40 [3 m3]; TATA Projects Ltd-25 | 29,601 |
| RB1-SS-4th.645 |  | Shuttering of Staircase upto Flight 3 | 1d | 2027-12-01 | 2027-12-01 | RB1-SS-4th.630 | Carpenter [20 h]; Helper [10 h]; Physical Progress [1490 h]; Formwork [10 Sq m]; TATA Projects Ltd-25 | 11,651.6 |
| RB1-SS-4th.655 |  | Reinforcement of Staircase upto Flight 3 | 1d | 2027-12-02 | 2027-12-02 | RB1-SS-4th.645 | Barbender [70 h]; Helper [40 h]; Physical Progress [1490 h]; Reinforcement Steel [1 MT1]; TATA Projects Ltd-25 | 96,512.5 |

| ID | WBS | Activity | Duration | Start | Finish | Predecessors | Resources | Cost |
| --- | --- | --- | --- | --- | --- | --- | --- | --- |
|  | 5 | **Column, Core Wall, Shear Wall - Second Lift** |  | 2027-11-13 | 2027-11-22 |  |  |  |
| RB1-SS-4th.450 |  | Reinforcement | 3d | 2027-11-13 | 2027-11-16 | RB1-SS-4th.430 | Barbender [1740 h]; Helper [870 h]; Physical Progress [4450 h]; Reinforcement Steel [26 MT1]; TATA Projects Ltd-25 | 2,509,325 |
| RB1-SS-4th.485 |  | LPS | 1d | 2027-11-17 | 2027-11-17 | RB1-SS-4th.450 | LPS [36235 INR]; Physical Progress [1490 h]; TATA Projects Ltd-25 | 36,235 |
| RB1-SS-4th.505 |  | Shuttering | 3d | 2027-11-18 | 2027-11-20 | RB1-SS-4th.450, RB1-SS-4th.485 | Carpenter [860 h]; Helper [430 h]; Physical Progress [4450 h]; Formwork [513 Sq m]; TATA Projects Ltd-25 | 597,727.08 |
| RB1-SS-4th.545 |  | Concrete | 1d | 2027-11-22 | 2027-11-22 | RB1-SS-4th.505 | Mason [50 h]; Helper [50 h]; Physical Progress [1490 h]; Concrete M40 [128 m3]; TATA Projects Ltd-25 | 1,262,976 |
|  | 4 | **Staircase - 2** |  | 2027-11-04 | 2027-12-02 |  |  |  |
| RB1-SS-4th.300 |  | Reinforcement of wall upto Flight 1 | 2d | 2027-11-04 | 2027-11-05 | RB1-SS-3rd.615 | Barbender [70 h]; Helper [40 h]; Physical Progress [2970 h]; Reinforcement Steel [1 MT1]; TATA Projects Ltd-25 | 96,512.5 |
| RB1-SS-4th.340 |  | Shuttering of wall upto Flight 1 | 2d | 2027-11-06 | 2027-11-08 | RB1-SS-4th.300 | Carpenter [20 h]; Helper [10 h]; Physical Progress [2970 h]; Formwork [10 Sq m]; TATA Projects Ltd-25 | 11,651.6 |
| RB1-SS-4th.380 |  | Casting of wall upto Flight 1 | 1d | 2027-11-09 | 2027-11-09 | RB1-SS-4th.340 | Mason; Helper; Physical Progress [1490 h]; Concrete M40 [3 m3]; TATA Projects Ltd-25 | 29,601 |
| RB1-SS-4th.395 |  | Shuttering of Staircase upto Flight 1 | 1d | 2027-11-10 | 2027-11-10 | RB1-SS-4th.380 | Carpenter [20 h]; Helper [10 h]; Physical Progress [1490 h]; Formwork [10 Sq m]; TATA Projects Ltd-25 | 11,651.6 |
| RB1-SS-4th.420 |  | Reinforcement of Staircase upto Flight 1 | 1d | 2027-11-11 | 2027-11-11 | RB1-SS-4th.395 | Barbender [70 h]; Helper [40 h]; Physical Progress [1490 h]; Reinforcement Steel [1 MT1]; TATA Projects Ltd-25 | 96,512.5 |
| RB1-SS-4th.440 |  | MEP coordination upto Flight 1 | 1d | 2027-11-12 | 2027-11-12 | RB1-SS-4th.420 | Physical Progress [1490 h]; TATA Projects Ltd-25 |  |
| RB1-SS-4th.465 |  | Casting of Staircase upto Flight 1 | 1d | 2027-11-13 | 2027-11-13 | RB1-SS-4th.440 | Mason; Helper; Physical Progress [1490 h]; Concrete M40 [3 m3]; TATA Projects Ltd-25 | 29,601 |
| RB1-SS-4th.480 |  | Reinforcement of wall upto Flight 2 | 2d | 2027-11-15 | 2027-11-16 | RB1-SS-4th.465 | Barbender [70 h]; Helper [40 h]; Physical Progress [2970 h]; Reinforcement Steel [1 MT1]; TATA Projects Ltd-25 | 96,512.5 |
| RB1-SS-4th.500 |  | Shuttering of wall upto Flight 2 | 2d | 2027-11-17 | 2027-11-18 | RB1-SS-4th.480 | Carpenter [20 h]; Helper [10 h]; Physical Progress [2970 h]; Formwork [10 Sq m]; TATA Projects Ltd-25 | 11,651.6 |
| RB1-SS-4th.520 |  | Casting of wall upto Flight 2 | 1d | 2027-11-19 | 2027-11-19 | RB1-SS-4th.500 | Mason; Helper; Physical Progress [1490 h]; Concrete M40 [3 m3]; TATA Projects Ltd-25 | 29,601 |
| RB1-SS-4th.540 |  | Shuttering of Staircase upto Flight 2 | 1d | 2027-11-20 | 2027-11-20 | RB1-SS-4th.520 | Carpenter [20 h]; Helper [10 h]; Physical Progress [1490 h]; Formwork [10 Sq m]; TATA Projects Ltd-25 | 11,651.6 |
| RB1-SS-4th.555 |  | Reinforcement of Staircase upto Flight 2 | 1d | 2027-11-22 | 2027-11-22 | RB1-SS-4th.540 | Barbender [70 h]; Helper [40 h]; Physical Progress [1490 h]; Reinforcement Steel [1 MT1]; TATA Projects Ltd-25 | 96,512.5 |
| RB1-SS-4th.575 |  | MEP coordination upto Flight 2 | 1d | 2027-11-23 | 2027-11-23 | RB1-SS-4th.555 | Physical Progress [1490 h]; TATA Projects Ltd-25 |  |
| RB1-SS-4th.590 |  | Casting of Staircase upto Flight 2 | 1d | 2027-11-24 | 2027-11-24 | RB1-SS-4th.575 | Mason; Helper; Physical Progress [1490 h]; Concrete M40 [3 m3]; TATA Projects Ltd-25 | 29,601 |
| RB1-SS-4th.605 |  | Reinforcement of wall upto Flight 3 | 2d | 2027-11-25 | 2027-11-26 | RB1-SS-4th.590 | Barbender [70 h]; Helper [40 h]; Physical Progress [2970 h]; Reinforcement Steel [1 MT1]; TATA Projects Ltd-25 | 96,512.5 |
| RB1-SS-4th.625 |  | Shuttering of wall upto Flight 3 | 2d | 2027-11-27 | 2027-11-29 | RB1-SS-4th.605 | Carpenter [20 h]; Helper [10 h]; Physical Progress [2970 h]; Formwork [10 Sq m]; TATA Projects Ltd-25 | 11,651.6 |
| RB1-SS-4th.635 |  | Casting of wall upto Flight 3 | 1d | 2027-11-30 | 2027-11-30 | RB1-SS-4th.625 | Mason; Helper; Physical Progress [1490 h]; Concrete M40 [3 m3]; TATA Projects Ltd-25 | 29,601 |
| RB1-SS-4th.650 |  | Shuttering of Staircase upto Flight 3 | 1d | 2027-12-01 | 2027-12-01 | RB1-SS-4th.635 | Carpenter [20 h]; Helper [10 h]; Physical Progress [1490 h]; Formwork [10 Sq m]; TATA Projects Ltd-25 | 11,651.6 |
| RB1-SS-4th.660 |  | Reinforcement of Staircase upto Flight 3 | 1d | 2027-12-02 | 2027-12-02 | RB1-SS-4th.650 | Barbender [70 h]; Helper [40 h]; Physical Progress [1490 h]; Reinforcement Steel [1 MT1]; TATA Projects Ltd-25 | 96,512.5 |

| ID | WBS | Activity | Duration | Start | Finish | Predecessors | Resources | Cost |
| --- | --- | --- | --- | --- | --- | --- | --- | --- |
|  | 2 | **Slab** |  | 2027-11-23 | 2027-12-22 |  |  |  |
| RB1-SS-4th.560 |  | Shuttering | 4d | 2027-11-23 | 2027-11-26 | RB1-SS-4th.430, RB1-SS-4th.545 | Carpenter [4030 h]; Helper [2020 h]; Physical Progress [5940 h]; Formwork [2417 Sq m]; TATA Projects Ltd-25 | 2,816,191.72 |
| RB1-SS-4th.610 |  | Reinforcement Bottom Net with chairs | 3d | 2027-11-27 | 2027-11-30 | RB1-SS-4th.560 | Barbender [940 h]; Helper [470 h]; Physical Progress [4450 h]; Reinforcement Steel [14 MT1]; TATA Projects Ltd-25 | 1,351,175 |
| RB1-SS-4th.640 |  | Laying of PT Tendon | 4d | 2027-12-01 | 2027-12-04 | RB1-SS-4th.610 | Physical Progress [5940 h]; TATA Projects Ltd-25 |  |
| RB1-SS-4th.665 |  | Reinforcement Top Net | 2d | 2027-12-06 | 2027-12-07 | RB1-SS-4th.640 | Barbender [940 h]; Helper [470 h]; Physical Progress [2970 h]; Reinforcement Steel [14 MT1]; TATA Projects Ltd-25 | 1,351,175 |
| RB1-SS-4th.670 |  | MEP Coordination | 1d | 2027-12-08 | 2027-12-08 | RB1-SS-4th.610, RB1-SS-4th.665, RB1-SS-4th.660, RB1-SS-4th.655 | Physical Progress [1490 h]; TATA Projects Ltd-25 |  |
| RB1-SS-4th.675 |  | Concrete of Slab | 1d | 2027-12-09 | 2027-12-09 | RB1-SS-4th.670 | Mason [50 h]; Helper [50 h]; Physical Progress [1490 h]; Concrete M40 [309 m3]; TATA Projects Ltd-25 | 3,048,903 |
| RB1-SS-4th.680 |  | Wait for Strength Gain | 6d | 2027-12-10 | 2027-12-16 | RB1-SS-4th.675 | Physical Progress [8900 h]; TATA Projects Ltd-25 |  |
| RB1-SS-4th.685 |  | PT Work | 5d | 2027-12-17 | 2027-12-22 | RB1-SS-4th.680, RB1-SS-3rd.585 | PT [17 MT1]; Helper [100 h]; PT Fitter [100 h]; Physical Progress [7420 h]; TATA Projects Ltd-25 | 3,230,000 |
|  | 6 | **Pour 3** |  | 2027-11-02 | 2028-02-11 |  |  |  |
|  | 1 | **Columns- First Lift** |  | 2027-11-02 | 2027-11-08 |  |  |  |
| RB1-SS-4th.105 |  | Reinforcement | 2d | 2027-11-02 | 2027-11-03 | RB1-SS-3rd.540 | Barbender [1870 h]; Helper [940 h]; Physical Progress [2970 h]; Reinforcement Steel [28 MT1]; TATA Projects Ltd-25 | 2,702,350 |
| RB1-SS-4th.125 |  | LPS | 1d | 2027-11-04 | 2027-11-04 | RB1-SS-4th.105 | LPS [36235 INR]; Physical Progress [1490 h]; TATA Projects Ltd-25 | 36,235 |
| RB1-SS-4th.145 |  | Shuttering | 2d | 2027-11-05 | 2027-11-06 | RB1-SS-4th.105, RB1-SS-4th.125 | Carpenter [910 h]; Helper [460 h]; Physical Progress [2970 h]; Formwork [546 Sq m]; TATA Projects Ltd-25 | 636,177.36 |
| RB1-SS-4th.160 |  | Concrete | 1d | 2027-11-08 | 2027-11-08 | RB1-SS-4th.145 | Mason [50 h]; Helper [50 h]; Physical Progress [1490 h]; Concrete M40 [137 m3]; TATA Projects Ltd-25 | 1,351,779 |
|  | 5 | **Columns- Second Lift** |  | 2027-11-09 | 2027-11-15 |  |  |  |
| RB1-SS-4th.180 |  | Reinforcement | 2d | 2027-11-09 | 2027-11-10 | RB1-SS-4th.160 | Barbender [1870 h]; Helper [940 h]; Physical Progress [2970 h]; Reinforcement Steel [28 MT1]; TATA Projects Ltd-25 | 2,702,350 |
| RB1-SS-4th.210 |  | LPS | 1d | 2027-11-11 | 2027-11-11 | RB1-SS-4th.180 | LPS [36235 INR]; Physical Progress [1490 h]; TATA Projects Ltd-25 | 36,235 |
| RB1-SS-4th.225 |  | Shuttering | 2d | 2027-11-12 | 2027-11-13 | RB1-SS-4th.180, RB1-SS-4th.210 | Carpenter [910 h]; Helper [460 h]; Physical Progress [2970 h]; Formwork [546 Sq m]; TATA Projects Ltd-25 | 636,177.36 |
| RB1-SS-4th.245 |  | Concrete | 1d | 2027-11-15 | 2027-11-15 | RB1-SS-4th.225 | Mason [50 h]; Helper [50 h]; Physical Progress [1490 h]; Concrete M40 [137 m3]; TATA Projects Ltd-25 | 1,351,779 |
|  | 3 | **Beam** |  | 2027-11-16 | 2027-11-22 |  |  |  |
| RB1-SS-4th.260 |  | Shuttering | 2d | 2027-11-16 | 2027-11-17 | RB1-SS-4th.245 | Carpenter [40 h]; Helper [20 h]; Physical Progress [2970 h]; Formwork [20 Sq m]; TATA Projects Ltd-25 | 23,303.2 |
| RB1-SS-4th.285 |  | Reinforcement | 2d | 2027-11-18 | 2027-11-19 | RB1-SS-4th.260 | Barbender [70 h]; Helper [40 h]; Physical Progress [2970 h]; Reinforcement Steel [1 MT1]; TATA Projects Ltd-25 | 96,512.5 |
| RB1-SS-4th.325 |  | MEP Coordination | 1d | 2027-11-20 | 2027-11-20 | RB1-SS-4th.285 | Physical Progress [1490 h]; TATA Projects Ltd-25 |  |
| RB1-SS-4th.350 |  | Concrete of Beams | 1d | 2027-11-22 | 2027-11-22 | RB1-SS-4th.325 | Physical Progress [1490 h]; TATA Projects Ltd-25 |  |

| ID | WBS | Activity | Duration | Start | Finish | Predecessors | Resources | Cost |
| --- | --- | --- | --- | --- | --- | --- | --- | --- |
|  | 2 | **Slab** |  | 2027-11-23 | 2028-02-11 |  |  |  |
| RB1-SS-4th.370 |  | Deshuttering of Beam | 2d | 2027-11-23 | 2027-11-24 | RB1-SS-4th.350 | Physical Progress [2970 h]; TATA Projects Ltd-25 |  |
| RB1-SS-4th.405 |  | Erection of Structural Steel Beams | 30d | 2027-11-25 | 2027-12-30 | RB1-SS-4th.370 | Str. Steel Fitter [4640 h]; Rigger [9280 h]; Welder [9280 h]; Khalasi Helper [9280 h]; Physical Progress [59390 h]; Structural Steel [691 MT1]; Vermiculite Paint [494 Sq m]; Intumescent Paint [432 Sq m]; TATA Projects Ltd-25 | 122,684,392 |
| RB1-SS-4th.690 |  | Metal Deck Sheet | 8d | 2027-12-31 | 2028-01-10 | RB1-SS-4th.405 | Physical Progress [14850 h]; Composite Slab Metal Deck [10 MT1]; TATA Projects Ltd-25 | 2,049,840 |
| RB1-SS-4th.695 |  | Shear Studs | 4d | 2028-01-11 | 2028-01-14 | RB1-SS-4th.690 | Physical Progress [8900 h]; Shear Studs [3 MT1]; TATA Projects Ltd-25 | 705,000 |
| RB1-SS-4th.705 |  | Reinforcement Bottom Net with chairs | 3d | 2028-01-15 | 2028-01-18 | RB1-SS-4th.695 | Barbender [1000 h]; Helper [500 h]; Physical Progress [4450 h]; Reinforcement Steel [15 MT1]; TATA Projects Ltd-25 | 1,447,687.5 |
| RB1-SS-4th.710 |  | Laying of PT Tendons | 4d | 2028-01-19 | 2028-01-22 | RB1-SS-4th.705 | Physical Progress [5940 h]; TATA Projects Ltd-25 |  |
| RB1-SS-4th.715 |  | Reinforcement Top Net | 3d | 2028-01-24 | 2028-01-27 | RB1-SS-4th.710 | Barbender [1000 h]; Helper [500 h]; Physical Progress [4450 h]; Reinforcement Steel [15 MT1]; TATA Projects Ltd-25 | 1,447,687.5 |
| RB1-SS-4th.725 |  | MEP Coordination | 1d | 2028-01-28 | 2028-01-28 | RB1-SS-4th.690, RB1-SS-4th.715 | Physical Progress [1490 h]; TATA Projects Ltd-25 |  |
| RB1-SS-4th.730 |  | Concrete of Slab | 1d | 2028-01-29 | 2028-01-29 | RB1-SS-4th.725 | Mason [50 h]; Helper [50 h]; Physical Progress [1490 h]; Concrete M40 [329 m3]; TATA Projects Ltd-25 | 3,246,243 |
| RB1-SS-4th.735 |  | Wait for Strength Gain | 6d | 2028-01-31 | 2028-02-05 | RB1-SS-4th.730 | Physical Progress [8900 h]; TATA Projects Ltd-25 |  |
| RB1-SS-4th.750 |  | PT Work | 5d | 2028-02-07 | 2028-02-11 | RB1-SS-4th.735, RB1-SS-3rd.625 | PT [18 MT1]; Helper [100 h]; PT Fitter [100 h]; Physical Progress [7420 h]; TATA Projects Ltd-25 | 3,420,000 |
|  | 3 | **Pour 4** |  | 2027-11-04 | 2028-02-14 |  |  |  |
|  | 1 | **Columns- First Lift** |  | 2027-11-04 | 2027-11-10 |  |  |  |
| RB1-SS-4th.290 |  | Reinforcement | 2d | 2027-11-04 | 2027-11-05 | RB1-SS-3rd.615, RB1-SS-3rd.435 | Barbender [2140 h]; Helper [1070 h]; Physical Progress [2970 h]; Reinforcement Steel [32 MT1]; TATA Projects Ltd-25 | 3,088,400 |
| RB1-SS-4th.330 |  | LPS | 1d | 2027-11-06 | 2027-11-06 | RB1-SS-4th.290 | LPS [36235 INR]; Physical Progress [1490 h]; TATA Projects Ltd-25 | 36,235 |
| RB1-SS-4th.355 |  | Shuttering | 2d | 2027-11-08 | 2027-11-09 | RB1-SS-4th.290, RB1-SS-4th.330 | Carpenter [1070 h]; Helper [540 h]; Physical Progress [2970 h]; Formwork [639 Sq m]; TATA Projects Ltd-25 | 744,537.24 |
| RB1-SS-4th.385 |  | Concrete | 1d | 2027-11-10 | 2027-11-10 | RB1-SS-4th.355 | Mason [50 h]; Helper [50 h]; Physical Progress [1490 h]; Concrete M40 [160 m3]; TATA Projects Ltd-25 | 1,578,720 |
|  | 5 | **Columns- Second Lift** |  | 2027-11-11 | 2027-11-17 |  |  |  |
| RB1-SS-4th.410 |  | Reinforcement | 2d | 2027-11-11 | 2027-11-12 | RB1-SS-4th.385 | Barbender [2140 h]; Helper [1070 h]; Physical Progress [2970 h]; Reinforcement Steel [32 MT1]; TATA Projects Ltd-25 | 3,088,400 |
| RB1-SS-4th.455 |  | LPS | 1d | 2027-11-13 | 2027-11-13 | RB1-SS-4th.410 | LPS [36235 INR]; Physical Progress [1490 h]; TATA Projects Ltd-25 | 36,235 |
| RB1-SS-4th.470 |  | Shuttering | 2d | 2027-11-15 | 2027-11-16 | RB1-SS-4th.410, RB1-SS-4th.455 | Carpenter [1070 h]; Helper [540 h]; Physical Progress [2970 h]; Formwork [639 Sq m]; TATA Projects Ltd-25 | 744,537.24 |
| RB1-SS-4th.490 |  | Concrete | 1d | 2027-11-17 | 2027-11-17 | RB1-SS-4th.470 | Mason [50 h]; Helper [50 h]; Physical Progress [1490 h]; Concrete M40 [160 m3]; TATA Projects Ltd-25 | 1,578,720 |
|  | 3 | **Beam** |  | 2027-11-18 | 2027-11-24 |  |  |  |
| RB1-SS-4th.510 |  | Shuttering | 2d | 2027-11-18 | 2027-11-19 | RB1-SS-4th.490 | Carpenter [40 h]; Helper [20 h]; Physical Progress [2970 h]; Formwork [20 Sq m]; TATA Projects Ltd-25 | 23,303.2 |
| RB1-SS-4th.530 |  | Reinforcement | 2d | 2027-11-20 | 2027-11-22 | RB1-SS-4th.510 | Barbender [70 h]; Helper [40 h]; Physical Progress [2970 h]; Reinforcement Steel [1 MT1]; TATA Projects Ltd-25 | 96,512.5 |
| RB1-SS-4th.565 |  | MEP Coordination | 1d | 2027-11-23 | 2027-11-23 | RB1-SS-4th.530 | Physical Progress [1490 h]; TATA Projects Ltd-25 |  |
| RB1-SS-4th.580 |  | Concrete of Beams | 1d | 2027-11-24 | 2027-11-24 | RB1-SS-4th.565 | Physical Progress [1490 h]; TATA Projects Ltd-25 |  |

| ID | WBS | Activity | Duration | Start | Finish | Predecessors | Calendar | Resources | Cost |
| --- | --- | --- | --- | --- | --- | --- | --- | --- | --- |
|  | 2 | **Slab** |  | 2027-11-25 | 2028-02-14 |  |  |  |  |
| RB1-SS-4th.595 |  | Deshuttering of Beam | 2d | 2027-11-25 | 2027-11-26 | RB1-SS-4th.580 |  | Physical Progress [2970 h]; TATA Projects Ltd-25 |  |
| RB1-SS-4th.615 |  | Erection of Structural Steel Beams | 30d | 2027-11-27 | 2028-01-03 | RB1-SS-4th.595 |  | Str. Steel Fitter [5400 h]; Rigger [10800 h]; Welder [10800 h]; Khalasi Helper [10800 h]; Physical Progress [59390 h]; Structural Steel [809 MT1]; Vermiculite Paint [578 Sq m]; Intumescent Paint [506 Sq m]; TATA Projects Ltd-25 | 143,635,608 |
| RB1-SS-4th.700 |  | Metal Deck Sheet | 8d | 2028-01-04 | 2028-01-12 | RB1-SS-4th.615 |  | Physical Progress [14850 h]; Composite Slab Metal Deck [12 MT1]; TATA Projects Ltd-25 | 2,459,808 |
| RB1-SS-4th.720 |  | Shear Studs | 4d | 2028-01-13 | 2028-01-17 | RB1-SS-4th.700 |  | Physical Progress [8900 h]; Shear Studs [4 MT1]; TATA Projects Ltd-25 | 940,000 |
| RB1-SS-4th.740 |  | Reinforcement Bottom Net with chairs | 3d | 2028-01-18 | 2028-01-20 | RB1-SS-4th.720 |  | Barbender [1140 h]; Helper [570 h]; Physical Progress [4450 h]; Reinforcement Steel [17 MT1]; TATA Projects Ltd-25 | 1,640,712.5 |
| RB1-SS-4th.745 |  | Laying of PT Tendons | 4d | 2028-01-21 | 2028-01-25 | RB1-SS-4th.740 |  | Physical Progress [5940 h]; TATA Projects Ltd-25 |  |
| RB1-SS-4th.755 |  | Reinforcement Top Net | 3d | 2028-01-27 | 2028-01-29 | RB1-SS-4th.745 |  | Barbender [1140 h]; Helper [570 h]; Physical Progress [4450 h]; Reinforcement Steel [17 MT1]; TATA Projects Ltd-25 | 1,640,712.5 |
| RB1-SS-4th.760 |  | MEP Coordination | 1d | 2028-01-31 | 2028-01-31 | RB1-SS-4th.755 |  | Physical Progress [1490 h]; TATA Projects Ltd-25 |  |
| RB1-SS-4th.765 |  | Concrete of Slab | 1d | 2028-02-01 | 2028-02-01 | RB1-SS-4th.760 |  | Mason [50 h]; Helper [50 h]; Physical Progress [1490 h]; Concrete M40 [386 m3]; TATA Projects Ltd-25 | 3,808,662 |
| RB1-SS-4th.770 |  | Wait for Strength Gain | 6d | 2028-02-02 | 2028-02-08 | RB1-SS-4th.765 |  | Physical Progress [8900 h]; TATA Projects Ltd-25 |  |
| RB1-SS-4th.775 |  | PT Work | 5d | 2028-02-09 | 2028-02-14 | RB1-SS-4th.770, RB1-SS-3rd.625 |  | PT [21 MT1]; Helper [100 h]; PT Fitter [100 h]; Physical Progress [7420 h]; TATA Projects Ltd-25 | 3,990,000 |
|  | 4 | **Wet finishes, MEP, ID** |  | 2027-08-05 | 2029-04-17 |  |  |  |  |
|  | 1 | **Ground Floor** |  | 2027-08-05 | 2029-02-12 |  |  |  |  |
|  | 1 | **Wet Finishes** |  | 2027-08-05 | 2027-11-15 |  |  |  |  |
| RB1-WMI-GF10 |  | Deshuttering | 4d | 2027-08-05 | 2027-08-09 | RB1-SS-1st.615 | CSD-LKO Calender (6 day + Holiday)-25 | Physical Progress [2100 h]; TATA Projects Ltd-25 |  |
| RB1-WMI-GF15 |  | Brickwork/Blockwork | 30d | 2027-08-10 | 2027-09-14 | RB1-WMI-GF10, E-GFC-AR-RB1-45 | CSD-LKO Calender (6 day + Holiday)-25 | Masonry [663 CuM]; Mason [4420 h]; Helper [2210 h]; Physical Progress [15730 h]; TATA Projects Ltd-25 | 6,321,943.68 |
| RB1-WMI-GF55 |  | Waterproofing of Toilets, Balcony & Kitchen | 15d | 2027-09-15 | 2027-10-01 | RB1-WMI-GF15 | CSD-LKO Calender (6 day + Holiday)-25 | Waterproofing [8564838 INR]; Waterprrofing Mason [8160 h]; Helper [4080 h]; Physical Progress [7850 h]; TATA Projects Ltd-25 | 8,564,838 |
| RB1-WMI-GF95 |  | Plaster | 15d | 2027-10-28 | 2027-11-15 | RB1-WMI-GF30, RB1-WMI-GF75, RB1-WMI-GF80, RB1-WMI-GF55 | CSD-LKO Calender (6 day + Holiday)-25 | Plaster [20238 Sqr Mtr]; Mason [13500 h]; Helper [6750 h]; Physical Progress [7850 h]; TATA Projects Ltd-25 | 11,210,030.58 |
|  | 5 | **MEP** |  | 2027-08-10 | 2029-01-06 |  |  |  |  |
|  | 2 | **HVAC** |  | 2027-09-15 | 2028-11-13 |  |  |  |  |
|  | 1 | **1st Fix** |  | 2027-09-15 | 2028-01-08 |  |  |  |  |
| RB1-WMI-GF50 |  | Duct Support Fabrication | 35d | 2027-09-15 | 2027-10-27 | RB1-WMI-GF15, E-GFC-MEP-RB1-160 | CSD-LKO Calender (6 day + Holiday)-25 | Physical Progress [7850 h]; HVAC [112794 INR]; TATA Projects Ltd-25 | 112,794 |
| RB1-WMI-GF100 |  | Installing duct hangers and supports | 30d | 2027-10-28 | 2027-12-02 | RB1-WMI-GF50, E-GFC-MEP-RB1-160 | CSD-LKO Calender (6 day + Holiday)-25 | Physical Progress [5240 h]; HVAC [225588 INR]; TATA Projects Ltd-25 | 225,588 |
| RB1-WMI-GF130 |  | Laying concealed/exposed refrigerant piping | 30d | 2027-12-03 | 2028-01-08 | RB1-WMI-GF100, E-GFC-MEP-RB1-160 | CSD-LKO Calender (6 day + Holiday)-25 | Physical Progress [7850 h]; HVAC [56397 INR]; TATA Projects Ltd-25 | 56,397 |
| RB1-WMI-GF135 |  | Laying concealed/exposed drain piping | 30d | 2027-12-03 | 2028-01-08 | RB1-WMI-GF100, E-GFC-MEP-RB1-160 | CSD-LKO Calender (6 day + Holiday)-25 | Physical Progress [5240 h]; HVAC [338383 INR]; TATA Projects Ltd-25 | 338,383 |

| ID | WBS | Activity | Duration | Start | Finish | Predecessors | Calendar | Resources | Cost |
| --- | --- | --- | --- | --- | --- | --- | --- | --- | --- |
|  | 2 | **2nd Fix** |  | 2027-12-03 | 2028-05-10 |  |  |  |  |
| RB1-WMI-GF140 |  | Duct installation | 35d | 2027-12-03 | 2028-01-14 | RB1-WMI-GF100 | CSD-LKO Calender (6 day + Holiday)-25 | Physical Progress [7850 h]; HVAC [845957 INR]; TATA Projects Ltd-25 | 845,957 |
| RB1-WMI-GF170 |  | Insulation of ducts (thermal/acoustic) | 10d | 2028-01-15 | 2028-01-27 | RB1-WMI-GF140 | CSD-LKO Calender (6 day + Holiday)-25 | Physical Progress [3150 h]; HVAC [507574 INR]; TATA Projects Ltd-25 | 507,574 |
| RB1-WMI-GF185 |  | Installation of chilled water piping / VRF piping | 20d | 2028-01-28 | 2028-02-19 | RB1-WMI-GF170 | CSD-LKO Calender (6 day + Holiday)-25 | Physical Progress [3150 h]; HVAC [1127942 INR]; TATA Projects Ltd-25 | 1,127,942 |
| RB1-WMI-GF220 |  | Installation of indoor units including AHU, FCU | 45d | 2028-02-21 | 2028-04-13 | RB1-WMI-GF185, RB1-WMI-GF130, RB1-WMI-GF135 | CSD-LKO Calender (6 day + Holiday)-25 | Physical Progress [23590 h]; HVAC [1015148 INR]; TATA Projects Ltd-25 | 1,015,148 |
| RB1-WMI-GF240 |  | Connecting refrigerant and drain piping to indoor units | 20d | 2028-04-15 | 2028-05-10 | RB1-WMI-GF220 | CSD-LKO Calender (6 day + Holiday)-25 | Physical Progress [3150 h]; HVAC [281986 INR]; TATA Projects Ltd-25 | 281,986 |
|  | 3 | **Final Fix** |  | 2028-09-01 | 2028-11-13 |  |  |  |  |
| RB1-WMI-GF260 |  | Installing grills, diffusers, dampers | 30d | 2028-09-01 | 2028-10-07 | RB1-WMI-GF255 | CSD-LKO Calender (6 day + Holiday)-25 | Physical Progress [3150 h]; HVAC [563971 INR]; TATA Projects Ltd-25 | 563,971 |
| RB1-WMI-GF285 |  | Installation of thermostats and control panels | 30d | 2028-10-09 | 2028-11-13 | RB1-WMI-GF260, RB1-WMI-GF275, RB1-WMI-GF240 | CSD-LKO Calender (6 day + Holiday)-25 | Physical Progress [3150 h]; HVAC [281986 INR]; TATA Projects Ltd-25 | 281,986 |
|  | 1 | **Electrical** |  | 2027-08-10 | 2028-12-18 |  |  |  |  |
|  | 1 | **1st Fix** |  | 2027-08-10 | 2027-10-27 |  |  |  |  |
| RB1-WMI-GF20 |  | Slab Conduiting | 35d | 2027-08-10 | 2027-09-20 | RB1-WMI-GF10, E-GFC-MEP-RB1-160 | CSD-LKO Calender (6 day + Holiday)-25 | Physical Progress [13100 h]; Electrical [572397 INR]; TATA Projects Ltd-25 | 572,397 |
| RB1-WMI-GF30 |  | Wall Conduiting | 30d | 2027-09-15 | 2027-10-21 | RB1-WMI-GF15, E-GFC-MEP-RB1-160 | CSD-LKO Calender (6 day + Holiday)-25 | Physical Progress [5240 h]; Electrical [286198 INR]; TATA Projects Ltd-25 | 286,198 |
| RB1-WMI-GF75 |  | Installing back boxes for switches, sockets | 5d | 2027-10-22 | 2027-10-27 | RB1-WMI-GF30, RB1-WMI-GF20, E-GFC-MEP-RB1-160 | CSD-LKO Calender (6 day + Holiday)-25 | Physical Progress [2620 h]; Electrical [171719 INR]; TATA Projects Ltd-25 | 171,719 |
|  | 2 | **2nd Fix** |  | 2027-11-16 | 2028-05-10 |  |  |  |  |
| RB1-WMI-GF115 |  | Cable tray laying | 25d | 2027-11-16 | 2027-12-14 | RB1-WMI-GF95 | CSD-LKO Calender (6 day + Holiday)-25 | Physical Progress [13100 h]; Electrical [228959 INR]; TATA Projects Ltd-25 | 228,959 |
| RB1-WMI-GF155 |  | Cabling & Wire Pulling | 45d | 2027-12-15 | 2028-02-08 | RB1-WMI-GF115 | CSD-LKO Calender (6 day + Holiday)-25 | Physical Progress [23590 h]; Electrical [1144794 INR]; TATA Projects Ltd-25 | 1,144,794 |
| RB1-WMI-GF205 |  | DB fixing and connecting | 35d | 2028-02-09 | 2028-03-21 | RB1-WMI-GF155 | CSD-LKO Calender (6 day + Holiday)-25 | Physical Progress [7850 h]; Electrical [171719 INR]; TATA Projects Ltd-25 | 171,719 |
| RB1-WMI-GF210 |  | Floor Rising Main Installation | 20d | 2028-02-09 | 2028-03-02 | RB1-WMI-GF155 | CSD-LKO Calender (6 day + Holiday)-25 | Physical Progress [2620 h]; Electrical [801356 INR]; TATA Projects Ltd-25 | 801,356 |
| RB1-WMI-GF225 |  | Floor/Distribution Panel Installation | 20d | 2028-03-22 | 2028-04-13 | RB1-WMI-GF205 | CSD-LKO Calender (6 day + Holiday)-25 | Physical Progress [2620 h]; Electrical [457918 INR]; TATA Projects Ltd-25 | 457,918 |
| RB1-WMI-GF235 |  | Equipment Earthing | 20d | 2028-04-15 | 2028-05-10 | RB1-WMI-GF225, RB1-WMI-GF210 | CSD-LKO Calender (6 day + Holiday)-25 | Physical Progress [5240 h]; Electrical [171719 INR]; TATA Projects Ltd-25 | 171,719 |
|  | 3 | **Final Fix** |  | 2028-10-09 | 2028-12-18 |  |  |  |  |
| RB1-WMI-GF280 |  | Switches & Socket | 30d | 2028-10-09 | 2028-11-13 | RB1-WMI-GF275 | CSD-LKO Calender (6 day + Holiday)-25 | Physical Progress [10490 h]; Electrical [572397 INR]; TATA Projects Ltd-25 | 572,397 |
| RB1-WMI-GF325 |  | Light Fixtures | 30d | 2028-11-14 | 2028-12-18 | RB1-WMI-GF280, RB1-WMI-GF235 | CSD-LKO Calender (6 day + Holiday)-25 | Physical Progress [7850 h]; Electrical [858595 INR]; TATA Projects Ltd-25 | 858,595 |

| ID | WBS | Activity | Duration | Start | Finish | Predecessors | Calendar | Resources | Cost |
| --- | --- | --- | --- | --- | --- | --- | --- | --- | --- |
|  | 3 | **Plumbing** |  | 2027-09-15 | 2028-11-30 |  |  |  |  |
|  | 1 | **1st Fix** |  | 2027-09-15 | 2028-02-19 |  |  |  |  |
| RB1-WMI-GF35 |  | Fixing pipe supports and clamps | 35d | 2027-09-15 | 2027-10-27 | RB1-WMI-GF15, E-GFC-MEP-RB1-160 | CSD-LKO Calender (6 day + Holiday)-25 | Physical Progress [5240 h]; Plumbing [235925 INR]; TATA Projects Ltd-25 | 235,925 |
| RB1-WMI-GF60 |  | Laying water supply pipes (hot & cold) | 35d | 2027-10-28 | 2027-12-08 | RB1-WMI-GF35, E-GFC-MEP-RB1-160 | CSD-LKO Calender (6 day + Holiday)-25 | Physical Progress [7850 h]; Plumbing [471850 INR]; TATA Projects Ltd-25 | 471,850 |
| RB1-WMI-GF65 |  | Laying drainage pipes (soil, waste, vent) | 35d | 2027-10-28 | 2027-12-08 | RB1-WMI-GF35, E-GFC-MEP-RB1-160 | CSD-LKO Calender (6 day + Holiday)-25 | Physical Progress [7850 h]; Plumbing [471850 INR]; TATA Projects Ltd-25 | 471,850 |
| RB1-WMI-GF70 |  | Installation of plumbing fixture base supports (WC frames, sink brackets) | 30d | 2027-12-09 | 2028-01-14 | RB1-WMI-GF65, E-GFC-MEP-RB1-160 | CSD-LKO Calender (6 day + Holiday)-25 | Physical Progress [3150 h]; Plumbing [235925 INR]; TATA Projects Ltd-25 | 235,925 |
| RB1-WMI-GF85 |  | Pressure testing of water supply lines | 25d | 2028-01-15 | 2028-02-14 | RB1-WMI-GF60, RB1-WMI-GF65, RB1-WMI-GF70, E-GFC-MEP-RB1-160 | CSD-LKO Calender (6 day + Holiday)-25 | Physical Progress [3670 h]; Plumbing [47185 INR]; TATA Projects Ltd-25 | 47,185 |
| RB1-WMI-GF90 |  | Installation of concealed parts of toilet fixtures | 30d | 2028-01-15 | 2028-02-19 | RB1-WMI-GF70, E-GFC-MEP-RB1-160 | CSD-LKO Calender (6 day + Holiday)-25 | Physical Progress [5240 h]; Plumbing [235925 INR]; TATA Projects Ltd-25 | 235,925 |
|  | 2 | **2nd FIx** |  | 2028-02-15 | 2028-05-10 |  |  |  |  |
| RB1-WMI-GF110 |  | Insulation of hot water pipes (if applicable) | 30d | 2028-02-15 | 2028-03-21 | RB1-WMI-GF85 | CSD-LKO Calender (6 day + Holiday)-25 | Physical Progress [3150 h]; Plumbing [235925 INR]; TATA Projects Ltd-25 | 235,925 |
| RB1-WMI-GF120 |  | Installation of vertical risers and main distribution lines | 35d | 2028-02-21 | 2028-04-01 | RB1-WMI-GF95, RB1-WMI-GF85, RB1-WMI-GF90 | CSD-LKO Calender (6 day + Holiday)-25 | Physical Progress [10490 h]; Plumbing [471850 INR]; TATA Projects Ltd-25 | 471,850 |
| RB1-WMI-GF145 |  | Testing drainage lines for leakage/blockage | 30d | 2028-03-22 | 2028-04-26 | RB1-WMI-GF70, RB1-WMI-GF110 | CSD-LKO Calender (6 day + Holiday)-25 | Physical Progress [3150 h]; Plumbing [47185 INR]; TATA Projects Ltd-25 | 47,185 |
| RB1-WMI-GF160 |  | Fixing floor traps and gully traps | 30d | 2028-04-03 | 2028-05-10 | RB1-WMI-GF120 | CSD-LKO Calender (6 day + Holiday)-25 | Physical Progress [3150 h]; Plumbing [141555 INR]; TATA Projects Ltd-25 | 141,555 |
|  | 3 | **Final FIx** |  | 2028-10-09 | 2028-11-30 |  |  |  |  |
| RB1-WMI-GF290 |  | Installation of sanitary fixtures (WC, washbasins, urinals, sinks) | 10d | 2028-10-09 | 2028-10-20 | RB1-WMI-GF275, RB1-WMI-GF145, RB1-WMI-GF160 | CSD-LKO Calender (6 day + Holiday)-25 | Physical Progress [5240 h]; Plumbing [943701 INR]; TATA Projects Ltd-25 | 943,701 |
| RB1-WMI-GF315 |  | Installation of CP fittings (taps, mixers, showers, health faucets) | 10d | 2028-10-21 | 2028-11-01 | RB1-WMI-GF290, RB1-WMI-GF275 | CSD-LKO Calender (6 day + Holiday)-25 | Physical Progress [5240 h]; Plumbing [471850 INR]; TATA Projects Ltd-25 | 471,850 |
| RB1-WMI-GF320 |  | Connection of appliances | 25d | 2028-11-02 | 2028-11-30 | RB1-WMI-GF315 | CSD-LKO Calender (6 day + Holiday)-25 | Physical Progress [3670 h]; Plumbing [235925 INR]; TATA Projects Ltd-25 | 235,925 |
|  | 4 | **Firefighting** |  | 2027-09-15 | 2028-12-23 |  |  |  |  |
|  | 1 | **1st Fix** |  | 2027-09-15 | 2028-01-14 |  |  |  |  |
| RB1-WMI-GF40 |  | Fixing pipe supports and hangers | 35d | 2027-09-15 | 2027-10-27 | RB1-WMI-GF15, E-GFC-MEP-RB1-160 | CSD-LKO Calender (6 day + Holiday)-25 | Physical Progress [5240 h]; Firefighting [183807 INR]; TATA Projects Ltd-25 | 183,807 |
| RB1-WMI-GF105 |  | Laying branch piping | 35d | 2027-10-28 | 2027-12-08 | RB1-WMI-GF40, E-GFC-MEP-RB1-160 | CSD-LKO Calender (6 day + Holiday)-25 | Physical Progress [7850 h]; Firefighting [393871 INR]; TATA Projects Ltd-25 | 393,871 |
| RB1-WMI-GF150 |  | Hydrostatic pressure testing of piping | 30d | 2027-12-09 | 2028-01-14 | RB1-WMI-GF105, E-GFC-MEP-RB1-160 | CSD-LKO Calender (6 day + Holiday)-25 | Physical Progress [3150 h]; Firefighting [52516 INR]; TATA Projects Ltd-25 | 52,516 |
|  | 2 | **2nd Fix** |  | 2028-01-15 | 2028-04-07 |  |  |  |  |
| RB1-WMI-GF175 |  | Installation of vertical risers and distribution piping in shafts | 35d | 2028-01-15 | 2028-02-25 | RB1-WMI-GF95, RB1-WMI-GF150 | CSD-LKO Calender (6 day + Holiday)-25 | Physical Progress [13100 h]; Firefighting [525162 INR]; TATA Projects Ltd-25 | 525,162 |
| RB1-WMI-GF180 |  | Painting/insulation of exposed fire pipes | 30d | 2028-01-15 | 2028-02-19 | RB1-WMI-GF150 | CSD-LKO Calender (6 day + Holiday)-25 | Physical Progress [5240 h]; Firefighting [26258 INR]; TATA Projects Ltd-25 | 26,258 |
| RB1-WMI-GF190 |  | Testing risers and branch lines for leakage | 30d | 2028-02-21 | 2028-03-27 | RB1-WMI-GF180 | CSD-LKO Calender (6 day + Holiday)-25 | Physical Progress [3150 h]; Firefighting [52516 INR]; TATA Projects Ltd-25 | 52,516 |
| RB1-WMI-GF200 |  | Installation of sprinkler branch lines in ceilings | 35d | 2028-02-26 | 2028-04-07 | RB1-WMI-GF175 | CSD-LKO Calender (6 day + Holiday)-25 | Physical Progress [13100 h]; Firefighting [393871 INR]; TATA Projects Ltd-25 | 393,871 |

| ID | WBS | Activity | Duration | Start | Finish | Predecessors | Calendar | Resources | Cost |
| --- | --- | --- | --- | --- | --- | --- | --- | --- | --- |
|  | 3 | **Final FIx** |  | 2028-10-09 | 2028-12-23 |  |  |  |  |
| RB1-WMI-GF295 |  | Installation of hydrant accessories (valves, hose reels, cabinets) | 25d | 2028-10-09 | 2028-11-07 | RB1-WMI-GF275 | CSD-LKO Calender (6 day + Holiday)-25 | Physical Progress [5240 h]; Firefighting [262581 INR]; TATA Projects Ltd-25 | 262,581 |
| RB1-WMI-GF300 |  | Installation of portable fire extinguishers | 30d | 2028-10-09 | 2028-11-13 | RB1-WMI-GF275 | CSD-LKO Calender (6 day + Holiday)-25 | Physical Progress [3150 h]; Firefighting [26258 INR]; TATA Projects Ltd-25 | 26,258 |
| RB1-WMI-GF330 |  | Installation of sprinkler heads, nozzles, and final alignment | 35d | 2028-11-14 | 2028-12-23 | RB1-WMI-GF275, RB1-WMI-GF305, RB1-WMI-GF200 | CSD-LKO Calender (6 day + Holiday)-25 | Physical Progress [23590 h]; Firefighting [393871 INR]; TATA Projects Ltd-25 | 393,871 |
| RB1-WMI-GF335 |  | Integration with fire alarm system | 20d | 2028-11-14 | 2028-12-06 | RB1-WMI-GF300 | CSD-LKO Calender (6 day + Holiday)-25 | Physical Progress [10490 h]; Firefighting [131290 INR]; TATA Projects Ltd-25 | 131,290 |
|  | 5 | **ELV** |  | 2027-08-10 | 2029-01-06 |  |  |  |  |
|  | 1 | **1st Fix** |  | 2027-08-10 | 2027-10-27 |  |  |  |  |
| RB1-WMI-GF25 |  | Slab Conduiting | 35d | 2027-08-10 | 2027-09-20 | RB1-WMI-GF10, E-GFC-MEP-RB1-160 | CSD-LKO Calender (6 day + Holiday)-25 | Physical Progress [13100 h]; ELV [235507 INR]; TATA Projects Ltd-25 | 235,507 |
| RB1-WMI-GF45 |  | Wall Conduiting | 30d | 2027-09-15 | 2027-10-21 | RB1-WMI-GF15, E-GFC-MEP-RB1-160 | CSD-LKO Calender (6 day + Holiday)-25 | Physical Progress [5240 h]; ELV [100932 INR]; TATA Projects Ltd-25 | 100,932 |
| RB1-WMI-GF80 |  | Installing back boxes for switches, sockets | 5d | 2027-10-22 | 2027-10-27 | RB1-WMI-GF45, RB1-WMI-GF25, E-GFC-MEP-RB1-160 | CSD-LKO Calender (6 day + Holiday)-25 | Physical Progress [2620 h]; ELV [168219 INR]; TATA Projects Ltd-25 | 168,219 |
|  | 2 | **2nd Fix** |  | 2027-11-16 | 2028-06-08 |  |  |  |  |
| RB1-WMI-GF125 |  | Cable tray installation | 35d | 2027-11-16 | 2027-12-27 | RB1-WMI-GF95 | CSD-LKO Calender (6 day + Holiday)-25 | Physical Progress [13100 h]; ELV [168219 INR]; TATA Projects Ltd-25 | 168,219 |
| RB1-WMI-GF165 |  | Cabeling of ELV cable - IT/Fire Alarm/Public Address | 45d | 2027-12-28 | 2028-02-19 | RB1-WMI-GF125 | CSD-LKO Calender (6 day + Holiday)-25 | Physical Progress [23590 h]; ELV [403726 INR]; TATA Projects Ltd-25 | 403,726 |
| RB1-WMI-GF195 |  | ELV Rack Installation | 30d | 2028-02-21 | 2028-03-27 | RB1-WMI-GF165 | CSD-LKO Calender (6 day + Holiday)-25 | Physical Progress [5240 h]; ELV [168219 INR]; TATA Projects Ltd-25 | 168,219 |
| RB1-WMI-GF215 |  | Termination of cables at junction boxes, patch panels, and control panels | 35d | 2028-03-28 | 2028-05-10 | RB1-WMI-GF195 | CSD-LKO Calender (6 day + Holiday)-25 | Physical Progress [15730 h]; ELV [168219 INR]; TATA Projects Ltd-25 | 168,219 |
| RB1-WMI-GF230 |  | Fixing devices like CCTV camera bases, card reader bases, smoke detector bases, PA Bases, Wifi Bases | 25d | 2028-05-11 | 2028-06-08 | RB1-WMI-GF215 | CSD-LKO Calender (6 day + Holiday)-25 | Physical Progress [2100 h]; ELV [336438 INR]; TATA Projects Ltd-25 | 336,438 |
|  | 3 | **Final Fix** |  | 2028-11-14 | 2029-01-06 |  |  |  |  |
| RB1-WMI-GF340 |  | Installation of data and Voice Faceplate | 25d | 2028-11-14 | 2028-12-12 | RB1-WMI-GF275, RB1-WMI-GF305, RB1-WMI-GF230 | CSD-LKO Calender (6 day + Holiday)-25 | Physical Progress [7850 h]; ELV [168219 INR]; TATA Projects Ltd-25 | 168,219 |
| RB1-WMI-GF345 |  | Installation of Camera & Wifi | 30d | 2028-11-14 | 2028-12-18 | RB1-WMI-GF275, RB1-WMI-GF305 | CSD-LKO Calender (6 day + Holiday)-25 | Physical Progress [7850 h]; ELV [168219 INR]; TATA Projects Ltd-25 | 168,219 |
| RB1-WMI-GF350 |  | Installation of fire alarm devices + Public Address | 15d | 2028-11-14 | 2028-11-30 | RB1-WMI-GF275, RB1-WMI-GF305 | CSD-LKO Calender (6 day + Holiday)-25 | Physical Progress [7850 h]; ELV [201863 INR]; TATA Projects Ltd-25 | 201,863 |
| RB1-WMI-GF365 |  | Installation of Active System | 15d | 2028-12-01 | 2028-12-18 | RB1-WMI-GF350 | CSD-LKO Calender (6 day + Holiday)-25 | Physical Progress [7850 h]; ELV [336438 INR]; TATA Projects Ltd-25 | 336,438 |
| RB1-WMI-GF370 |  | Fire Panel Intallation & Integration | 25d | 2028-12-01 | 2028-12-30 | RB1-WMI-GF350 | CSD-LKO Calender (6 day + Holiday)-25 | Physical Progress [13100 h]; ELV [168219 INR]; TATA Projects Ltd-25 | 168,219 |
| RB1-WMI-GF375 |  | Installation & Integration of Audio Visual System | 25d | 2028-12-01 | 2028-12-30 | RB1-WMI-GF350 | CSD-LKO Calender (6 day + Holiday)-25 | Physical Progress [13100 h]; ELV [168219 INR]; TATA Projects Ltd-25 | 168,219 |
| RB1-WMI-GF380 |  | Installation & Integration of Access Control | 25d | 2028-12-01 | 2028-12-30 | RB1-WMI-GF350 | CSD-LKO Calender (6 day + Holiday)-25 | Physical Progress [13100 h]; ELV [168219 INR]; TATA Projects Ltd-25 | 168,219 |
| RB1-WMI-GF385 |  | Integration of Active components | 15d | 2028-12-19 | 2029-01-06 | RB1-WMI-GF365 | CSD-LKO Calender (6 day + Holiday)-25 | Physical Progress [7850 h]; ELV [67288 INR]; TATA Projects Ltd-25 | 67,288 |

| ID | WBS | Activity | Duration | Start | Finish | Predecessors | Calendar | Resources | Cost |
| --- | --- | --- | --- | --- | --- | --- | --- | --- | --- |
|  | 2 | **Dry Finishes/ID Works** |  | 2028-05-19 | 2029-02-12 |  |  |  |  |
| RB1-WMI-GF245 |  | Running of Wild Air | 1d | 2028-05-19 | 2028-05-19 | RB1-F-(GF-2nd)50, RB1-WMI-GF140, RB1-WMI-GF170, RB1-WMI-GF185, RB1-WMI-GF220, RB1-WMI-GF240 | CSD-LKO Calender (6 day + Holiday)-25 | Physical Progress [520 h]; TATA Projects Ltd-25 |  |
| RB1-WMI-GF250 |  | Wall finish ID Works | 35d | 2028-06-09 | 2028-07-19 | RB1-WMI-GF245, P-R&O_ID-Fur-20, P-R&O_ID-Wall-20, P-R&O_ID-Floor-20, P-R&O_ID-SF-20, P-R&O_ID-FC-20, P-R&O_ID-Doors-20, RB1-WMI-GF115, RB1-WMI-GF155, RB1-WMI-GF205, RB1-WMI-GF210, RB1-WMI-GF225, RB1-WMI-GF235, RB1-WMI-GF110, RB1-WMI-GF120, RB1-WMI-GF145, RB1-WMI-GF160, RB1-WMI-GF175, RB1-WMI-GF180, RB1-WMI-GF190, RB1-WMI-GF200, RB1-WMI-GF125, RB1-WMI-GF165, RB1-WMI-GF195, RB1-WMI-GF215, RB1-WMI-GF230 | CSD-LKO Calender (6 day + Holiday)-25 | ID Work [2955823 INR]; Physical Progress [15730 h]; TATA Projects Ltd-25 | 2,955,823 |
| RB1-WMI-GF255 |  | False Ceiling Installation | 35d | 2028-07-20 | 2028-08-31 | RB1-WMI-GF250 | CSD-LKO Calender (6 day + Holiday)-25 | ID Work [3941098 INR]; Physical Progress [23590 h]; TATA Projects Ltd-25 | 3,941,098 |
| RB1-WMI-GF265 |  | Flooring of toilets/kitchen/Balcony | 15d | 2028-09-01 | 2028-09-18 | RB1-WMI-GF55, RB1-WMI-GF255 | CSD-LKO Calender (6 day + Holiday)-25 | ID Work [1576439 INR]; Physical Progress [7850 h]; TATA Projects Ltd-25 | 1,576,439 |
| RB1-WMI-GF270 |  | Doors & Windows/Fire Doors/Shaft Doors | 35d | 2028-09-19 | 2028-11-01 | RB1-WMI-GF250, RB1-WMI-GF265 | CSD-LKO Calender (6 day + Holiday)-25 | ID Work [1970549 INR]; Physical Progress [7850 h]; TATA Projects Ltd-25 | 1,970,549 |
| RB1-WMI-GF275 |  | Putty & First Coat of Paint | 15d | 2028-09-19 | 2028-10-07 | RB1-WMI-GF250, RB1-WMI-GF265 | CSD-LKO Calender (6 day + Holiday)-25 | Painting [6207 Sq m]; Painter [6210 h]; Helper [6210 h]; Physical Progress [7850 h]; TATA Projects Ltd-25 | 1,419,044.34 |
| RB1-WMI-GF305 |  | Flooring | 30d | 2028-10-09 | 2028-11-13 | RB1-WMI-GF275 | CSD-LKO Calender (6 day + Holiday)-25 | ID Work [1970549 INR]; Physical Progress [15730 h]; TATA Projects Ltd-25 | 1,970,549 |
| RB1-WMI-GF310 |  | Railing for staircase | 35d | 2028-10-09 | 2028-11-18 | RB1-WMI-GF250, RB1-WMI-GF275 | CSD-LKO Calender (6 day + Holiday)-25 | ID Work [591165 INR]; Physical Progress [7850 h]; TATA Projects Ltd-25 | 591,165 |
| RB1-WMI-GF355 |  | Fixed Furniture | 10d | 2028-11-14 | 2028-11-24 | RB1-WMI-GF305 | CSD-LKO Calender (6 day + Holiday)-25 | ID Work [985274 INR]; Physical Progress [5240 h]; TATA Projects Ltd-25 | 985,274 |
| RB1-WMI-GF360 |  | False ceiling final finishes | 15d | 2028-11-14 | 2028-11-30 | RB1-WMI-GF285 | CSD-LKO Calender (6 day + Holiday)-25 | ID Work [394110 INR]; Physical Progress [7850 h]; TATA Projects Ltd-25 | 394,110 |
| RB1-WMI-GF390 |  | Final coat of paint | 15d | 2029-01-08 | 2029-01-24 | RB1-WMI-GF360, RB1-WMI-GF310, RB1-WMI-GF355, RB1-WMI-GF325, RB1-WMI-GF320, RB1-WMI-GF335, RB1-WMI-GF330, RB1-WMI-GF385, RB1-WMI-GF380, RB1-WMI-GF375, RB1-WMI-GF370, RB1-WMI-GF345, RB1-WMI-GF340, RB1-WMI-GF270 | CSD-LKO Calender (6 day + Holiday)-25 | Painting [6207 Sq m]; Painter [6210 h]; Helper [6210 h]; Physical Progress [7850 h]; TATA Projects Ltd-25 | 1,419,044.34 |
| RB1-WMI-GF395 |  | Soft Furnishing & Signage | 15d | 2029-01-25 | 2029-02-12 | RB1-WMI-GF390 | CSD-LKO Calender (6 day + Holiday)-25 | ID Work [3941098 INR]; Physical Progress [2620 h]; TATA Projects Ltd-25 | 3,941,098 |
| RB1-WMI-GF400 |  | Loose Furniture | 15d | 2029-01-25 | 2029-02-12 | RB1-WMI-GF390 | CSD-LKO Calender (6 day + Holiday)-25 | ID Work [1379384 INR]; Physical Progress [2620 h]; TATA Projects Ltd-25 | 1,379,384 |
|  | 2 | **First Floor** |  | 2027-09-24 | 2029-02-27 |  |  |  |  |
|  | 1 | **Wet Finishes** |  | 2027-09-24 | 2028-01-05 |  |  |  |  |
| RB1-WMI-1st10 |  | Deshuttering | 4d | 2027-09-24 | 2027-09-28 | RB1-SS-2nd.615 | CSD-LKO Calender (6 day + Holiday)-25 | Physical Progress [2100 h]; TATA Projects Ltd-25 |  |
| RB1-WMI-1st15 |  | Brickwork/Blockwork | 30d | 2027-09-29 | 2027-11-05 | RB1-WMI-1st10, E-GFC-AR-RB1-105 | CSD-LKO Calender (6 day + Holiday)-25 | Masonry [663 CuM]; Mason [4420 h]; Helper [2210 h]; Physical Progress [15730 h]; TATA Projects Ltd-25 | 6,321,943.68 |
| RB1-WMI-1st55 |  | Waterproofing of Toilets, Balcony & Kitchen | 15d | 2027-11-06 | 2027-11-23 | RB1-WMI-1st15 | CSD-LKO Calender (6 day + Holiday)-25 | Waterproofing [8564838 INR]; Waterprrofing Mason [8160 h]; Helper [4080 h]; Physical Progress [7850 h]; TATA Projects Ltd-25 | 8,564,838 |
| RB1-WMI-1st95 |  | Plaster | 15d | 2027-12-17 | 2028-01-05 | RB1-WMI-1st30, RB1-WMI-1st75, RB1-WMI-1st80, RB1-WMI-1st55 | CSD-LKO Calender (6 day + Holiday)-25 | Plaster [20238 Sqr Mtr]; Mason [13500 h]; Helper [6750 h]; Physical Progress [7850 h]; TATA Projects Ltd-25 | 11,210,030.58 |
|  | 5 | **MEP** |  | 2027-09-29 | 2029-01-20 |  |  |  |  |
|  | 2 | **HVAC** |  | 2027-11-06 | 2028-11-27 |  |  |  |  |
|  | 1 | **1st Fix** |  | 2027-11-06 | 2028-02-28 |  |  |  |  |
| RB1-WMI-1st50 |  | Duct Support Fabrication | 35d | 2027-11-06 | 2027-12-16 | RB1-WMI-1st15, E-GFC-MEP-RB1-165 | CSD-LKO Calender (6 day + Holiday)-25 | Physical Progress [7850 h]; HVAC [112794 INR]; TATA Projects Ltd-25 | 112,794 |
| RB1-WMI-1st100 |  | Installing duct hangers and supports | 30d | 2027-12-17 | 2028-01-22 | RB1-WMI-1st50, E-GFC-MEP-RB1-165 | CSD-LKO Calender (6 day + Holiday)-25 | Physical Progress [5240 h]; HVAC [225588 INR]; TATA Projects Ltd-25 | 225,588 |
| RB1-WMI-1st130 |  | Laying concealed/exposed refrigerant piping | 30d | 2028-01-24 | 2028-02-28 | RB1-WMI-1st100, E-GFC-MEP-RB1-165 | CSD-LKO Calender (6 day + Holiday)-25 | Physical Progress [7850 h]; HVAC [56397 INR]; TATA Projects Ltd-25 | 56,397 |
| RB1-WMI-1st135 |  | Laying concealed/exposed drain piping | 30d | 2028-01-24 | 2028-02-28 | RB1-WMI-1st100, E-GFC-MEP-RB1-165 | CSD-LKO Calender (6 day + Holiday)-25 | Physical Progress [5240 h]; HVAC [338383 INR]; TATA Projects Ltd-25 | 338,383 |

| ID | WBS | Activity | Duration | Start | Finish | Predecessors | Calendar | Resources | Cost |
| --- | --- | --- | --- | --- | --- | --- | --- | --- | --- |
|  | 2 | **2nd Fix** |  | 2028-01-24 | 2028-06-16 |  |  |  |  |
| RB1-WMI-1st140 |  | Duct installation | 35d | 2028-01-24 | 2028-03-04 | RB1-WMI-1st100 | CSD-LKO Calender (6 day + Holiday)-25 | Physical Progress [7850 h]; HVAC [845957 INR]; TATA Projects Ltd-25 | 845,957 |
| RB1-WMI-1st170 |  | Insulation of ducts (thermal/acoustic) | 10d | 2028-03-06 | 2028-03-17 | RB1-WMI-1st140 | CSD-LKO Calender (6 day + Holiday)-25 | Physical Progress [3150 h]; HVAC [507574 INR]; TATA Projects Ltd-25 | 507,574 |
| RB1-WMI-1st185 |  | Installation of chilled water piping / VRF piping | 20d | 2028-03-18 | 2028-04-10 | RB1-WMI-1st170 | CSD-LKO Calender (6 day + Holiday)-25 | Physical Progress [3150 h]; HVAC [1127942 INR]; TATA Projects Ltd-25 | 1,127,942 |
| RB1-WMI-1st220 |  | Installation of indoor units including AHU, FCU | 45d | 2028-04-11 | 2028-06-05 | RB1-WMI-1st185, RB1-WMI-1st130, RB1-WMI-1st135 | CSD-LKO Calender (6 day + Holiday)-25 | Physical Progress [23590 h]; HVAC [1015148 INR]; TATA Projects Ltd-25 | 1,015,148 |
| RB1-WMI-1st240 |  | Connecting refrigerant and drain piping to indoor units | 10d | 2028-06-06 | 2028-06-16 | RB1-WMI-1st220 | CSD-LKO Calender (6 day + Holiday)-25 | Physical Progress [3150 h]; HVAC [281986 INR]; TATA Projects Ltd-25 | 281,986 |
|  | 3 | **Final Fix** |  | 2028-09-15 | 2028-11-27 |  |  |  |  |
| RB1-WMI-1st260 |  | Installing grills, diffusers, dampers | 30d | 2028-09-15 | 2028-10-23 | RB1-WMI-1st255 | CSD-LKO Calender (6 day + Holiday)-25 | Physical Progress [3150 h]; HVAC [563971 INR]; TATA Projects Ltd-25 | 563,971 |
| RB1-WMI-1st285 |  | Installation of thermostats and control panels | 30d | 2028-10-24 | 2028-11-27 | RB1-WMI-1st260, RB1-WMI-1st275, RB1-WMI-1st240 | CSD-LKO Calender (6 day + Holiday)-25 | Physical Progress [3150 h]; HVAC [281986 INR]; TATA Projects Ltd-25 | 281,986 |
|  | 1 | **Electrical** |  | 2027-09-29 | 2029-01-03 |  |  |  |  |
|  | 1 | **1st Fix** |  | 2027-09-29 | 2027-12-16 |  |  |  |  |
| RB1-WMI-1st20 |  | Slab Conduiting | 35d | 2027-09-29 | 2027-11-11 | RB1-WMI-1st10, E-GFC-MEP-RB1-165 | CSD-LKO Calender (6 day + Holiday)-25 | Physical Progress [13100 h]; Electrical [572397 INR]; TATA Projects Ltd-25 | 572,397 |
| RB1-WMI-1st30 |  | Wall Conduiting | 30d | 2027-11-06 | 2027-12-10 | RB1-WMI-1st15, E-GFC-MEP-RB1-165 | CSD-LKO Calender (6 day + Holiday)-25 | Physical Progress [5240 h]; Electrical [286198 INR]; TATA Projects Ltd-25 | 286,198 |
| RB1-WMI-1st75 |  | Installing back boxes for switches, sockets | 5d | 2027-12-11 | 2027-12-16 | RB1-WMI-1st30, RB1-WMI-1st20, E-GFC-MEP-RB1-165 | CSD-LKO Calender (6 day + Holiday)-25 | Physical Progress [2620 h]; Electrical [171719 INR]; TATA Projects Ltd-25 | 171,719 |
|  | 2 | **2nd Fix** |  | 2028-01-06 | 2028-06-16 |  |  |  |  |
| RB1-WMI-1st115 |  | Cable tray laying | 25d | 2028-01-06 | 2028-02-04 | RB1-WMI-1st95 | CSD-LKO Calender (6 day + Holiday)-25 | Physical Progress [13100 h]; Electrical [228959 INR]; TATA Projects Ltd-25 | 228,959 |
| RB1-WMI-1st155 |  | Cabling & Wire Pulling | 45d | 2028-02-05 | 2028-03-29 | RB1-WMI-1st115 | CSD-LKO Calender (6 day + Holiday)-25 | Physical Progress [23590 h]; Electrical [1144794 INR]; TATA Projects Ltd-25 | 1,144,794 |
| RB1-WMI-1st205 |  | DB fixing and connecting | 35d | 2028-03-30 | 2028-05-12 | RB1-WMI-1st155 | CSD-LKO Calender (6 day + Holiday)-25 | Physical Progress [7850 h]; Electrical [171719 INR]; TATA Projects Ltd-25 | 171,719 |
| RB1-WMI-1st210 |  | Floor Rising Main Installation | 20d | 2028-03-30 | 2028-04-22 | RB1-WMI-1st155 | CSD-LKO Calender (6 day + Holiday)-25 | Physical Progress [2620 h]; Electrical [801356 INR]; TATA Projects Ltd-25 | 801,356 |
| RB1-WMI-1st225 |  | Floor/Distribution Panel Installation | 20d | 2028-05-13 | 2028-06-05 | RB1-WMI-1st205 | CSD-LKO Calender (6 day + Holiday)-25 | Physical Progress [2620 h]; Electrical [457918 INR]; TATA Projects Ltd-25 | 457,918 |
| RB1-WMI-1st235 |  | Equipment Earthing | 10d | 2028-06-06 | 2028-06-16 | RB1-WMI-1st225, RB1-WMI-1st210 | CSD-LKO Calender (6 day + Holiday)-25 | Physical Progress [5240 h]; Electrical [171719 INR]; TATA Projects Ltd-25 | 171,719 |
|  | 3 | **Final Fix** |  | 2028-10-24 | 2029-01-03 |  |  |  |  |
| RB1-WMI-1st280 |  | Switches & Socket | 30d | 2028-10-24 | 2028-11-27 | RB1-WMI-1st275 | CSD-LKO Calender (6 day + Holiday)-25 | Physical Progress [10490 h]; Electrical [572397 INR]; TATA Projects Ltd-25 | 572,397 |
| RB1-WMI-1st325 |  | Light Fixtures | 30d | 2028-11-28 | 2029-01-03 | RB1-WMI-1st280, RB1-WMI-1st235 | CSD-LKO Calender (6 day + Holiday)-25 | Physical Progress [7850 h]; Electrical [858595 INR]; TATA Projects Ltd-25 | 858,595 |

| ID | WBS | Activity | Duration | Start | Finish | Predecessors | Calendar | Resources | Cost |
| --- | --- | --- | --- | --- | --- | --- | --- | --- | --- |
|  | 3 | **Plumbing** |  | 2027-11-06 | 2028-12-14 |  |  |  |  |
|  | 1 | **1st Fix** |  | 2027-11-06 | 2028-04-10 |  |  |  |  |
| RB1-WMI-1st35 |  | Fixing pipe supports and clamps | 35d | 2027-11-06 | 2027-12-16 | RB1-WMI-1st15, E-GFC-MEP-RB1-165 | CSD-LKO Calender (6 day + Holiday)-25 | Physical Progress [5240 h]; Plumbing [235925 INR]; TATA Projects Ltd-25 | 235,925 |
| RB1-WMI-1st60 |  | Laying water supply pipes (hot & cold) | 35d | 2027-12-17 | 2028-01-29 | RB1-WMI-1st35, E-GFC-MEP-RB1-165 | CSD-LKO Calender (6 day + Holiday)-25 | Physical Progress [7850 h]; Plumbing [471850 INR]; TATA Projects Ltd-25 | 471,850 |
| RB1-WMI-1st65 |  | Laying drainage pipes (soil, waste, vent) | 35d | 2027-12-17 | 2028-01-29 | RB1-WMI-1st35, E-GFC-MEP-RB1-165 | CSD-LKO Calender (6 day + Holiday)-25 | Physical Progress [7850 h]; Plumbing [471850 INR]; TATA Projects Ltd-25 | 471,850 |
| RB1-WMI-1st70 |  | Installation of plumbing fixture base supports (WC frames, sink brackets) | 30d | 2028-01-31 | 2028-03-04 | RB1-WMI-1st65, E-GFC-MEP-RB1-165 | CSD-LKO Calender (6 day + Holiday)-25 | Physical Progress [3150 h]; Plumbing [235925 INR]; TATA Projects Ltd-25 | 235,925 |
| RB1-WMI-1st85 |  | Pressure testing of water supply lines | 25d | 2028-03-06 | 2028-04-04 | RB1-WMI-1st60, RB1-WMI-1st65, RB1-WMI-1st70, E-GFC-MEP-RB1-165 | CSD-LKO Calender (6 day + Holiday)-25 | Physical Progress [3670 h]; Plumbing [47185 INR]; TATA Projects Ltd-25 | 47,185 |
| RB1-WMI-1st90 |  | Installation of concealed parts of toilet fixtures | 30d | 2028-03-06 | 2028-04-10 | RB1-WMI-1st70, E-GFC-MEP-RB1-165 | CSD-LKO Calender (6 day + Holiday)-25 | Physical Progress [5240 h]; Plumbing [235925 INR]; TATA Projects Ltd-25 | 235,925 |
|  | 2 | **2nd FIx** |  | 2028-04-05 | 2028-06-16 |  |  |  |  |
| RB1-WMI-1st110 |  | Insulation of hot water pipes (if applicable) | 30d | 2028-04-05 | 2028-05-12 | RB1-WMI-1st85 | CSD-LKO Calender (6 day + Holiday)-25 | Physical Progress [3150 h]; Plumbing [235925 INR]; TATA Projects Ltd-25 | 235,925 |
| RB1-WMI-1st120 |  | Installation of vertical risers and main distribution lines | 35d | 2028-04-11 | 2028-05-24 | RB1-WMI-1st95, RB1-WMI-1st85, RB1-WMI-1st90 | CSD-LKO Calender (6 day + Holiday)-25 | Physical Progress [10490 h]; Plumbing [471850 INR]; TATA Projects Ltd-25 | 471,850 |
| RB1-WMI-1st145 |  | Testing drainage lines for leakage/blockage | 30d | 2028-05-13 | 2028-06-16 | RB1-WMI-1st70, RB1-WMI-1st110 | CSD-LKO Calender (6 day + Holiday)-25 | Physical Progress [3150 h]; Plumbing [47185 INR]; TATA Projects Ltd-25 | 47,185 |
| RB1-WMI-1st160 |  | Fixing floor traps and gully traps | 10d | 2028-05-25 | 2028-06-05 | RB1-WMI-1st120 | CSD-LKO Calender (6 day + Holiday)-25 | Physical Progress [3150 h]; Plumbing [141555 INR]; TATA Projects Ltd-25 | 141,555 |
|  | 3 | **Final FIx** |  | 2028-10-24 | 2028-12-14 |  |  |  |  |
| RB1-WMI-1st290 |  | Installation of sanitary fixtures (WC, washbasins, urinals, sinks) | 10d | 2028-10-24 | 2028-11-03 | RB1-WMI-1st275, RB1-WMI-1st145, RB1-WMI-1st160 | CSD-LKO Calender (6 day + Holiday)-25 | Physical Progress [5240 h]; Plumbing [943701 INR]; TATA Projects Ltd-25 | 943,701 |
| RB1-WMI-1st315 |  | Installation of CP fittings (taps, mixers, showers, health faucets) | 10d | 2028-11-04 | 2028-11-15 | RB1-WMI-1st290, RB1-WMI-1st275 | CSD-LKO Calender (6 day + Holiday)-25 | Physical Progress [5240 h]; Plumbing [471850 INR]; TATA Projects Ltd-25 | 471,850 |
| RB1-WMI-1st320 |  | Connection of appliances | 25d | 2028-11-16 | 2028-12-14 | RB1-WMI-1st315 | CSD-LKO Calender (6 day + Holiday)-25 | Physical Progress [3670 h]; Plumbing [235925 INR]; TATA Projects Ltd-25 | 235,925 |
|  | 4 | **Firefighting** |  | 2027-11-06 | 2029-01-09 |  |  |  |  |
|  | 1 | **1st Fix** |  | 2027-11-06 | 2028-03-04 |  |  |  |  |
| RB1-WMI-1st40 |  | Fixing pipe supports and hangers | 35d | 2027-11-06 | 2027-12-16 | RB1-WMI-1st15, E-GFC-MEP-RB1-165 | CSD-LKO Calender (6 day + Holiday)-25 | Physical Progress [5240 h]; Firefighting [183807 INR]; TATA Projects Ltd-25 | 183,807 |
| RB1-WMI-1st105 |  | Laying branch piping | 35d | 2027-12-17 | 2028-01-29 | RB1-WMI-1st40, E-GFC-MEP-RB1-165 | CSD-LKO Calender (6 day + Holiday)-25 | Physical Progress [7850 h]; Firefighting [393871 INR]; TATA Projects Ltd-25 | 393,871 |
| RB1-WMI-1st150 |  | Hydrostatic pressure testing of piping | 30d | 2028-01-31 | 2028-03-04 | RB1-WMI-1st105, E-GFC-MEP-RB1-165 | CSD-LKO Calender (6 day + Holiday)-25 | Physical Progress [3150 h]; Firefighting [52516 INR]; TATA Projects Ltd-25 | 52,516 |
|  | 2 | **2nd Fix** |  | 2028-03-06 | 2028-05-30 |  |  |  |  |
| RB1-WMI-1st175 |  | Installation of vertical risers and distribution piping in shafts | 35d | 2028-03-06 | 2028-04-17 | RB1-WMI-1st95, RB1-WMI-1st150 | CSD-LKO Calender (6 day + Holiday)-25 | Physical Progress [13100 h]; Firefighting [525162 INR]; TATA Projects Ltd-25 | 525,162 |
| RB1-WMI-1st180 |  | Painting/insulation of exposed fire pipes | 30d | 2028-03-06 | 2028-04-10 | RB1-WMI-1st150 | CSD-LKO Calender (6 day + Holiday)-25 | Physical Progress [5240 h]; Firefighting [26258 INR]; TATA Projects Ltd-25 | 26,258 |
| RB1-WMI-1st190 |  | Testing risers and branch lines for leakage | 30d | 2028-04-11 | 2028-05-18 | RB1-WMI-1st180 | CSD-LKO Calender (6 day + Holiday)-25 | Physical Progress [3150 h]; Firefighting [52516 INR]; TATA Projects Ltd-25 | 52,516 |
| RB1-WMI-1st200 |  | Installation of sprinkler branch lines in ceilings | 35d | 2028-04-18 | 2028-05-30 | RB1-WMI-1st175 | CSD-LKO Calender (6 day + Holiday)-25 | Physical Progress [13100 h]; Firefighting [393871 INR]; TATA Projects Ltd-25 | 393,871 |

| ID | WBS | Activity | Duration | Start | Finish | Predecessors | Calendar | Resources | Cost |
| --- | --- | --- | --- | --- | --- | --- | --- | --- | --- |
|  | 3 | **Final FIx** |  | 2028-10-24 | 2029-01-09 |  |  |  |  |
| RB1-WMI-1st295 |  | Installation of hydrant accessories (valves, hose reels, cabinets) | 25d | 2028-10-24 | 2028-11-21 | RB1-WMI-1st275 | CSD-LKO Calender (6 day + Holiday)-25 | Physical Progress [5240 h]; Firefighting [262581 INR]; TATA Projects Ltd-25 | 262,581 |
| RB1-WMI-1st300 |  | Installation of portable fire extinguishers | 30d | 2028-10-24 | 2028-11-27 | RB1-WMI-1st275 | CSD-LKO Calender (6 day + Holiday)-25 | Physical Progress [3150 h]; Firefighting [26258 INR]; TATA Projects Ltd-25 | 26,258 |
| RB1-WMI-1st330 |  | Installation of sprinkler heads, nozzles, and final alignment | 35d | 2028-11-28 | 2029-01-09 | RB1-WMI-1st275, RB1-WMI-1st305, RB1-WMI-1st200 | CSD-LKO Calender (6 day + Holiday)-25 | Physical Progress [23590 h]; Firefighting [393871 INR]; TATA Projects Ltd-25 | 393,871 |
| RB1-WMI-1st335 |  | Integration with fire alarm system | 20d | 2028-11-28 | 2028-12-20 | RB1-WMI-1st300 | CSD-LKO Calender (6 day + Holiday)-25 | Physical Progress [10490 h]; Firefighting [131290 INR]; TATA Projects Ltd-25 | 131,290 |
|  | 5 | **ELV** |  | 2027-09-29 | 2029-01-20 |  |  |  |  |
|  | 1 | **1st Fix** |  | 2027-09-29 | 2027-12-16 |  |  |  |  |
| RB1-WMI-1st25 |  | Slab Conduiting | 35d | 2027-09-29 | 2027-11-11 | RB1-WMI-1st10, E-GFC-MEP-RB1-165 | CSD-LKO Calender (6 day + Holiday)-25 | Physical Progress [13100 h]; ELV [235507 INR]; TATA Projects Ltd-25 | 235,507 |
| RB1-WMI-1st45 |  | Wall Conduiting | 30d | 2027-11-06 | 2027-12-10 | RB1-WMI-1st15, E-GFC-MEP-RB1-165 | CSD-LKO Calender (6 day + Holiday)-25 | Physical Progress [5240 h]; ELV [100932 INR]; TATA Projects Ltd-25 | 100,932 |
| RB1-WMI-1st80 |  | Installing back boxes for switches, sockets | 5d | 2027-12-11 | 2027-12-16 | RB1-WMI-1st45, RB1-WMI-1st25, E-GFC-MEP-RB1-165 | CSD-LKO Calender (6 day + Holiday)-25 | Physical Progress [2620 h]; ELV [168219 INR]; TATA Projects Ltd-25 | 168,219 |
|  | 2 | **2nd Fix** |  | 2028-01-06 | 2028-06-22 |  |  |  |  |
| RB1-WMI-1st125 |  | Cable tray installation | 35d | 2028-01-06 | 2028-02-16 | RB1-WMI-1st95 | CSD-LKO Calender (6 day + Holiday)-25 | Physical Progress [13100 h]; ELV [168219 INR]; TATA Projects Ltd-25 | 168,219 |
| RB1-WMI-1st165 |  | Cabeling of ELV cable - IT/Fire Alarm/Public Address | 45d | 2028-02-17 | 2028-04-10 | RB1-WMI-1st125 | CSD-LKO Calender (6 day + Holiday)-25 | Physical Progress [23590 h]; ELV [403726 INR]; TATA Projects Ltd-25 | 403,726 |
| RB1-WMI-1st195 |  | ELV Rack Installation | 20d | 2028-04-11 | 2028-05-06 | RB1-WMI-1st165 | CSD-LKO Calender (6 day + Holiday)-25 | Physical Progress [5240 h]; ELV [168219 INR]; TATA Projects Ltd-25 | 168,219 |
| RB1-WMI-1st215 |  | Termination of cables at junction boxes, patch panels, and control panels | 15d | 2028-05-08 | 2028-05-24 | RB1-WMI-1st195 | CSD-LKO Calender (6 day + Holiday)-25 | Physical Progress [15730 h]; ELV [168219 INR]; TATA Projects Ltd-25 | 168,219 |
| RB1-WMI-1st230 |  | Fixing devices like CCTV camera bases, card reader bases, smoke detector bases, PA Bases, Wifi Bases | 25d | 2028-05-25 | 2028-06-22 | RB1-WMI-1st215 | CSD-LKO Calender (6 day + Holiday)-25 | Physical Progress [2100 h]; ELV [336438 INR]; TATA Projects Ltd-25 | 336,438 |
|  | 3 | **FInal Fix** |  | 2028-11-28 | 2029-01-20 |  |  |  |  |
| RB1-WMI-1st340 |  | Installation of data and Voice Faceplate | 25d | 2028-11-28 | 2028-12-27 | RB1-WMI-1st275, RB1-WMI-1st305, RB1-WMI-1st230 | CSD-LKO Calender (6 day + Holiday)-25 | Physical Progress [7850 h]; ELV [168219 INR]; TATA Projects Ltd-25 | 168,219 |
| RB1-WMI-1st345 |  | Installation of Camera & Wifi | 30d | 2028-11-28 | 2029-01-03 | RB1-WMI-1st275, RB1-WMI-1st305 | CSD-LKO Calender (6 day + Holiday)-25 | Physical Progress [7850 h]; ELV [168219 INR]; TATA Projects Ltd-25 | 168,219 |
| RB1-WMI-1st350 |  | Installation of fire alarm devices + Public Address | 15d | 2028-11-28 | 2028-12-14 | RB1-WMI-1st275, RB1-WMI-1st305 | CSD-LKO Calender (6 day + Holiday)-25 | Physical Progress [7850 h]; ELV [201863 INR]; TATA Projects Ltd-25 | 201,863 |
| RB1-WMI-1st365 |  | Installation of Active System | 15d | 2028-12-15 | 2029-01-03 | RB1-WMI-1st350 | CSD-LKO Calender (6 day + Holiday)-25 | Physical Progress [7850 h]; ELV [336438 INR]; TATA Projects Ltd-25 | 336,438 |
| RB1-WMI-1st370 |  | Fire Panel Intallation & Integration | 25d | 2028-12-15 | 2029-01-15 | RB1-WMI-1st350 | CSD-LKO Calender (6 day + Holiday)-25 | Physical Progress [13100 h]; ELV [168219 INR]; TATA Projects Ltd-25 | 168,219 |
| RB1-WMI-1st375 |  | Installation & Integration of Audio Visual System | 25d | 2028-12-15 | 2029-01-15 | RB1-WMI-1st350 | CSD-LKO Calender (6 day + Holiday)-25 | Physical Progress [13100 h]; ELV [168219 INR]; TATA Projects Ltd-25 | 168,219 |
| RB1-WMI-1st380 |  | Installation & Integration of Access Control | 25d | 2028-12-15 | 2029-01-15 | RB1-WMI-1st350 | CSD-LKO Calender (6 day + Holiday)-25 | Physical Progress [13100 h]; ELV [168219 INR]; TATA Projects Ltd-25 | 168,219 |
| RB1-WMI-1st385 |  | Integration of Active components | 15d | 2029-01-04 | 2029-01-20 | RB1-WMI-1st365 | CSD-LKO Calender (6 day + Holiday)-25 | Physical Progress [7850 h]; ELV [67288 INR]; TATA Projects Ltd-25 | 67,288 |

| ID | WBS | Activity | Duration | Start | Finish | Predecessors | Calendar | Resources | Cost |
| --- | --- | --- | --- | --- | --- | --- | --- | --- | --- |
|  | 2 | **Dry Finishes/ID Works** |  | 2028-06-17 | 2029-02-27 |  |  |  |  |
| RB1-WMI-1st245 |  | Running of Wild Air | 1d | 2028-06-17 | 2028-06-17 | RB1-F-(GF-2nd)50, RB1-WMI-1st140, RB1-WMI-1st170, RB1-WMI-1st185, RB1-WMI-1st220, RB1-WMI-1st240 | CSD-LKO Calender (6 day + Holiday)-25 | Physical Progress [520 h]; TATA Projects Ltd-25 |  |
| RB1-WMI-1st250 |  | Wall finish ID Works | 35d | 2028-06-23 | 2028-08-02 | RB1-WMI-1st245, RB1-WMI-1st115, RB1-WMI-1st155, RB1-WMI-1st205, RB1-WMI-1st210, RB1-WMI-1st225, RB1-WMI-1st235, RB1-WMI-1st110, RB1-WMI-1st120, RB1-WMI-1st145, RB1-WMI-1st160, RB1-WMI-1st175, RB1-WMI-1st180, RB1-WMI-1st190, RB1-WMI-1st200, RB1-WMI-1st125, RB1-WMI-1st165, RB1-WMI-1st195, RB1-WMI-1st215, RB1-WMI-1st230 | CSD-LKO Calender (6 day + Holiday)-25 | ID Work [2955823 INR]; Physical Progress [15730 h]; TATA Projects Ltd-25 | 2,955,823 |
| RB1-WMI-1st255 |  | False Ceiling Installation | 35d | 2028-08-03 | 2028-09-14 | RB1-WMI-1st250 | CSD-LKO Calender (6 day + Holiday)-25 | ID Work [3941098 INR]; Physical Progress [23590 h]; TATA Projects Ltd-25 | 3,941,098 |
| RB1-WMI-1st265 |  | Flooring of toilets/kitchen/Balcony | 15d | 2028-09-15 | 2028-10-04 | RB1-WMI-1st55, RB1-WMI-1st255 | CSD-LKO Calender (6 day + Holiday)-25 | ID Work [1576439 INR]; Physical Progress [7850 h]; TATA Projects Ltd-25 | 1,576,439 |
| RB1-WMI-1st270 |  | Doors & Windows/Fire Doors/Shaft Doors | 35d | 2028-10-05 | 2028-11-15 | RB1-WMI-1st250, RB1-WMI-1st265 | CSD-LKO Calender (6 day + Holiday)-25 | ID Work [1970549 INR]; Physical Progress [7850 h]; TATA Projects Ltd-25 | 1,970,549 |
| RB1-WMI-1st275 |  | Putty & First Coat of Paint | 15d | 2028-10-05 | 2028-10-23 | RB1-WMI-1st250, RB1-WMI-1st265 | CSD-LKO Calender (6 day + Holiday)-25 | Painting [6207 Sq m]; Painter [6210 h]; Helper [6210 h]; Physical Progress [7850 h]; TATA Projects Ltd-25 | 1,419,044.34 |
| RB1-WMI-1st305 |  | Flooring | 30d | 2028-10-24 | 2028-11-27 | RB1-WMI-1st275 | CSD-LKO Calender (6 day + Holiday)-25 | ID Work [1970549 INR]; Physical Progress [15730 h]; TATA Projects Ltd-25 | 1,970,549 |
| RB1-WMI-1st310 |  | Railing for staircase | 35d | 2028-10-24 | 2028-12-02 | RB1-WMI-1st250, RB1-WMI-1st275 | CSD-LKO Calender (6 day + Holiday)-25 | ID Work [591165 INR]; Physical Progress [7850 h]; TATA Projects Ltd-25 | 591,165 |
| RB1-WMI-1st355 |  | Fixed Furniture | 10d | 2028-11-28 | 2028-12-08 | RB1-WMI-1st305 | CSD-LKO Calender (6 day + Holiday)-25 | ID Work [985274 INR]; Physical Progress [5240 h]; TATA Projects Ltd-25 | 985,274 |
| RB1-WMI-1st360 |  | False ceiling final finishes | 15d | 2028-11-28 | 2028-12-14 | RB1-WMI-1st285 | CSD-LKO Calender (6 day + Holiday)-25 | ID Work [394110 INR]; Physical Progress [7850 h]; TATA Projects Ltd-25 | 394,110 |
| RB1-WMI-1st390 |  | Final coat of paint | 15d | 2029-01-22 | 2029-02-08 | RB1-WMI-1st360, RB1-WMI-1st310, RB1-WMI-1st355, RB1-WMI-1st325, RB1-WMI-1st320, RB1-WMI-1st335, RB1-WMI-1st330, RB1-WMI-1st385, RB1-WMI-1st380, RB1-WMI-1st375, RB1-WMI-1st370, RB1-WMI-1st345, RB1-WMI-1st340, RB1-WMI-1st270 | CSD-LKO Calender (6 day + Holiday)-25 | Painting [6207 Sq m]; Painter [6210 h]; Helper [6210 h]; Physical Progress [7850 h]; TATA Projects Ltd-25 | 1,419,044.34 |
| RB1-WMI-1st395 |  | Soft Furnishing & Signage | 15d | 2029-02-09 | 2029-02-27 | RB1-WMI-1st390 | CSD-LKO Calender (6 day + Holiday)-25 | ID Work [3941098 INR]; Physical Progress [2620 h]; TATA Projects Ltd-25 | 3,941,098 |
| RB1-WMI-1st400 |  | Loose Furniture | 15d | 2029-02-09 | 2029-02-27 | RB1-WMI-1st390 | CSD-LKO Calender (6 day + Holiday)-25 | ID Work [1379384 INR]; Physical Progress [2620 h]; TATA Projects Ltd-25 | 1,379,384 |
|  | 4 | **Second Floor** |  | 2027-11-04 | 2029-03-10 |  |  |  |  |
|  | 1 | **Wet Finishes** |  | 2027-11-04 | 2028-02-12 |  |  |  |  |
| RB1-WMI-2nd10 |  | Deshuttering | 4d | 2027-11-04 | 2027-11-08 | RB1-SS-3rd.615 | CSD-LKO Calender (6 day + Holiday)-25 | Physical Progress [2100 h]; TATA Projects Ltd-25 |  |
| RB1-WMI-2nd15 |  | Brickwork/Blockwork | 30d | 2027-11-09 | 2027-12-13 | RB1-WMI-2nd10, E-GFC-AR-RB1-110 | CSD-LKO Calender (6 day + Holiday)-25 | Masonry [663 CuM]; Mason [4420 h]; Helper [2210 h]; Physical Progress [15730 h]; TATA Projects Ltd-25 | 6,321,943.68 |
| RB1-WMI-2nd55 |  | Waterproofing of Toilets, Balcony & Kitchen | 15d | 2027-12-14 | 2027-12-31 | RB1-WMI-2nd15 | CSD-LKO Calender (6 day + Holiday)-25 | Waterproofing [8564838 INR]; Waterprrofing Mason [8160 h]; Helper [4080 h]; Physical Progress [7850 h]; TATA Projects Ltd-25 | 8,564,838 |
| RB1-WMI-2nd95 |  | Plaster | 15d | 2028-01-27 | 2028-02-12 | RB1-WMI-2nd30, RB1-WMI-2nd75, RB1-WMI-2nd80, RB1-WMI-2nd55 | CSD-LKO Calender (6 day + Holiday)-25 | Plaster [20238 Sqr Mtr]; Mason [13500 h]; Helper [6750 h]; Physical Progress [7850 h]; TATA Projects Ltd-25 | 11,210,030.58 |
|  | 5 | **MEP 1st Fix, 2nd Fix** |  | 2027-11-09 | 2028-09-05 |  |  |  |  |
|  | 2 | **HVAC** |  | 2027-12-14 | 2028-08-04 |  |  |  |  |
|  | 1 | **1st Fix** |  | 2027-12-14 | 2028-04-06 |  |  |  |  |
| RB1-WMI-2nd50 |  | Duct Support Fabrication | 35d | 2027-12-14 | 2028-01-25 | RB1-WMI-2nd15, E-GFC-MEP-RB1-170 | CSD-LKO Calender (6 day + Holiday)-25 | Physical Progress [7850 h]; HVAC [112794 INR]; TATA Projects Ltd-25 | 112,794 |
| RB1-WMI-2nd100 |  | Installing duct hangers and supports | 30d | 2028-01-27 | 2028-03-01 | RB1-WMI-2nd50, E-GFC-MEP-RB1-170 | CSD-LKO Calender (6 day + Holiday)-25 | Physical Progress [5240 h]; HVAC [225588 INR]; TATA Projects Ltd-25 | 225,588 |
| RB1-WMI-2nd130 |  | Laying concealed/exposed refrigerant piping | 30d | 2028-03-02 | 2028-04-06 | RB1-WMI-2nd100, E-GFC-MEP-RB1-170 | CSD-LKO Calender (6 day + Holiday)-25 | Physical Progress [7850 h]; HVAC [56397 INR]; TATA Projects Ltd-25 | 56,397 |
| RB1-WMI-2nd135 |  | Laying concealed/exposed drain piping | 30d | 2028-03-02 | 2028-04-06 | RB1-WMI-2nd100, E-GFC-MEP-RB1-170 | CSD-LKO Calender (6 day + Holiday)-25 | Physical Progress [5240 h]; HVAC [338383 INR]; TATA Projects Ltd-25 | 338,383 |

| ID | WBS | Activity | Duration | Start | Finish | Predecessors | Calendar | Resources | Cost |
| --- | --- | --- | --- | --- | --- | --- | --- | --- | --- |
|  | 2 | **2nd Fix** |  | 2028-03-02 | 2028-08-04 |  |  |  |  |
| RB1-WMI-2nd140 |  | Duct installation | 35d | 2028-03-02 | 2028-04-12 | RB1-WMI-2nd100 | CSD-LKO Calender (6 day + Holiday)-25 | Physical Progress [7850 h]; HVAC [845957 INR]; TATA Projects Ltd-25 | 845,957 |
| RB1-WMI-2nd170 |  | Insulation of ducts (thermal/acoustic) | 10d | 2028-04-13 | 2028-04-25 | RB1-WMI-2nd140 | CSD-LKO Calender (6 day + Holiday)-25 | Physical Progress [3150 h]; HVAC [507574 INR]; TATA Projects Ltd-25 | 507,574 |
| RB1-WMI-2nd185 |  | Installation of chilled water piping / VRF piping | 20d | 2028-04-26 | 2028-05-20 | RB1-WMI-2nd170 | CSD-LKO Calender (6 day + Holiday)-25 | Physical Progress [3150 h]; HVAC [1127942 INR]; TATA Projects Ltd-25 | 1,127,942 |
| RB1-WMI-2nd220 |  | Installation of indoor units including AHU, FCU | 45d | 2028-05-22 | 2028-07-12 | RB1-WMI-2nd185, RB1-WMI-2nd130, RB1-WMI-2nd135 | CSD-LKO Calender (6 day + Holiday)-25 | Physical Progress [23590 h]; HVAC [1015148 INR]; TATA Projects Ltd-25 | 1,015,148 |
| RB1-WMI-2nd240 |  | Connecting refrigerant and drain piping to indoor units | 20d | 2028-07-13 | 2028-08-04 | RB1-WMI-2nd220 | CSD-LKO Calender (6 day + Holiday)-25 | Physical Progress [3150 h]; HVAC [281986 INR]; TATA Projects Ltd-25 | 281,986 |
|  | 1 | **Electrical** |  | 2027-11-09 | 2028-07-18 |  |  |  |  |
|  | 1 | **1st Fix** |  | 2027-11-09 | 2028-01-25 |  |  |  |  |
| RB1-WMI-2nd20 |  | Slab Conduiting | 35d | 2027-11-09 | 2027-12-18 | RB1-WMI-2nd10, E-GFC-MEP-RB1-170 | CSD-LKO Calender (6 day + Holiday)-25 | Physical Progress [13100 h]; Electrical [572397 INR]; TATA Projects Ltd-25 | 572,397 |
| RB1-WMI-2nd30 |  | Wall Conduiting | 30d | 2027-12-14 | 2028-01-19 | RB1-WMI-2nd15, E-GFC-MEP-RB1-170 | CSD-LKO Calender (6 day + Holiday)-25 | Physical Progress [5240 h]; Electrical [286198 INR]; TATA Projects Ltd-25 | 286,198 |
| RB1-WMI-2nd75 |  | Installing back boxes for switches, sockets | 5d | 2028-01-20 | 2028-01-25 | RB1-WMI-2nd30, RB1-WMI-2nd20, E-GFC-MEP-RB1-170 | CSD-LKO Calender (6 day + Holiday)-25 | Physical Progress [2620 h]; Electrical [171719 INR]; TATA Projects Ltd-25 | 171,719 |
|  | 2 | **2nd Fix** |  | 2028-02-14 | 2028-07-18 |  |  |  |  |
| RB1-WMI-2nd115 |  | Cable tray laying | 25d | 2028-02-14 | 2028-03-14 | RB1-WMI-2nd95 | CSD-LKO Calender (6 day + Holiday)-25 | Physical Progress [13100 h]; Electrical [228959 INR]; TATA Projects Ltd-25 | 228,959 |
| RB1-WMI-2nd155 |  | Cabling & Wire Pulling | 45d | 2028-03-15 | 2028-05-09 | RB1-WMI-2nd115 | CSD-LKO Calender (6 day + Holiday)-25 | Physical Progress [23590 h]; Electrical [1144794 INR]; TATA Projects Ltd-25 | 1,144,794 |
| RB1-WMI-2nd205 |  | DB fixing and connecting | 20d | 2028-05-10 | 2028-06-01 | RB1-WMI-2nd155 | CSD-LKO Calender (6 day + Holiday)-25 | Physical Progress [7850 h]; Electrical [171719 INR]; TATA Projects Ltd-25 | 171,719 |
| RB1-WMI-2nd210 |  | Floor Rising Main Installation | 20d | 2028-05-10 | 2028-06-01 | RB1-WMI-2nd155 | CSD-LKO Calender (6 day + Holiday)-25 | Physical Progress [2620 h]; Electrical [801356 INR]; TATA Projects Ltd-25 | 801,356 |
| RB1-WMI-2nd225 |  | Floor/Distribution Panel Installation | 20d | 2028-06-02 | 2028-06-24 | RB1-WMI-2nd205 | CSD-LKO Calender (6 day + Holiday)-25 | Physical Progress [2620 h]; Electrical [457918 INR]; TATA Projects Ltd-25 | 457,918 |
| RB1-WMI-2nd235 |  | Equipment Earthing | 20d | 2028-06-26 | 2028-07-18 | RB1-WMI-2nd225, RB1-WMI-2nd210 | CSD-LKO Calender (6 day + Holiday)-25 | Physical Progress [5240 h]; Electrical [171719 INR]; TATA Projects Ltd-25 | 171,719 |
|  | 3 | **Plumbing** |  | 2027-12-14 | 2028-08-04 |  |  |  |  |
|  | 1 | **1st Fix** |  | 2027-12-14 | 2028-05-20 |  |  |  |  |
| RB1-WMI-2nd35 |  | Fixing pipe supports and clamps | 35d | 2027-12-14 | 2028-01-25 | RB1-WMI-2nd15, E-GFC-MEP-RB1-170 | CSD-LKO Calender (6 day + Holiday)-25 | Physical Progress [5240 h]; Plumbing [235925 INR]; TATA Projects Ltd-25 | 235,925 |
| RB1-WMI-2nd60 |  | Laying water supply pipes (hot & cold) | 35d | 2028-01-27 | 2028-03-07 | RB1-WMI-2nd35, E-GFC-MEP-RB1-170 | CSD-LKO Calender (6 day + Holiday)-25 | Physical Progress [7850 h]; Plumbing [471850 INR]; TATA Projects Ltd-25 | 471,850 |
| RB1-WMI-2nd65 |  | Laying drainage pipes (soil, waste, vent) | 35d | 2028-01-27 | 2028-03-07 | RB1-WMI-2nd35, E-GFC-MEP-RB1-170 | CSD-LKO Calender (6 day + Holiday)-25 | Physical Progress [7850 h]; Plumbing [471850 INR]; TATA Projects Ltd-25 | 471,850 |
| RB1-WMI-2nd70 |  | Installation of plumbing fixture base supports (WC frames, sink brackets) | 30d | 2028-03-08 | 2028-04-12 | RB1-WMI-2nd65, E-GFC-MEP-RB1-170 | CSD-LKO Calender (6 day + Holiday)-25 | Physical Progress [3150 h]; Plumbing [235925 INR]; TATA Projects Ltd-25 | 235,925 |
| RB1-WMI-2nd85 |  | Pressure testing of water supply lines | 25d | 2028-04-13 | 2028-05-15 | RB1-WMI-2nd60, RB1-WMI-2nd65, RB1-WMI-2nd70, E-GFC-MEP-RB1-170 | CSD-LKO Calender (6 day + Holiday)-25 | Physical Progress [3670 h]; Plumbing [47185 INR]; TATA Projects Ltd-25 | 47,185 |
| RB1-WMI-2nd90 |  | Installation of concealed parts of toilet fixtures | 30d | 2028-04-13 | 2028-05-20 | RB1-WMI-2nd70, E-GFC-MEP-RB1-170 | CSD-LKO Calender (6 day + Holiday)-25 | Physical Progress [5240 h]; Plumbing [235925 INR]; TATA Projects Ltd-25 | 235,925 |

| ID | WBS | Activity | Duration | Start | Finish | Predecessors | Calendar | Resources | Cost |
| --- | --- | --- | --- | --- | --- | --- | --- | --- | --- |
|  | 2 | **2nd FIx** |  | 2028-05-16 | 2028-08-04 |  |  |  |  |
| RB1-WMI-2nd110 |  | Insulation of hot water pipes (if applicable) | 30d | 2028-05-16 | 2028-06-19 | RB1-WMI-2nd85 | CSD-LKO Calender (6 day + Holiday)-25 | Physical Progress [3150 h]; Plumbing [235925 INR]; TATA Projects Ltd-25 | 235,925 |
| RB1-WMI-2nd120 |  | Installation of vertical risers and main distribution lines | 35d | 2028-05-22 | 2028-06-30 | RB1-WMI-2nd95, RB1-WMI-2nd85, RB1-WMI-2nd90 | CSD-LKO Calender (6 day + Holiday)-25 | Physical Progress [10490 h]; Plumbing [471850 INR]; TATA Projects Ltd-25 | 471,850 |
| RB1-WMI-2nd145 |  | Testing drainage lines for leakage/blockage | 30d | 2028-06-20 | 2028-07-24 | RB1-WMI-2nd70, RB1-WMI-2nd110 | CSD-LKO Calender (6 day + Holiday)-25 | Physical Progress [3150 h]; Plumbing [47185 INR]; TATA Projects Ltd-25 | 47,185 |
| RB1-WMI-2nd160 |  | Fixing floor traps and gully traps | 30d | 2028-07-01 | 2028-08-04 | RB1-WMI-2nd120 | CSD-LKO Calender (6 day + Holiday)-25 | Physical Progress [3150 h]; Plumbing [141555 INR]; TATA Projects Ltd-25 | 141,555 |
|  | 4 | **Firefighting** |  | 2027-12-14 | 2028-07-06 |  |  |  |  |
|  | 1 | **1st Fix** |  | 2027-12-14 | 2028-04-12 |  |  |  |  |
| RB1-WMI-2nd40 |  | Fixing pipe supports and hangers | 35d | 2027-12-14 | 2028-01-25 | RB1-WMI-2nd15, E-GFC-MEP-RB1-170 | CSD-LKO Calender (6 day + Holiday)-25 | Physical Progress [5240 h]; Firefighting [183807 INR]; TATA Projects Ltd-25 | 183,807 |
| RB1-WMI-2nd105 |  | Laying branch piping | 35d | 2028-01-27 | 2028-03-07 | RB1-WMI-2nd40, E-GFC-MEP-RB1-170 | CSD-LKO Calender (6 day + Holiday)-25 | Physical Progress [7850 h]; Firefighting [393871 INR]; TATA Projects Ltd-25 | 393,871 |
| RB1-WMI-2nd150 |  | Hydrostatic pressure testing of piping | 30d | 2028-03-08 | 2028-04-12 | RB1-WMI-2nd105, E-GFC-MEP-RB1-170 | CSD-LKO Calender (6 day + Holiday)-25 | Physical Progress [3150 h]; Firefighting [52516 INR]; TATA Projects Ltd-25 | 52,516 |
|  | 2 | **2nd Fix** |  | 2028-04-13 | 2028-07-06 |  |  |  |  |
| RB1-WMI-2nd175 |  | Installation of vertical risers and distribution piping in shafts | 35d | 2028-04-13 | 2028-05-26 | RB1-WMI-2nd95, RB1-WMI-2nd150 | CSD-LKO Calender (6 day + Holiday)-25 | Physical Progress [13100 h]; Firefighting [525162 INR]; TATA Projects Ltd-25 | 525,162 |
| RB1-WMI-2nd180 |  | Painting/insulation of exposed fire pipes | 30d | 2028-04-13 | 2028-05-20 | RB1-WMI-2nd150 | CSD-LKO Calender (6 day + Holiday)-25 | Physical Progress [5240 h]; Firefighting [26258 INR]; TATA Projects Ltd-25 | 26,258 |
| RB1-WMI-2nd190 |  | Testing risers and branch lines for leakage | 30d | 2028-05-22 | 2028-06-24 | RB1-WMI-2nd180 | CSD-LKO Calender (6 day + Holiday)-25 | Physical Progress [3150 h]; Firefighting [52516 INR]; TATA Projects Ltd-25 | 52,516 |
| RB1-WMI-2nd200 |  | Installation of sprinkler branch lines in ceilings | 35d | 2028-05-27 | 2028-07-06 | RB1-WMI-2nd175 | CSD-LKO Calender (6 day + Holiday)-25 | Physical Progress [13100 h]; Firefighting [393871 INR]; TATA Projects Ltd-25 | 393,871 |
|  | 5 | **ELV** |  | 2027-11-09 | 2028-09-05 |  |  |  |  |
|  | 1 | **1st Fix** |  | 2027-11-09 | 2028-01-25 |  |  |  |  |
| RB1-WMI-2nd25 |  | Slab Conduiting | 35d | 2027-11-09 | 2027-12-18 | RB1-WMI-2nd10, E-GFC-MEP-RB1-170 | CSD-LKO Calender (6 day + Holiday)-25 | Physical Progress [13100 h]; ELV [235507 INR]; TATA Projects Ltd-25 | 235,507 |
| RB1-WMI-2nd45 |  | Wall Conduiting | 30d | 2027-12-14 | 2028-01-19 | RB1-WMI-2nd15, E-GFC-MEP-RB1-170 | CSD-LKO Calender (6 day + Holiday)-25 | Physical Progress [5240 h]; ELV [100932 INR]; TATA Projects Ltd-25 | 100,932 |
| RB1-WMI-2nd80 |  | Installing back boxes for switches, sockets | 5d | 2028-01-20 | 2028-01-25 | RB1-WMI-2nd45, RB1-WMI-2nd25, E-GFC-MEP-RB1-170 | CSD-LKO Calender (6 day + Holiday)-25 | Physical Progress [2620 h]; ELV [168219 INR]; TATA Projects Ltd-25 | 168,219 |
|  | 2 | **2nd Fix** |  | 2028-02-14 | 2028-09-05 |  |  |  |  |
| RB1-WMI-2nd125 |  | Cable tray installation | 35d | 2028-02-14 | 2028-03-25 | RB1-WMI-2nd95 | CSD-LKO Calender (6 day + Holiday)-25 | Physical Progress [13100 h]; ELV [168219 INR]; TATA Projects Ltd-25 | 168,219 |
| RB1-WMI-2nd165 |  | Cabeling of ELV cable - IT/Fire Alarm/Public Address | 45d | 2028-03-27 | 2028-05-20 | RB1-WMI-2nd125 | CSD-LKO Calender (6 day + Holiday)-25 | Physical Progress [23590 h]; ELV [403726 INR]; TATA Projects Ltd-25 | 403,726 |
| RB1-WMI-2nd195 |  | ELV Rack Installation | 30d | 2028-05-22 | 2028-06-24 | RB1-WMI-2nd165 | CSD-LKO Calender (6 day + Holiday)-25 | Physical Progress [5240 h]; ELV [168219 INR]; TATA Projects Ltd-25 | 168,219 |
| RB1-WMI-2nd215 |  | Termination of cables at junction boxes, patch panels, and control panels | 35d | 2028-06-26 | 2028-08-04 | RB1-WMI-2nd195 | CSD-LKO Calender (6 day + Holiday)-25 | Physical Progress [15730 h]; ELV [168219 INR]; TATA Projects Ltd-25 | 168,219 |
| RB1-WMI-2nd230 |  | Fixing devices like CCTV camera bases, card reader bases, smoke detector bases, PA Bases, Wifi Bases | 25d | 2028-08-05 | 2028-09-05 | RB1-WMI-2nd215 | CSD-LKO Calender (6 day + Holiday)-25 | Physical Progress [2100 h]; ELV [336438 INR]; TATA Projects Ltd-25 | 336,438 |

| ID | WBS | Activity | Duration | Start | Finish | Predecessors | Calendar | Resources | Cost |
| --- | --- | --- | --- | --- | --- | --- | --- | --- | --- |
|  | 6 | **Dry Finishes/ID Works** |  | 2028-09-13 | 2029-03-10 |  |  |  |  |
| RB1-WMI-2nd245 |  | Running of Wild Air | 1d | 2028-09-13 | 2028-09-13 | RB1-F-(GF-Terrace)40, RB1-WMI-2nd140, RB1-WMI-2nd170, RB1-WMI-2nd185, RB1-WMI-2nd220, RB1-WMI-2nd240 | CSD-LKO Calender (6 day + Holiday)-25 | Physical Progress [520 h]; TATA Projects Ltd-25 |  |
| RB1-WMI-2nd250 |  | Wall finish ID Works | 10d | 2028-09-14 | 2028-09-25 | RB1-WMI-2nd245, RB1-WMI-2nd115, RB1-WMI-2nd155, RB1-WMI-2nd205, RB1-WMI-2nd210, RB1-WMI-2nd225, RB1-WMI-2nd235, RB1-WMI-2nd110, RB1-WMI-2nd120, RB1-WMI-2nd145, RB1-WMI-2nd160, RB1-WMI-2nd175, RB1-WMI-2nd180, RB1-WMI-2nd190, RB1-WMI-2nd200, RB1-WMI-2nd125, RB1-WMI-2nd165, RB1-WMI-2nd195, RB1-WMI-2nd215, RB1-WMI-2nd230 | CSD-LKO Calender (6 day + Holiday)-25 | ID Work [2955823 INR]; Physical Progress [5240 h]; TATA Projects Ltd-25 | 2,955,823 |
| RB1-WMI-2nd255 |  | False Ceiling Installation | 30d | 2028-09-26 | 2028-11-02 | RB1-WMI-2nd250 | CSD-LKO Calender (6 day + Holiday)-25 | ID Work [3941098 INR]; Physical Progress [10490 h]; TATA Projects Ltd-25 | 3,941,098 |
| RB1-WMI-2nd265 |  | Flooring of toilets/kitchen/Balcony | 10d | 2028-11-03 | 2028-11-14 | RB1-WMI-2nd55, RB1-WMI-2nd255 | CSD-LKO Calender (6 day + Holiday)-25 | ID Work [1576439 INR]; Physical Progress [5240 h]; TATA Projects Ltd-25 | 1,576,439 |
| RB1-WMI-2nd270 |  | Doors & Windows/Fire Doors/Shaft Doors | 35d | 2028-11-15 | 2028-12-26 | RB1-WMI-2nd250, RB1-WMI-2nd265 | CSD-LKO Calender (6 day + Holiday)-25 | ID Work [1970549 INR]; Physical Progress [5240 h]; TATA Projects Ltd-25 | 1,970,549 |
| RB1-WMI-2nd275 |  | Putty & First Coat of Paint | 10d | 2028-11-15 | 2028-11-25 | RB1-WMI-2nd250, RB1-WMI-2nd265 | CSD-LKO Calender (6 day + Holiday)-25 | Painting [6207 Sq m]; Painter [6210 h]; Helper [6210 h]; Physical Progress [5240 h]; TATA Projects Ltd-25 | 1,419,044.34 |
| RB1-WMI-2nd300 |  | Wooden Flooring/Flooring | 20d | 2028-11-27 | 2028-12-19 | RB1-WMI-2nd275 | CSD-LKO Calender (6 day + Holiday)-25 | ID Work [1970549 INR]; Physical Progress [10490 h]; TATA Projects Ltd-25 | 1,970,549 |
| RB1-WMI-2nd305 |  | Railing for staircase | 35d | 2028-11-27 | 2029-01-08 | RB1-WMI-2nd275, RB1-WMI-2nd250 | CSD-LKO Calender (6 day + Holiday)-25 | ID Work [591165 INR]; Physical Progress [7850 h]; TATA Projects Ltd-25 | 591,165 |
| RB1-WMI-2nd345 |  | Fixed Furniture | 8d | 2028-12-20 | 2028-12-29 | RB1-WMI-2nd300 | CSD-LKO Calender (6 day + Holiday)-25 | ID Work [985274 INR]; Physical Progress [4190 h]; TATA Projects Ltd-25 | 985,274 |
| RB1-WMI-2nd380 |  | False ceiling final finishes | 10d | 2029-01-15 | 2029-01-25 | RB1-WMI-2nd310 | CSD-LKO Calender (6 day + Holiday)-25 | ID Work [394110 INR]; Physical Progress [5240 h]; TATA Projects Ltd-25 | 394,110 |
| RB1-WMI-2nd390 |  | Final coat of paint | 10d | 2029-02-08 | 2029-02-20 | RB1-WMI-2nd380, RB1-WMI-2nd345, RB1-WMI-2nd350, RB1-WMI-2nd320, RB1-WMI-2nd325, RB1-WMI-2nd355, RB1-WMI-2nd385, RB1-WMI-2nd375, RB1-WMI-2nd370, RB1-WMI-2nd365, RB1-WMI-2nd335, RB1-WMI-2nd330, RB1-WMI-2nd270, RB1-WMI-2nd290, RB1-WMI-2nd305 | CSD-LKO Calender (6 day + Holiday)-25 | Painting [6207 Sq m]; Painter [6210 h]; Helper [6210 h]; Physical Progress [5240 h]; TATA Projects Ltd-25 | 1,419,044.34 |
| RB1-WMI-2nd395 |  | Soft Furnishing & Signage | 15d | 2029-02-21 | 2029-03-10 | RB1-WMI-2nd390 | CSD-LKO Calender (6 day + Holiday)-25 | ID Work [3941098 INR]; Physical Progress [1570 h]; TATA Projects Ltd-25 | 3,941,098 |
| RB1-WMI-2nd400 |  | Loose Furniture | 15d | 2029-02-21 | 2029-03-10 | RB1-WMI-2nd390 | CSD-LKO Calender (6 day + Holiday)-25 | ID Work [1379384 INR]; Physical Progress [1570 h]; TATA Projects Ltd-25 | 1,379,384 |
|  | 7 | **MEP Final Fix** |  | 2028-11-03 | 2029-02-07 |  |  |  |  |
|  | 3 | **HVAC** |  | 2028-11-03 | 2029-01-13 |  |  |  |  |
| RB1-WMI-2nd260 |  | Installing grills, diffusers, dampers | 30d | 2028-11-03 | 2028-12-07 | RB1-WMI-2nd255 | CSD-LKO Calender (6 day + Holiday)-25 | Physical Progress [3150 h]; HVAC [563971 INR]; TATA Projects Ltd-25 | 563,971 |
| RB1-WMI-2nd310 |  | Installation of thermostats and control panels | 30d | 2028-12-08 | 2029-01-13 | RB1-WMI-2nd260, RB1-WMI-2nd275, RB1-WMI-2nd240 | CSD-LKO Calender (6 day + Holiday)-25 | Physical Progress [3150 h]; HVAC [281986 INR]; TATA Projects Ltd-25 | 281,986 |
|  | 1 | **Electrical** |  | 2028-11-27 | 2029-02-07 |  |  |  |  |
| RB1-WMI-2nd280 |  | Switches & Socket | 30d | 2028-11-27 | 2029-01-02 | RB1-WMI-2nd275 | CSD-LKO Calender (6 day + Holiday)-25 | Physical Progress [10490 h]; Electrical [572397 INR]; TATA Projects Ltd-25 | 572,397 |
| RB1-WMI-2nd350 |  | Light Fixtures | 30d | 2029-01-03 | 2029-02-07 | RB1-WMI-2nd280, RB1-WMI-2nd235 | CSD-LKO Calender (6 day + Holiday)-25 | Physical Progress [7850 h]; Electrical [858595 INR]; TATA Projects Ltd-25 | 858,595 |
|  | 2 | **Plumbing** |  | 2028-11-27 | 2029-01-19 |  |  |  |  |
| RB1-WMI-2nd285 |  | Installation of sanitary fixtures (WC, washbasins, urinals, sinks) | 10d | 2028-11-27 | 2028-12-07 | RB1-WMI-2nd275, RB1-WMI-2nd145, RB1-WMI-2nd160 | CSD-LKO Calender (6 day + Holiday)-25 | Physical Progress [5240 h]; Plumbing [943701 INR]; TATA Projects Ltd-25 | 943,701 |
| RB1-WMI-2nd315 |  | Installation of CP fittings (taps, mixers, showers, health faucets) | 10d | 2028-12-08 | 2028-12-19 | RB1-WMI-2nd285, RB1-WMI-2nd275 | CSD-LKO Calender (6 day + Holiday)-25 | Physical Progress [5240 h]; Plumbing [471850 INR]; TATA Projects Ltd-25 | 471,850 |
| RB1-WMI-2nd320 |  | Connection of appliances | 25d | 2028-12-20 | 2029-01-19 | RB1-WMI-2nd315 | CSD-LKO Calender (6 day + Holiday)-25 | Physical Progress [3670 h]; Plumbing [235925 INR]; TATA Projects Ltd-25 | 235,925 |

| ID | WBS | Activity | Duration | Start | Finish | Predecessors | Calendar | Resources | Cost |
| --- | --- | --- | --- | --- | --- | --- | --- | --- | --- |
|  | 4 | **Firefighting** |  | 2028-11-27 | 2029-02-01 |  |  |  |  |
| RB1-WMI-2nd290 |  | Installation of hydrant accessories (valves, hose reels, cabinets) | 25d | 2028-11-27 | 2028-12-26 | RB1-WMI-2nd275 | CSD-LKO Calender (6 day + Holiday)-25 | Physical Progress [5240 h]; Firefighting [262581 INR]; TATA Projects Ltd-25 | 262,581 |
| RB1-WMI-2nd295 |  | Installation of portable fire extinguishers | 30d | 2028-11-27 | 2029-01-02 | RB1-WMI-2nd275 | CSD-LKO Calender (6 day + Holiday)-25 | Physical Progress [3150 h]; Firefighting [26258 INR]; TATA Projects Ltd-25 | 26,258 |
| RB1-WMI-2nd325 |  | Installation of sprinkler heads, nozzles, and final alignment | 35d | 2028-12-20 | 2029-02-01 | RB1-WMI-2nd275, RB1-WMI-2nd300, RB1-WMI-2nd190, RB1-WMI-2nd200 | CSD-LKO Calender (6 day + Holiday)-25 | Physical Progress [20970 h]; Firefighting [393871 INR]; TATA Projects Ltd-25 | 393,871 |
| RB1-WMI-2nd355 |  | Integration with fire alarm system | 20d | 2029-01-03 | 2029-01-25 | RB1-WMI-2nd295 | CSD-LKO Calender (6 day + Holiday)-25 | Physical Progress [10490 h]; Firefighting [131290 INR]; TATA Projects Ltd-25 | 131,290 |
|  | 5 | **ELV** |  | 2028-12-20 | 2029-02-07 |  |  |  |  |
| RB1-WMI-2nd330 |  | Installation of data and Voice Faceplate | 25d | 2028-12-20 | 2029-01-19 | RB1-WMI-2nd275, RB1-WMI-2nd300, RB1-WMI-2nd230 | CSD-LKO Calender (6 day + Holiday)-25 | Physical Progress [5240 h]; ELV [168219 INR]; TATA Projects Ltd-25 | 168,219 |
| RB1-WMI-2nd335 |  | Installation of Camera & Wifi | 30d | 2028-12-20 | 2029-01-25 | RB1-WMI-2nd275, RB1-WMI-2nd300 | CSD-LKO Calender (6 day + Holiday)-25 | Physical Progress [5240 h]; ELV [168219 INR]; TATA Projects Ltd-25 | 168,219 |
| RB1-WMI-2nd340 |  | Installation of fire alarm devices + Public Address | 10d | 2028-12-20 | 2029-01-02 | RB1-WMI-2nd275, RB1-WMI-2nd300 | CSD-LKO Calender (6 day + Holiday)-25 | Physical Progress [5240 h]; ELV [201863 INR]; TATA Projects Ltd-25 | 201,863 |
| RB1-WMI-2nd360 |  | Installation of Active System | 15d | 2029-01-03 | 2029-01-19 | RB1-WMI-2nd340 | CSD-LKO Calender (6 day + Holiday)-25 | Physical Progress [7850 h]; ELV [336438 INR]; TATA Projects Ltd-25 | 336,438 |
| RB1-WMI-2nd365 |  | Fire Panel Intallation & Integration | 25d | 2029-01-03 | 2029-02-01 | RB1-WMI-2nd340 | CSD-LKO Calender (6 day + Holiday)-25 | Physical Progress [13100 h]; ELV [168219 INR]; TATA Projects Ltd-25 | 168,219 |
| RB1-WMI-2nd370 |  | Installation & Integration of Audio Visual System | 25d | 2029-01-03 | 2029-02-01 | RB1-WMI-2nd340 | CSD-LKO Calender (6 day + Holiday)-25 | Physical Progress [13100 h]; ELV [168219 INR]; TATA Projects Ltd-25 | 168,219 |
| RB1-WMI-2nd375 |  | Installation & Integration of Access Control | 25d | 2029-01-03 | 2029-02-01 | RB1-WMI-2nd340 | CSD-LKO Calender (6 day + Holiday)-25 | Physical Progress [13100 h]; ELV [168219 INR]; TATA Projects Ltd-25 | 168,219 |
| RB1-WMI-2nd385 |  | Integration of Active components | 15d | 2029-01-20 | 2029-02-07 | RB1-WMI-2nd360 | CSD-LKO Calender (6 day + Holiday)-25 | Physical Progress [7850 h]; ELV [67288 INR]; TATA Projects Ltd-25 | 67,288 |
|  | 3 | **Third Floor** |  | 2027-12-10 | 2029-04-09 |  |  |  |  |
|  | 1 | **Wet Finishes** |  | 2027-12-10 | 2028-03-21 |  |  |  |  |
| RB1-WMI-3rd10 |  | Deshuttering | 4d | 2027-12-10 | 2027-12-14 | RB1-SS-4th.675 | CSD-LKO Calender (6 day + Holiday)-25 | Physical Progress [2100 h]; TATA Projects Ltd-25 |  |
| RB1-WMI-3rd15 |  | Brickwork/Blockwork | 30d | 2027-12-15 | 2028-01-20 | RB1-WMI-3rd10, E-GFC-AR-RB1-175 | CSD-LKO Calender (6 day + Holiday)-25 | Masonry [663 CuM]; Mason [4420 h]; Helper [2210 h]; Physical Progress [15730 h]; TATA Projects Ltd-25 | 6,321,943.68 |
| RB1-WMI-3rd55 |  | Waterproofing of Toilets, Balcony & Kitchen | 15d | 2028-01-21 | 2028-02-08 | RB1-WMI-3rd15 | CSD-LKO Calender (6 day + Holiday)-25 | Waterproofing [8564838 INR]; Waterprrofing Mason [8160 h]; Helper [4080 h]; Physical Progress [7850 h]; TATA Projects Ltd-25 | 8,564,838 |
| RB1-WMI-3rd95 |  | Plaster | 15d | 2028-03-03 | 2028-03-21 | RB1-WMI-3rd30, RB1-WMI-3rd75, RB1-WMI-3rd80, RB1-WMI-3rd55 | CSD-LKO Calender (6 day + Holiday)-25 | Plaster [20238 Sqr Mtr]; Mason [13500 h]; Helper [6750 h]; Physical Progress [7850 h]; TATA Projects Ltd-25 | 11,210,030.58 |
|  | 5 | **MEP 1st Fix, 2nd Fix** |  | 2027-12-15 | 2028-10-13 |  |  |  |  |
|  | 2 | **HVAC** |  | 2028-01-21 | 2028-09-12 |  |  |  |  |
|  | 1 | **1st Fix** |  | 2028-01-21 | 2028-05-16 |  |  |  |  |
| RB1-WMI-3rd50 |  | Duct Support Fabrication | 35d | 2028-01-21 | 2028-03-02 | RB1-WMI-3rd15, E-GFC-MEP-RB1-175 | CSD-LKO Calender (6 day + Holiday)-25 | Physical Progress [7850 h]; HVAC [112794 INR]; TATA Projects Ltd-25 | 112,794 |
| RB1-WMI-3rd100 |  | Installing duct hangers and supports | 30d | 2028-03-03 | 2028-04-07 | RB1-WMI-3rd50, E-GFC-MEP-RB1-175 | CSD-LKO Calender (6 day + Holiday)-25 | Physical Progress [5240 h]; HVAC [225588 INR]; TATA Projects Ltd-25 | 225,588 |
| RB1-WMI-3rd130 |  | Laying concealed/exposed refrigerant piping | 30d | 2028-04-08 | 2028-05-16 | RB1-WMI-3rd100, E-GFC-MEP-RB1-175 | CSD-LKO Calender (6 day + Holiday)-25 | Physical Progress [7850 h]; HVAC [56397 INR]; TATA Projects Ltd-25 | 56,397 |
| RB1-WMI-3rd135 |  | Laying concealed/exposed drain piping | 30d | 2028-04-08 | 2028-05-16 | RB1-WMI-3rd100, E-GFC-MEP-RB1-175 | CSD-LKO Calender (6 day + Holiday)-25 | Physical Progress [5240 h]; HVAC [338383 INR]; TATA Projects Ltd-25 | 338,383 |

| ID | WBS | Activity | Duration | Start | Finish | Predecessors | Calendar | Resources | Cost |
| --- | --- | --- | --- | --- | --- | --- | --- | --- | --- |
|  | 2 | **2nd Fix** |  | 2028-04-08 | 2028-09-12 |  |  |  |  |
| RB1-WMI-3rd140 |  | Duct installation | 35d | 2028-04-08 | 2028-05-22 | RB1-WMI-3rd100 | CSD-LKO Calender (6 day + Holiday)-25 | Physical Progress [7850 h]; HVAC [845957 INR]; TATA Projects Ltd-25 | 845,957 |
| RB1-WMI-3rd170 |  | Insulation of ducts (thermal/acoustic) | 10d | 2028-05-23 | 2028-06-02 | RB1-WMI-3rd140 | CSD-LKO Calender (6 day + Holiday)-25 | Physical Progress [3150 h]; HVAC [507574 INR]; TATA Projects Ltd-25 | 507,574 |
| RB1-WMI-3rd185 |  | Installation of chilled water piping / VRF piping | 20d | 2028-06-03 | 2028-06-26 | RB1-WMI-3rd170 | CSD-LKO Calender (6 day + Holiday)-25 | Physical Progress [3150 h]; HVAC [1127942 INR]; TATA Projects Ltd-25 | 1,127,942 |
| RB1-WMI-3rd220 |  | Installation of indoor units including AHU, FCU | 45d | 2028-06-27 | 2028-08-18 | RB1-WMI-3rd185, RB1-WMI-3rd130, RB1-WMI-3rd135 | CSD-LKO Calender (6 day + Holiday)-25 | Physical Progress [23590 h]; HVAC [1015148 INR]; TATA Projects Ltd-25 | 1,015,148 |
| RB1-WMI-3rd240 |  | Connecting refrigerant and drain piping to indoor units | 20d | 2028-08-19 | 2028-09-12 | RB1-WMI-3rd220 | CSD-LKO Calender (6 day + Holiday)-25 | Physical Progress [3150 h]; HVAC [281986 INR]; TATA Projects Ltd-25 | 281,986 |
|  | 1 | **Electrical** |  | 2027-12-15 | 2028-08-25 |  |  |  |  |
|  | 1 | **1st Fix** |  | 2027-12-15 | 2028-03-02 |  |  |  |  |
| RB1-WMI-3rd25 |  | Slab Conduiting | 35d | 2027-12-15 | 2028-01-27 | RB1-WMI-3rd10, E-GFC-MEP-RB1-175 | CSD-LKO Calender (6 day + Holiday)-25 | Physical Progress [13100 h]; Electrical [572397 INR]; TATA Projects Ltd-25 | 572,397 |
| RB1-WMI-3rd30 |  | Wall Conduiting | 30d | 2028-01-21 | 2028-02-25 | RB1-WMI-3rd15, E-GFC-MEP-RB1-175 | CSD-LKO Calender (6 day + Holiday)-25 | Physical Progress [5240 h]; Electrical [286198 INR]; TATA Projects Ltd-25 | 286,198 |
| RB1-WMI-3rd75 |  | Installing back boxes for switches, sockets | 5d | 2028-02-26 | 2028-03-02 | RB1-WMI-3rd30, RB1-WMI-3rd25, E-GFC-MEP-RB1-175 | CSD-LKO Calender (6 day + Holiday)-25 | Physical Progress [2620 h]; Electrical [171719 INR]; TATA Projects Ltd-25 | 171,719 |
|  | 2 | **2nd Fix** |  | 2028-03-22 | 2028-08-25 |  |  |  |  |
| RB1-WMI-3rd115 |  | Cable tray laying | 25d | 2028-03-22 | 2028-04-20 | RB1-WMI-3rd95 | CSD-LKO Calender (6 day + Holiday)-25 | Physical Progress [13100 h]; Electrical [228959 INR]; TATA Projects Ltd-25 | 228,959 |
| RB1-WMI-3rd155 |  | Cabling & Wire Pulling | 45d | 2028-04-21 | 2028-06-14 | RB1-WMI-3rd115 | CSD-LKO Calender (6 day + Holiday)-25 | Physical Progress [23590 h]; Electrical [1144794 INR]; TATA Projects Ltd-25 | 1,144,794 |
| RB1-WMI-3rd205 |  | DB fixing and connecting | 20d | 2028-06-15 | 2028-07-07 | RB1-WMI-3rd155 | CSD-LKO Calender (6 day + Holiday)-25 | Physical Progress [7850 h]; Electrical [171719 INR]; TATA Projects Ltd-25 | 171,719 |
| RB1-WMI-3rd210 |  | Floor Rising Main Installation | 20d | 2028-06-15 | 2028-07-07 | RB1-WMI-3rd155 | CSD-LKO Calender (6 day + Holiday)-25 | Physical Progress [2620 h]; Electrical [801356 INR]; TATA Projects Ltd-25 | 801,356 |
| RB1-WMI-3rd225 |  | Floor/Distribution Panel Installation | 20d | 2028-07-08 | 2028-07-31 | RB1-WMI-3rd205 | CSD-LKO Calender (6 day + Holiday)-25 | Physical Progress [2620 h]; Electrical [457918 INR]; TATA Projects Ltd-25 | 457,918 |
| RB1-WMI-3rd235 |  | Equipment Earthing | 20d | 2028-08-01 | 2028-08-25 | RB1-WMI-3rd225, RB1-WMI-3rd210 | CSD-LKO Calender (6 day + Holiday)-25 | Physical Progress [5240 h]; Electrical [171719 INR]; TATA Projects Ltd-25 | 171,719 |
|  | 3 | **Plumbing** |  | 2028-01-21 | 2028-09-12 |  |  |  |  |
|  | 1 | **1st Fix** |  | 2028-01-21 | 2028-06-26 |  |  |  |  |
| RB1-WMI-3rd35 |  | Fixing pipe supports and clamps | 35d | 2028-01-21 | 2028-03-02 | RB1-WMI-3rd15, E-GFC-MEP-RB1-175 | CSD-LKO Calender (6 day + Holiday)-25 | Physical Progress [5240 h]; Plumbing [235925 INR]; TATA Projects Ltd-25 | 235,925 |
| RB1-WMI-3rd60 |  | Laying water supply pipes (hot & cold) | 35d | 2028-03-03 | 2028-04-13 | RB1-WMI-3rd35, E-GFC-MEP-RB1-175 | CSD-LKO Calender (6 day + Holiday)-25 | Physical Progress [7850 h]; Plumbing [471850 INR]; TATA Projects Ltd-25 | 471,850 |
| RB1-WMI-3rd65 |  | Laying drainage pipes (soil, waste, vent) | 35d | 2028-03-03 | 2028-04-13 | RB1-WMI-3rd35, E-GFC-MEP-RB1-175 | CSD-LKO Calender (6 day + Holiday)-25 | Physical Progress [7850 h]; Plumbing [471850 INR]; TATA Projects Ltd-25 | 471,850 |
| RB1-WMI-3rd70 |  | Installation of plumbing fixture base supports (WC frames, sink brackets) | 30d | 2028-04-15 | 2028-05-22 | RB1-WMI-3rd65, E-GFC-MEP-RB1-175 | CSD-LKO Calender (6 day + Holiday)-25 | Physical Progress [3150 h]; Plumbing [235925 INR]; TATA Projects Ltd-25 | 235,925 |
| RB1-WMI-3rd85 |  | Pressure testing of water supply lines | 25d | 2028-05-23 | 2028-06-20 | RB1-WMI-3rd60, RB1-WMI-3rd65, RB1-WMI-3rd70, E-GFC-MEP-RB1-175 | CSD-LKO Calender (6 day + Holiday)-25 | Physical Progress [3670 h]; Plumbing [47185 INR]; TATA Projects Ltd-25 | 47,185 |
| RB1-WMI-3rd90 |  | Installation of concealed parts of toilet fixtures | 30d | 2028-05-23 | 2028-06-26 | RB1-WMI-3rd70, E-GFC-MEP-RB1-175 | CSD-LKO Calender (6 day + Holiday)-25 | Physical Progress [5240 h]; Plumbing [235925 INR]; TATA Projects Ltd-25 | 235,925 |

| ID | WBS | Activity | Duration | Start | Finish | Predecessors | Calendar | Resources | Cost |
| --- | --- | --- | --- | --- | --- | --- | --- | --- | --- |
|  | 2 | **2nd FIx** |  | 2028-06-21 | 2028-09-12 |  |  |  |  |
| RB1-WMI-3rd110 |  | Insulation of hot water pipes (if applicable) | 30d | 2028-06-21 | 2028-07-25 | RB1-WMI-3rd85 | CSD-LKO Calender (6 day + Holiday)-25 | Physical Progress [3150 h]; Plumbing [235925 INR]; TATA Projects Ltd-25 | 235,925 |
| RB1-WMI-3rd120 |  | Installation of vertical risers and main distribution lines | 35d | 2028-06-27 | 2028-08-05 | RB1-WMI-3rd95, RB1-WMI-3rd85, RB1-WMI-3rd90 | CSD-LKO Calender (6 day + Holiday)-25 | Physical Progress [10490 h]; Plumbing [471850 INR]; TATA Projects Ltd-25 | 471,850 |
| RB1-WMI-3rd145 |  | Testing drainage lines for leakage/blockage | 30d | 2028-07-26 | 2028-08-31 | RB1-WMI-3rd70, RB1-WMI-3rd110 | CSD-LKO Calender (6 day + Holiday)-25 | Physical Progress [3150 h]; Plumbing [47185 INR]; TATA Projects Ltd-25 | 47,185 |
| RB1-WMI-3rd160 |  | Fixing floor traps and gully traps | 30d | 2028-08-07 | 2028-09-12 | RB1-WMI-3rd120 | CSD-LKO Calender (6 day + Holiday)-25 | Physical Progress [3150 h]; Plumbing [141555 INR]; TATA Projects Ltd-25 | 141,555 |
|  | 4 | **Firefighting** |  | 2028-01-21 | 2028-08-11 |  |  |  |  |
|  | 1 | **1st Fix** |  | 2028-01-21 | 2028-05-22 |  |  |  |  |
| RB1-WMI-3rd40 |  | Fixing pipe supports and hangers | 35d | 2028-01-21 | 2028-03-02 | RB1-WMI-3rd15, E-GFC-MEP-RB1-175 | CSD-LKO Calender (6 day + Holiday)-25 | Physical Progress [5240 h]; Firefighting [183807 INR]; TATA Projects Ltd-25 | 183,807 |
| RB1-WMI-3rd105 |  | Laying branch piping | 35d | 2028-03-03 | 2028-04-13 | RB1-WMI-3rd40, E-GFC-MEP-RB1-175 | CSD-LKO Calender (6 day + Holiday)-25 | Physical Progress [7850 h]; Firefighting [393871 INR]; TATA Projects Ltd-25 | 393,871 |
| RB1-WMI-3rd150 |  | Hydrostatic pressure testing of piping | 30d | 2028-04-15 | 2028-05-22 | RB1-WMI-3rd105, E-GFC-MEP-RB1-175 | CSD-LKO Calender (6 day + Holiday)-25 | Physical Progress [3150 h]; Firefighting [52516 INR]; TATA Projects Ltd-25 | 52,516 |
|  | 2 | **2nd Fix** |  | 2028-05-23 | 2028-08-11 |  |  |  |  |
| RB1-WMI-3rd175 |  | Installation of vertical risers and distribution piping in shafts | 35d | 2028-05-23 | 2028-07-01 | RB1-WMI-3rd95, RB1-WMI-3rd150 | CSD-LKO Calender (6 day + Holiday)-25 | Physical Progress [13100 h]; Firefighting [525162 INR]; TATA Projects Ltd-25 | 525,162 |
| RB1-WMI-3rd180 |  | Painting/insulation of exposed fire pipes | 30d | 2028-05-23 | 2028-06-26 | RB1-WMI-3rd150 | CSD-LKO Calender (6 day + Holiday)-25 | Physical Progress [5240 h]; Firefighting [26258 INR]; TATA Projects Ltd-25 | 26,258 |
| RB1-WMI-3rd190 |  | Testing risers and branch lines for leakage | 30d | 2028-06-27 | 2028-07-31 | RB1-WMI-3rd180 | CSD-LKO Calender (6 day + Holiday)-25 | Physical Progress [3150 h]; Firefighting [52516 INR]; TATA Projects Ltd-25 | 52,516 |
| RB1-WMI-3rd200 |  | Installation of sprinkler branch lines in ceilings | 35d | 2028-07-03 | 2028-08-11 | RB1-WMI-3rd175 | CSD-LKO Calender (6 day + Holiday)-25 | Physical Progress [13100 h]; Firefighting [393871 INR]; TATA Projects Ltd-25 | 393,871 |
|  | 5 | **ELV** |  | 2027-12-15 | 2028-10-13 |  |  |  |  |
|  | 1 | **1st Fix** |  | 2027-12-15 | 2028-03-02 |  |  |  |  |
| RB1-WMI-3rd20 |  | Slab Conduiting | 35d | 2027-12-15 | 2028-01-27 | RB1-WMI-3rd10, E-GFC-MEP-RB1-175 | CSD-LKO Calender (6 day + Holiday)-25 | Physical Progress [13100 h]; ELV [235507 INR]; TATA Projects Ltd-25 | 235,507 |
| RB1-WMI-3rd45 |  | Wall Conduiting | 30d | 2028-01-21 | 2028-02-25 | RB1-WMI-3rd15, E-GFC-MEP-RB1-175 | CSD-LKO Calender (6 day + Holiday)-25 | Physical Progress [5240 h]; ELV [100932 INR]; TATA Projects Ltd-25 | 100,932 |
| RB1-WMI-3rd80 |  | Installing back boxes for switches, sockets | 5d | 2028-02-26 | 2028-03-02 | RB1-WMI-3rd45, RB1-WMI-3rd20, E-GFC-MEP-RB1-175 | CSD-LKO Calender (6 day + Holiday)-25 | Physical Progress [2620 h]; ELV [168219 INR]; TATA Projects Ltd-25 | 168,219 |
|  | 2 | **2nd Fix** |  | 2028-03-22 | 2028-10-13 |  |  |  |  |
| RB1-WMI-3rd125 |  | Cable tray installation | 35d | 2028-03-22 | 2028-05-03 | RB1-WMI-3rd95 | CSD-LKO Calender (6 day + Holiday)-25 | Physical Progress [13100 h]; ELV [168219 INR]; TATA Projects Ltd-25 | 168,219 |
| RB1-WMI-3rd165 |  | Cabeling of ELV cable - IT/Fire Alarm/Public Address | 45d | 2028-05-05 | 2028-06-26 | RB1-WMI-3rd125 | CSD-LKO Calender (6 day + Holiday)-25 | Physical Progress [23590 h]; ELV [403726 INR]; TATA Projects Ltd-25 | 403,726 |
| RB1-WMI-3rd195 |  | ELV Rack Installation | 30d | 2028-06-27 | 2028-07-31 | RB1-WMI-3rd165 | CSD-LKO Calender (6 day + Holiday)-25 | Physical Progress [5240 h]; ELV [168219 INR]; TATA Projects Ltd-25 | 168,219 |
| RB1-WMI-3rd215 |  | Termination of cables at junction boxes, patch panels, and control panels | 35d | 2028-08-01 | 2028-09-12 | RB1-WMI-3rd195 | CSD-LKO Calender (6 day + Holiday)-25 | Physical Progress [15730 h]; ELV [168219 INR]; TATA Projects Ltd-25 | 168,219 |
| RB1-WMI-3rd230 |  | Fixing devices like CCTV camera bases, card reader bases, smoke detector bases, PA Bases, Wifi Bases | 25d | 2028-09-13 | 2028-10-13 | RB1-WMI-3rd215 | CSD-LKO Calender (6 day + Holiday)-25 | Physical Progress [2100 h]; ELV [336438 INR]; TATA Projects Ltd-25 | 336,438 |

| ID | WBS | Activity | Duration | Start | Finish | Predecessors | Calendar | Resources | Cost |
| --- | --- | --- | --- | --- | --- | --- | --- | --- | --- |
|  | 2 | **Dry Finishes/ID Works** |  | 2028-09-23 | 2029-04-09 |  |  |  |  |
| RB1-WMI-3rd245 |  | Running of Wild Air | 1d | 2028-09-23 | 2028-09-23 | RB1-F-(GF-Terrace)50, RB1-WMI-3rd140, RB1-WMI-3rd170, RB1-WMI-3rd185, RB1-WMI-3rd220, RB1-WMI-3rd240 | CSD-LKO Calender (6 day + Holiday)-25 | Physical Progress [520 h]; TATA Projects Ltd-25 |  |
| RB1-WMI-3rd250 |  | Wall finish ID Works | 10d | 2028-10-14 | 2028-10-26 | RB1-WMI-3rd245, RB1-WMI-3rd115, RB1-WMI-3rd155, RB1-WMI-3rd205, RB1-WMI-3rd210, RB1-WMI-3rd225, RB1-WMI-3rd235, RB1-WMI-3rd110, RB1-WMI-3rd120, RB1-WMI-3rd145, RB1-WMI-3rd160, RB1-WMI-3rd175, RB1-WMI-3rd180, RB1-WMI-3rd190, RB1-WMI-3rd200, RB1-WMI-3rd125, RB1-WMI-3rd165, RB1-WMI-3rd195, RB1-WMI-3rd215, RB1-WMI-3rd230 | CSD-LKO Calender (6 day + Holiday)-25 | ID Work [2955823 INR]; Physical Progress [5240 h]; TATA Projects Ltd-25 | 2,955,823 |
| RB1-WMI-3rd255 |  | False Ceiling Installation | 30d | 2028-10-27 | 2028-11-30 | RB1-WMI-3rd250 | CSD-LKO Calender (6 day + Holiday)-25 | ID Work [3941098 INR]; Physical Progress [10490 h]; TATA Projects Ltd-25 | 3,941,098 |
| RB1-WMI-3rd265 |  | Flooring of toilets/kitchen/Balcony | 10d | 2028-12-01 | 2028-12-12 | RB1-WMI-3rd255, RB1-WMI-3rd55 | CSD-LKO Calender (6 day + Holiday)-25 | ID Work [1576439 INR]; Physical Progress [5240 h]; TATA Projects Ltd-25 | 1,576,439 |
| RB1-WMI-3rd270 |  | Doors & Windows/Fire Doors/Shaft Doors | 35d | 2028-12-13 | 2029-01-24 | RB1-WMI-3rd250, RB1-WMI-3rd265 | CSD-LKO Calender (6 day + Holiday)-25 | ID Work [1970549 INR]; Physical Progress [5240 h]; TATA Projects Ltd-25 | 1,970,549 |
| RB1-WMI-3rd275 |  | Putty & First Coat of Paint | 10d | 2028-12-13 | 2028-12-23 | RB1-WMI-3rd250, RB1-WMI-3rd265 | CSD-LKO Calender (6 day + Holiday)-25 | Painting [6207 Sq m]; Painter [6210 h]; Helper [6210 h]; Physical Progress [5240 h]; TATA Projects Ltd-25 | 1,419,044.34 |
| RB1-WMI-3rd300 |  | Wooden Flooring/Flooring | 20d | 2028-12-26 | 2029-01-18 | RB1-WMI-3rd275 | CSD-LKO Calender (6 day + Holiday)-25 | ID Work [1970549 INR]; Physical Progress [10490 h]; TATA Projects Ltd-25 | 1,970,549 |
| RB1-WMI-3rd305 |  | Railing for staircase | 35d | 2028-12-26 | 2029-02-06 | RB1-WMI-3rd250, RB1-WMI-3rd275 | CSD-LKO Calender (6 day + Holiday)-25 | ID Work [591165 INR]; Physical Progress [7850 h]; TATA Projects Ltd-25 | 591,165 |
| RB1-WMI-3rd345 |  | Fixed Furniture | 8d | 2029-01-19 | 2029-01-29 | RB1-WMI-3rd300 | CSD-LKO Calender (6 day + Holiday)-25 | ID Work [985274 INR]; Physical Progress [4190 h]; TATA Projects Ltd-25 | 985,274 |
| RB1-WMI-3rd380 |  | False ceiling final finishes | 10d | 2029-02-13 | 2029-02-24 | RB1-WMI-3rd310 | CSD-LKO Calender (6 day + Holiday)-25 | ID Work [394110 INR]; Physical Progress [5240 h]; TATA Projects Ltd-25 | 394,110 |
| RB1-WMI-3rd390 |  | Final coat of paint | 10d | 2029-03-10 | 2029-03-21 | RB1-WMI-3rd380, RB1-WMI-3rd305, RB1-WMI-3rd345, RB1-WMI-3rd350, RB1-WMI-3rd320, RB1-WMI-3rd325, RB1-WMI-3rd355, RB1-WMI-3rd385, RB1-WMI-3rd375, RB1-WMI-3rd370, RB1-WMI-3rd365, RB1-WMI-3rd335, RB1-WMI-3rd330, RB1-WMI-3rd270, RB1-WMI-3rd290 | CSD-LKO Calender (6 day + Holiday)-25 | Painting [6207 Sq m]; Painter [6210 h]; Helper [6210 h]; Physical Progress [5240 h]; TATA Projects Ltd-25 | 1,419,044.34 |
| RB1-WMI-3rd395 |  | Soft Furnishing & Signage | 15d | 2029-03-22 | 2029-04-09 | RB1-WMI-3rd390 | CSD-LKO Calender (6 day + Holiday)-25 | ID Work [3941098 INR]; Physical Progress [1570 h]; TATA Projects Ltd-25 | 3,941,098 |
| RB1-WMI-3rd400 |  | Loose Furniture | 15d | 2029-03-22 | 2029-04-09 | RB1-WMI-3rd390 | CSD-LKO Calender (6 day + Holiday)-25 | ID Work [1379384 INR]; Physical Progress [1570 h]; TATA Projects Ltd-25 | 1,379,384 |
|  | 3 | **MEP Final Fix** |  | 2028-12-01 | 2029-03-09 |  |  |  |  |
|  | 3 | **HVAC** |  | 2028-12-01 | 2029-02-12 |  |  |  |  |
| RB1-WMI-3rd260 |  | Installing grills, diffusers, dampers | 30d | 2028-12-01 | 2029-01-06 | RB1-WMI-3rd255 | CSD-LKO Calender (6 day + Holiday)-25 | Physical Progress [3150 h]; HVAC [563971 INR]; TATA Projects Ltd-25 | 563,971 |
| RB1-WMI-3rd310 |  | Installation of thermostats and control panels | 30d | 2029-01-08 | 2029-02-12 | RB1-WMI-3rd260, RB1-WMI-3rd275, RB1-WMI-3rd240 | CSD-LKO Calender (6 day + Holiday)-25 | Physical Progress [3150 h]; HVAC [281986 INR]; TATA Projects Ltd-25 | 281,986 |
|  | 1 | **Electrical** |  | 2028-12-26 | 2029-03-09 |  |  |  |  |
| RB1-WMI-3rd280 |  | Switches & Socket | 30d | 2028-12-26 | 2029-01-31 | RB1-WMI-3rd275 | CSD-LKO Calender (6 day + Holiday)-25 | Physical Progress [10490 h]; Electrical [572397 INR]; TATA Projects Ltd-25 | 572,397 |
| RB1-WMI-3rd350 |  | Light Fixtures | 30d | 2029-02-01 | 2029-03-09 | RB1-WMI-3rd280, RB1-WMI-3rd235 | CSD-LKO Calender (6 day + Holiday)-25 | Physical Progress [7850 h]; Electrical [858595 INR]; TATA Projects Ltd-25 | 858,595 |
|  | 2 | **Plumbing** |  | 2028-12-26 | 2029-02-19 |  |  |  |  |
| RB1-WMI-3rd285 |  | Installation of sanitary fixtures (WC, washbasins, urinals, sinks) | 10d | 2028-12-26 | 2029-01-06 | RB1-WMI-3rd275, RB1-WMI-3rd145, RB1-WMI-3rd160 | CSD-LKO Calender (6 day + Holiday)-25 | Physical Progress [5240 h]; Plumbing [943701 INR]; TATA Projects Ltd-25 | 943,701 |
| RB1-WMI-3rd315 |  | Installation of CP fittings (taps, mixers, showers, health faucets) | 10d | 2029-01-08 | 2029-01-18 | RB1-WMI-3rd285, RB1-WMI-3rd275 | CSD-LKO Calender (6 day + Holiday)-25 | Physical Progress [5240 h]; Plumbing [471850 INR]; TATA Projects Ltd-25 | 471,850 |
| RB1-WMI-3rd320 |  | Connection of appliances | 25d | 2029-01-19 | 2029-02-19 | RB1-WMI-3rd315 | CSD-LKO Calender (6 day + Holiday)-25 | Physical Progress [3670 h]; Plumbing [235925 INR]; TATA Projects Ltd-25 | 235,925 |

| ID | WBS | Activity | Duration | Start | Finish | Predecessors | Calendar | Resources | Cost |
| --- | --- | --- | --- | --- | --- | --- | --- | --- | --- |
|  | 4 | **Firefighting** |  | 2028-12-26 | 2029-03-03 |  |  |  |  |
| RB1-WMI-3rd290 |  | Installation of hydrant accessories (valves, hose reels, cabinets) | 25d | 2028-12-26 | 2029-01-24 | RB1-WMI-3rd275 | CSD-LKO Calender (6 day + Holiday)-25 | Physical Progress [5240 h]; Firefighting [262581 INR]; TATA Projects Ltd-25 | 262,581 |
| RB1-WMI-3rd295 |  | Installation of portable fire extinguishers | 30d | 2028-12-26 | 2029-01-31 | RB1-WMI-3rd275 | CSD-LKO Calender (6 day + Holiday)-25 | Physical Progress [3150 h]; Firefighting [26258 INR]; TATA Projects Ltd-25 | 26,258 |
| RB1-WMI-3rd325 |  | Installation of sprinkler heads, nozzles, and final alignment | 35d | 2029-01-19 | 2029-03-03 | RB1-WMI-3rd275, RB1-WMI-3rd300, RB1-WMI-3rd190, RB1-WMI-3rd200 | CSD-LKO Calender (6 day + Holiday)-25 | Physical Progress [20970 h]; Firefighting [393871 INR]; TATA Projects Ltd-25 | 393,871 |
| RB1-WMI-3rd355 |  | Integration with fire alarm system | 20d | 2029-02-01 | 2029-02-24 | RB1-WMI-3rd295 | CSD-LKO Calender (6 day + Holiday)-25 | Physical Progress [10490 h]; Firefighting [131290 INR]; TATA Projects Ltd-25 | 131,290 |
|  | 5 | **ELV** |  | 2029-01-19 | 2029-03-09 |  |  |  |  |
| RB1-WMI-3rd330 |  | Installation of data and Voice Faceplate | 25d | 2029-01-19 | 2029-02-19 | RB1-WMI-3rd275, RB1-WMI-3rd300, RB1-WMI-3rd230 | CSD-LKO Calender (6 day + Holiday)-25 | Physical Progress [5240 h]; ELV [168219 INR]; TATA Projects Ltd-25 | 168,219 |
| RB1-WMI-3rd335 |  | Installation of Camera & Wifi | 30d | 2029-01-19 | 2029-02-24 | RB1-WMI-3rd275, RB1-WMI-3rd300 | CSD-LKO Calender (6 day + Holiday)-25 | Physical Progress [5240 h]; ELV [168219 INR]; TATA Projects Ltd-25 | 168,219 |
| RB1-WMI-3rd340 |  | Installation of fire alarm devices + Public Address | 10d | 2029-01-19 | 2029-01-31 | RB1-WMI-3rd275, RB1-WMI-3rd300 | CSD-LKO Calender (6 day + Holiday)-25 | Physical Progress [5240 h]; ELV [201863 INR]; TATA Projects Ltd-25 | 201,863 |
| RB1-WMI-3rd360 |  | Installation of Active System | 15d | 2029-02-01 | 2029-02-19 | RB1-WMI-3rd340 | CSD-LKO Calender (6 day + Holiday)-25 | Physical Progress [7850 h]; ELV [336438 INR]; TATA Projects Ltd-25 | 336,438 |
| RB1-WMI-3rd365 |  | Fire Panel Intallation & Integration | 25d | 2029-02-01 | 2029-03-03 | RB1-WMI-3rd340 | CSD-LKO Calender (6 day + Holiday)-25 | Physical Progress [13100 h]; ELV [168219 INR]; TATA Projects Ltd-25 | 168,219 |
| RB1-WMI-3rd370 |  | Installation & Integration of Audio Visual System | 25d | 2029-02-01 | 2029-03-03 | RB1-WMI-3rd340 | CSD-LKO Calender (6 day + Holiday)-25 | Physical Progress [13100 h]; ELV [168219 INR]; TATA Projects Ltd-25 | 168,219 |
| RB1-WMI-3rd375 |  | Installation & Integration of Access Control | 25d | 2029-02-01 | 2029-03-03 | RB1-WMI-3rd340 | CSD-LKO Calender (6 day + Holiday)-25 | Physical Progress [13100 h]; ELV [168219 INR]; TATA Projects Ltd-25 | 168,219 |
| RB1-WMI-3rd385 |  | Integration of Active components | 15d | 2029-02-20 | 2029-03-09 | RB1-WMI-3rd360 | CSD-LKO Calender (6 day + Holiday)-25 | Physical Progress [7850 h]; ELV [67288 INR]; TATA Projects Ltd-25 | 67,288 |
|  | 5 | **Fourth Floor** |  | 2028-01-25 | 2029-04-17 |  |  |  |  |
|  | 1 | **Wet Finishes** |  | 2028-01-25 | 2028-03-29 |  |  |  |  |
| RB1-WMI-4th10 |  | Deshuttering | 4d | 2028-01-25 | 2028-01-29 | RB1-SS-Roof40 | CSD-LKO Calender (6 day + Holiday)-25 | Physical Progress [2100 h]; TATA Projects Ltd-25 |  |
| RB1-WMI-4th15 |  | Brickwork/Blockwork | 20d | 2028-01-31 | 2028-02-22 | RB1-WMI-4th10, E-GFC-AR-RB1-180 | CSD-LKO Calender (6 day + Holiday)-25 | Masonry [663 CuM]; Mason [4420 h]; Helper [2210 h]; Physical Progress [10490 h]; TATA Projects Ltd-25 | 6,321,943.68 |
| RB1-WMI-4th55 |  | Waterproofing of Toilets, Balcony & Kitchen | 15d | 2028-02-23 | 2028-03-10 | RB1-WMI-4th15 | CSD-LKO Calender (6 day + Holiday)-25 | Waterproofing [8564838 INR]; Waterprrofing Mason [8160 h]; Helper [4080 h]; Physical Progress [7850 h]; TATA Projects Ltd-25 | 8,564,838 |
| RB1-WMI-4th80 |  | Plaster | 15d | 2028-03-13 | 2028-03-29 | RB1-WMI-4th30, RB1-WMI-4th60, RB1-WMI-4th75, RB1-WMI-4th55 | CSD-LKO Calender (6 day + Holiday)-25 | Plaster [20238 Sqr Mtr]; Mason [13500 h]; Helper [6750 h]; Physical Progress [7850 h]; TATA Projects Ltd-25 | 11,210,030.58 |
|  | 5 | **MEP 1st Fix, 2nd Fix** |  | 2028-01-31 | 2028-10-23 |  |  |  |  |
|  | 2 | **HVAC** |  | 2028-02-23 | 2028-09-26 |  |  |  |  |
|  | 1 | **1st Fix** |  | 2028-02-23 | 2028-06-16 |  |  |  |  |
| RB1-WMI-4th50 |  | Duct Support Fabrication | 35d | 2028-02-23 | 2028-04-04 | RB1-WMI-4th15, E-GFC-MEP-RB1-180 | CSD-LKO Calender (6 day + Holiday)-25 | Physical Progress [7850 h]; HVAC [112794 INR]; TATA Projects Ltd-25 | 112,794 |
| RB1-WMI-4th110 |  | Installing duct hangers and supports | 30d | 2028-04-05 | 2028-05-12 | RB1-WMI-4th50, E-GFC-MEP-RB1-180 | CSD-LKO Calender (6 day + Holiday)-25 | Physical Progress [5240 h]; HVAC [225588 INR]; TATA Projects Ltd-25 | 225,588 |
| RB1-WMI-4th135 |  | Laying concealed/exposed refrigerant piping | 30d | 2028-05-13 | 2028-06-16 | RB1-WMI-4th110, E-GFC-MEP-RB1-180 | CSD-LKO Calender (6 day + Holiday)-25 | Physical Progress [7850 h]; HVAC [56397 INR]; TATA Projects Ltd-25 | 56,397 |
| RB1-WMI-4th140 |  | Laying concealed/exposed drain piping | 30d | 2028-05-13 | 2028-06-16 | RB1-WMI-4th110, E-GFC-MEP-RB1-180 | CSD-LKO Calender (6 day + Holiday)-25 | Physical Progress [5240 h]; HVAC [338383 INR]; TATA Projects Ltd-25 | 338,383 |

| ID | WBS | Activity | Duration | Start | Finish | Predecessors | Calendar | Resources | Cost |
| --- | --- | --- | --- | --- | --- | --- | --- | --- | --- |
|  | 2 | **2nd Fix** |  | 2028-05-13 | 2028-09-26 |  |  |  |  |
| RB1-WMI-4th145 |  | Duct installation | 35d | 2028-05-13 | 2028-06-22 | RB1-WMI-4th110 | CSD-LKO Calender (6 day + Holiday)-25 | Physical Progress [7850 h]; HVAC [845957 INR]; TATA Projects Ltd-25 | 845,957 |
| RB1-WMI-4th170 |  | Insulation of ducts (thermal/acoustic) | 10d | 2028-06-23 | 2028-07-04 | RB1-WMI-4th145 | CSD-LKO Calender (6 day + Holiday)-25 | Physical Progress [3150 h]; HVAC [507574 INR]; TATA Projects Ltd-25 | 507,574 |
| RB1-WMI-4th200 |  | Installation of chilled water piping / VRF piping | 20d | 2028-07-05 | 2028-07-27 | RB1-WMI-4th170 | CSD-LKO Calender (6 day + Holiday)-25 | Physical Progress [3150 h]; HVAC [1127942 INR]; TATA Projects Ltd-25 | 1,127,942 |
| RB1-WMI-4th225 |  | Installation of indoor units including AHU, FCU | 30d | 2028-07-28 | 2028-09-02 | RB1-WMI-4th200, RB1-WMI-4th135, RB1-WMI-4th140 | CSD-LKO Calender (6 day + Holiday)-25 | Physical Progress [23590 h]; HVAC [1015148 INR]; TATA Projects Ltd-25 | 1,015,148 |
| RB1-WMI-4th255 |  | Connecting refrigerant and drain piping to indoor units | 20d | 2028-09-04 | 2028-09-26 | RB1-WMI-4th225 | CSD-LKO Calender (6 day + Holiday)-25 | Physical Progress [3150 h]; HVAC [281986 INR]; TATA Projects Ltd-25 | 281,986 |
|  | 1 | **Electrical** |  | 2028-01-31 | 2028-09-02 |  |  |  |  |
|  | 1 | **1st Fix** |  | 2028-01-31 | 2028-03-10 |  |  |  |  |
| RB1-WMI-4th20 |  | Slab Conduiting | 30d | 2028-01-31 | 2028-03-04 | RB1-WMI-4th10, E-GFC-MEP-RB1-180 | CSD-LKO Calender (6 day + Holiday)-25 | Physical Progress [13100 h]; Electrical [572397 INR]; TATA Projects Ltd-25 | 572,397 |
| RB1-WMI-4th30 |  | Wall Conduiting | 10d | 2028-02-23 | 2028-03-04 | RB1-WMI-4th15, E-GFC-MEP-RB1-180 | CSD-LKO Calender (6 day + Holiday)-25 | Physical Progress [5240 h]; Electrical [286198 INR]; TATA Projects Ltd-25 | 286,198 |
| RB1-WMI-4th60 |  | Installing back boxes for switches, sockets | 5d | 2028-03-06 | 2028-03-10 | RB1-WMI-4th30, RB1-WMI-4th20, E-GFC-MEP-RB1-180 | CSD-LKO Calender (6 day + Holiday)-25 | Physical Progress [2620 h]; Electrical [171719 INR]; TATA Projects Ltd-25 | 171,719 |
|  | 2 | **2nd Fix** |  | 2028-03-30 | 2028-09-02 |  |  |  |  |
| RB1-WMI-4th90 |  | Cable tray laying | 25d | 2028-03-30 | 2028-04-28 | RB1-WMI-4th80 | CSD-LKO Calender (6 day + Holiday)-25 | Physical Progress [13100 h]; Electrical [228959 INR]; TATA Projects Ltd-25 | 228,959 |
| RB1-WMI-4th130 |  | Cabling & Wire Pulling | 45d | 2028-04-29 | 2028-06-22 | RB1-WMI-4th90 | CSD-LKO Calender (6 day + Holiday)-25 | Physical Progress [23590 h]; Electrical [1144794 INR]; TATA Projects Ltd-25 | 1,144,794 |
| RB1-WMI-4th190 |  | DB fixing and connecting | 20d | 2028-06-23 | 2028-07-15 | RB1-WMI-4th130 | CSD-LKO Calender (6 day + Holiday)-25 | Physical Progress [7850 h]; Electrical [171719 INR]; TATA Projects Ltd-25 | 171,719 |
| RB1-WMI-4th195 |  | Floor Rising Main Installation | 20d | 2028-06-23 | 2028-07-15 | RB1-WMI-4th130 | CSD-LKO Calender (6 day + Holiday)-25 | Physical Progress [2620 h]; Electrical [801356 INR]; TATA Projects Ltd-25 | 801,356 |
| RB1-WMI-4th220 |  | Floor/Distribution Panel Installation | 20d | 2028-07-17 | 2028-08-08 | RB1-WMI-4th190 | CSD-LKO Calender (6 day + Holiday)-25 | Physical Progress [2620 h]; Electrical [457918 INR]; TATA Projects Ltd-25 | 457,918 |
| RB1-WMI-4th235 |  | Equipment Earthing | 20d | 2028-08-09 | 2028-09-02 | RB1-WMI-4th220, RB1-WMI-4th195 | CSD-LKO Calender (6 day + Holiday)-25 | Physical Progress [5240 h]; Electrical [171719 INR]; TATA Projects Ltd-25 | 171,719 |
|  | 3 | **Plumbing** |  | 2028-02-23 | 2028-10-16 |  |  |  |  |
|  | 1 | **1st Fix** |  | 2028-02-23 | 2028-07-27 |  |  |  |  |
| RB1-WMI-4th35 |  | Fixing pipe supports and clamps | 35d | 2028-02-23 | 2028-04-04 | RB1-WMI-4th15, E-GFC-MEP-RB1-180 | CSD-LKO Calender (6 day + Holiday)-25 | Physical Progress [5240 h]; Plumbing [235925 INR]; TATA Projects Ltd-25 | 235,925 |
| RB1-WMI-4th65 |  | Laying water supply pipes (hot & cold) | 35d | 2028-04-05 | 2028-05-18 | RB1-WMI-4th35, E-GFC-MEP-RB1-180 | CSD-LKO Calender (6 day + Holiday)-25 | Physical Progress [7850 h]; Plumbing [471850 INR]; TATA Projects Ltd-25 | 471,850 |
| RB1-WMI-4th70 |  | Laying drainage pipes (soil, waste, vent) | 35d | 2028-04-05 | 2028-05-18 | RB1-WMI-4th35, E-GFC-MEP-RB1-180 | CSD-LKO Calender (6 day + Holiday)-25 | Physical Progress [7850 h]; Plumbing [471850 INR]; TATA Projects Ltd-25 | 471,850 |
| RB1-WMI-4th85 |  | Installation of plumbing fixture base supports (WC frames, sink brackets) | 30d | 2028-05-19 | 2028-06-22 | RB1-WMI-4th70, E-GFC-MEP-RB1-180 | CSD-LKO Calender (6 day + Holiday)-25 | Physical Progress [3150 h]; Plumbing [235925 INR]; TATA Projects Ltd-25 | 235,925 |
| RB1-WMI-4th100 |  | Pressure testing of water supply lines | 25d | 2028-06-23 | 2028-07-21 | RB1-WMI-4th65, RB1-WMI-4th70, RB1-WMI-4th85, E-GFC-MEP-RB1-180 | CSD-LKO Calender (6 day + Holiday)-25 | Physical Progress [3670 h]; Plumbing [47185 INR]; TATA Projects Ltd-25 | 47,185 |
| RB1-WMI-4th105 |  | Installation of concealed parts of toilet fixtures | 30d | 2028-06-23 | 2028-07-27 | RB1-WMI-4th85, E-GFC-MEP-RB1-180 | CSD-LKO Calender (6 day + Holiday)-25 | Physical Progress [5240 h]; Plumbing [235925 INR]; TATA Projects Ltd-25 | 235,925 |

| ID | WBS | Activity | Duration | Start | Finish | Predecessors | Calendar | Resources | Cost |
| --- | --- | --- | --- | --- | --- | --- | --- | --- | --- |
|  | 2 | **2nd FIx** |  | 2028-07-22 | 2028-10-16 |  |  |  |  |
| RB1-WMI-4th120 |  | Insulation of hot water pipes (if applicable) | 30d | 2028-07-22 | 2028-08-28 | RB1-WMI-4th100 | CSD-LKO Calender (6 day + Holiday)-25 | Physical Progress [3150 h]; Plumbing [235925 INR]; TATA Projects Ltd-25 | 235,925 |
| RB1-WMI-4th125 |  | Installation of vertical risers and main distribution lines | 35d | 2028-07-28 | 2028-09-08 | RB1-WMI-4th80, RB1-WMI-4th100, RB1-WMI-4th105 | CSD-LKO Calender (6 day + Holiday)-25 | Physical Progress [10490 h]; Plumbing [471850 INR]; TATA Projects Ltd-25 | 471,850 |
| RB1-WMI-4th155 |  | Testing drainage lines for leakage/blockage | 30d | 2028-08-29 | 2028-10-04 | RB1-WMI-4th85, RB1-WMI-4th120 | CSD-LKO Calender (6 day + Holiday)-25 | Physical Progress [3150 h]; Plumbing [47185 INR]; TATA Projects Ltd-25 | 47,185 |
| RB1-WMI-4th165 |  | Fixing floor traps and gully traps | 30d | 2028-09-09 | 2028-10-16 | RB1-WMI-4th125 | CSD-LKO Calender (6 day + Holiday)-25 | Physical Progress [3150 h]; Plumbing [141555 INR]; TATA Projects Ltd-25 | 141,555 |
|  | 4 | **Firefighting** |  | 2028-02-23 | 2028-09-14 |  |  |  |  |
|  | 1 | **1st Fix** |  | 2028-02-23 | 2028-06-22 |  |  |  |  |
| RB1-WMI-4th40 |  | Fixing pipe supports and hangers | 35d | 2028-02-23 | 2028-04-04 | RB1-WMI-4th15, E-GFC-MEP-RB1-180 | CSD-LKO Calender (6 day + Holiday)-25 | Physical Progress [5240 h]; Firefighting [183807 INR]; TATA Projects Ltd-25 | 183,807 |
| RB1-WMI-4th115 |  | Laying branch piping | 35d | 2028-04-05 | 2028-05-18 | RB1-WMI-4th40, E-GFC-MEP-RB1-180 | CSD-LKO Calender (6 day + Holiday)-25 | Physical Progress [7850 h]; Firefighting [393871 INR]; TATA Projects Ltd-25 | 393,871 |
| RB1-WMI-4th160 |  | Hydrostatic pressure testing of piping | 30d | 2028-05-19 | 2028-06-22 | RB1-WMI-4th115, E-GFC-MEP-RB1-180 | CSD-LKO Calender (6 day + Holiday)-25 | Physical Progress [3150 h]; Firefighting [52516 INR]; TATA Projects Ltd-25 | 52,516 |
|  | 2 | **2nd Fix** |  | 2028-06-23 | 2028-09-14 |  |  |  |  |
| RB1-WMI-4th175 |  | Installation of vertical risers and distribution piping in shafts | 35d | 2028-06-23 | 2028-08-02 | RB1-WMI-4th80, RB1-WMI-4th160 | CSD-LKO Calender (6 day + Holiday)-25 | Physical Progress [13100 h]; Firefighting [525162 INR]; TATA Projects Ltd-25 | 525,162 |
| RB1-WMI-4th180 |  | Painting/insulation of exposed fire pipes | 30d | 2028-06-23 | 2028-07-27 | RB1-WMI-4th160 | CSD-LKO Calender (6 day + Holiday)-25 | Physical Progress [5240 h]; Firefighting [26258 INR]; TATA Projects Ltd-25 | 26,258 |
| RB1-WMI-4th205 |  | Testing risers and branch lines for leakage | 30d | 2028-07-28 | 2028-09-02 | RB1-WMI-4th180 | CSD-LKO Calender (6 day + Holiday)-25 | Physical Progress [3150 h]; Firefighting [52516 INR]; TATA Projects Ltd-25 | 52,516 |
| RB1-WMI-4th210 |  | Installation of sprinkler branch lines in ceilings | 35d | 2028-08-03 | 2028-09-14 | RB1-WMI-4th175 | CSD-LKO Calender (6 day + Holiday)-25 | Physical Progress [13100 h]; Firefighting [393871 INR]; TATA Projects Ltd-25 | 393,871 |
|  | 5 | **ELV** |  | 2028-01-31 | 2028-10-23 |  |  |  |  |
|  | 1 | **1st Fix** |  | 2028-01-31 | 2028-03-10 |  |  |  |  |
| RB1-WMI-4th25 |  | Slab Conduiting | 30d | 2028-01-31 | 2028-03-04 | RB1-WMI-4th10, E-GFC-MEP-RB1-180 | CSD-LKO Calender (6 day + Holiday)-25 | Physical Progress [13100 h]; ELV [235507 INR]; TATA Projects Ltd-25 | 235,507 |
| RB1-WMI-4th45 |  | Wall Conduiting | 10d | 2028-02-23 | 2028-03-04 | RB1-WMI-4th15, E-GFC-MEP-RB1-180 | CSD-LKO Calender (6 day + Holiday)-25 | Physical Progress [5240 h]; ELV [100932 INR]; TATA Projects Ltd-25 | 100,932 |
| RB1-WMI-4th75 |  | Installing back boxes for switches, sockets | 5d | 2028-03-06 | 2028-03-10 | RB1-WMI-4th45, RB1-WMI-4th25, E-GFC-MEP-RB1-180 | CSD-LKO Calender (6 day + Holiday)-25 | Physical Progress [2620 h]; ELV [168219 INR]; TATA Projects Ltd-25 | 168,219 |
|  | 2 | **2nd Fix** |  | 2028-03-30 | 2028-10-23 |  |  |  |  |
| RB1-WMI-4th95 |  | Cable tray installation | 35d | 2028-03-30 | 2028-05-12 | RB1-WMI-4th80 | CSD-LKO Calender (6 day + Holiday)-25 | Physical Progress [13100 h]; ELV [168219 INR]; TATA Projects Ltd-25 | 168,219 |
| RB1-WMI-4th150 |  | Cabeling of ELV cable - IT/Fire Alarm/Public Address | 45d | 2028-05-13 | 2028-07-04 | RB1-WMI-4th95 | CSD-LKO Calender (6 day + Holiday)-25 | Physical Progress [23590 h]; ELV [403726 INR]; TATA Projects Ltd-25 | 403,726 |
| RB1-WMI-4th185 |  | ELV Rack Installation | 30d | 2028-07-05 | 2028-08-08 | RB1-WMI-4th150 | CSD-LKO Calender (6 day + Holiday)-25 | Physical Progress [5240 h]; ELV [168219 INR]; TATA Projects Ltd-25 | 168,219 |
| RB1-WMI-4th215 |  | Termination of cables at junction boxes, patch panels, and control panels | 35d | 2028-08-09 | 2028-09-20 | RB1-WMI-4th185 | CSD-LKO Calender (6 day + Holiday)-25 | Physical Progress [15730 h]; ELV [168219 INR]; TATA Projects Ltd-25 | 168,219 |
| RB1-WMI-4th230 |  | Fixing devices like CCTV camera bases, card reader bases, smoke detector bases, PA Bases, Wifi Bases | 25d | 2028-09-21 | 2028-10-23 | RB1-WMI-4th215 | CSD-LKO Calender (6 day + Holiday)-25 | Physical Progress [2100 h]; ELV [336438 INR]; TATA Projects Ltd-25 | 336,438 |

| ID | WBS | Activity | Duration | Start | Finish | Predecessors | Calendar | Resources | Cost |
| --- | --- | --- | --- | --- | --- | --- | --- | --- | --- |
|  | 2 | **Dry Finishes/ID Works** |  | 2028-09-28 | 2029-04-17 |  |  |  |  |
| RB1-WMI-4th240 |  | Running of Wild Air | 1d | 2028-09-28 | 2028-09-28 | RB1-F-(GF-Terrace)50, RB1-WMI-4th145, RB1-WMI-4th170, RB1-WMI-4th200, RB1-WMI-4th225, RB1-WMI-4th255 | CSD-LKO Calender (6 day + Holiday)-25 | Physical Progress [520 h]; TATA Projects Ltd-25 |  |
| RB1-WMI-4th245 |  | Wall finish ID Works | 10d | 2028-10-24 | 2028-11-03 | RB1-WMI-4th240, RB1-WMI-4th90, RB1-WMI-4th130, RB1-WMI-4th190, RB1-WMI-4th195, RB1-WMI-4th220, RB1-WMI-4th235, RB1-WMI-4th120, RB1-WMI-4th125, RB1-WMI-4th155, RB1-WMI-4th165, RB1-WMI-4th175, RB1-WMI-4th180, RB1-WMI-4th205, RB1-WMI-4th210, RB1-WMI-4th95, RB1-WMI-4th150, RB1-WMI-4th185, RB1-WMI-4th215, RB1-WMI-4th230 | CSD-LKO Calender (6 day + Holiday)-25 | ID Work [2955823 INR]; Physical Progress [5240 h]; TATA Projects Ltd-25 | 2,955,823 |
| RB1-WMI-4th250 |  | False Ceiling Installation | 30d | 2028-11-04 | 2028-12-08 | RB1-WMI-4th245 | CSD-LKO Calender (6 day + Holiday)-25 | ID Work [3941098 INR]; Physical Progress [10490 h]; TATA Projects Ltd-25 | 3,941,098 |
| RB1-WMI-4th265 |  | Flooring of toilets/kitchen/Balcony | 10d | 2028-12-09 | 2028-12-20 | RB1-WMI-4th250, RB1-WMI-4th55 | CSD-LKO Calender (6 day + Holiday)-25 | ID Work [1576439 INR]; Physical Progress [5240 h]; TATA Projects Ltd-25 | 1,576,439 |
| RB1-WMI-4th270 |  | Doors & Windows/Fire Doors/Shaft Doors | 35d | 2028-12-21 | 2029-02-02 | RB1-WMI-4th245, RB1-WMI-4th265 | CSD-LKO Calender (6 day + Holiday)-25 | ID Work [1970549 INR]; Physical Progress [5240 h]; TATA Projects Ltd-25 | 1,970,549 |
| RB1-WMI-4th275 |  | Putty & First Coat of Paint | 10d | 2028-12-21 | 2029-01-03 | RB1-WMI-4th245, RB1-WMI-4th265 | CSD-LKO Calender (6 day + Holiday)-25 | Painting [6207 Sq m]; Painter [6210 h]; Helper [6210 h]; Physical Progress [5240 h]; TATA Projects Ltd-25 | 1,419,044.34 |
| RB1-WMI-4th300 |  | Wooden Flooring/Flooring | 20d | 2029-01-04 | 2029-01-27 | RB1-WMI-4th275 | CSD-LKO Calender (6 day + Holiday)-25 | ID Work [1970549 INR]; Physical Progress [10490 h]; TATA Projects Ltd-25 | 1,970,549 |
| RB1-WMI-4th305 |  | Railing for staircase | 35d | 2029-01-04 | 2029-02-15 | RB1-WMI-4th245, RB1-WMI-4th275 | CSD-LKO Calender (6 day + Holiday)-25 | ID Work [591165 INR]; Physical Progress [7850 h]; TATA Projects Ltd-25 | 591,165 |
| RB1-WMI-4th345 |  | Fixed Furniture | 8d | 2029-01-29 | 2029-02-06 | RB1-WMI-4th300 | CSD-LKO Calender (6 day + Holiday)-25 | ID Work [985274 INR]; Physical Progress [4190 h]; TATA Projects Ltd-25 | 985,274 |
| RB1-WMI-4th380 |  | False ceiling final finishes | 10d | 2029-02-22 | 2029-03-06 | RB1-WMI-4th315 | CSD-LKO Calender (6 day + Holiday)-25 | ID Work [394110 INR]; Physical Progress [5240 h]; TATA Projects Ltd-25 | 394,110 |
| RB1-WMI-4th390 |  | Final coat of paint | 10d | 2029-03-19 | 2029-03-29 | RB1-WMI-4th380, RB1-WMI-4th305, RB1-WMI-4th345, RB1-WMI-4th350, RB1-WMI-4th320, RB1-WMI-4th325, RB1-WMI-4th355, RB1-WMI-4th385, RB1-WMI-4th375, RB1-WMI-4th370, RB1-WMI-4th365, RB1-WMI-4th335, RB1-WMI-4th330, RB1-WMI-4th270, RB1-WMI-4th290 | CSD-LKO Calender (6 day + Holiday)-25 | Painting [6207 Sq m]; Painter [6210 h]; Helper [6210 h]; Physical Progress [5240 h]; TATA Projects Ltd-25 | 1,419,044.34 |
| RB1-WMI-4th395 |  | Soft Furnishing & Signage | 15d | 2029-03-31 | 2029-04-17 | RB1-WMI-4th390 | CSD-LKO Calender (6 day + Holiday)-25 | ID Work [3941098 INR]; Physical Progress [1570 h]; TATA Projects Ltd-25 | 3,941,098 |
| RB1-WMI-4th400 |  | Loose Furniture | 15d | 2029-03-31 | 2029-04-17 | RB1-WMI-4th390 | CSD-LKO Calender (6 day + Holiday)-25 | ID Work [1379384 INR]; Physical Progress [1570 h]; TATA Projects Ltd-25 | 1,379,384 |
|  | 3 | **MEP Final Fix** |  | 2028-12-09 | 2029-03-17 |  |  |  |  |
|  | 3 | **HVAC** |  | 2028-12-09 | 2029-02-21 |  |  |  |  |
| RB1-WMI-4th260 |  | Installing grills, diffusers, dampers | 30d | 2028-12-09 | 2029-01-15 | RB1-WMI-4th250 | CSD-LKO Calender (6 day + Holiday)-25 | Physical Progress [3150 h]; HVAC [563971 INR]; TATA Projects Ltd-25 | 563,971 |
| RB1-WMI-4th315 |  | Installation of thermostats and control panels | 30d | 2029-01-16 | 2029-02-21 | RB1-WMI-4th260, RB1-WMI-4th275, RB1-WMI-4th255 | CSD-LKO Calender (6 day + Holiday)-25 | Physical Progress [3150 h]; HVAC [281986 INR]; TATA Projects Ltd-25 | 281,986 |
|  | 1 | **Electrical** |  | 2029-01-04 | 2029-03-17 |  |  |  |  |
| RB1-WMI-4th280 |  | Switches & Socket | 30d | 2029-01-04 | 2029-02-08 | RB1-WMI-4th275 | CSD-LKO Calender (6 day + Holiday)-25 | Physical Progress [10490 h]; Electrical [572397 INR]; TATA Projects Ltd-25 | 572,397 |
| RB1-WMI-4th350 |  | Light Fixtures | 30d | 2029-02-09 | 2029-03-17 | RB1-WMI-4th280, RB1-WMI-4th235 | CSD-LKO Calender (6 day + Holiday)-25 | Physical Progress [7850 h]; Electrical [858595 INR]; TATA Projects Ltd-25 | 858,595 |
|  | 2 | **Plumbing** |  | 2029-01-04 | 2029-02-27 |  |  |  |  |
| RB1-WMI-4th285 |  | Installation of sanitary fixtures (WC, washbasins, urinals, sinks) | 10d | 2029-01-04 | 2029-01-15 | RB1-WMI-4th275, RB1-WMI-4th155, RB1-WMI-4th165 | CSD-LKO Calender (6 day + Holiday)-25 | Physical Progress [5240 h]; Plumbing [943701 INR]; TATA Projects Ltd-25 | 943,701 |
| RB1-WMI-4th310 |  | Installation of CP fittings (taps, mixers, showers, health faucets) | 10d | 2029-01-16 | 2029-01-27 | RB1-WMI-4th285, RB1-WMI-4th275 | CSD-LKO Calender (6 day + Holiday)-25 | Physical Progress [5240 h]; Plumbing [471850 INR]; TATA Projects Ltd-25 | 471,850 |
| RB1-WMI-4th320 |  | Connection of appliances | 25d | 2029-01-29 | 2029-02-27 | RB1-WMI-4th310 | CSD-LKO Calender (6 day + Holiday)-25 | Physical Progress [3670 h]; Plumbing [235925 INR]; TATA Projects Ltd-25 | 235,925 |

| ID | WBS | Activity | Duration | Start | Finish | Predecessors | Calendar | Resources | Cost |
| --- | --- | --- | --- | --- | --- | --- | --- | --- | --- |
|  | 4 | **Firefighting** |  | 2029-01-04 | 2029-03-12 |  |  |  |  |
| RB1-WMI-4th290 |  | Installation of hydrant accessories (valves, hose reels, cabinets) | 25d | 2029-01-04 | 2029-02-02 | RB1-WMI-4th275 | CSD-LKO Calender (6 day + Holiday)-25 | Physical Progress [5240 h]; Firefighting [262581 INR]; TATA Projects Ltd-25 | 262,581 |
| RB1-WMI-4th295 |  | Installation of portable fire extinguishers | 30d | 2029-01-04 | 2029-02-08 | RB1-WMI-4th275 | CSD-LKO Calender (6 day + Holiday)-25 | Physical Progress [3150 h]; Firefighting [26258 INR]; TATA Projects Ltd-25 | 26,258 |
| RB1-WMI-4th325 |  | Installation of sprinkler heads, nozzles, and final alignment | 35d | 2029-01-29 | 2029-03-12 | RB1-WMI-4th275, RB1-WMI-4th300, RB1-WMI-4th205, RB1-WMI-4th210 | CSD-LKO Calender (6 day + Holiday)-25 | Physical Progress [20970 h]; Firefighting [393871 INR]; TATA Projects Ltd-25 | 393,871 |
| RB1-WMI-4th355 |  | Integration with fire alarm system | 20d | 2029-02-09 | 2029-03-06 | RB1-WMI-4th295 | CSD-LKO Calender (6 day + Holiday)-25 | Physical Progress [10490 h]; Firefighting [131290 INR]; TATA Projects Ltd-25 | 131,290 |
|  | 5 | **ELV** |  | 2029-01-29 | 2029-03-17 |  |  |  |  |
| RB1-WMI-4th330 |  | Installation of data and Voice Faceplate | 25d | 2029-01-29 | 2029-02-27 | RB1-WMI-4th275, RB1-WMI-4th300 | CSD-LKO Calender (6 day + Holiday)-25 | Physical Progress [5240 h]; ELV [168219 INR]; TATA Projects Ltd-25 | 168,219 |
| RB1-WMI-4th335 |  | Installation of Camera & Wifi | 30d | 2029-01-29 | 2029-03-06 | RB1-WMI-4th275, RB1-WMI-4th300 | CSD-LKO Calender (6 day + Holiday)-25 | Physical Progress [5240 h]; ELV [168219 INR]; TATA Projects Ltd-25 | 168,219 |
| RB1-WMI-4th340 |  | Installation of fire alarm devices + Public Address | 10d | 2029-01-29 | 2029-02-08 | RB1-WMI-4th275, RB1-WMI-4th300 | CSD-LKO Calender (6 day + Holiday)-25 | Physical Progress [5240 h]; ELV [201863 INR]; TATA Projects Ltd-25 | 201,863 |
| RB1-WMI-4th360 |  | Installation of Active System | 15d | 2029-02-09 | 2029-02-27 | RB1-WMI-4th340 | CSD-LKO Calender (6 day + Holiday)-25 | Physical Progress [7850 h]; ELV [336438 INR]; TATA Projects Ltd-25 | 336,438 |
| RB1-WMI-4th365 |  | Fire Panel Intallation & Integration | 25d | 2029-02-09 | 2029-03-12 | RB1-WMI-4th340 | CSD-LKO Calender (6 day + Holiday)-25 | Physical Progress [13100 h]; ELV [168219 INR]; TATA Projects Ltd-25 | 168,219 |
| RB1-WMI-4th370 |  | Installation & Integration of Audio Visual System | 25d | 2029-02-09 | 2029-03-12 | RB1-WMI-4th340 | CSD-LKO Calender (6 day + Holiday)-25 | Physical Progress [13100 h]; ELV [168219 INR]; TATA Projects Ltd-25 | 168,219 |
| RB1-WMI-4th375 |  | Installation & Integration of Access Control | 25d | 2029-02-09 | 2029-03-12 | RB1-WMI-4th340 | CSD-LKO Calender (6 day + Holiday)-25 | Physical Progress [13100 h]; ELV [168219 INR]; TATA Projects Ltd-25 | 168,219 |
| RB1-WMI-4th385 |  | Integration of Active components | 15d | 2029-02-28 | 2029-03-17 | RB1-WMI-4th360 | CSD-LKO Calender (6 day + Holiday)-25 | Physical Progress [7850 h]; ELV [67288 INR]; TATA Projects Ltd-25 | 67,288 |
|  | 13 | **Structural Steel works for Facade** |  | 2027-12-03 | 2028-05-29 |  |  |  |  |
| RB1-F-SS10 |  | GF to Second Floor | 70d | 2027-12-03 | 2028-02-25 | SSF15 SS+90d, RB1-SS-4th.525 |  | Physical Progress [235850 h]; TATA Projects Ltd-25 |  |
| RB1-F-SS15 |  | Second Floor to Terrace | 75d | 2028-02-28 | 2028-05-29 | RB1-F-SS10, RB1-SS-Roof40 FF+15d, SSF20 FF+15d |  | Physical Progress [264150 h]; TATA Projects Ltd-25 |  |
|  | 5 | **Facade** |  | 2028-02-12 | 2029-02-12 |  |  |  |  |
|  | 2 | **GF to Second Floor** |  | 2028-02-12 | 2028-06-22 |  |  |  |  |
|  | 1 | **Front Face** |  | 2028-02-12 | 2028-06-15 |  |  |  |  |
| RB1-F-(GF-2nd)10 |  | Integration of Services Before Facade | 10d | 2028-02-12 | 2028-02-23 | RB1-SS-4th.750 |  | Facade [755963 INR]; Physical Progress [13970 h]; TATA Projects Ltd-25 | 755,963 |
| RB1-F-(GF-2nd)15 |  | Fixing of Facade Support | 25d | 2028-02-28 | 2028-03-28 | RB1-F-(GF-2nd)10 SS+2d, SSF15, RB1-F-SS10, P-F-Glass-15 |  | Facade [3779814 INR]; Physical Progress [55870 h]; TATA Projects Ltd-25 | 3,779,814 |
| RB1-F-(GF-2nd)40 |  | Fixing of Facade | 35d | 2028-03-29 | 2028-05-11 | RB1-F-(GF-2nd)15 |  | Facade [9071554 INR]; Physical Progress [69830 h]; TATA Projects Ltd-25 | 9,071,554 |
| RB1-F-(GF-2nd)55 |  | Integration of Services After Facade | 30d | 2028-05-12 | 2028-06-15 | RB1-F-(GF-2nd)40 |  | Facade [1511926 INR]; Physical Progress [13970 h]; TATA Projects Ltd-25 | 1,511,926 |

| ID | WBS | Activity | Duration | Start | Finish | Predecessors | Resources | Cost |
| --- | --- | --- | --- | --- | --- | --- | --- | --- |
|  | 2 | **Back Face - Toward RT-2** |  | 2028-02-24 | 2028-06-15 |  |  |  |
| RB1-F-(GF-2nd)20 |  | Integration of Services Before Facade | 10d | 2028-02-24 | 2028-03-07 | RB1-F-(GF-2nd)10 | Facade [755963 INR]; Physical Progress [13970 h]; TATA Projects Ltd-25 | 755,963 |
| RB1-F-(GF-2nd)25 |  | Fixing of Facade Support | 25d | 2028-02-28 | 2028-03-28 | RB1-F-(GF-2nd)20 SS+2d | Facade [3779814 INR]; Physical Progress [55870 h]; TATA Projects Ltd-25 | 3,779,814 |
| RB1-F-(GF-2nd)45 |  | Fixing of Facade | 35d | 2028-03-29 | 2028-05-11 | RB1-F-(GF-2nd)25 | Facade [9071554 INR]; Physical Progress [69830 h]; TATA Projects Ltd-25 | 9,071,554 |
| RB1-F-(GF-2nd)60 |  | Integration of Services After Facade | 30d | 2028-05-12 | 2028-06-15 | RB1-F-(GF-2nd)45 | Facade [1511926 INR]; Physical Progress [13970 h]; TATA Projects Ltd-25 | 1,511,926 |
|  | 3 | **Side Face** |  | 2028-03-08 | 2028-06-22 |  |  |  |
| RB1-F-(GF-2nd)30 |  | Integration of Services Before Facade | 10d | 2028-03-08 | 2028-03-20 | RB1-F-(GF-2nd)20, RB1-SS-4th.775 | Facade [755963 INR]; Physical Progress [13970 h]; TATA Projects Ltd-25 | 755,963 |
| RB1-F-(GF-2nd)35 |  | Fixing of Facade Support | 21d | 2028-03-10 | 2028-04-04 | RB1-F-(GF-2nd)30 SS+2d | Facade [3779814 INR]; Physical Progress [55870 h]; TATA Projects Ltd-25 | 3,779,814 |
| RB1-F-(GF-2nd)50 |  | Fixing of Facade | 35d | 2028-04-05 | 2028-05-18 | RB1-F-(GF-2nd)35 | Facade [9071554 INR]; Physical Progress [69830 h]; TATA Projects Ltd-25 | 9,071,554 |
| RB1-F-(GF-2nd)65 |  | Integration of Services After Facade | 30d | 2028-05-19 | 2028-06-22 | RB1-F-(GF-2nd)50 | Facade [1511926 INR]; Physical Progress [13970 h]; TATA Projects Ltd-25 | 1,511,926 |
|  | 3 | **Second Floor - Terrace** |  | 2028-05-12 | 2028-11-01 |  |  |  |
|  | 1 | **Front Face** |  | 2028-05-12 | 2028-10-24 |  |  |  |
| RB1-F-(GF-Terrace)10 |  | Integration of Services Before Facade | 10d | 2028-05-12 | 2028-05-23 | RB1-F-(GF-2nd)40 | Facade [1133944 INR]; Physical Progress [13970 h]; TATA Projects Ltd-25 | 1,133,944 |
| RB1-F-(GF-Terrace)15 |  | Fixing of Facade Support | 35d | 2028-05-30 | 2028-07-10 | RB1-F-(GF-Terrace)10 SS+2d, RB1-F-SS15 | Facade [5669721 INR]; Physical Progress [55870 h]; TATA Projects Ltd-25 | 5,669,721 |
| RB1-F-(GF-Terrace)40 |  | Fixing of Facade | 45d | 2028-07-11 | 2028-09-12 | RB1-F-(GF-Terrace)15 | Facade [13607331 INR]; Physical Progress [69830 h]; TATA Projects Ltd-25 | 13,607,331 |
| RB1-F-(GF-Terrace)55 |  | Integration of Services After Facade | 30d | 2028-09-13 | 2028-10-24 | RB1-F-(GF-Terrace)40 | Facade [2267888 INR]; Physical Progress [13970 h]; TATA Projects Ltd-25 | 2,267,888 |
|  | 2 | **Back Face - Toward RT-2** |  | 2028-05-24 | 2028-10-20 |  |  |  |
| RB1-F-(GF-Terrace)20 |  | Integration of Services Before Facade | 10d | 2028-05-24 | 2028-06-03 | RB1-F-(GF-Terrace)10, RB1-F-(GF-2nd)45 | Facade [1133944 INR]; Physical Progress [13970 h]; TATA Projects Ltd-25 | 1,133,944 |
| RB1-F-(GF-Terrace)25 |  | Fixing of Facade Support | 35d | 2028-05-26 | 2028-07-06 | RB1-F-(GF-Terrace)20 SS+2d | Facade [5669721 INR]; Physical Progress [55870 h]; TATA Projects Ltd-25 | 5,669,721 |
| RB1-F-(GF-Terrace)45 |  | Fixing of Facade | 45d | 2028-07-07 | 2028-09-08 | RB1-F-(GF-Terrace)25 | Facade [13607331 INR]; Physical Progress [69830 h]; TATA Projects Ltd-25 | 13,607,331 |
| RB1-F-(GF-Terrace)60 |  | Integration of Services After Facade | 30d | 2028-09-09 | 2028-10-20 | RB1-F-(GF-Terrace)45 | Facade [2267888 INR]; Physical Progress [13970 h]; TATA Projects Ltd-25 | 2,267,888 |
|  | 3 | **Side Face** |  | 2028-06-05 | 2028-11-01 |  |  |  |
| RB1-F-(GF-Terrace)30 |  | Integration of Services Before Facade | 10d | 2028-06-05 | 2028-06-15 | RB1-F-(GF-Terrace)20, RB1-F-(GF-2nd)50 | Facade [1133944 INR]; Physical Progress [13970 h]; TATA Projects Ltd-25 | 1,133,944 |
| RB1-F-(GF-Terrace)35 |  | Fixing of Facade Support | 35d | 2028-06-07 | 2028-07-20 | RB1-F-(GF-Terrace)30 SS+2d | Facade [5669721 INR]; Physical Progress [55870 h]; TATA Projects Ltd-25 | 5,669,721 |
| RB1-F-(GF-Terrace)50 |  | Fixing of Facade | 45d | 2028-07-21 | 2028-09-22 | RB1-F-(GF-Terrace)35 | Facade [13607331 INR]; Physical Progress [69830 h]; TATA Projects Ltd-25 | 13,607,331 |
| RB1-F-(GF-Terrace)65 |  | Integration of Services After Facade | 30d | 2028-09-23 | 2028-11-01 | RB1-F-(GF-Terrace)50 | Facade [2267888 INR]; Physical Progress [13970 h]; TATA Projects Ltd-25 | 2,267,888 |

| ID | WBS | Activity | Duration | Start | Finish | Predecessors | Resources | Cost |
| --- | --- | --- | --- | --- | --- | --- | --- | --- |
|  | 1 | **Above Terrace** |  | 2028-09-13 | 2029-02-12 |  |  |  |
|  | 1 | **Front Face** |  | 2028-09-13 | 2029-02-12 |  |  |  |
| RB1-F-Terrace10 |  | Integration of Services Before Facade | 10d | 2028-09-13 | 2028-09-26 | RB1-F-(GF-Terrace)40 | Facade [992678 INR]; Physical Progress [13970 h]; TATA Projects Ltd-25 | 992,678 |
| RB1-F-Terrace15 |  | Fixing of Facade Support | 50d | 2028-09-16 | 2028-11-18 | RB1-F-Terrace10 SS+2d | Facade [4963392 INR]; Physical Progress [69830 h]; TATA Projects Ltd-25 | 4,963,392 |
| RB1-F-Terrace50 |  | Fixing of Facade | 40d | 2028-11-20 | 2029-01-06 | RB1-F-Terrace15 | Facade [11912141 INR]; Physical Progress [55870 h]; TATA Projects Ltd-25 | 11,912,141 |
| RB1-F-Terrace75 |  | Integration of Services After Facade | 30d | 2029-01-08 | 2029-02-12 | RB1-F-Terrace50 | Facade [1985357 INR]; Physical Progress [13970 h]; TATA Projects Ltd-25 | 1,985,357 |
|  | 2 | **Back Face - Toward RT-2** |  | 2028-09-29 | 2029-02-12 |  |  |  |
| RB1-F-Terrace20 |  | Integration of Services Before Facade | 10d | 2028-09-29 | 2028-10-11 | RB1-F-Terrace10, RB1-F-(GF-Terrace)45 | Facade [992678 INR]; Physical Progress [13970 h]; TATA Projects Ltd-25 | 992,678 |
| RB1-F-Terrace25 |  | Fixing of Facade Support | 50d | 2028-10-03 | 2028-11-30 | RB1-F-Terrace20 SS+2d | Facade [4963392 INR]; Physical Progress [69830 h]; TATA Projects Ltd-25 | 4,963,392 |
| RB1-F-Terrace60 |  | Fixing of Facade | 40d | 2028-12-01 | 2029-01-18 | RB1-F-Terrace25 | Facade [11912141 INR]; Physical Progress [55870 h]; TATA Projects Ltd-25 | 11,912,141 |
| RB1-F-Terrace80 |  | Integration of Services After Facade | 20d | 2029-01-19 | 2029-02-12 | RB1-F-Terrace60 | Facade [1985357 INR]; Physical Progress [13970 h]; TATA Projects Ltd-25 | 1,985,357 |
|  | 3 | **Side Face** |  | 2028-10-12 | 2029-02-12 |  |  |  |
| RB1-F-Terrace30 |  | Integration of Services Before Facade | 5d | 2028-10-12 | 2028-10-18 | RB1-F-Terrace20, RB1-F-(GF-Terrace)45 | Facade [992678 INR]; Physical Progress [6980 h]; TATA Projects Ltd-25 | 992,678 |
| RB1-F-Terrace45 |  | Fixing of Facade Support | 50d | 2028-10-14 | 2028-12-12 | RB1-F-Terrace30 SS+2d | Facade [4963392 INR]; Physical Progress [69830 h]; TATA Projects Ltd-25 | 4,963,392 |
| RB1-F-Terrace65 |  | Fixing of Facade | 40d | 2028-12-13 | 2029-01-31 | RB1-F-Terrace45 | Facade [11912141 INR]; Physical Progress [55870 h]; TATA Projects Ltd-25 | 11,912,141 |
| RB1-F-Terrace85 |  | Integration of Services After Facade | 10d | 2029-02-01 | 2029-02-12 | RB1-F-Terrace65 | Facade [1985357 INR]; Physical Progress [13970 h]; TATA Projects Ltd-25 | 1,985,357 |
|  | 4 | **Rooftop** |  | 2028-09-23 | 2029-01-09 |  |  |  |
| RB1-F-Terrace35 |  | Integration of Services Before Facade | 4d | 2028-09-23 | 2028-09-29 | RB1-Terrace15, RB1-F-(GF-Terrace)50 | Facade [3701848 INR]; Physical Progress [5590 h]; TATA Projects Ltd-25 | 3,701,848 |
| RB1-F-Terrace40 |  | Fixing of Facade Support | 45d | 2028-09-26 | 2028-11-21 | RB1-F-Terrace35 SS+2d, P-F-FRP-15, SSF20 | Facade [18509240 INR]; Physical Progress [62850 h]; TATA Projects Ltd-25 | 18,509,240 |
| RB1-F-Terrace55 |  | Fixing of FRP Facade with aluminium bars and louvers | 25d | 2028-11-22 | 2028-12-20 | RB1-F-Terrace40 | Facade [44422175 INR]; Physical Progress [34920 h]; TATA Projects Ltd-25 | 44,422,175 |
| RB1-F-Terrace70 |  | Integration of Services After Facade | 15d | 2028-12-21 | 2029-01-09 | RB1-F-Terrace55 | Facade [7403696 INR]; Physical Progress [20950 h]; TATA Projects Ltd-25 | 7,403,696 |
|  | 3 | **Terrace Works** |  | 2028-02-15 | 2029-02-15 |  |  |  |
| RB1-Terrace10 |  | Waterproofing | 45d | 2028-02-15 | 2028-04-08 | RB1-SS-4th.775 | Waterproofing [8564838 INR]; Waterprrofing Mason [8160 h]; Helper [4080 h]; Physical Progress [128570 h]; TATA Projects Ltd-25 | 8,564,838 |
| RB1-Terrace15 |  | Flooring | 30d | 2028-04-10 | 2028-05-17 | RB1-Terrace10, E-GFC-AR-RB1-185 | ID Work [2210466 INR]; Physical Progress [85710 h]; TATA Projects Ltd-25 | 2,210,466 |
| RB1-Terrace20 |  | Installation of Fans, Solar and other MEP Equipments | 30d | 2029-01-10 | 2029-02-15 | RB1-Terrace15, RB1-F-Terrace70, E-GFC-MEP-RB1-185 | Physical Progress [85710 h]; MEP Equipments on Terrace [3000000 INR]; TATA Projects Ltd-25 | 3,000,000 |

| ID | WBS | Activity | Duration | Start | Finish | Predecessors | Calendar | Resources | Cost |
| --- | --- | --- | --- | --- | --- | --- | --- | --- | --- |
|  | 10 | **Vertical Transport** |  | 2028-01-25 | 2028-08-24 |  |  |  |  |
| RB1-VT10 |  | Wait for Strength Gain | 6d | 2028-01-25 | 2028-02-01 | RB1-SS-Roof40 |  | Physical Progress [109950 h]; TATA Projects Ltd-25 |  |
| RB1-VT15 |  | Deshuttering | 5d | 2028-02-02 | 2028-02-07 | RB1-VT10 | CSD-LKO Calender (6 day + Holiday)-25 | Physical Progress [26180 h]; TATA Projects Ltd-25 |  |
| RB1-VT20 |  | Plaster | 15d | 2028-02-08 | 2028-02-24 | RB1-VT15 | CSD-LKO Calender (6 day + Holiday)-25 | Plaster [1000 Sqr Mtr]; Mason [670 h]; Helper [340 h]; Physical Progress [78530 h]; TATA Projects Ltd-25 | 553,910 |
| RB1-VT25 |  | Installation of Lift/Escalator | 120d | 2028-02-25 | 2028-07-18 | P-MEP-VT-20, RB1-VT20 | CSD-LKO Calender (6 day + Holiday)-25 | Physical Progress [628270 h]; Lift [69300000 INR]; TATA Projects Ltd-25 | 69,300,000 |
| RB1-VT30 |  | Testing & Commissioning | 30d | 2028-07-19 | 2028-08-24 | RB1-VT25 | CSD-LKO Calender (6 day + Holiday)-25 | Physical Progress [157070 h]; Testing & Commissioing [7700000 INR]; TATA Projects Ltd-25 | 7,700,000 |
|  | 2 | **Testing, Commissioning, HO** |  | 2029-01-08 | 2029-06-06 |  |  |  |  |
|  | 1 | **Ground Floor** |  | 2029-01-08 | 2029-03-22 |  |  |  |  |
| RB1-T&C-GF10 |  | Testing & Commissioning | 30d | 2029-01-08 | 2029-02-12 | RB1-WMI-GF330, RB1-WMI-GF295, RB1-WMI-GF300, RB1-WMI-GF335, RB1-WMI-GF260, RB1-WMI-GF285, RB1-WMI-GF280, RB1-WMI-GF325, RB1-WMI-GF290, RB1-WMI-GF315, RB1-WMI-GF320, RB1-WMI-GF350, RB1-WMI-GF340, RB1-WMI-GF345, RB1-WMI-GF365, RB1-WMI-GF370, RB1-WMI-GF375, RB1-WMI-GF380, RB1-WMI-GF385 | CSD-LKO Calender (6 day + Holiday)-25 | Physical Progress [40980 h]; Testing & Commissioing [1392060 INR]; TATA Projects Ltd-25 | 1,392,060 |
| RB1-T&C-GF15 |  | Snagging & Desnagging | 30d | 2029-02-13 | 2029-03-21 | RB1-T&C-GF10 | CSD-LKO Calender (6 day + Holiday)-25 | Physical Progress [40980 h]; TATA Projects Ltd-25 |  |
| RB1-T&C-GF20 |  | Handing Over | 1d | 2029-03-22 | 2029-03-22 | RB1-T&C-GF15 | CSD-LKO Calender (6 day + Holiday)-25 | Physical Progress [1370 h]; TATA Projects Ltd-25 |  |
|  | 2 | **First Floor** |  | 2029-01-22 | 2029-04-06 |  |  |  |  |
| RB1-T&C-1st10 |  | Testing & Commissioning | 30d | 2029-01-22 | 2029-02-27 | RB1-WMI-1st330, RB1-WMI-1st295, RB1-WMI-1st300, RB1-WMI-1st335, RB1-WMI-1st290, RB1-WMI-1st315, RB1-WMI-1st320, RB1-WMI-1st280, RB1-WMI-1st325, RB1-WMI-1st260, RB1-WMI-1st285, RB1-WMI-1st350, RB1-WMI-1st340, RB1-WMI-1st345, RB1-WMI-1st365, RB1-WMI-1st370, RB1-WMI-1st375, RB1-WMI-1st380, RB1-WMI-1st385 | CSD-LKO Calender (6 day + Holiday)-25 | Physical Progress [40980 h]; Testing & Commissioing [1392060 INR]; TATA Projects Ltd-25 | 1,392,060 |
| RB1-T&C-1st15 |  | Snagging & Desnagging | 30d | 2029-02-28 | 2029-04-05 | RB1-T&C-1st10 | CSD-LKO Calender (6 day + Holiday)-25 | Physical Progress [40980 h]; TATA Projects Ltd-25 |  |
| RB1-T&C-1st20 |  | Handing Over | 1d | 2029-04-06 | 2029-04-06 | RB1-T&C-1st15 | CSD-LKO Calender (6 day + Holiday)-25 | Physical Progress [1370 h]; TATA Projects Ltd-25 |  |
|  | 3 | **Second Floor** |  | 2029-02-13 | 2029-04-28 |  |  |  |  |
| RB1-T&C-2nd10 |  | Testing & Commissioning | 30d | 2029-02-13 | 2029-03-21 | RB1-F-Terrace85, RB1-WMI-2nd260, RB1-WMI-2nd310, RB1-WMI-2nd280, RB1-WMI-2nd350, RB1-WMI-2nd285, RB1-WMI-2nd315, RB1-WMI-2nd320, RB1-WMI-2nd290, RB1-WMI-2nd295, RB1-WMI-2nd355, RB1-WMI-2nd325, RB1-WMI-2nd340, RB1-WMI-2nd330, RB1-WMI-2nd360, RB1-WMI-2nd335, RB1-WMI-2nd365, RB1-WMI-2nd370, RB1-WMI-2nd375, RB1-WMI-2nd385 | CSD-LKO Calender (6 day + Holiday)-25 | Physical Progress [40980 h]; Testing & Commissioing [1392060 INR]; TATA Projects Ltd-25 | 1,392,060 |
| RB1-T&C-2nd15 |  | Snagging & Desnagging | 30d | 2029-03-22 | 2029-04-27 | RB1-T&C-2nd10 | CSD-LKO Calender (6 day + Holiday)-25 | Physical Progress [40980 h]; TATA Projects Ltd-25 |  |
| RB1-T&C-2nd20 |  | Handing Over | 1d | 2029-04-28 | 2029-04-28 | RB1-T&C-2nd15 | CSD-LKO Calender (6 day + Holiday)-25 | Physical Progress [1370 h]; TATA Projects Ltd-25 |  |
|  | 4 | **Third Floor** |  | 2029-03-10 | 2029-05-23 |  |  |  |  |
| RB1-T&C-3rd10 |  | Testing & Commissioning | 30d | 2029-03-10 | 2029-04-14 | RB1-F-Terrace85, RB1-WMI-3rd260, RB1-WMI-3rd310, RB1-WMI-3rd280, RB1-WMI-3rd350, RB1-WMI-3rd285, RB1-WMI-3rd315, RB1-WMI-3rd320, RB1-WMI-3rd290, RB1-WMI-3rd295, RB1-WMI-3rd355, RB1-WMI-3rd325, RB1-WMI-3rd340, RB1-WMI-3rd330, RB1-WMI-3rd360, RB1-WMI-3rd335, RB1-WMI-3rd365, RB1-WMI-3rd370, RB1-WMI-3rd375, RB1-WMI-3rd385 | CSD-LKO Calender (6 day + Holiday)-25 | Physical Progress [40980 h]; Testing & Commissioing [1392060 INR]; TATA Projects Ltd-25 | 1,392,060 |
| RB1-T&C-3rd15 |  | Snagging & Desnagging | 30d | 2029-04-16 | 2029-05-22 | RB1-T&C-3rd10 | CSD-LKO Calender (6 day + Holiday)-25 | Physical Progress [40980 h]; TATA Projects Ltd-25 |  |
| RB1-T&C-3rd20 |  | Handing Over | 1d | 2029-05-23 | 2029-05-23 | RB1-T&C-3rd15 | CSD-LKO Calender (6 day + Holiday)-25 | Physical Progress [1370 h]; TATA Projects Ltd-25 |  |
|  | 6 | **Fourth Floor** |  | 2029-03-19 | 2029-05-29 |  |  |  |  |
| RB1-T&C-4th10 |  | Testing & Commissioning | 30d | 2029-03-19 | 2029-04-23 | RB1-F-Terrace85, RB1-WMI-4th260, RB1-WMI-4th315, RB1-WMI-4th280, RB1-WMI-4th350, RB1-WMI-4th285, RB1-WMI-4th310, RB1-WMI-4th320, RB1-WMI-4th290, RB1-WMI-4th295, RB1-WMI-4th355, RB1-WMI-4th325, RB1-WMI-4th340, RB1-WMI-4th330, RB1-WMI-4th360, RB1-WMI-4th335, RB1-WMI-4th365, RB1-WMI-4th370, RB1-WMI-4th375, RB1-WMI-4th385 | CSD-LKO Calender (6 day + Holiday)-25 | Physical Progress [40980 h]; Testing & Commissioing [1392060 INR]; TATA Projects Ltd-25 | 1,392,060 |
| RB1-T&C-4th15 |  | Snagging & Desnagging | 28d | 2029-04-25 | 2029-05-28 | RB1-T&C-4th10 | CSD-LKO Calender (6 day + Holiday)-25 | Physical Progress [40980 h]; TATA Projects Ltd-25 |  |
| RB1-T&C-4th20 |  | Handing Over | 1d | 2029-05-29 | 2029-05-29 | RB1-T&C-4th15 | CSD-LKO Calender (6 day + Holiday)-25 | Physical Progress [1370 h]; TATA Projects Ltd-25 |  |

| ID | WBS | Activity | Duration | Start | Finish | Predecessors | Complete | Planned start | Planned finish | Resources | Cost |
| --- | --- | --- | --- | --- | --- | --- | --- | --- | --- | --- | --- |
|  | 9 | **Terrace Floor** |  | 2029-02-16 | 2029-06-06 |  |  |  |  |  |  |
| RB1-T&C-Terrace10 |  | Testing & Commissioning | 45d | 2029-02-16 | 2029-04-11 | RB1-Terrace20, RB1-F-Terrace85, RB1-VT30 |  |  |  | Physical Progress [40980 h]; Testing & Commissioing [1000000 INR]; TATA Projects Ltd-25 | 1,000,000 |
| RB1-T&C-Terrace15 |  | Snagging & Desnagging | 45d | 2029-04-12 | 2029-06-05 | RB1-T&C-Terrace10 |  |  |  | Physical Progress [40980 h]; TATA Projects Ltd-25 |  |
| RB1-T&C-Terrace20 |  | Handing Over | 1d | 2029-06-06 | 2029-06-06 | RB1-T&C-Terrace15 |  |  |  | Physical Progress [1370 h]; TATA Projects Ltd-25 |  |
|  | 7 | **Convention Center** |  | 2026-05-13 | 2029-05-18 |  |  |  |  |  |  |
|  | 6 | **Substructure** |  | 2026-05-13 | 2027-05-11 |  |  |  |  |  |  |
|  | 4 | **Foundation** |  | 2026-05-13 | 2026-12-01 |  |  |  |  |  |  |
|  | 2 | **Pour 1** |  | 2026-08-04 | 2026-10-22 |  |  |  |  |  |  |
|  | 1 | **CF27C** |  | 2026-08-04 | 2026-10-22 |  |  |  |  |  |  |
| CC-SS-FN10 |  | Pocket Excavation | 25.9d | 2026-08-04 A | 2026-09-26 A | Milestones-90 | 100% | 2026-08-05 | 2026-09-26 | Physical Progress [1170 h]; Pocket Excavation; TATA Projects Ltd-25 |  |
| CC-SS-FN25 |  | Surface dressing | 1d | 2026-09-30 | 2026-10-01 | CC-SS-FN10 |  |  |  | Helper [30 h]; Physical Progress [590 h]; Surface Dressing [236 Sq m]; TATA Projects Ltd-25 | 10,620 |
| CC-SS-FN35 |  | ATT | 1d | 2026-10-01 | 2026-10-03 | CC-SS-FN25 |  |  |  | Physical Progress [590 h]; ATT [260 Sq m]; TATA Projects Ltd-25 | 35,620 |
| CC-SS-FN45 |  | PCC | 1d | 2026-10-03 | 2026-10-05 | CC-SS-FN35, CC-SS-FN25 |  |  |  | Mason [10 h]; Helper [10 h]; Physical Progress [590 h]; Concrete M10 [18 m3]; TATA Projects Ltd-25 | 155,502 |
| CC-SS-FN55 |  | Shuttering | 3d | 2026-10-05 | 2026-10-08 | CC-SS-FN45 |  |  |  | Carpenter [500 h]; Helper [250 h]; Physical Progress [1170 h]; Formwork [295 Sq m]; TATA Projects Ltd-25 | 343,722.2 |
| CC-SS-FN60 |  | Blockwork/Brickwork | 1d | 2026-10-05 | 2026-10-06 | CC-SS-FN10, CC-SS-FN45 |  |  |  | Brickwork for the footing [64 CuM]; Mason [430 h]; Helper [220 h]; Physical Progress [1170 h]; TATA Projects Ltd-25 | 531,200 |
| CC-SS-FN100 |  | Reinforcement | 10d | 2026-10-08 | 2026-10-21 | CC-SS-FN70 |  |  |  | Barbender [3200 h]; Helper [1600 h]; Physical Progress [1170 h]; Reinforcement Steel [48 MT1]; TATA Projects Ltd-25 | 4,632,600 |
| CC-SS-FN70 |  | Waterproofing | 0d | 2026-10-08 | 2026-10-08 | CC-SS-FN45, CC-SS-FN55 |  |  |  | Waterproofing (Raft/Grade Slab); Waterprrofing Mason; Helper; Physical Progress; TATA Projects Ltd-25 |  |
| CC-SS-FN135 |  | Concrete | 1d | 2026-10-21 | 2026-10-22 | CC-SS-FN100 |  |  |  | Mason [50 h]; Helper [50 h]; Physical Progress [590 h]; Concrete M40 [400 m3]; TATA Projects Ltd-25 | 3,946,800 |
|  | 4 | **Sump** |  | 2026-09-30 | 2026-10-15 |  |  |  |  |  |  |
| CC-SS-FN15 |  | Pocket Excavation | 1d | 2026-09-30 | 2026-10-01 | Milestones-90 |  |  |  | Physical Progress [590 h]; Pocket Excavation; TATA Projects Ltd-25 |  |
| CC-SS-FN20 |  | Surface dressing | 1d | 2026-10-01 | 2026-10-03 | CC-SS-FN15 |  |  |  | Helper [30 h]; Physical Progress [590 h]; Surface Dressing [22 Sq m]; TATA Projects Ltd-25 | 990 |
| CC-SS-FN30 |  | ATT | 1d | 2026-10-03 | 2026-10-05 | CC-SS-FN20 |  |  |  | Physical Progress [590 h]; ATT [24 Sq m]; TATA Projects Ltd-25 | 3,288 |
| CC-SS-FN40 |  | PCC | 1d | 2026-10-05 | 2026-10-06 | CC-SS-FN30 |  |  |  | Mason [10 h]; Helper [10 h]; Physical Progress [590 h]; Concrete M10 [2 m3]; TATA Projects Ltd-25 | 17,278 |
| CC-SS-FN50 |  | Shuttering | 2d | 2026-10-06 | 2026-10-08 | CC-SS-FN40 |  |  |  | Carpenter [40 h]; Helper [20 h]; Physical Progress [1170 h]; Formwork [24 Sq m]; TATA Projects Ltd-25 | 27,963.84 |
| CC-SS-FN65 |  | Waterproofing | 0d | 2026-10-08 | 2026-10-08 | CC-SS-FN40, CC-SS-FN50 |  |  |  | Waterproofing (Raft/Grade Slab); Waterprrofing Mason; Helper; Physical Progress; TATA Projects Ltd-25 |  |
| CC-SS-FN80 |  | Reinforcement | 2d | 2026-10-08 | 2026-10-10 | CC-SS-FN65 |  |  |  | Barbender [70 h]; Helper [40 h]; Physical Progress [1170 h]; Reinforcement Steel [1 MT1]; TATA Projects Ltd-25 | 96,512.5 |
| CC-SS-FN110 |  | MEP Services | 3d | 2026-10-10 | 2026-10-14 | CC-SS-FN80 |  |  |  | Physical Progress [1750 h]; TATA Projects Ltd-25 |  |
| CC-SS-FN150 |  | Concrete | 1d | 2026-10-14 | 2026-10-15 | CC-SS-FN80, CC-SS-FN110 |  |  |  | Mason [50 h]; Helper [50 h]; Physical Progress [590 h]; Concrete M40 [8 m3]; TATA Projects Ltd-25 | 78,936 |

| ID | WBS | Activity | Duration | Start | Finish | Predecessors | Complete | Remaining | Planned start | Planned finish | Resources | Cost | Actual cost |
| --- | --- | --- | --- | --- | --- | --- | --- | --- | --- | --- | --- | --- | --- |
|  | 3 | **F3 - 2** |  | 2026-10-06 | 2026-10-19 |  |  |  |  |  |  |  |  |
| CC-SS-FN75 |  | Pocket Excavation | 2d | 2026-10-06 | 2026-10-08 | CC-SS-FN60 |  |  |  |  | Physical Progress [1170 h]; Pocket Excavation; TATA Projects Ltd-25 |  |  |
| CC-SS-FN85 |  | Surface dressing | 1d | 2026-10-08 | 2026-10-09 | CC-SS-FN75 |  |  |  |  | Helper [30 h]; Physical Progress [590 h]; Surface Dressing [32 Sq m]; TATA Projects Ltd-25 | 1,440 |  |
| CC-SS-FN90 |  | ATT | 1d | 2026-10-08 | 2026-10-09 | CC-SS-FN75 |  |  |  |  | Physical Progress [590 h]; ATT [35 Sq m]; TATA Projects Ltd-25 | 4,795 |  |
| CC-SS-FN105 |  | PCC | 1d | 2026-10-09 | 2026-10-10 | CC-SS-FN90, CC-SS-FN85 |  |  |  |  | Mason [10 h]; Helper [10 h]; Physical Progress [590 h]; Concrete M10 [2 m3]; TATA Projects Ltd-25 | 17,278 |  |
| CC-SS-FN115 |  | Shuttering | 3d | 2026-10-10 | 2026-10-14 | CC-SS-FN105 |  |  |  |  | Carpenter [40 h]; Helper [20 h]; Physical Progress [1750 h]; Formwork [21 Sq m]; TATA Projects Ltd-25 | 24,468.36 |  |
| CC-SS-FN160 |  | Waterproofing | 0d | 2026-10-14 | 2026-10-14 | CC-SS-FN105, CC-SS-FN115 |  |  |  |  | Waterproofing (Raft/Grade Slab); Waterprrofing Mason; Helper; Physical Progress; TATA Projects Ltd-25 |  |  |
| CC-SS-FN190 |  | Reinforcement | 3d | 2026-10-14 | 2026-10-17 | CC-SS-FN160 |  |  |  |  | Barbender [200 h]; Helper [100 h]; Physical Progress [1750 h]; Reinforcement Steel [3 MT1]; TATA Projects Ltd-25 | 289,537.5 |  |
| CC-SS-FN220 |  | Concrete | 1d | 2026-10-17 | 2026-10-19 | CC-SS-FN190 |  |  |  |  | Mason [50 h]; Helper [50 h]; Physical Progress [590 h]; Concrete M40 [29 m3]; TATA Projects Ltd-25 | 286,143 |  |
|  | 1 | **Pour 2** |  | 2026-10-08 | 2026-10-24 |  |  |  |  |  |  |  |  |
|  | 3 | **F4 --5, F5-5** |  | 2026-10-08 | 2026-10-24 |  |  |  |  |  |  |  |  |
| CC-SS-FN95 |  | Pocket Excavation | 2d | 2026-10-08 | 2026-10-10 | CC-SS-FN75 |  |  |  |  | Physical Progress [1170 h]; Pocket Excavation; TATA Projects Ltd-25 |  |  |
| CC-SS-FN125 |  | Surface dressing | 1d | 2026-10-10 | 2026-10-12 | CC-SS-FN95 |  |  |  |  | Helper [30 h]; Physical Progress [590 h]; Surface Dressing [182 Sq m]; TATA Projects Ltd-25 | 8,190 |  |
| CC-SS-FN130 |  | ATT | 1d | 2026-10-10 | 2026-10-12 | CC-SS-FN95 |  |  |  |  | Physical Progress [590 h]; ATT [200 Sq m]; TATA Projects Ltd-25 | 27,400 |  |
| CC-SS-FN140 |  | PCC | 1d | 2026-10-12 | 2026-10-13 | CC-SS-FN130, CC-SS-FN125 |  |  |  |  | Mason [10 h]; Helper [10 h]; Physical Progress [590 h]; Concrete M10 [14 m3]; TATA Projects Ltd-25 | 120,946 |  |
| CC-SS-FN155 |  | Shuttering | 3d | 2026-10-13 | 2026-10-16 | CC-SS-FN140 |  |  |  |  | Carpenter [220 h]; Helper [110 h]; Physical Progress [1750 h]; Formwork [132 Sq m]; TATA Projects Ltd-25 | 153,801.12 |  |
| CC-SS-FN185 |  | Waterproofing | 0d | 2026-10-16 | 2026-10-16 | CC-SS-FN140, CC-SS-FN155 |  |  |  |  | Waterproofing (Raft/Grade Slab); Waterprrofing Mason; Helper; Physical Progress; TATA Projects Ltd-25 |  |  |
| CC-SS-FN210 |  | Reinforcement | 5d | 2026-10-16 | 2026-10-23 | CC-SS-FN185 |  |  |  |  | Barbender [1400 h]; Helper [700 h]; Physical Progress [1750 h]; Reinforcement Steel [21 MT1]; TATA Projects Ltd-25 | 2,026,762.5 |  |
| CC-SS-FN245 |  | Concrete | 1d | 2026-10-23 | 2026-10-24 | CC-SS-FN210 |  |  |  |  | Mason [50 h]; Helper [50 h]; Physical Progress [590 h]; Concrete M40 [179 m3]; TATA Projects Ltd-25 | 1,766,193 |  |
|  | 3 | **Pour 3** |  | 2026-05-22 | 2026-11-05 |  |  |  |  |  |  |  |  |
|  | 1 | **CF27B, F11, F10-3, CF13B, F12, CF44** |  | 2026-05-22 | 2026-10-12 |  |  |  |  |  |  |  |  |
| CC-SS-FN120 |  | Pocket Excavation | 88.9d | 2026-05-22 A | 2026-10-10 | CC-SS-FN95 FF | 51% | 0.98d |  |  | Physical Progress [1170 h]; Pocket Excavation; TATA Projects Ltd-25 |  |  |
| CC-SS-FN145 |  | Surface dressing | 88.41d | 2026-05-22 A | 2026-10-10 | CC-SS-FN120 SS | 51% | 0.49d |  |  | Helper [30 h]; Physical Progress [590 h]; Surface Dressing [513 Sq m]; TATA Projects Ltd-25 | 23,085 | 22,956.62 |
| CC-SS-FN165 |  | ATT | 80.41d | 2026-06-02 A | 2026-10-10 | CC-SS-FN145 SS | 51% | 0.49d |  |  | Physical Progress [590 h]; ATT [564 Sq m]; TATA Projects Ltd-25 | 77,268 | 76,795.54 |
| CC-SS-FN170 |  | PCC | 80.41d | 2026-06-02 A | 2026-10-10 | CC-SS-FN165 SS, CC-SS-FN145 SS | 51% | 0.49d |  |  | Mason [10 h]; Helper [10 h]; Physical Progress [590 h]; Concrete M10 [38 m3]; TATA Projects Ltd-25 | 328,282 | 326,274.68 |
| CC-SS-FN195 |  | Waterproofing | 40.92d | 2026-07-27 A | 2026-10-09 | CC-SS-FN170 SS, CC-SS-FN175 SS |  | 0d |  |  | Waterproofing (Raft/Grade Slab); Waterprrofing Mason; Helper; Physical Progress; TATA Projects Ltd-25 |  |  |
| CC-SS-FN175 |  | Shuttering | 40.41d | 2026-07-30 A | 2026-10-12 | CC-SS-FN235 FF+1d | 38% | 3.71d |  |  | Carpenter [960 h]; Helper [480 h]; Physical Progress [1750 h]; Formwork [576 Sq m]; TATA Projects Ltd-25 | 671,132.16 | 609,485.99 |
| CC-SS-FN235 |  | Reinforcement | 39.41d | 2026-07-30 A | 2026-10-10 | CC-SS-FN170 FF | 51% | 7.37d |  |  | Barbender [6270 h]; Helper [3140 h]; Physical Progress [1750 h]; Reinforcement Steel [94 MT1]; TATA Projects Ltd-25 | 9,072,175 | 7,375,146.87 |
| CC-SS-FN180 |  | Blockwork/Brickwork | 13.9d | 2026-08-01 A | 2026-08-31 A | CC-SS-FN120 SS, CC-SS-FN170 SS | 100% |  |  |  | Brickwork for the footing [64 CuM]; Mason [430 h]; Helper [220 h]; Physical Progress [1750 h]; TATA Projects Ltd-25 | 531,200 | 531,200 |
| CC-SS-FN270 |  | Concrete | 37.41d | 2026-08-04 A | 2026-10-12 | CC-SS-FN235 FF+1d | 18% | 0.75d | 2026-08-05 | 2026-10-12 | Mason [50 h]; Helper [50 h]; Physical Progress [590 h]; Concrete M40 [780 m3]; TATA Projects Ltd-25 | 7,696,260 | 7,541,957.62 |

| ID | WBS | Activity | Duration | Start | Finish | Predecessors | Complete | Remaining | Planned start | Planned finish | Resources | Cost | Actual cost |
| --- | --- | --- | --- | --- | --- | --- | --- | --- | --- | --- | --- | --- | --- |
|  | 4 | **F8-4, F9, CF1C, F5 -2** |  | 2026-05-26 | 2026-11-05 |  |  |  |  |  |  |  |  |
| CC-SS-FN200 |  | Pocket Excavation | 85.16d | 2026-05-26 A | 2026-10-10 | CC-SS-FN180 | 88% | 0.24d |  |  | Physical Progress [1170 h]; Pocket Excavation; TATA Projects Ltd-25 |  |  |
| CC-SS-FN205 |  | Surface dressing | 84.03d | 2026-05-28 A | 2026-10-10 | CC-SS-FN200 SS | 88% | 0.12d |  |  | Helper [30 h]; Physical Progress [590 h]; Surface Dressing [360 Sq m]; TATA Projects Ltd-25 | 16,200 | 16,177.19 |
| CC-SS-FN225 |  | ATT | 1d | 2026-10-10 | 2026-10-12 | CC-SS-FN205 |  |  |  |  | Physical Progress [590 h]; ATT [396 Sq m]; TATA Projects Ltd-25 | 54,252 |  |
| CC-SS-FN230 |  | PCC | 1d | 2026-10-12 | 2026-10-13 | CC-SS-FN225 |  |  |  |  | Mason [10 h]; Helper [10 h]; Physical Progress [590 h]; Concrete M10 [27 m3]; TATA Projects Ltd-25 | 233,253 |  |
| CC-SS-FN240 |  | Shuttering | 3d | 2026-10-13 | 2026-10-16 | CC-SS-FN230 |  |  |  |  | Carpenter [590 h]; Helper [300 h]; Physical Progress [1170 h]; Formwork [352 Sq m]; TATA Projects Ltd-25 | 410,136.32 |  |
| CC-SS-FN260 |  | Waterproofing | 0d | 2026-10-16 | 2026-10-16 | CC-SS-FN230, CC-SS-FN240, CC-SS-FN195 FF |  |  |  |  | Waterproofing (Raft/Grade Slab); Waterprrofing Mason; Helper; Physical Progress; TATA Projects Ltd-25 |  |  |
| CC-SS-FN295 |  | Reinforcement | 15d | 2026-10-16 | 2026-11-04 | CC-SS-FN260 |  |  |  |  | Barbender [3800 h]; Helper [1900 h]; Physical Progress [1170 h]; Reinforcement Steel [57 MT1]; TATA Projects Ltd-25 | 5,501,212.5 |  |
| CC-SS-FN320 |  | Concrete | 1d | 2026-11-04 | 2026-11-05 | CC-SS-FN295 |  |  |  |  | Mason [50 h]; Helper [50 h]; Physical Progress [590 h]; Concrete M40 [477 m3]; TATA Projects Ltd-25 | 4,706,559 |  |
|  | 5 | **Pour 4** |  | 2026-08-11 | 2026-11-19 |  |  |  |  |  |  |  |  |
|  | 1 | **CF19, CF19A** |  | 2026-09-05 | 2026-11-19 |  |  |  |  |  |  |  |  |
| CC-SS-FN215 |  | Pocket Excavation | 23.42d | 2026-09-05 A | 2026-10-12 | CC-SS-FN200 SS | 50% | 1.5d |  |  | Physical Progress [1750 h]; Pocket Excavation; TATA Projects Ltd-25 |  |  |
| CC-SS-FN280 |  | Blockwork/Brickwork | 2.08d | 2026-09-05 A | 2026-09-09 A | CC-SS-FN215 SS, CC-SS-FN265 SS | 100% |  | 2026-09-05 | 2026-09-08 | Brickwork for the footing [64 CuM]; Mason [430 h]; Helper [220 h]; Physical Progress [1750 h]; TATA Projects Ltd-25 | 531,200 | 531,200 |
| CC-SS-FN250 |  | Surface dressing | 23.42d | 2026-09-07 A | 2026-10-13 | CC-SS-FN215 FF+1d | 50% | 0.5d |  |  | Helper [30 h]; Physical Progress [590 h]; Surface Dressing [1635 Sq m]; TATA Projects Ltd-25 | 73,575 | 72,004 |
| CC-SS-FN255 |  | ATT | 23.42d | 2026-09-08 A | 2026-10-14 | CC-SS-FN250 FF+1d | 50% | 0.5d |  |  | Physical Progress [590 h]; ATT [1799 Sq m]; TATA Projects Ltd-25 | 246,463 | 241,200.44 |
| CC-SS-FN265 |  | PCC | 33.42d | 2026-09-09 A | 2026-10-28 | CC-SS-FN255 FF+11d, CC-SS-FN250 FF | 50% | 0.5d | 2026-09-10 | 2026-10-28 | Mason [10 h]; Helper [10 h]; Physical Progress [590 h]; Concrete M10 [123 m3]; TATA Projects Ltd-25 | 1,062,597 | 1,046,697.79 |
| CC-SS-FN285 |  | Waterproofing | 0d | 2026-09-09 A | 2026-09-09 A | CC-SS-FN265 SS | 100% |  | 2026-09-10 | 2026-09-10 | Waterproofing (Raft/Grade Slab); Waterprrofing Mason; Helper; Physical Progress; TATA Projects Ltd-25 |  |  |
| CC-SS-FN335 |  | Reinforcement | 43.52d | 2026-09-23 A | 2026-11-17 | CC-SS-FN285 SS, CC-SS-FN265 SS | 20% | 17.6d | 2026-09-24 | 2026-11-17 | Barbender [27340 h]; Helper [13670 h]; Physical Progress [1750 h]; Reinforcement Steel [410 MT1]; TATA Projects Ltd-25 | 39,570,125 | 23,566,275.13 |
| CC-SS-FN275 |  | Shuttering | 10d | 2026-11-06 | 2026-11-18 | CC-SS-FN335 FF+1d |  |  |  |  | Carpenter [4200 h]; Helper [2100 h]; Physical Progress [1750 h]; Formwork [2520 Sq m]; TATA Projects Ltd-25 | 2,936,203.2 |  |
| CC-SS-FN365 |  | Concrete | 1d | 2026-11-18 | 2026-11-19 | CC-SS-FN275 |  |  |  |  | Mason [50 h]; Helper [50 h]; Physical Progress [590 h]; Concrete M40 [3414 m3]; TATA Projects Ltd-25 | 33,685,938 |  |
|  | 3 | **CF34, F1 -3, F8-2** |  | 2026-08-11 | 2026-11-03 |  |  |  |  |  |  |  |  |
| CC-SS-FN290 |  | Pocket Excavation | 46.92d | 2026-08-11 A | 2026-10-27 | CC-SS-FN280 FF | 67% | 1d | 2026-08-12 | 2026-10-27 | Physical Progress [590 h]; Pocket Excavation; TATA Projects Ltd-25 |  |  |
| CC-SS-FN300 |  | Surface dressing | 46.42d | 2026-08-11 A | 2026-10-27 | CC-SS-FN290 SS | 50% | 0.5d | 2026-08-12 | 2026-10-27 | Helper [30 h]; Physical Progress [590 h]; Surface Dressing [168 Sq m]; TATA Projects Ltd-25 | 7,560 | 7,478.56 |
| CC-SS-FN305 |  | ATT | 46.42d | 2026-08-12 A | 2026-10-27 | CC-SS-FN290 SS | 50% | 0.5d |  |  | Physical Progress [590 h]; ATT [185 Sq m]; TATA Projects Ltd-25 | 25,345 | 25,071.98 |
| CC-SS-FN315 |  | PCC | 46.42d | 2026-08-12 A | 2026-10-27 | CC-SS-FN305 SS, CC-SS-FN300 SS | 50% | 0.5d |  |  | Mason [10 h]; Helper [10 h]; Physical Progress [590 h]; Concrete M10 [13 m3]; TATA Projects Ltd-25 | 112,307 | 111,097.23 |
| CC-SS-FN340 |  | Waterproofing | 16d | 2026-08-22 A | 2026-09-22 A | CC-SS-FN315 SS, CC-SS-FN325 SS | 100% |  | 2026-08-24 | 2026-09-22 | Waterproofing (Raft/Grade Slab); Waterprrofing Mason; Helper; Physical Progress; TATA Projects Ltd-25 |  |  |
| CC-SS-FN370 |  | Reinforcement | 47.62d | 2026-08-22 A | 2026-11-03 | CC-SS-FN340 | 33% | 6.7d | 2026-08-24 | 2026-11-03 | Barbender [1670 h]; Helper [840 h]; Physical Progress [1170 h]; Reinforcement Steel [25 MT1]; TATA Projects Ltd-25 | 2,412,812.5 | 2,073,312.81 |
| CC-SS-FN325 |  | Shuttering | 41.26d | 2026-08-25 A | 2026-10-28 | CC-SS-FN315 SS | 33% | 1.34d | 2026-08-26 | 2026-10-28 | Carpenter [260 h]; Helper [130 h]; Physical Progress [1170 h]; Formwork [153 Sq m]; TATA Projects Ltd-25 | 178,269.48 | 172,479.36 |
| CC-SS-FN375 |  | Concrete | 39.59d | 2026-08-28 A | 2026-10-27 | CC-SS-FN370 SS | 33% | 0.67d |  |  | Mason [50 h]; Helper [50 h]; Physical Progress [590 h]; Concrete M40 [207 m3]; TATA Projects Ltd-25 | 2,042,469 | 2,007,900.44 |

| ID | WBS | Activity | Duration | Start | Finish | Predecessors | Complete | Remaining | Planned start | Planned finish | Resources | Cost | Actual cost |
| --- | --- | --- | --- | --- | --- | --- | --- | --- | --- | --- | --- | --- | --- |
|  | 6 | **Pour 5** |  | 2026-08-08 | 2026-11-10 |  |  |  |  |  |  |  |  |
|  | 1 | **CF13A, CF29, CF45, CF46, CF47** |  | 2026-08-08 | 2026-11-10 |  |  |  |  |  |  |  |  |
| CC-SS-FN310 |  | Pocket Excavation | 48.42d | 2026-08-08 A | 2026-10-28 | CC-SS-FN290 SS | 70% | 1.5d | 2026-08-10 | 2026-10-28 | Physical Progress [1750 h]; Pocket Excavation; TATA Projects Ltd-25 |  |  |
| CC-SS-FN330 |  | Surface dressing | 47.22d | 2026-08-10 A | 2026-10-27 | CC-SS-FN310 SS | 70% | 0.3d |  |  | Helper [30 h]; Physical Progress [590 h]; Surface Dressing [914 Sq m]; TATA Projects Ltd-25 | 41,130 | 40,868.67 |
| CC-SS-FN345 |  | ATT | 46.22d | 2026-08-11 A | 2026-10-27 | CC-SS-FN330 SS | 70% | 0.3d | 2026-08-12 | 2026-10-27 | Physical Progress [590 h]; ATT [1005 Sq m]; TATA Projects Ltd-25 | 137,685 | 136,791.26 |
| CC-SS-FN350 |  | PCC | 46.22d | 2026-08-11 A | 2026-10-27 | CC-SS-FN345 SS, CC-SS-FN330 SS | 70% | 0.3d | 2026-08-12 | 2026-10-27 | Mason [10 h]; Helper [10 h]; Physical Progress [590 h]; Concrete M10 [69 m3]; TATA Projects Ltd-25 | 596,091 | 592,221.68 |
| CC-SS-FN360 |  | Blockwork/Brickwork | 3d | 2026-08-19 A | 2026-08-24 A | CC-SS-FN310 SS, CC-SS-FN350 SS | 100% |  |  |  | Brickwork for the footing [64 CuM]; Mason [430 h]; Helper [220 h]; Physical Progress [1750 h]; TATA Projects Ltd-25 | 531,200 | 531,200 |
| CC-SS-FN380 |  | Waterproofing | 0d | 2026-08-24 A | 2026-08-24 A | CC-SS-FN350 SS | 100% |  |  |  | Waterproofing (Raft/Grade Slab); Waterprrofing Mason; Helper; Physical Progress; TATA Projects Ltd-25 |  |  |
| CC-SS-FN355 |  | Shuttering | 49.42d | 2026-08-27 A | 2026-11-07 | CC-SS-FN420 FF, CC-SS-FN380 SS | 50% | 7.5d | 2026-08-28 | 2026-11-07 | Carpenter [2250 h]; Helper [1130 h]; Physical Progress [1750 h]; Formwork [1348 Sq m]; TATA Projects Ltd-25 | 1,570,635.68 | 1,332,259.27 |
| CC-SS-FN420 |  | Reinforcement | 49.42d | 2026-08-27 A | 2026-11-07 | CC-SS-FN350 SS | 70% | 10.5d | 2026-08-28 | 2026-11-07 | Barbender [14600 h]; Helper [7300 h]; Physical Progress [1750 h]; Reinforcement Steel [219 MT1]; TATA Projects Ltd-25 | 21,136,237.5 | 16,645,232.57 |
| CC-SS-FN450 |  | Concrete | 48.42d | 2026-09-03 A | 2026-11-10 | CC-SS-FN355 FF+2d | 30% | 0.7d |  |  | Mason [50 h]; Helper [50 h]; Physical Progress [590 h]; Concrete M40 [1827 m3]; TATA Projects Ltd-25 | 18,027,009 | 17,766,377.54 |
|  | 2 | **F13, F12 - 5** |  | 2026-08-13 | 2026-10-27 |  |  |  |  |  |  |  |  |
| CC-SS-FN385 |  | Pocket Excavation | 13.92d | 2026-08-13 A | 2026-09-10 A | CC-SS-FN360 | 100% |  | 2026-08-14 | 2026-09-10 | Physical Progress [1170 h]; Pocket Excavation; TATA Projects Ltd-25 |  |  |
| CC-SS-FN455 |  | Waterproofing | 13.92d | 2026-08-13 A | 2026-09-10 A | CC-SS-FN410 SS | 100% |  | 2026-08-14 | 2026-09-10 | Waterproofing (Raft/Grade Slab); Waterprrofing Mason; Helper; Physical Progress; TATA Projects Ltd-25 |  |  |
| CC-SS-FN390 |  | Surface dressing | 11.26d | 2026-09-04 A | 2026-09-26 A | CC-SS-FN385 SS | 100% |  | 2026-09-05 | 2026-09-26 | Helper [30 h]; Physical Progress [590 h]; Surface Dressing [238 Sq m]; TATA Projects Ltd-25 | 10,710 | 10,710 |
| CC-SS-FN400 |  | ATT | 35.26d | 2026-09-04 A | 2026-10-27 | CC-SS-FN390 SS | 66% | 0.34d | 2026-09-05 | 2026-10-27 | Physical Progress [590 h]; ATT [262 Sq m]; TATA Projects Ltd-25 | 35,894 | 35,547.85 |
| CC-SS-FN410 |  | PCC | 35.26d | 2026-09-05 A | 2026-10-27 | CC-SS-FN400 SS, CC-SS-FN390 SS | 66% | 0.34d |  |  | Mason [10 h]; Helper [10 h]; Physical Progress [590 h]; Concrete M10 [18 m3]; TATA Projects Ltd-25 | 155,502 | 154,002.41 |
| CC-SS-FN425 |  | Blockwork/Brickwork | 10d | 2026-09-06 A | 2026-09-25 A | CC-SS-FN385, CC-SS-FN410 SS | 100% |  | 2026-09-07 | 2026-09-24 | Brickwork for the footing [64 CuM]; Mason [430 h]; Helper [220 h]; Physical Progress [1170 h]; TATA Projects Ltd-25 | 531,200 | 531,200 |
| CC-SS-FN515 |  | Reinforcement | 29.26d | 2026-09-16 A | 2026-10-27 | CC-SS-FN455 FF, CC-SS-FN410 FF | 90% | 1d | 2026-09-17 | 2026-10-27 | Barbender [3070 h]; Helper [1540 h]; Physical Progress [1750 h]; Reinforcement Steel [46 MT1]; TATA Projects Ltd-25 | 4,439,575 | 4,287,829.24 |
| CC-SS-FN430 |  | Shuttering | 27.34d | 2026-09-19 A | 2026-10-27 | CC-SS-FN515 FF | 90% | 0.3d |  |  | Carpenter [470 h]; Helper [240 h]; Physical Progress [1750 h]; Formwork [280 Sq m]; TATA Projects Ltd-25 | 326,244.8 | 322,664.94 |
| CC-SS-FN540 |  | Concrete | 26.34d | 2026-09-21 A | 2026-10-27 | CC-SS-FN430 FF | 20% | 0.6d |  |  | Mason [50 h]; Helper [50 h]; Physical Progress [590 h]; Concrete M40 [380 m3]; TATA Projects Ltd-25 | 3,749,460 | 3,664,050.89 |
|  | 4 | **Sump** |  | 2026-10-26 | 2026-11-09 |  |  |  |  |  |  |  |  |
| CC-SS-FN395 |  | Pocket Excavation | 1d | 2026-10-26 | 2026-10-27 | CC-SS-FN385 |  |  |  |  | Physical Progress [590 h]; Pocket Excavation; TATA Projects Ltd-25 |  |  |
| CC-SS-FN405 |  | Surface dressing | 1d | 2026-10-27 | 2026-10-28 | CC-SS-FN395 |  |  |  |  | Helper [30 h]; Physical Progress [590 h]; Surface Dressing [22 Sq m]; TATA Projects Ltd-25 | 990 |  |
| CC-SS-FN415 |  | ATT | 1d | 2026-10-28 | 2026-10-29 | CC-SS-FN405 |  |  |  |  | Physical Progress [590 h]; ATT [24 Sq m]; TATA Projects Ltd-25 | 3,288 |  |
| CC-SS-FN435 |  | PCC | 1d | 2026-10-29 | 2026-10-30 | CC-SS-FN415 |  |  |  |  | Mason [10 h]; Helper [10 h]; Physical Progress [590 h]; Concrete M10 [2 m3]; TATA Projects Ltd-25 | 17,278 |  |
| CC-SS-FN440 |  | Shuttering | 2d | 2026-10-30 | 2026-11-02 | CC-SS-FN435 |  |  |  |  | Carpenter [40 h]; Helper [20 h]; Physical Progress [1170 h]; Formwork [24 Sq m]; TATA Projects Ltd-25 | 27,963.84 |  |
| CC-SS-FN460 |  | Waterproofing | 0d | 2026-11-02 | 2026-11-02 | CC-SS-FN435, CC-SS-FN440 |  |  |  |  | Waterproofing (Raft/Grade Slab); Waterprrofing Mason; Helper; Physical Progress; TATA Projects Ltd-25 |  |  |
| CC-SS-FN485 |  | Reinforcement | 2d | 2026-11-02 | 2026-11-04 | CC-SS-FN460 |  |  |  |  | Barbender [70 h]; Helper [40 h]; Physical Progress [1170 h]; Reinforcement Steel [1 MT1]; TATA Projects Ltd-25 | 96,512.5 |  |
| CC-SS-FN505 |  | MEP Services | 3d | 2026-11-04 | 2026-11-07 | CC-SS-FN485 |  |  |  |  | Physical Progress [1750 h]; TATA Projects Ltd-25 |  |  |
| CC-SS-FN535 |  | Concrete | 1d | 2026-11-07 | 2026-11-09 | CC-SS-FN485, CC-SS-FN505 |  |  |  |  | Mason [50 h]; Helper [50 h]; Physical Progress [590 h]; Concrete M40 [8 m3]; TATA Projects Ltd-25 | 78,936 |  |

| ID | WBS | Activity | Duration | Start | Finish | Predecessors | Complete | Remaining | Planned start | Planned finish | Resources | Cost | Actual cost |
| --- | --- | --- | --- | --- | --- | --- | --- | --- | --- | --- | --- | --- | --- |
|  | 3 | **F10, F8 - 6, Cf48** |  | 2026-08-13 | 2026-10-27 |  |  |  |  |  |  |  |  |
| CC-SS-FN445 |  | Pocket Excavation | 17.92d | 2026-08-13 A | 2026-09-19 A | CC-SS-FN425 FF | 100% |  | 2026-08-14 | 2026-09-19 | Physical Progress [1170 h]; Pocket Excavation; TATA Projects Ltd-25 |  |  |
| CC-SS-FN470 |  | Surface dressing | 43.17d | 2026-08-18 A | 2026-10-27 | CC-SS-FN445 SS | 75% | 0.25d | 2026-08-19 | 2026-10-27 | Helper [30 h]; Physical Progress [590 h]; Surface Dressing [293 Sq m]; TATA Projects Ltd-25 | 13,185 | 13,108.64 |
| CC-SS-FN475 |  | ATT | 42.17d | 2026-08-20 A | 2026-10-27 | CC-SS-FN445 SS | 75% | 0.25d | 2026-08-21 | 2026-10-27 | Physical Progress [590 h]; ATT [322 Sq m]; TATA Projects Ltd-25 | 44,114 | 43,852.45 |
| CC-SS-FN480 |  | PCC | 42.17d | 2026-08-20 A | 2026-10-27 | CC-SS-FN475 SS, CC-SS-FN470 SS | 75% | 0.25d | 2026-08-21 | 2026-10-27 | Mason [10 h]; Helper [10 h]; Physical Progress [590 h]; Concrete M10 [22 m3]; TATA Projects Ltd-25 | 190,058 | 188,931.17 |
| CC-SS-FN530 |  | Waterproofing | 13.92d | 2026-08-22 A | 2026-09-19 A | CC-SS-FN480 SS, CC-SS-FN495 SS | 100% |  | 2026-08-24 | 2026-09-19 | Waterproofing (Raft/Grade Slab); Waterprrofing Mason; Helper; Physical Progress; TATA Projects Ltd-25 |  |  |
| CC-SS-FN560 |  | Reinforcement | 38.17d | 2026-08-30 A | 2026-10-27 | CC-SS-FN480 FF | 25% | 7d | 2026-08-31 | 2026-10-27 | Barbender [2200 h]; Helper [1100 h]; Physical Progress [1750 h]; Reinforcement Steel [33 MT1]; TATA Projects Ltd-25 | 3,184,912.5 | 2,600,780.08 |
| CC-SS-FN495 |  | Shuttering | 35.17d | 2026-09-05 A | 2026-10-27 | CC-SS-FN560 FF | 30% | 2.1d |  |  | Carpenter [340 h]; Helper [170 h]; Physical Progress [1750 h]; Formwork [200 Sq m]; TATA Projects Ltd-25 | 233,032 | 219,116.35 |
| CC-SS-FN595 |  | Concrete | 32.17d | 2026-09-10 A | 2026-10-27 | CC-SS-FN495 FF | 12% | 0.75d |  |  | Mason [50 h]; Helper [50 h]; Physical Progress [590 h]; Concrete M40 [271 m3]; TATA Projects Ltd-25 | 2,673,957 | 2,611,610.85 |
|  | 4 | **Pour 6** |  | 2026-05-13 | 2026-12-01 |  |  |  |  |  |  |  |  |
|  | 1 | **CF26A** |  | 2026-05-14 | 2026-12-01 |  |  |  |  |  |  |  |  |
| CC-SS-FN465 |  | Pocket Excavation | 5d | 2026-05-14 A | 2026-05-19 A | CC-SS-FN445 SS | 100% |  |  |  | Physical Progress [1170 h]; Pocket Excavation; TATA Projects Ltd-25 |  |  |
| CC-SS-FN490 |  | Surface dressing | 0d | 2026-05-20 A | 2026-05-20 A | CC-SS-FN465 | 100% |  |  |  | Helper; Physical Progress; Surface Dressing; TATA Projects Ltd-25 |  |  |
| CC-SS-FN500 |  | ATT | 3d | 2026-05-30 A | 2026-06-02 A | CC-SS-FN490 | 100% |  |  |  | Physical Progress [590 h]; ATT [835 Sq m]; TATA Projects Ltd-25 | 114,395 | 114,395 |
| CC-SS-FN510 |  | PCC | 3d | 2026-05-30 A | 2026-06-02 A | CC-SS-FN500, CC-SS-FN490 | 100% |  |  |  | Mason [10 h]; Helper [10 h]; Physical Progress [590 h]; Concrete M10 [57 m3]; TATA Projects Ltd-25 | 492,423 | 492,423 |
| CC-SS-FN525 |  | Blockwork/Brickwork | 2d | 2026-05-30 A | 2026-06-02 A | CC-SS-FN465, CC-SS-FN510 | 100% |  |  |  | Brickwork for the footing [64 CuM]; Mason [430 h]; Helper [220 h]; Physical Progress [1750 h]; TATA Projects Ltd-25 | 531,200 | 531,200 |
| CC-SS-FN545 |  | Waterproofing | 2d | 2026-05-30 A | 2026-06-02 A | CC-SS-FN510, CC-SS-FN530 FF | 100% |  |  |  | Waterproofing (Raft/Grade Slab); Waterprrofing Mason; Helper; Physical Progress; TATA Projects Ltd-25 |  |  |
| CC-SS-FN585 |  | Reinforcement | 20d | 2026-10-26 | 2026-11-18 | CC-SS-FN545, CC-SS-FN510 |  |  |  |  | Barbender [9140 h]; Helper [4570 h]; Physical Progress [1750 h]; Reinforcement Steel [137 MT1]; TATA Projects Ltd-25 | 13,222,212.5 |  |
| CC-SS-FN520 |  | Shuttering | 10d | 2026-11-18 | 2026-11-30 | CC-SS-FN585 |  |  |  |  | Carpenter [1400 h]; Helper [700 h]; Physical Progress [1750 h]; Formwork [840 Sq m]; TATA Projects Ltd-25 | 978,734.4 |  |
| CC-SS-FN625 |  | Concrete | 1d | 2026-11-30 | 2026-12-01 | CC-SS-FN585, CC-SS-FN520 |  |  |  |  | Mason [50 h]; Helper [50 h]; Physical Progress [590 h]; Concrete M40 [1138 m3]; TATA Projects Ltd-25 | 11,228,646 |  |
|  | 4 | **F8-3, CF1H, CF5, F4** |  | 2026-05-13 | 2026-08-12 |  |  |  |  |  |  |  |  |
| CC-SS-FN550 |  | Pocket Excavation | 11d | 2026-05-13 A | 2026-05-25 A | CC-SS-FN525 | 100% |  |  |  | Physical Progress [1170 h]; Pocket Excavation; TATA Projects Ltd-25 |  |  |
| CC-SS-FN555 |  | Surface dressing | 0d | 2026-05-25 A | 2026-05-25 A | CC-SS-FN550 | 100% |  |  |  | Helper; Physical Progress; Surface Dressing; TATA Projects Ltd-25 |  |  |
| CC-SS-FN570 |  | ATT | 50d | 2026-05-25 A | 2026-08-03 A | CC-SS-FN555 | 100% |  |  |  | Physical Progress [590 h]; ATT [249 Sq m]; TATA Projects Ltd-25 | 34,113 | 34,113 |
| CC-SS-FN575 |  | PCC | 50d | 2026-05-25 A | 2026-08-04 A | CC-SS-FN570 | 100% |  | 2026-05-25 | 2026-08-03 | Mason [10 h]; Helper [10 h]; Physical Progress [590 h]; Concrete M10 [17 m3]; TATA Projects Ltd-25 | 146,863 | 146,863 |
| CC-SS-FN590 |  | Shuttering | 23d | 2026-06-30 A | 2026-08-10 A | CC-SS-FN575 | 100% |  |  |  | Carpenter [330 h]; Helper [170 h]; Physical Progress [1170 h]; Formwork [193 Sq m]; TATA Projects Ltd-25 | 224,875.88 | 224,875.88 |
| CC-SS-FN610 |  | Waterproofing | 8d | 2026-07-02 A | 2026-07-15 A | CC-SS-FN575, CC-SS-FN590 | 100% |  | 2026-07-02 | 2026-07-14 | Waterproofing (Raft/Grade Slab) [254 Sq m]; Waterprrofing Mason [220 h]; Helper [110 h]; Physical Progress [2940 h]; TATA Projects Ltd-25 | 158,496 | 158,496 |
| CC-SS-FN650 |  | Reinforcement | 16d | 2026-07-12 A | 2026-08-11 A | CC-SS-FN610 | 100% |  | 2026-07-13 | 2026-08-10 | Barbender [2070 h]; Helper [1040 h]; Physical Progress [1170 h]; Reinforcement Steel [31 MT1]; TATA Projects Ltd-25 | 2,991,887.5 | 2,991,887.5 |
| CC-SS-FN665 |  | Concrete | 15d | 2026-07-16 A | 2026-08-12 A | CC-SS-FN650 | 100% |  |  |  | Mason [50 h]; Helper [50 h]; Physical Progress [590 h]; Concrete M40 [262 m3]; TATA Projects Ltd-25 | 2,585,154 | 2,585,154 |

| ID | WBS | Activity | Duration | Start | Finish | Predecessors | Resources | Cost |
| --- | --- | --- | --- | --- | --- | --- | --- | --- |
|  | 7 | **Pour 7** |  | 2026-10-26 | 2026-11-20 |  |  |  |
|  | 1 | **CF20, F10 - 2** |  | 2026-10-26 | 2026-11-09 |  |  |  |
| CC-SS-FN565 |  | Pocket Excavation | 2d | 2026-10-26 | 2026-10-28 | CC-SS-FN550, Mob-P&M-TC105 SS | Physical Progress [1170 h]; Pocket Excavation; TATA Projects Ltd-25 |  |
| CC-SS-FN580 |  | Surface dressing | 1d | 2026-10-28 | 2026-10-29 | CC-SS-FN565 | Helper [30 h]; Physical Progress [590 h]; Surface Dressing [378 Sq m]; TATA Projects Ltd-25 | 17,010 |
| CC-SS-FN600 |  | ATT | 1d | 2026-10-29 | 2026-10-30 | CC-SS-FN580 | Physical Progress [590 h]; ATT [416 Sq m]; TATA Projects Ltd-25 | 56,992 |
| CC-SS-FN605 |  | PCC | 1d | 2026-10-30 | 2026-10-31 | CC-SS-FN600, CC-SS-FN580 | Mason [10 h]; Helper [10 h]; Physical Progress [590 h]; Concrete M10 [28 m3]; TATA Projects Ltd-25 | 241,892 |
| CC-SS-FN615 |  | Shuttering | 3d | 2026-10-31 | 2026-11-04 | CC-SS-FN605 | Carpenter [930 h]; Helper [470 h]; Physical Progress [1750 h]; Formwork [557 Sq m]; TATA Projects Ltd-25 | 648,994.12 |
| CC-SS-FN620 |  | Blockwork/Brickwork | 1d | 2026-10-31 | 2026-11-02 | CC-SS-FN565, CC-SS-FN605 | Brickwork for the footing [64 CuM]; Mason [430 h]; Helper [220 h]; Physical Progress [1750 h]; TATA Projects Ltd-25 | 531,200 |
| CC-SS-FN630 |  | Waterproofing | 0d | 2026-11-04 | 2026-11-04 | CC-SS-FN605, CC-SS-FN615 | Waterproofing (Raft/Grade Slab); Waterprrofing Mason; Helper; Physical Progress; TATA Projects Ltd-25 |  |
| CC-SS-FN670 |  | Reinforcement | 3d | 2026-11-04 | 2026-11-07 | CC-SS-FN630 | Barbender [6070 h]; Helper [3040 h]; Physical Progress [1750 h]; Reinforcement Steel [91 MT1]; TATA Projects Ltd-25 | 8,782,637.5 |
| CC-SS-FN680 |  | Concrete | 1d | 2026-11-07 | 2026-11-09 | CC-SS-FN670 | Mason [50 h]; Helper [50 h]; Physical Progress [590 h]; Concrete M40 [755 m3]; TATA Projects Ltd-25 | 7,449,585 |
|  | 3 | **F8, F5** |  | 2026-11-02 | 2026-11-20 |  |  |  |
| CC-SS-FN635 |  | Pocket Excavation | 1d | 2026-11-02 | 2026-11-03 | CC-SS-FN620 | Physical Progress [590 h]; Pocket Excavation; TATA Projects Ltd-25 |  |
| CC-SS-FN640 |  | Surface dressing | 1d | 2026-11-03 | 2026-11-04 | CC-SS-FN635 | Helper [30 h]; Physical Progress [590 h]; Surface Dressing [121 Sq m]; TATA Projects Ltd-25 | 5,445 |
| CC-SS-FN645 |  | ATT | 1d | 2026-11-03 | 2026-11-04 | CC-SS-FN635 | Physical Progress [590 h]; ATT [133 Sq m]; TATA Projects Ltd-25 | 18,221 |
| CC-SS-FN655 |  | PCC | 1d | 2026-11-04 | 2026-11-05 | CC-SS-FN645, CC-SS-FN640 | Mason [10 h]; Helper [10 h]; Physical Progress [590 h]; Concrete M10 [9 m3]; TATA Projects Ltd-25 | 77,751 |
| CC-SS-FN660 |  | Shuttering | 2d | 2026-11-05 | 2026-11-07 | CC-SS-FN655 | Carpenter [160 h]; Helper [80 h]; Physical Progress [1170 h]; Formwork [94 Sq m]; TATA Projects Ltd-25 | 109,525.04 |
| CC-SS-FN675 |  | Waterproofing | 0d | 2026-11-07 | 2026-11-07 | CC-SS-FN655, CC-SS-FN660 | Waterproofing (Raft/Grade Slab); Waterprrofing Mason; Helper; Physical Progress; TATA Projects Ltd-25 |  |
| CC-SS-FN685 |  | Reinforcement | 10d | 2026-11-07 | 2026-11-19 | CC-SS-FN675 | Barbender [1000 h]; Helper [500 h]; Physical Progress [1170 h]; Reinforcement Steel [15 MT1]; TATA Projects Ltd-25 | 1,447,687.5 |
| CC-SS-FN690 |  | Concrete | 1d | 2026-11-19 | 2026-11-20 | CC-SS-FN685 | Mason [50 h]; Helper [50 h]; Physical Progress [590 h]; Concrete M40 [128 m3]; TATA Projects Ltd-25 | 1,262,976 |
|  | 5 | **Basement 03(Grade Slab)** |  | 2027-03-24 | 2027-05-11 |  |  |  |
|  | 1 | **Pour 1** |  | 2027-03-24 | 2027-04-20 |  |  |  |
| CC-SS-GS55 |  | Deshuttering | 4d | 2027-03-24 | 2027-03-30 | CC-SS-B01.900 | Physical Progress [2350 h]; TATA Projects Ltd-25 |  |
| CC-SS-GS70 |  | Waterproofing | 5d | 2027-03-30 | 2027-04-05 | CC-SS-GS55 | Waterproofing (Raft/Grade Slab) [2864.27 Sq m]; Waterprrofing Mason [2386.9 h]; Helper [1193.45 h]; Physical Progress [12584.2 h]; TATA Projects Ltd-25 | 1,787,307.48 |
| CC-SS-GS80 |  | Reinforcement | 10d | 2027-04-05 | 2027-04-16 | CC-SS-GS70, CC-SS-GS55 | Barbender [470 h]; Helper [240 h]; Physical Progress [5870 h]; Reinforcement Steel [7 MT1]; TATA Projects Ltd-25 | 675,587.5 |
| CC-SS-GS115 |  | Shuttering | 2d | 2027-04-16 | 2027-04-19 | CC-SS-GS80 | Carpenter [20 h]; Helper [10 h]; Physical Progress [1170 h]; Formwork [10 Sq m]; TATA Projects Ltd-25 | 11,651.6 |
| CC-SS-GS120 |  | MEP Coordination | 2d | 2027-04-16 | 2027-04-19 | CC-SS-GS80 | Physical Progress [1170 h]; TATA Projects Ltd-25 |  |
| CC-SS-GS130 |  | Concrete | 1d | 2027-04-19 | 2027-04-20 | CC-SS-GS120, CC-SS-GS115 | Mason [50 h]; Helper [50 h]; Physical Progress [590 h]; Concrete M40 [434 m3]; TATA Projects Ltd-25 | 4,282,278 |

| ID | WBS | Activity | Duration | Start | Finish | Predecessors | Resources | Cost |
| --- | --- | --- | --- | --- | --- | --- | --- | --- |
|  | 2 | **Pour 2** |  | 2027-03-24 | 2027-04-20 |  |  |  |
| CC-SS-GS10 |  | Deshuttering | 4d | 2027-03-24 | 2027-03-30 | CC-SS-B01.565 | Physical Progress [2350 h]; TATA Projects Ltd-25 |  |
| CC-SS-GS15 |  | Waterproofing | 5d | 2027-03-30 | 2027-04-05 | CC-SS-GS10 | Waterproofing (Raft/Grade Slab) [2056.37 Sq m]; Waterprrofing Mason [1713.65 h]; Helper [856.82 h]; Physical Progress [12584.2 h]; TATA Projects Ltd-25 | 1,283,177.88 |
| CC-SS-GS20 |  | Reinforcement | 10d | 2027-04-05 | 2027-04-16 | CC-SS-GS15, CC-SS-GS10 | Barbender [340 h]; Helper [170 h]; Physical Progress [5870 h]; Reinforcement Steel [5 MT1]; TATA Projects Ltd-25 | 482,562.5 |
| CC-SS-GS45 |  | Shuttering | 2d | 2027-04-16 | 2027-04-19 | CC-SS-GS20 | Carpenter [20 h]; Helper [10 h]; Physical Progress [1170 h]; Formwork [10 Sq m]; TATA Projects Ltd-25 | 11,651.6 |
| CC-SS-GS50 |  | MEP Coordination | 2d | 2027-04-16 | 2027-04-19 | CC-SS-GS20 | Physical Progress [1170 h]; TATA Projects Ltd-25 |  |
| CC-SS-GS65 |  | Concrete | 1d | 2027-04-19 | 2027-04-20 | CC-SS-GS50, CC-SS-GS45 | Mason [50 h]; Helper [50 h]; Physical Progress [590 h]; Concrete M40 [312 m3]; TATA Projects Ltd-25 | 3,078,504 |
|  | 3 | **Pour 3** |  | 2027-03-31 | 2027-04-26 |  |  |  |
| CC-SS-GS25 |  | Deshuttering | 4d | 2027-03-31 | 2027-04-05 | CC-SS-B01.740 | Physical Progress [2350 h]; TATA Projects Ltd-25 |  |
| CC-SS-GS30 |  | Waterproofing | 5d | 2027-04-05 | 2027-04-10 | CC-SS-GS25 | Waterproofing (Raft/Grade Slab) [1905 Sq m]; Waterprrofing Mason [1587.97 h]; Helper [793.99 h]; Physical Progress [12584.2 h]; TATA Projects Ltd-25 | 1,188,720 |
| CC-SS-GS40 |  | Reinforcement | 10d | 2027-04-10 | 2027-04-22 | CC-SS-GS30, CC-SS-GS25 | Barbender [340 h]; Helper [170 h]; Physical Progress [5870 h]; Reinforcement Steel [5 MT1]; TATA Projects Ltd-25 | 482,562.5 |
| CC-SS-GS85 |  | Shuttering | 2d | 2027-04-22 | 2027-04-24 | CC-SS-GS40 | Carpenter [20 h]; Helper [10 h]; Physical Progress [1170 h]; Formwork [10 Sq m]; TATA Projects Ltd-25 | 11,651.6 |
| CC-SS-GS90 |  | MEP Coordination | 2d | 2027-04-22 | 2027-04-24 | CC-SS-GS40 | Physical Progress [1170 h]; TATA Projects Ltd-25 |  |
| CC-SS-GS95 |  | Concrete | 1d | 2027-04-24 | 2027-04-26 | CC-SS-GS90, CC-SS-GS85 | Mason [50 h]; Helper [50 h]; Physical Progress [590 h]; Concrete M40 [289 m3]; TATA Projects Ltd-25 | 2,851,563 |
|  | 4 | **Pour 4** |  | 2027-04-14 | 2027-05-11 |  |  |  |
| CC-SS-GS35 |  | Deshuttering | 4d | 2027-04-14 | 2027-04-19 | CC-SS-B01.875 | Physical Progress [2350 h]; TATA Projects Ltd-25 |  |
| CC-SS-GS60 |  | Waterproofing | 5d | 2027-04-19 | 2027-04-24 | CC-SS-GS35 | Waterproofing (Raft/Grade Slab) [2379.53 Sq m]; Waterprrofing Mason [1982.95 h]; Helper [991.47 h]; Physical Progress [12584.2 h]; TATA Projects Ltd-25 | 1,484,829.72 |
| CC-SS-GS75 |  | Reinforcement | 10d | 2027-04-24 | 2027-05-07 | CC-SS-GS60, CC-SS-GS35 | Barbender [400 h]; Helper [200 h]; Physical Progress [5870 h]; Reinforcement Steel [6 MT1]; TATA Projects Ltd-25 | 579,075 |
| CC-SS-GS100 |  | Shuttering | 2d | 2027-05-07 | 2027-05-10 | CC-SS-GS75 | Carpenter [20 h]; Helper [10 h]; Physical Progress [1170 h]; Formwork [10 Sq m]; TATA Projects Ltd-25 | 11,651.6 |
| CC-SS-GS105 |  | MEP Coordination | 2d | 2027-05-07 | 2027-05-10 | CC-SS-GS75 | Physical Progress [1170 h]; TATA Projects Ltd-25 |  |
| CC-SS-GS110 |  | Concrete | 1d | 2027-05-10 | 2027-05-11 | CC-SS-GS105, CC-SS-GS100 | Mason [50 h]; Helper [50 h]; Physical Progress [590 h]; Concrete M40 [361 m3]; TATA Projects Ltd-25 | 3,561,987 |
|  | 5 | **Pour 5** |  | 2027-03-27 | 2027-04-22 |  |  |  |
| CC-SS-GS125 |  | Deshuttering | 4d | 2027-03-27 | 2027-04-01 | CC-SS-B01.1010 | Physical Progress [2350 h]; TATA Projects Ltd-25 |  |
| CC-SS-GS135 |  | Waterproofing | 5d | 2027-04-01 | 2027-04-07 | CC-SS-GS125 | Waterproofing (Raft/Grade Slab) [2379.53 Sq m]; Waterprrofing Mason [1982.95 h]; Helper [991.47 h]; Physical Progress [12584.2 h]; TATA Projects Ltd-25 | 1,484,829.72 |
| CC-SS-GS140 |  | Reinforcement | 10d | 2027-04-07 | 2027-04-19 | CC-SS-GS135, CC-SS-GS125 | Barbender [400 h]; Helper [200 h]; Physical Progress [5870 h]; Reinforcement Steel [6 MT1]; TATA Projects Ltd-25 | 579,075 |
| CC-SS-GS170 |  | Shuttering | 2d | 2027-04-19 | 2027-04-21 | CC-SS-GS140 | Carpenter [20 h]; Helper [10 h]; Physical Progress [1170 h]; Formwork [10 Sq m]; TATA Projects Ltd-25 | 11,651.6 |
| CC-SS-GS175 |  | MEP Coordination | 2d | 2027-04-19 | 2027-04-21 | CC-SS-GS140 | Physical Progress [1170 h]; TATA Projects Ltd-25 |  |
| CC-SS-GS185 |  | Concrete | 1d | 2027-04-21 | 2027-04-22 | CC-SS-GS175, CC-SS-GS170 | Mason [50 h]; Helper [50 h]; Physical Progress [590 h]; Concrete M40 [361 m3]; TATA Projects Ltd-25 | 3,561,987 |

| ID | WBS | Activity | Duration | Start | Finish | Predecessors | Resources | Cost |
| --- | --- | --- | --- | --- | --- | --- | --- | --- |
|  | 6 | **Pour 6** |  | 2027-04-07 | 2027-05-04 |  |  |  |
| CC-SS-GS145 |  | Deshuttering | 4d | 2027-04-07 | 2027-04-12 | CC-SS-B01.1055 | Physical Progress [2350 h]; TATA Projects Ltd-25 |  |
| CC-SS-GS155 |  | Waterproofing | 5d | 2027-04-12 | 2027-04-17 | CC-SS-GS145 | Waterproofing (Raft/Grade Slab) [1948.65 Sq m]; Waterprrofing Mason [1623.88 h]; Helper [811.94 h]; Physical Progress [12584.2 h]; TATA Projects Ltd-25 | 1,215,960.6 |
| CC-SS-GS165 |  | Reinforcement | 10d | 2027-04-17 | 2027-04-29 | CC-SS-GS155, CC-SS-GS145 | Barbender [340 h]; Helper [170 h]; Physical Progress [5870 h]; Reinforcement Steel [5 MT1]; TATA Projects Ltd-25 | 482,562.5 |
| CC-SS-GS190 |  | Shuttering | 2d | 2027-04-29 | 2027-05-03 | CC-SS-GS165 | Carpenter [20 h]; Helper [10 h]; Physical Progress [1170 h]; Formwork [10 Sq m]; TATA Projects Ltd-25 | 11,651.6 |
| CC-SS-GS195 |  | MEP Coordination | 2d | 2027-04-29 | 2027-05-03 | CC-SS-GS165 | Physical Progress [1170 h]; TATA Projects Ltd-25 |  |
| CC-SS-GS200 |  | Concrete | 1d | 2027-05-03 | 2027-05-04 | CC-SS-GS195, CC-SS-GS190 | Mason [50 h]; Helper [50 h]; Physical Progress [590 h]; Concrete M40 [296 m3]; TATA Projects Ltd-25 | 2,920,632 |
|  | 7 | **Pour 7** |  | 2027-04-09 | 2027-05-06 |  |  |  |
| CC-SS-GS150 |  | Deshuttering | 4d | 2027-04-09 | 2027-04-14 | CC-SS-B01.1070 | Physical Progress [2350 h]; TATA Projects Ltd-25 |  |
| CC-SS-GS160 |  | Waterproofing | 5d | 2027-04-14 | 2027-04-20 | CC-SS-GS150 | Waterproofing (Raft/Grade Slab) [2056.37 Sq m]; Waterprrofing Mason [1713.65 h]; Helper [856.82 h]; Physical Progress [12584.2 h]; TATA Projects Ltd-25 | 1,283,177.88 |
| CC-SS-GS180 |  | Reinforcement | 10d | 2027-04-20 | 2027-05-03 | CC-SS-GS160, CC-SS-GS150 | Barbender [340 h]; Helper [170 h]; Physical Progress [5870 h]; Reinforcement Steel [5 MT1]; TATA Projects Ltd-25 | 482,562.5 |
| CC-SS-GS205 |  | Shuttering | 2d | 2027-05-03 | 2027-05-05 | CC-SS-GS180 | Carpenter [20 h]; Helper [10 h]; Physical Progress [1170 h]; Formwork [10 Sq m]; TATA Projects Ltd-25 | 11,651.6 |
| CC-SS-GS210 |  | MEP Coordination | 2d | 2027-05-03 | 2027-05-05 | CC-SS-GS180 | Physical Progress [1170 h]; TATA Projects Ltd-25 |  |
| CC-SS-GS215 |  | Concrete | 1d | 2027-05-05 | 2027-05-06 | CC-SS-GS210, CC-SS-GS205 | Mason [50 h]; Helper [50 h]; Physical Progress [590 h]; Concrete M40 [312 m3]; TATA Projects Ltd-25 | 3,078,504 |
|  | 3 | **Basement 03** |  | 2026-08-18 | 2027-01-28 |  |  |  |
|  | 1 | **Pour 1** |  | 2026-10-19 | 2027-01-07 |  |  |  |
|  | 6 | **Soil Filling & PCC up to Grade Slab** |  | 2026-11-07 | 2026-11-30 |  |  |  |
| CC-SS-B03.320 |  | LPS | 5d | 2026-11-07 | 2026-11-13 | CC-SS-B03.210 | LPS [1348868 INR]; Physical Progress [2940 h]; TATA Projects Ltd-25 | 1,348,868 |
| CC-SS-B03.380 |  | Soil Filling/ Plum Concrete | 7d | 2026-11-18 | 2026-11-26 | CC-SS-B03.370, CC-SS-B03.320 | Physical Progress [5870 h]; Plum Concrete [239 m3]; Soil Filling [1436 m3]; Sand Filling [1064 m3]; TATA Projects Ltd-25 | 4,890,536 |
| CC-SS-B03.430 |  | Surface dressing | 6d | 2026-11-20 | 2026-11-27 | CC-SS-B03.380 FF+1d | Helper [180 h]; Physical Progress [3520 h]; Surface Dressing [1027 Sq m]; TATA Projects Ltd-25 | 46,215 |
| CC-SS-B03.450 |  | ATT | 3d | 2026-11-25 | 2026-11-28 | CC-SS-B03.430 FF+1d | Physical Progress [1750 h]; ATT [1136 Sq m]; TATA Projects Ltd-25 | 155,632 |
| CC-SS-B03.455 |  | PCC | 3d | 2026-11-26 | 2026-11-30 | CC-SS-B03.450 FF+1d | Mason [30 h]; Helper [30 h]; Physical Progress [1750 h]; Concrete M10 [259 m3]; TATA Projects Ltd-25 | 2,237,501 |
|  | 1 | **Column, Core Wall, Shear Wall** |  | 2026-10-30 | 2026-11-18 |  |  |  |
| CC-SS-B03.210 |  | Reinforcement | 7d | 2026-10-30 | 2026-11-07 | CC-SS-FN220, 3S-SS-FN80, 3S-SS-FN165, 3S-SS-FN160, 3S-SS-FN475, CC-SS-FN135, CC-SS-FN150 | Barbender [7200 h]; Helper [3600 h]; Physical Progress [4100 h]; Reinforcement Steel [108 MT1]; TATA Projects Ltd-25 | 10,423,350 |
| CC-SS-B03.310 |  | LPS | 1d | 2026-11-07 | 2026-11-09 | CC-SS-B03.210 | LPS [39529 INR]; Physical Progress [590 h]; TATA Projects Ltd-25 | 39,529 |
| CC-SS-B03.325 |  | Shuttering | 7d | 2026-11-09 | 2026-11-17 | CC-SS-B03.210, CC-SS-B03.310 | Carpenter [4190 h]; Helper [2100 h]; Physical Progress [4100 h]; Formwork [2510 Sq m]; TATA Projects Ltd-25 | 2,924,551.6 |
| CC-SS-B03.370 |  | Concrete | 1d | 2026-11-17 | 2026-11-18 | CC-SS-B03.325 | Mason [50 h]; Helper [50 h]; Physical Progress [590 h]; Concrete M40 [673 m3]; TATA Projects Ltd-25 | 6,640,491 |

| ID | WBS | Activity | Duration | Start | Finish | Predecessors | Resources | Cost |
| --- | --- | --- | --- | --- | --- | --- | --- | --- |
|  | 2 | **Staircase-1** |  | 2026-10-19 | 2026-11-21 |  |  |  |
| CC-SS-B03.15 |  | Reinforcement of wall upto Flight 1 | 3d | 2026-10-19 | 2026-10-23 | CC-SS-FN220, 3S-SS-FN80 | Barbender [70 h]; Helper [40 h]; Physical Progress [1750 h]; Reinforcement Steel [1 MT1]; TATA Projects Ltd-25 | 96,512.5 |
| CC-SS-B03.35 |  | Shuttering of wall upto Flight 1 | 3d | 2026-10-23 | 2026-10-27 | CC-SS-B03.15 | Carpenter [20 h]; Helper [10 h]; Physical Progress [1750 h]; Formwork [10 Sq m]; TATA Projects Ltd-25 | 11,651.6 |
| CC-SS-B03.50 |  | Casting of wall upto Flight 1 | 1d | 2026-10-27 | 2026-10-28 | CC-SS-B03.35 | Mason; Helper; Physical Progress [590 h]; Concrete M40 [3 m3]; TATA Projects Ltd-25 | 29,601 |
| CC-SS-B03.60 |  | Shuttering of Staircase upto Flight 1 | 3d | 2026-10-28 | 2026-10-31 | CC-SS-B03.50 | Carpenter [20 h]; Helper [10 h]; Physical Progress [1750 h]; Formwork [10 Sq m]; TATA Projects Ltd-25 | 11,651.6 |
| CC-SS-B03.95 |  | Reinforcement of Staircase upto Flight 1 | 3d | 2026-10-31 | 2026-11-04 | CC-SS-B03.60 | Barbender [70 h]; Helper [40 h]; Physical Progress [1750 h]; Reinforcement Steel [1 MT1]; TATA Projects Ltd-25 | 96,512.5 |
| CC-SS-B03.115 |  | MEP coordination upto Flight 1 | 1d | 2026-11-04 | 2026-11-05 | CC-SS-B03.95 | Physical Progress [590 h]; TATA Projects Ltd-25 |  |
| CC-SS-B03.125 |  | Casting of Staircase upto Flight 1 | 1d | 2026-11-05 | 2026-11-06 | CC-SS-B03.115 | Mason; Helper; Physical Progress [590 h]; Concrete M40 [3 m3]; TATA Projects Ltd-25 | 29,601 |
| CC-SS-B03.135 |  | Reinforcement of wall upto Flight 2 | 3d | 2026-11-06 | 2026-11-10 | CC-SS-B03.125 | Barbender [70 h]; Helper [40 h]; Physical Progress [1750 h]; Reinforcement Steel [1 MT1]; TATA Projects Ltd-25 | 96,512.5 |
| CC-SS-B03.185 |  | Shuttering of wall upto Flight 2 | 3d | 2026-11-10 | 2026-11-13 | CC-SS-B03.135 | Carpenter [20 h]; Helper [10 h]; Physical Progress [1750 h]; Formwork [10 Sq m]; TATA Projects Ltd-25 | 11,651.6 |
| CC-SS-B03.220 |  | Casting of wall upto Flight 2 | 1d | 2026-11-13 | 2026-11-14 | CC-SS-B03.185 | Mason; Helper; Physical Progress [590 h]; Concrete M40 [3 m3]; TATA Projects Ltd-25 | 29,601 |
| CC-SS-B03.230 |  | Shuttering of Staircase upto Flight 2 | 3d | 2026-11-14 | 2026-11-18 | CC-SS-B03.220 | Carpenter [20 h]; Helper [10 h]; Physical Progress [1750 h]; Formwork [10 Sq m]; TATA Projects Ltd-25 | 11,651.6 |
| CC-SS-B03.270 |  | Reinforcement of Staircase upto Flight 2 | 3d | 2026-11-18 | 2026-11-21 | CC-SS-B03.230 | Barbender [70 h]; Helper [40 h]; Physical Progress [1750 h]; Reinforcement Steel [1 MT1]; TATA Projects Ltd-25 | 96,512.5 |
|  | 4 | **Staircase - 2** |  | 2026-10-19 | 2026-11-21 |  |  |  |
| CC-SS-B03.10 |  | Reinforcement of wall upto Flight 1 | 3d | 2026-10-19 | 2026-10-23 | CC-SS-FN220, 3S-SS-FN80 | Barbender [70 h]; Helper [40 h]; Physical Progress [1750 h]; Reinforcement Steel [1 MT1]; TATA Projects Ltd-25 | 96,512.5 |
| CC-SS-B03.30 |  | Shuttering of wall upto Flight 1 | 3d | 2026-10-23 | 2026-10-27 | CC-SS-B03.10 | Carpenter [20 h]; Helper [10 h]; Physical Progress [1750 h]; Formwork [10 Sq m]; TATA Projects Ltd-25 | 11,651.6 |
| CC-SS-B03.45 |  | Casting of wall upto Flight 1 | 1d | 2026-10-27 | 2026-10-28 | CC-SS-B03.30 | Mason; Helper; Physical Progress [590 h]; Concrete M40 [3 m3]; TATA Projects Ltd-25 | 29,601 |
| CC-SS-B03.55 |  | Shuttering of Staircase upto Flight 1 | 3d | 2026-10-28 | 2026-10-31 | CC-SS-B03.45 | Carpenter [20 h]; Helper [10 h]; Physical Progress [1750 h]; Formwork [10 Sq m]; TATA Projects Ltd-25 | 11,651.6 |
| CC-SS-B03.90 |  | Reinforcement of Staircase upto Flight 1 | 3d | 2026-10-31 | 2026-11-04 | CC-SS-B03.55 | Barbender [70 h]; Helper [40 h]; Physical Progress [1750 h]; Reinforcement Steel [1 MT1]; TATA Projects Ltd-25 | 96,512.5 |
| CC-SS-B03.110 |  | MEP coordination upto Flight 1 | 1d | 2026-11-04 | 2026-11-05 | CC-SS-B03.90 | Physical Progress [590 h]; TATA Projects Ltd-25 |  |
| CC-SS-B03.120 |  | Casting of Staircase upto Flight 1 | 1d | 2026-11-05 | 2026-11-06 | CC-SS-B03.110 | Mason; Helper; Physical Progress [590 h]; Concrete M40 [3 m3]; TATA Projects Ltd-25 | 29,601 |
| CC-SS-B03.130 |  | Reinforcement of wall upto Flight 2 | 3d | 2026-11-06 | 2026-11-10 | CC-SS-B03.120 | Barbender [70 h]; Helper [40 h]; Physical Progress [1750 h]; Reinforcement Steel [1 MT1]; TATA Projects Ltd-25 | 96,512.5 |
| CC-SS-B03.180 |  | Shuttering of wall upto Flight 2 | 3d | 2026-11-10 | 2026-11-13 | CC-SS-B03.130 | Carpenter [20 h]; Helper [10 h]; Physical Progress [1750 h]; Formwork [10 Sq m]; TATA Projects Ltd-25 | 11,651.6 |
| CC-SS-B03.215 |  | Casting of wall upto Flight 2 | 1d | 2026-11-13 | 2026-11-14 | CC-SS-B03.180 | Mason; Helper; Physical Progress [590 h]; Concrete M40 [3 m3]; TATA Projects Ltd-25 | 29,601 |
| CC-SS-B03.225 |  | Shuttering of Staircase upto Flight 2 | 3d | 2026-11-14 | 2026-11-18 | CC-SS-B03.215 | Carpenter [20 h]; Helper [10 h]; Physical Progress [1750 h]; Formwork [10 Sq m]; TATA Projects Ltd-25 | 11,651.6 |
| CC-SS-B03.265 |  | Reinforcement of Staircase upto Flight 2 | 3d | 2026-11-18 | 2026-11-21 | CC-SS-B03.225 | Barbender [70 h]; Helper [40 h]; Physical Progress [1750 h]; Reinforcement Steel [1 MT1]; TATA Projects Ltd-25 | 96,512.5 |

| ID | WBS | Activity | Duration | Start | Finish | Predecessors | Resources | Cost |
| --- | --- | --- | --- | --- | --- | --- | --- | --- |
|  | 3 | **Slab** |  | 2026-11-30 | 2027-01-07 |  |  |  |
| CC-SS-B03.500 |  | Shuttering | 7d | 2026-11-30 | 2026-12-08 | CC-SS-B03.370, CC-SS-B03.455 | Carpenter [5780 h]; Helper [2890 h]; Physical Progress [4100 h]; Formwork [3466 Sq m]; TATA Projects Ltd-25 | 4,038,444.56 |
| CC-SS-B03.555 |  | Reinforcement Bottom Net with chairs | 3d | 2026-12-08 | 2026-12-11 | CC-SS-B03.500 | Barbender [1400 h]; Helper [700 h]; Physical Progress [1750 h]; Reinforcement Steel [21 MT1]; TATA Projects Ltd-25 | 2,026,762.5 |
| CC-SS-B03.585 |  | Laying of PT Tendon | 4d | 2026-12-11 | 2026-12-16 | CC-SS-B03.555 | Physical Progress [2350 h]; TATA Projects Ltd-25 |  |
| CC-SS-B03.615 |  | Reinforcement Top Net | 3d | 2026-12-16 | 2026-12-19 | CC-SS-B03.585 | Barbender [1400 h]; Helper [700 h]; Physical Progress [1750 h]; Reinforcement Steel [21 MT1]; TATA Projects Ltd-25 | 2,026,762.5 |
| CC-SS-B03.660 |  | MEP Coordination | 1d | 2026-12-19 | 2026-12-21 | CC-SS-B03.615, CC-SS-B03.265, CC-SS-B03.270 | Physical Progress [590 h]; TATA Projects Ltd-25 |  |
| CC-SS-B03.665 |  | Concrete of Slab | 1d | 2026-12-21 | 2026-12-22 | CC-SS-B03.660 | Mason [50 h]; Helper [50 h]; Physical Progress [590 h]; Concrete M40 [867 m3]; TATA Projects Ltd-25 | 8,554,689 |
| CC-SS-B03.670 |  | Wait for Strength Gain | 6d | 2026-12-22 | 2026-12-30 | CC-SS-B03.665 | Physical Progress [3520 h]; TATA Projects Ltd-25 |  |
| CC-SS-B03.705 |  | PT Work | 6d | 2026-12-30 | 2027-01-07 | CC-SS-B03.670 | PT [12 MT1]; Helper [100 h]; PT Fitter [100 h]; Physical Progress [5870 h]; TATA Projects Ltd-25 | 2,280,000 |
|  | 2 | **Pour 2** |  | 2026-10-30 | 2027-01-07 |  |  |  |
|  | 6 | **Soil Filling & PCC up to Grade Slab** |  | 2026-11-07 | 2026-11-30 |  |  |  |
| CC-SS-B03.80 |  | LPS | 5d | 2026-11-07 | 2026-11-13 | CC-SS-B03.20 | LPS [968405 INR]; Physical Progress [2940 h]; TATA Projects Ltd-25 | 968,405 |
| CC-SS-B03.165 |  | Soil Filling/ Plum Concrete | 7d | 2026-11-18 | 2026-11-26 | CC-SS-FN245, CC-SS-B03.155, CC-SS-B03.80 | Physical Progress [5870 h]; Plum Concrete [172 m3]; Soil Filling [1031 m3]; Sand Filling [764 m3]; TATA Projects Ltd-25 | 3,514,236 |
| CC-SS-B03.250 |  | Surface dressing | 6d | 2026-11-20 | 2026-11-27 | CC-SS-B03.165 FF+1d | Helper [180 h]; Physical Progress [3520 h]; Surface Dressing [737 Sq m]; TATA Projects Ltd-25 | 33,165 |
| CC-SS-B03.295 |  | ATT | 3d | 2026-11-25 | 2026-11-28 | CC-SS-B03.250 FF+1d | Physical Progress [1750 h]; ATT [816 Sq m]; TATA Projects Ltd-25 | 111,792 |
| CC-SS-B03.315 |  | PCC | 3d | 2026-11-26 | 2026-11-30 | CC-SS-B03.295 FF+1d | Mason [30 h]; Helper [30 h]; Physical Progress [1750 h]; Concrete M10 [186 m3]; TATA Projects Ltd-25 | 1,606,854 |
|  | 1 | **Column, Core Wall, Shear Wall** |  | 2026-10-30 | 2026-11-18 |  |  |  |
| CC-SS-B03.20 |  | Reinforcement | 7d | 2026-10-30 | 2026-11-07 | CC-SS-FN245, 3S-SS-FN165 | Barbender [5200 h]; Helper [2600 h]; Physical Progress [4100 h]; Reinforcement Steel [78 MT1]; TATA Projects Ltd-25 | 7,527,975 |
| CC-SS-B03.70 |  | LPS | 1d | 2026-11-07 | 2026-11-09 | CC-SS-B03.20 | LPS [39529 INR]; Physical Progress [590 h]; TATA Projects Ltd-25 | 39,529 |
| CC-SS-B03.85 |  | Shuttering | 7d | 2026-11-09 | 2026-11-17 | CC-SS-B03.20, CC-SS-B03.70 | Carpenter [3010 h]; Helper [1510 h]; Physical Progress [4100 h]; Formwork [1802 Sq m]; TATA Projects Ltd-25 | 2,099,618.32 |
| CC-SS-B03.155 |  | Concrete | 1d | 2026-11-17 | 2026-11-18 | CC-SS-B03.85 | Mason [50 h]; Helper [50 h]; Physical Progress [590 h]; Concrete M40 [483 m3]; TATA Projects Ltd-25 | 4,765,761 |
|  | 4 | **Staircase** |  | 2026-10-30 | 2026-12-02 |  |  |  |
| CC-SS-B03.25 |  | Reinforcement of wall upto Flight 1 | 3d | 2026-10-30 | 2026-11-03 | CC-SS-FN245, 3S-SS-FN165 | Barbender [70 h]; Helper [40 h]; Physical Progress [1750 h]; Reinforcement Steel [1 MT1]; TATA Projects Ltd-25 | 96,512.5 |
| CC-SS-B03.40 |  | Shuttering of wall upto Flight 1 | 3d | 2026-11-03 | 2026-11-06 | CC-SS-B03.25 | Carpenter [20 h]; Helper [10 h]; Physical Progress [1750 h]; Formwork [10 Sq m]; TATA Projects Ltd-25 | 11,651.6 |
| CC-SS-B03.65 |  | Casting of wall upto Flight 1 | 1d | 2026-11-06 | 2026-11-07 | CC-SS-B03.40 | Mason; Helper; Physical Progress [590 h]; Concrete M40 [3 m3]; TATA Projects Ltd-25 | 29,601 |
| CC-SS-B03.75 |  | Shuttering of Staircase upto Flight 1 | 3d | 2026-11-07 | 2026-11-11 | CC-SS-B03.65 | Carpenter [20 h]; Helper [10 h]; Physical Progress [1750 h]; Formwork [10 Sq m]; TATA Projects Ltd-25 | 11,651.6 |
| CC-SS-B03.105 |  | Reinforcement of Staircase upto Flight 1 | 3d | 2026-11-11 | 2026-11-14 | CC-SS-B03.75 | Barbender [70 h]; Helper [40 h]; Physical Progress [1750 h]; Reinforcement Steel [1 MT1]; TATA Projects Ltd-25 | 96,512.5 |
| CC-SS-B03.140 |  | MEP coordination upto Flight 1 | 1d | 2026-11-14 | 2026-11-16 | CC-SS-B03.105 | Physical Progress [590 h]; TATA Projects Ltd-25 |  |
| CC-SS-B03.145 |  | Casting of Staircase upto Flight 1 | 1d | 2026-11-16 | 2026-11-17 | CC-SS-B03.140 | Mason; Helper; Physical Progress [590 h]; Concrete M40 [3 m3]; TATA Projects Ltd-25 | 29,601 |
| CC-SS-B03.160 |  | Reinforcement of wall upto Flight 2 | 3d | 2026-11-17 | 2026-11-20 | CC-SS-B03.145 | Barbender [70 h]; Helper [40 h]; Physical Progress [1750 h]; Reinforcement Steel [1 MT1]; TATA Projects Ltd-25 | 96,512.5 |
| CC-SS-B03.205 |  | Shuttering of wall upto Flight 2 | 3d | 2026-11-20 | 2026-11-24 | CC-SS-B03.160 | Carpenter [20 h]; Helper [10 h]; Physical Progress [1750 h]; Formwork [10 Sq m]; TATA Projects Ltd-25 | 11,651.6 |
| CC-SS-B03.240 |  | Casting of wall upto Flight 2 | 1d | 2026-11-24 | 2026-11-25 | CC-SS-B03.205 | Mason; Helper; Physical Progress [590 h]; Concrete M40 [3 m3]; TATA Projects Ltd-25 | 29,601 |
| CC-SS-B03.255 |  | Shuttering of Staircase upto Flight 2 | 3d | 2026-11-25 | 2026-11-28 | CC-SS-B03.240 | Carpenter [20 h]; Helper [10 h]; Physical Progress [1750 h]; Formwork [10 Sq m]; TATA Projects Ltd-25 | 11,651.6 |
| CC-SS-B03.305 |  | Reinforcement of Staircase upto Flight 2 | 3d | 2026-11-28 | 2026-12-02 | CC-SS-B03.255 | Barbender [70 h]; Helper [40 h]; Physical Progress [1750 h]; Reinforcement Steel [1 MT1]; TATA Projects Ltd-25 | 96,512.5 |

| ID | WBS | Activity | Duration | Start | Finish | Predecessors | Resources | Cost |
| --- | --- | --- | --- | --- | --- | --- | --- | --- |
|  | 3 | **Slab** |  | 2026-11-30 | 2027-01-07 |  |  |  |
| CC-SS-B03.340 |  | Shuttering | 7d | 2026-11-30 | 2026-12-08 | CC-SS-B03.155, CC-SS-B03.315 | Carpenter [4150 h]; Helper [2080 h]; Physical Progress [4100 h]; Formwork [2488 Sq m]; TATA Projects Ltd-25 | 2,898,918.08 |
| CC-SS-B03.395 |  | Reinforcement Bottom Net with chairs | 3d | 2026-12-08 | 2026-12-11 | CC-SS-B03.340 | Barbender [1000 h]; Helper [500 h]; Physical Progress [1750 h]; Reinforcement Steel [15 MT1]; TATA Projects Ltd-25 | 1,447,687.5 |
| CC-SS-B03.420 |  | Laying of PT Tendon | 4d | 2026-12-11 | 2026-12-16 | CC-SS-B03.395 | Physical Progress [2350 h]; TATA Projects Ltd-25 |  |
| CC-SS-B03.445 |  | Reinforcement Top Net | 3d | 2026-12-16 | 2026-12-19 | CC-SS-B03.420 | Barbender [1000 h]; Helper [500 h]; Physical Progress [1750 h]; Reinforcement Steel [15 MT1]; TATA Projects Ltd-25 | 1,447,687.5 |
| CC-SS-B03.480 |  | MEP Coordination | 1d | 2026-12-19 | 2026-12-21 | CC-SS-B03.445, CC-SS-B03.305 | Physical Progress [590 h]; TATA Projects Ltd-25 |  |
| CC-SS-B03.490 |  | Concrete of Slab | 1d | 2026-12-21 | 2026-12-22 | CC-SS-B03.480 | Mason [50 h]; Helper [50 h]; Physical Progress [590 h]; Concrete M40 [622 m3]; TATA Projects Ltd-25 | 6,137,274 |
| CC-SS-B03.505 |  | Wait for Strength Gain | 6d | 2026-12-22 | 2026-12-30 | CC-SS-B03.490 | Physical Progress [3520 h]; TATA Projects Ltd-25 |  |
| CC-SS-B03.535 |  | PT Work | 6d | 2026-12-30 | 2027-01-07 | CC-SS-B03.505 | PT [8 MT1]; Helper [100 h]; PT Fitter [100 h]; Physical Progress [5870 h]; TATA Projects Ltd-25 | 1,520,000 |
|  | 3 | **Pour 3** |  | 2026-11-05 | 2027-01-13 |  |  |  |
|  | 6 | **Soil Filling & PCC up to Grade Slab** |  | 2026-11-13 | 2026-12-05 |  |  |  |
| CC-SS-B03.190 |  | LPS | 5d | 2026-11-13 | 2026-11-19 | CC-SS-B03.100 | LPS [897385 INR]; Physical Progress [2940 h]; TATA Projects Ltd-25 | 897,385 |
| CC-SS-B03.300 |  | Soil Filling/ Plum Concrete | 7d | 2026-11-24 | 2026-12-02 | CC-SS-FN320, CC-SS-FN270, CC-SS-B03.280, CC-SS-B03.190 | Physical Progress [5870 h]; Plum Concrete [159 m3]; Soil Filling [955 m3]; Sand Filling [708 m3]; TATA Projects Ltd-25 | 3,253,892 |
| CC-SS-B03.350 |  | Surface dressing | 6d | 2026-11-26 | 2026-12-03 | CC-SS-B03.300 FF+1d | Helper [180 h]; Physical Progress [3520 h]; Surface Dressing [683 Sq m]; TATA Projects Ltd-25 | 30,735 |
| CC-SS-B03.375 |  | ATT | 3d | 2026-12-01 | 2026-12-04 | CC-SS-B03.350 FF+1d | Physical Progress [1750 h]; ATT [756 Sq m]; TATA Projects Ltd-25 | 103,572 |
| CC-SS-B03.385 |  | PCC | 3d | 2026-12-02 | 2026-12-05 | CC-SS-B03.375 FF+1d | Mason [30 h]; Helper [30 h]; Physical Progress [1750 h]; Concrete M10 [172 m3]; TATA Projects Ltd-25 | 1,485,908 |
|  | 1 | **Column, Core Wall, Shear Wall** |  | 2026-11-05 | 2026-11-24 |  |  |  |
| CC-SS-B03.100 |  | Reinforcement | 7d | 2026-11-05 | 2026-11-13 | CC-SS-FN320, CC-SS-FN270 | Barbender [4800 h]; Helper [2400 h]; Physical Progress [4100 h]; Reinforcement Steel [72 MT1]; TATA Projects Ltd-25 | 6,948,900 |
| CC-SS-B03.170 |  | LPS | 1d | 2026-11-13 | 2026-11-14 | CC-SS-B03.100 | LPS [39529 INR]; Physical Progress [590 h]; TATA Projects Ltd-25 | 39,529 |
| CC-SS-B03.195 |  | Shuttering | 7d | 2026-11-14 | 2026-11-23 | CC-SS-B03.100, CC-SS-B03.170 | Carpenter [2790 h]; Helper [1400 h]; Physical Progress [4100 h]; Formwork [1670 Sq m]; TATA Projects Ltd-25 | 1,945,817.2 |
| CC-SS-B03.280 |  | Concrete | 1d | 2026-11-23 | 2026-11-24 | CC-SS-B03.195 | Mason [50 h]; Helper [50 h]; Physical Progress [590 h]; Concrete M40 [448 m3]; TATA Projects Ltd-25 | 4,420,416 |
|  | 3 | **Slab** |  | 2026-12-05 | 2027-01-13 |  |  |  |
| CC-SS-B03.410 |  | Shuttering | 7d | 2026-12-05 | 2026-12-14 | CC-SS-B03.280, CC-SS-B03.385 | Carpenter [3850 h]; Helper [1930 h]; Physical Progress [4100 h]; Formwork [2306 Sq m]; TATA Projects Ltd-25 | 2,686,858.96 |
| CC-SS-B03.460 |  | Reinforcement Bottom Net with chairs | 3d | 2026-12-14 | 2026-12-17 | CC-SS-B03.410 | Barbender [940 h]; Helper [470 h]; Physical Progress [1750 h]; Reinforcement Steel [14 MT1]; TATA Projects Ltd-25 | 1,351,175 |
| CC-SS-B03.510 |  | Laying of PT Tendon | 4d | 2026-12-17 | 2026-12-22 | CC-SS-B03.460 | Physical Progress [2350 h]; TATA Projects Ltd-25 |  |
| CC-SS-B03.515 |  | Reinforcement Top Net | 3d | 2026-12-22 | 2026-12-26 | CC-SS-B03.510 | Barbender [940 h]; Helper [470 h]; Physical Progress [1750 h]; Reinforcement Steel [14 MT1]; TATA Projects Ltd-25 | 1,351,175 |
| CC-SS-B03.560 |  | MEP Coordination | 1d | 2026-12-26 | 2026-12-28 | CC-SS-B03.515 | Physical Progress [590 h]; TATA Projects Ltd-25 |  |
| CC-SS-B03.575 |  | Concrete of Slab | 1d | 2026-12-28 | 2026-12-29 | CC-SS-B03.560 | Mason [50 h]; Helper [50 h]; Physical Progress [590 h]; Concrete M40 [576 m3]; TATA Projects Ltd-25 | 5,683,392 |
| CC-SS-B03.580 |  | Wait for Strength Gain | 6d | 2026-12-29 | 2027-01-06 | CC-SS-B03.575 | Physical Progress [3520 h]; TATA Projects Ltd-25 |  |
| CC-SS-B03.630 |  | PT Work | 6d | 2027-01-06 | 2027-01-13 | CC-SS-B03.580 | PT [8 MT1]; Helper [100 h]; PT Fitter [100 h]; Physical Progress [5870 h]; TATA Projects Ltd-25 | 1,520,000 |

| ID | WBS | Activity | Duration | Start | Finish | Predecessors | Resources | Cost |
| --- | --- | --- | --- | --- | --- | --- | --- | --- |
|  | 4 | **Pour 4** |  | 2026-11-19 | 2027-01-28 |  |  |  |
|  | 6 | **Soil Filling & PCC up to Grade Slab** |  | 2026-11-27 | 2026-12-19 |  |  |  |
| CC-SS-B03.275 |  | LPS | 5d | 2026-11-27 | 2026-12-03 | CC-SS-B03.175 | LPS [1120590 INR]; Physical Progress [2940 h]; TATA Projects Ltd-25 | 1,120,590 |
| CC-SS-B03.360 |  | Soil Filling/ Plum Concrete | 7d | 2026-12-08 | 2026-12-16 | CC-SS-FN365, CC-SS-FN375, CC-SS-B03.355, CC-SS-B03.275 | Physical Progress [5870 h]; Plum Concrete [199 m3]; Soil Filling [1193 m3]; Sand Filling [884 m3]; TATA Projects Ltd-25 | 4,066,116 |
| CC-SS-B03.405 |  | Surface dressing | 6d | 2026-12-10 | 2026-12-17 | CC-SS-B03.360 FF+1d | Helper [180 h]; Physical Progress [3520 h]; Surface Dressing [853 Sq m]; TATA Projects Ltd-25 | 38,385 |
| CC-SS-B03.435 |  | ATT | 3d | 2026-12-15 | 2026-12-18 | CC-SS-B03.405 FF+1d | Physical Progress [1750 h]; ATT [944 Sq m]; TATA Projects Ltd-25 | 129,328 |
| CC-SS-B03.440 |  | PCC | 3d | 2026-12-16 | 2026-12-19 | CC-SS-B03.435 FF+1d | Mason [30 h]; Helper [30 h]; Physical Progress [1750 h]; Concrete M10 [215 m3]; TATA Projects Ltd-25 | 1,857,385 |
|  | 1 | **Column, Core Wall, Shear Wall** |  | 2026-11-19 | 2026-12-08 |  |  |  |
| CC-SS-B03.175 |  | Reinforcement | 7d | 2026-11-19 | 2026-11-27 | CC-SS-FN365, CC-SS-FN375 | Barbender [6000 h]; Helper [3000 h]; Physical Progress [4100 h]; Reinforcement Steel [90 MT1]; TATA Projects Ltd-25 | 8,686,125 |
| CC-SS-B03.260 |  | LPS | 1d | 2026-11-27 | 2026-11-28 | CC-SS-B03.175 | LPS [39529 INR]; Physical Progress [590 h]; TATA Projects Ltd-25 | 39,529 |
| CC-SS-B03.285 |  | Shuttering | 7d | 2026-11-28 | 2026-12-07 | CC-SS-B03.175, CC-SS-B03.260 | Carpenter [3480 h]; Helper [1740 h]; Physical Progress [4100 h]; Formwork [2085 Sq m]; TATA Projects Ltd-25 | 2,429,358.6 |
| CC-SS-B03.355 |  | Concrete | 1d | 2026-12-07 | 2026-12-08 | CC-SS-B03.285 | Mason [50 h]; Helper [50 h]; Physical Progress [590 h]; Concrete M40 [559 m3]; TATA Projects Ltd-25 | 5,515,653 |
|  | 4 | **Staircase** |  | 2026-11-19 | 2026-12-22 |  |  |  |
| CC-SS-B03.150 |  | Reinforcement of wall upto Flight 1 | 3d | 2026-11-19 | 2026-11-23 | CC-SS-FN365 | Barbender [70 h]; Helper [40 h]; Physical Progress [1750 h]; Reinforcement Steel [1 MT1]; TATA Projects Ltd-25 | 96,512.5 |
| CC-SS-B03.200 |  | Shuttering of wall upto Flight 1 | 3d | 2026-11-23 | 2026-11-26 | CC-SS-B03.150 | Carpenter [20 h]; Helper [10 h]; Physical Progress [1750 h]; Formwork [10 Sq m]; TATA Projects Ltd-25 | 11,651.6 |
| CC-SS-B03.235 |  | Casting of wall upto Flight 1 | 1d | 2026-11-26 | 2026-11-27 | CC-SS-B03.200 | Mason; Helper; Physical Progress [590 h]; Concrete M40 [3 m3]; TATA Projects Ltd-25 | 29,601 |
| CC-SS-B03.245 |  | Shuttering of Staircase upto Flight 1 | 3d | 2026-11-27 | 2026-12-01 | CC-SS-B03.235 | Carpenter [20 h]; Helper [10 h]; Physical Progress [1750 h]; Formwork [10 Sq m]; TATA Projects Ltd-25 | 11,651.6 |
| CC-SS-B03.290 |  | Reinforcement of Staircase upto Flight 1 | 3d | 2026-12-01 | 2026-12-04 | CC-SS-B03.245 | Barbender [70 h]; Helper [40 h]; Physical Progress [1750 h]; Reinforcement Steel [1 MT1]; TATA Projects Ltd-25 | 96,512.5 |
| CC-SS-B03.330 |  | MEP coordination upto Flight 1 | 1d | 2026-12-04 | 2026-12-05 | CC-SS-B03.290 | Physical Progress [590 h]; TATA Projects Ltd-25 |  |
| CC-SS-B03.335 |  | Casting of Staircase upto Flight 1 | 1d | 2026-12-05 | 2026-12-07 | CC-SS-B03.330 | Mason; Helper; Physical Progress [590 h]; Concrete M40 [3 m3]; TATA Projects Ltd-25 | 29,601 |
| CC-SS-B03.345 |  | Reinforcement of wall upto Flight 2 | 3d | 2026-12-07 | 2026-12-10 | CC-SS-B03.335 | Barbender [70 h]; Helper [40 h]; Physical Progress [1750 h]; Reinforcement Steel [1 MT1]; TATA Projects Ltd-25 | 96,512.5 |
| CC-SS-B03.365 |  | Shuttering of wall upto Flight 2 | 3d | 2026-12-10 | 2026-12-14 | CC-SS-B03.345 | Carpenter [20 h]; Helper [10 h]; Physical Progress [1750 h]; Formwork [10 Sq m]; TATA Projects Ltd-25 | 11,651.6 |
| CC-SS-B03.390 |  | Casting of wall upto Flight 2 | 1d | 2026-12-14 | 2026-12-15 | CC-SS-B03.365 | Mason; Helper; Physical Progress [590 h]; Concrete M40 [3 m3]; TATA Projects Ltd-25 | 29,601 |
| CC-SS-B03.400 |  | Shuttering of Staircase upto Flight 2 | 3d | 2026-12-15 | 2026-12-18 | CC-SS-B03.390 | Carpenter [20 h]; Helper [10 h]; Physical Progress [1750 h]; Formwork [10 Sq m]; TATA Projects Ltd-25 | 11,651.6 |
| CC-SS-B03.425 |  | Reinforcement of Staircase upto Flight 2 | 3d | 2026-12-18 | 2026-12-22 | CC-SS-B03.400 | Barbender [70 h]; Helper [40 h]; Physical Progress [1750 h]; Reinforcement Steel [1 MT1]; TATA Projects Ltd-25 | 96,512.5 |

| ID | WBS | Activity | Duration | Start | Finish | Predecessors | Resources | Cost |
| --- | --- | --- | --- | --- | --- | --- | --- | --- |
|  | 3 | **Slab** |  | 2026-12-19 | 2027-01-28 |  |  |  |
| CC-SS-B03.465 |  | Shuttering | 7d | 2026-12-19 | 2026-12-29 | CC-SS-B03.355, CC-SS-B03.440 | Carpenter [4800 h]; Helper [2400 h]; Physical Progress [4100 h]; Formwork [2880 Sq m]; TATA Projects Ltd-25 | 3,355,660.8 |
| CC-SS-B03.520 |  | Reinforcement Bottom Net with chairs | 3d | 2026-12-29 | 2027-01-02 | CC-SS-B03.465 | Barbender [1200 h]; Helper [600 h]; Physical Progress [1750 h]; Reinforcement Steel [18 MT1]; TATA Projects Ltd-25 | 1,737,225 |
| CC-SS-B03.565 |  | Laying of PT Tendon | 4d | 2027-01-02 | 2027-01-07 | CC-SS-B03.520 | Physical Progress [2350 h]; TATA Projects Ltd-25 |  |
| CC-SS-B03.590 |  | Reinforcement Top Net | 3d | 2027-01-07 | 2027-01-11 | CC-SS-B03.565 | Barbender [1200 h]; Helper [600 h]; Physical Progress [1750 h]; Reinforcement Steel [18 MT1]; TATA Projects Ltd-25 | 1,737,225 |
| CC-SS-B03.620 |  | MEP Coordination | 1d | 2027-01-11 | 2027-01-12 | CC-SS-B03.590, CC-SS-B03.425 | Physical Progress [590 h]; TATA Projects Ltd-25 |  |
| CC-SS-B03.635 |  | Concrete of Slab | 1d | 2027-01-12 | 2027-01-13 | CC-SS-B03.620 | Mason [50 h]; Helper [50 h]; Physical Progress [590 h]; Concrete M40 [720 m3]; TATA Projects Ltd-25 | 7,104,240 |
| CC-SS-B03.650 |  | Wait for Strength Gain | 6d | 2027-01-13 | 2027-01-20 | CC-SS-B03.635 | Physical Progress [3520 h]; TATA Projects Ltd-25 |  |
| CC-SS-B03.695 |  | PT Work | 6d | 2027-01-20 | 2027-01-28 | CC-SS-B03.650 | PT [10 MT1]; Helper [100 h]; PT Fitter [100 h]; Physical Progress [5870 h]; TATA Projects Ltd-25 | 1,900,000 |
|  | 5 | **Pour 5** |  | 2026-11-10 | 2027-01-14 |  |  |  |
|  | 6 | **Soil Filling & PCC up to Grade Slab** |  | 2026-11-17 | 2026-12-08 |  |  |  |
| CC-SS-B03.475 |  | LPS | 5d | 2026-11-17 | 2026-11-23 | CC-SS-B03.415 | LPS [1120590 INR]; Physical Progress [2940 h]; TATA Projects Ltd-25 | 1,120,590 |
| CC-SS-B03.540 |  | Soil Filling/ Plum Concrete | 7d | 2026-11-26 | 2026-12-04 | CC-SS-FN595, CC-SS-FN450, CC-SS-FN540, CC-SS-FN535, CC-SS-B03.525, CC-SS-B03.475 | Physical Progress [5870 h]; Plum Concrete [199 m3]; Soil Filling [1193 m3]; Sand Filling [884 m3]; TATA Projects Ltd-25 | 4,066,116 |
| CC-SS-B03.595 |  | Surface dressing | 6d | 2026-11-28 | 2026-12-05 | CC-SS-B03.540 FF+1d | Helper [180 h]; Physical Progress [3520 h]; Surface Dressing [853 Sq m]; TATA Projects Ltd-25 | 38,385 |
| CC-SS-B03.640 |  | ATT | 3d | 2026-12-03 | 2026-12-07 | CC-SS-B03.595 FF+1d | Physical Progress [1750 h]; ATT [944 Sq m]; TATA Projects Ltd-25 | 129,328 |
| CC-SS-B03.655 |  | PCC | 3d | 2026-12-04 | 2026-12-08 | CC-SS-B03.640 FF+1d | Mason [30 h]; Helper [30 h]; Physical Progress [1750 h]; Concrete M10 [215 m3]; TATA Projects Ltd-25 | 1,857,385 |
|  | 1 | **Column, Core Wall, Shear Wall** |  | 2026-11-10 | 2026-11-26 |  |  |  |
| CC-SS-B03.415 |  | Reinforcement | 6d | 2026-11-10 | 2026-11-17 | CC-SS-FN595, CC-SS-FN450, CC-SS-FN540, CC-SS-FN535 | Barbender [6000 h]; Helper [3000 h]; Physical Progress [4100 h]; Reinforcement Steel [90 MT1]; TATA Projects Ltd-25 | 8,686,125 |
| CC-SS-B03.470 |  | LPS | 1d | 2026-11-17 | 2026-11-18 | CC-SS-B03.415 | LPS [39529 INR]; Physical Progress [590 h]; TATA Projects Ltd-25 | 39,529 |
| CC-SS-B03.485 |  | Shuttering | 6d | 2026-11-18 | 2026-11-25 | CC-SS-B03.415, CC-SS-B03.470 | Carpenter [3480 h]; Helper [1740 h]; Physical Progress [4100 h]; Formwork [2085 Sq m]; TATA Projects Ltd-25 | 2,429,358.6 |
| CC-SS-B03.525 |  | Concrete | 1d | 2026-11-25 | 2026-11-26 | CC-SS-B03.485 | Mason [50 h]; Helper [50 h]; Physical Progress [590 h]; Concrete M40 [559 m3]; TATA Projects Ltd-25 | 5,515,653 |
|  | 3 | **Slab** |  | 2026-12-08 | 2027-01-14 |  |  |  |
| CC-SS-B03.675 |  | Shuttering | 7d | 2026-12-08 | 2026-12-16 | CC-SS-B03.525, CC-SS-B03.655 | Carpenter [4800 h]; Helper [2400 h]; Physical Progress [4100 h]; Formwork [2880 Sq m]; TATA Projects Ltd-25 | 3,355,660.8 |
| CC-SS-B03.715 |  | Reinforcement Bottom Net with chairs | 3d | 2026-12-16 | 2026-12-19 | CC-SS-B03.675 | Barbender [1200 h]; Helper [600 h]; Physical Progress [1750 h]; Reinforcement Steel [18 MT1]; TATA Projects Ltd-25 | 1,737,225 |
| CC-SS-B03.735 |  | Laying of PT Tendon | 3d | 2026-12-19 | 2026-12-23 | CC-SS-B03.715 | Physical Progress [2350 h]; TATA Projects Ltd-25 |  |
| CC-SS-B03.750 |  | Reinforcement Top Net | 3d | 2026-12-23 | 2026-12-28 | CC-SS-B03.735 | Barbender [1200 h]; Helper [600 h]; Physical Progress [1750 h]; Reinforcement Steel [18 MT1]; TATA Projects Ltd-25 | 1,737,225 |
| CC-SS-B03.760 |  | MEP Coordination | 1d | 2026-12-28 | 2026-12-29 | CC-SS-B03.750 | Physical Progress [590 h]; TATA Projects Ltd-25 |  |
| CC-SS-B03.765 |  | Concrete of Slab | 1d | 2026-12-29 | 2026-12-30 | CC-SS-B03.760 | Mason [50 h]; Helper [50 h]; Physical Progress [590 h]; Concrete M40 [720 m3]; TATA Projects Ltd-25 | 7,104,240 |
| CC-SS-B03.775 |  | Wait for Strength Gain | 6d | 2026-12-30 | 2027-01-07 | CC-SS-B03.765 | Physical Progress [3520 h]; TATA Projects Ltd-25 |  |
| CC-SS-B03.795 |  | PT Work | 6d | 2027-01-07 | 2027-01-14 | CC-SS-B03.775 | PT [10 MT1]; Helper [100 h]; PT Fitter [100 h]; Physical Progress [5870 h]; TATA Projects Ltd-25 | 1,900,000 |

| ID | WBS | Activity | Duration | Start | Finish | Predecessors | Complete | Remaining | Planned start | Planned finish | Resources | Cost | Actual cost |
| --- | --- | --- | --- | --- | --- | --- | --- | --- | --- | --- | --- | --- | --- |
|  | 6 | **Pour 6** |  | 2026-08-18 | 2027-01-25 |  |  |  |  |  |  |  |  |
|  | 6 | **Soil Filling & PCC up to Grade Slab** |  | 2026-12-01 | 2026-12-18 |  |  |  |  |  |  |  |  |
| CC-SS-B03.550 |  | LPS | 5d | 2026-12-01 | 2026-12-07 | CC-SS-B03.495 |  |  |  |  | LPS [917677 INR]; Physical Progress [2940 h]; TATA Projects Ltd-25 | 917,677 |  |
| CC-SS-B03.645 |  | Soil Filling/ Plum Concrete | 7d | 2026-12-07 | 2026-12-15 | CC-SS-FN665, CC-SS-FN625, CC-SS-B03.625, CC-SS-B03.550 |  |  |  |  | Physical Progress [5870 h]; Plum Concrete [163 m3]; Soil Filling [977 m3]; Sand Filling [724 m3]; TATA Projects Ltd-25 | 3,330,276 |  |
| CC-SS-B03.685 |  | Surface dressing | 6d | 2026-12-09 | 2026-12-16 | CC-SS-B03.645 FF+1d |  |  |  |  | Helper [180 h]; Physical Progress [3520 h]; Surface Dressing [699 Sq m]; TATA Projects Ltd-25 | 31,455 |  |
| CC-SS-B03.700 |  | ATT | 3d | 2026-12-14 | 2026-12-17 | CC-SS-B03.685 FF+1d |  |  |  |  | Physical Progress [1750 h]; ATT [773 Sq m]; TATA Projects Ltd-25 | 105,901 |  |
| CC-SS-B03.710 |  | PCC | 3d | 2026-12-15 | 2026-12-18 | CC-SS-B03.700 FF+1d |  |  |  |  | Mason [30 h]; Helper [30 h]; Physical Progress [1750 h]; Concrete M10 [176 m3]; TATA Projects Ltd-25 | 1,520,464 |  |
|  | 1 | **Column, Core Wall, Shear Wall** |  | 2026-08-18 | 2026-12-02 |  |  |  |  |  |  |  |  |
| CC-SS-B03.495 |  | Reinforcement | 73.92d | 2026-08-18 A | 2026-12-01 | CC-SS-FN665, CC-SS-FN625 FF | 30% | 4.2d | 2026-08-19 | 2026-12-01 | Barbender [4940 h]; Helper [2470 h]; Physical Progress [4110 h]; Reinforcement Steel [74 MT1]; TATA Projects Ltd-25 | 7,141,925 | 6,736,115.51 |
| CC-SS-B03.570 |  | Shuttering | 73.22d | 2026-08-20 A | 2026-12-02 | CC-SS-B03.495 SS, CC-SS-B03.545 SS | 25% | 4.5d | 2026-08-21 | 2026-12-02 | Carpenter [2850 h]; Helper [1430 h]; Physical Progress [4110 h]; Formwork [1708 Sq m]; TATA Projects Ltd-25 | 1,990,093.28 | 1,867,779.33 |
| CC-SS-B03.625 |  | Concrete | 68.47d | 2026-08-24 A | 2026-11-27 | CC-SS-B03.570 SS | 25% | 0.75d |  |  | Mason [50 h]; Helper [50 h]; Physical Progress [590 h]; Concrete M40 [458 m3]; TATA Projects Ltd-25 | 4,519,086 | 4,469,582.87 |
| CC-SS-B03.545 |  | LPS | 55.47d | 2026-09-19 A | 2026-11-27 | CC-SS-B03.495 SS | 25% | 0.75d |  |  | LPS [39529 INR]; Physical Progress [590 h]; TATA Projects Ltd-25 | 39,529 | 38,994.5 |
|  | 3 | **Slab** |  | 2026-12-18 | 2027-01-25 |  |  |  |  |  |  |  |  |
| CC-SS-B03.725 |  | Shuttering | 7d | 2026-12-18 | 2026-12-28 | CC-SS-B03.625, CC-SS-B03.710 |  |  |  |  | Carpenter [3930 h]; Helper [1970 h]; Physical Progress [4110 h]; Formwork [2358 Sq m]; TATA Projects Ltd-25 | 2,747,447.28 |  |
| CC-SS-B03.755 |  | Reinforcement Bottom Net with chairs | 3d | 2026-12-28 | 2026-12-31 | CC-SS-B03.725 |  |  |  |  | Barbender [1000 h]; Helper [500 h]; Physical Progress [1750 h]; Reinforcement Steel [15 MT1]; TATA Projects Ltd-25 | 1,447,687.5 |  |
| CC-SS-B03.780 |  | Laying of PT Tendon | 3d | 2026-12-31 | 2027-01-05 | CC-SS-B03.755 |  |  |  |  | Physical Progress [2350 h]; TATA Projects Ltd-25 |  |  |
| CC-SS-B03.790 |  | Reinforcement Top Net | 3d | 2027-01-05 | 2027-01-08 | CC-SS-B03.780 |  |  |  |  | Barbender [1000 h]; Helper [500 h]; Physical Progress [1750 h]; Reinforcement Steel [15 MT1]; TATA Projects Ltd-25 | 1,447,687.5 |  |
| CC-SS-B03.805 |  | MEP Coordination | 1d | 2027-01-08 | 2027-01-09 | CC-SS-B03.790 |  |  |  |  | Physical Progress [590 h]; TATA Projects Ltd-25 |  |  |
| CC-SS-B03.810 |  | Concrete of Slab | 1d | 2027-01-09 | 2027-01-11 | CC-SS-B03.805 |  |  |  |  | Mason [50 h]; Helper [50 h]; Physical Progress [590 h]; Concrete M40 [590 m3]; TATA Projects Ltd-25 | 5,821,530 |  |
| CC-SS-B03.815 |  | Wait for Strength Gain | 6d | 2027-01-11 | 2027-01-18 | CC-SS-B03.810 |  |  |  |  | Physical Progress [3520 h]; TATA Projects Ltd-25 |  |  |
| CC-SS-B03.835 |  | PT Work | 6d | 2027-01-18 | 2027-01-25 | CC-SS-B03.815 |  |  |  |  | PT [8 MT1]; Helper [100 h]; PT Fitter [100 h]; Physical Progress [5870 h]; TATA Projects Ltd-25 | 1,520,000 |  |
|  | 7 | **Pour 7** |  | 2026-11-20 | 2027-01-25 |  |  |  |  |  |  |  |  |
|  | 6 | **Soil Filling & PCC up to Grade Slab** |  | 2026-11-27 | 2026-12-17 |  |  |  |  |  |  |  |  |
| CC-SS-B03.605 |  | LPS | 5d | 2026-11-27 | 2026-12-03 | CC-SS-B03.530 |  |  |  |  | LPS [968405 INR]; Physical Progress [2940 h]; TATA Projects Ltd-25 | 968,405 |  |
| CC-SS-B03.690 |  | Soil Filling/ Plum Concrete | 6d | 2026-12-07 | 2026-12-14 | CC-SS-FN680, CC-SS-FN690, CC-SS-B03.680, CC-SS-B03.605 |  |  |  |  | Physical Progress [3520 h]; Plum Concrete [172 m3]; Soil Filling [1031 m3]; Sand Filling [764 m3]; TATA Projects Ltd-25 | 3,514,236 |  |
| CC-SS-B03.720 |  | Surface dressing | 1d | 2026-12-14 | 2026-12-15 | CC-SS-B03.690 FF+1d |  |  |  |  | Helper [30 h]; Physical Progress [590 h]; Surface Dressing [737 Sq m]; TATA Projects Ltd-25 | 33,165 |  |
| CC-SS-B03.730 |  | ATT | 1d | 2026-12-15 | 2026-12-16 | CC-SS-B03.720 FF+1d |  |  |  |  | Physical Progress [590 h]; ATT [816 Sq m]; TATA Projects Ltd-25 | 111,792 |  |
| CC-SS-B03.740 |  | PCC | 1d | 2026-12-16 | 2026-12-17 | CC-SS-B03.730 FF+1d |  |  |  |  | Mason [10 h]; Helper [10 h]; Physical Progress [590 h]; Concrete M10 [186 m3]; TATA Projects Ltd-25 | 1,606,854 |  |

| ID | WBS | Activity | Duration | Start | Finish | Predecessors | Resources | Cost |
| --- | --- | --- | --- | --- | --- | --- | --- | --- |
|  | 1 | **Column, Core Wall, Shear Wall** |  | 2026-11-20 | 2026-12-07 |  |  |  |
| CC-SS-B03.530 |  | Reinforcement | 6d | 2026-11-20 | 2026-11-27 | CC-SS-FN680, CC-SS-FN690 | Barbender [5200 h]; Helper [2600 h]; Physical Progress [4110 h]; Reinforcement Steel [78 MT1]; TATA Projects Ltd-25 | 7,527,975 |
| CC-SS-B03.600 |  | LPS | 1d | 2026-11-27 | 2026-11-28 | CC-SS-B03.530 | LPS [39529 INR]; Physical Progress [590 h]; TATA Projects Ltd-25 | 39,529 |
| CC-SS-B03.610 |  | Shuttering | 6d | 2026-11-28 | 2026-12-05 | CC-SS-B03.530, CC-SS-B03.600 | Carpenter [3010 h]; Helper [1510 h]; Physical Progress [4110 h]; Formwork [1802 Sq m]; TATA Projects Ltd-25 | 2,099,618.32 |
| CC-SS-B03.680 |  | Concrete | 1d | 2026-12-05 | 2026-12-07 | CC-SS-B03.610 | Mason [50 h]; Helper [50 h]; Physical Progress [590 h]; Concrete M40 [483 m3]; TATA Projects Ltd-25 | 4,765,761 |
|  | 3 | **Slab** |  | 2026-12-17 | 2027-01-25 |  |  |  |
| CC-SS-B03.745 |  | Shuttering | 7d | 2026-12-17 | 2026-12-26 | CC-SS-B03.680, CC-SS-B03.740 | Carpenter [4150 h]; Helper [2080 h]; Physical Progress [4110 h]; Formwork [2488 Sq m]; TATA Projects Ltd-25 | 2,898,918.08 |
| CC-SS-B03.770 |  | Reinforcement Bottom Net with chairs | 3d | 2026-12-26 | 2026-12-30 | CC-SS-B03.745 | Barbender [1000 h]; Helper [500 h]; Physical Progress [1750 h]; Reinforcement Steel [15 MT1]; TATA Projects Ltd-25 | 1,447,687.5 |
| CC-SS-B03.785 |  | Laying of PT Tendon | 4d | 2026-12-30 | 2027-01-05 | CC-SS-B03.770 | Physical Progress [2350 h]; TATA Projects Ltd-25 |  |
| CC-SS-B03.800 |  | Reinforcement Top Net | 3d | 2027-01-05 | 2027-01-08 | CC-SS-B03.785 | Barbender [1000 h]; Helper [500 h]; Physical Progress [1750 h]; Reinforcement Steel [15 MT1]; TATA Projects Ltd-25 | 1,447,687.5 |
| CC-SS-B03.820 |  | MEP Coordination | 1d | 2027-01-08 | 2027-01-09 | CC-SS-B03.800 | Physical Progress [590 h]; TATA Projects Ltd-25 |  |
| CC-SS-B03.825 |  | Concrete of Slab | 1d | 2027-01-09 | 2027-01-11 | CC-SS-B03.820 | Mason [50 h]; Helper [50 h]; Physical Progress [590 h]; Concrete M40 [622 m3]; TATA Projects Ltd-25 | 6,137,274 |
| CC-SS-B03.830 |  | Wait for Strength Gain | 6d | 2027-01-11 | 2027-01-18 | CC-SS-B03.825 | Physical Progress [3520 h]; TATA Projects Ltd-25 |  |
| CC-SS-B03.840 |  | PT Work | 6d | 2027-01-18 | 2027-01-25 | CC-SS-B03.830 | PT [8 MT1]; Helper [100 h]; PT Fitter [100 h]; Physical Progress [5870 h]; TATA Projects Ltd-25 | 1,520,000 |
|  | 1 | **Basement 02** |  | 2026-12-22 | 2027-03-11 |  |  |  |
|  | 1 | **Pour 1** |  | 2026-12-22 | 2027-02-18 |  |  |  |
|  | 1 | **Column, Core Wall, Shear Wall** |  | 2026-12-22 | 2027-01-12 |  |  |  |
| CC-SS-B02.105 |  | Reinforcement | 7d | 2026-12-22 | 2026-12-31 | CC-SS-B03.665 | Barbender [6140 h]; Helper [3070 h]; Physical Progress [4100 h]; Reinforcement Steel [92 MT1]; TATA Projects Ltd-25 | 8,879,150 |
| CC-SS-B02.195 |  | LPS | 1d | 2026-12-31 | 2027-01-02 | CC-SS-B02.105 | LPS [39529 INR]; Physical Progress [590 h]; TATA Projects Ltd-25 | 39,529 |
| CC-SS-B02.220 |  | Shuttering | 7d | 2027-01-02 | 2027-01-11 | CC-SS-B02.105, CC-SS-B02.195 | Carpenter [2920 h]; Helper [1460 h]; Physical Progress [4100 h]; Formwork [1752 Sq m]; TATA Projects Ltd-25 | 2,041,360.32 |
| CC-SS-B02.295 |  | Concrete | 1d | 2027-01-11 | 2027-01-12 | CC-SS-B02.220 | Mason [50 h]; Helper [50 h]; Physical Progress [590 h]; Concrete M40 [438 m3]; TATA Projects Ltd-25 | 4,321,746 |
|  | 4 | **Staircase-1** |  | 2026-12-22 | 2027-01-27 |  |  |  |
| CC-SS-B02.115 |  | Reinforcement of wall upto Flight 1 | 3d | 2026-12-22 | 2026-12-26 | CC-SS-B03.665 | Barbender [70 h]; Helper [40 h]; Physical Progress [1750 h]; Reinforcement Steel [1 MT1]; TATA Projects Ltd-25 | 96,512.5 |
| CC-SS-B02.135 |  | Shuttering of wall upto Flight 1 | 3d | 2026-12-26 | 2026-12-30 | CC-SS-B02.115 | Carpenter [20 h]; Helper [10 h]; Physical Progress [1750 h]; Formwork [10 Sq m]; TATA Projects Ltd-25 | 11,651.6 |
| CC-SS-B02.185 |  | Casting of wall upto Flight 1 | 1d | 2026-12-30 | 2026-12-31 | CC-SS-B02.135 | Mason; Helper; Physical Progress [590 h]; Concrete M40 [3 m3]; TATA Projects Ltd-25 | 29,601 |
| CC-SS-B02.210 |  | Shuttering of Staircase upto Flight 1 | 3d | 2026-12-31 | 2027-01-05 | CC-SS-B02.185 | Carpenter [20 h]; Helper [10 h]; Physical Progress [1750 h]; Formwork [10 Sq m]; TATA Projects Ltd-25 | 11,651.6 |
| CC-SS-B02.230 |  | Reinforcement of Staircase upto Flight 1 | 3d | 2027-01-05 | 2027-01-08 | CC-SS-B02.210 | Barbender [70 h]; Helper [40 h]; Physical Progress [1750 h]; Reinforcement Steel [1 MT1]; TATA Projects Ltd-25 | 96,512.5 |
| CC-SS-B02.275 |  | MEP coordination upto Flight 1 | 1d | 2027-01-08 | 2027-01-09 | CC-SS-B02.230 | Physical Progress [590 h]; TATA Projects Ltd-25 |  |
| CC-SS-B02.290 |  | Casting of Staircase upto Flight 1 | 1d | 2027-01-09 | 2027-01-11 | CC-SS-B02.275 | Mason; Helper; Physical Progress [590 h]; Concrete M40 [3 m3]; TATA Projects Ltd-25 | 29,601 |
| CC-SS-B02.310 |  | Reinforcement of wall upto Flight 2 | 3d | 2027-01-11 | 2027-01-14 | CC-SS-B02.290 | Barbender [70 h]; Helper [40 h]; Physical Progress [1750 h]; Reinforcement Steel [1 MT1]; TATA Projects Ltd-25 | 96,512.5 |
| CC-SS-B02.340 |  | Shuttering of wall upto Flight 2 | 3d | 2027-01-14 | 2027-01-18 | CC-SS-B02.310 | Carpenter [20 h]; Helper [10 h]; Physical Progress [1750 h]; Formwork [10 Sq m]; TATA Projects Ltd-25 | 11,651.6 |
| CC-SS-B02.375 |  | Casting of wall upto Flight 2 | 1d | 2027-01-18 | 2027-01-19 | CC-SS-B02.340 | Mason; Helper; Physical Progress [590 h]; Concrete M40 [3 m3]; TATA Projects Ltd-25 | 29,601 |
| CC-SS-B02.390 |  | Shuttering of Staircase upto Flight 2 | 3d | 2027-01-19 | 2027-01-22 | CC-SS-B02.375 | Carpenter [20 h]; Helper [10 h]; Physical Progress [1750 h]; Formwork [10 Sq m]; TATA Projects Ltd-25 | 11,651.6 |
| CC-SS-B02.430 |  | Reinforcement of Staircase upto Flight 2 | 3d | 2027-01-22 | 2027-01-27 | CC-SS-B02.390 | Barbender [70 h]; Helper [40 h]; Physical Progress [1750 h]; Reinforcement Steel [1 MT1]; TATA Projects Ltd-25 | 96,512.5 |

| ID | WBS | Activity | Duration | Start | Finish | Predecessors | Resources | Cost |
| --- | --- | --- | --- | --- | --- | --- | --- | --- |
|  | 3 | **Staircase-2** |  | 2026-12-22 | 2027-01-27 |  |  |  |
| CC-SS-B02.110 |  | Reinforcement of wall upto Flight 1 | 3d | 2026-12-22 | 2026-12-26 | CC-SS-B03.665 | Barbender [70 h]; Helper [40 h]; Physical Progress [1750 h]; Reinforcement Steel [1 MT1]; TATA Projects Ltd-25 | 96,512.5 |
| CC-SS-B02.130 |  | Shuttering of wall upto Flight 1 | 3d | 2026-12-26 | 2026-12-30 | CC-SS-B02.110 | Carpenter [20 h]; Helper [10 h]; Physical Progress [1750 h]; Formwork [10 Sq m]; TATA Projects Ltd-25 | 11,651.6 |
| CC-SS-B02.180 |  | Casting of wall upto Flight 1 | 1d | 2026-12-30 | 2026-12-31 | CC-SS-B02.130 | Mason; Helper; Physical Progress [590 h]; Concrete M40 [3 m3]; TATA Projects Ltd-25 | 29,601 |
| CC-SS-B02.205 |  | Shuttering of Staircase upto Flight 1 | 3d | 2026-12-31 | 2027-01-05 | CC-SS-B02.180 | Carpenter [20 h]; Helper [10 h]; Physical Progress [1750 h]; Formwork [10 Sq m]; TATA Projects Ltd-25 | 11,651.6 |
| CC-SS-B02.225 |  | Reinforcement of Staircase upto Flight 1 | 3d | 2027-01-05 | 2027-01-08 | CC-SS-B02.205 | Barbender [70 h]; Helper [40 h]; Physical Progress [1750 h]; Reinforcement Steel [1 MT1]; TATA Projects Ltd-25 | 96,512.5 |
| CC-SS-B02.270 |  | MEP coordination upto Flight 1 | 1d | 2027-01-08 | 2027-01-09 | CC-SS-B02.225 | Physical Progress [590 h]; TATA Projects Ltd-25 |  |
| CC-SS-B02.285 |  | Casting of Staircase upto Flight 1 | 1d | 2027-01-09 | 2027-01-11 | CC-SS-B02.270 | Mason; Helper; Physical Progress [590 h]; Concrete M40 [3 m3]; TATA Projects Ltd-25 | 29,601 |
| CC-SS-B02.305 |  | Reinforcement of wall upto Flight 2 | 3d | 2027-01-11 | 2027-01-14 | CC-SS-B02.285 | Barbender [70 h]; Helper [40 h]; Physical Progress [1750 h]; Reinforcement Steel [1 MT1]; TATA Projects Ltd-25 | 96,512.5 |
| CC-SS-B02.335 |  | Shuttering of wall upto Flight 2 | 3d | 2027-01-14 | 2027-01-18 | CC-SS-B02.305 | Carpenter [20 h]; Helper [10 h]; Physical Progress [1750 h]; Formwork [10 Sq m]; TATA Projects Ltd-25 | 11,651.6 |
| CC-SS-B02.370 |  | Casting of wall upto Flight 2 | 1d | 2027-01-18 | 2027-01-19 | CC-SS-B02.335 | Mason; Helper; Physical Progress [590 h]; Concrete M40 [3 m3]; TATA Projects Ltd-25 | 29,601 |
| CC-SS-B02.385 |  | Shuttering of Staircase upto Flight 2 | 3d | 2027-01-19 | 2027-01-22 | CC-SS-B02.370 | Carpenter [20 h]; Helper [10 h]; Physical Progress [1750 h]; Formwork [10 Sq m]; TATA Projects Ltd-25 | 11,651.6 |
| CC-SS-B02.425 |  | Reinforcement of Staircase upto Flight 2 | 3d | 2027-01-22 | 2027-01-27 | CC-SS-B02.385 | Barbender [70 h]; Helper [40 h]; Physical Progress [1750 h]; Reinforcement Steel [1 MT1]; TATA Projects Ltd-25 | 96,512.5 |
|  | 2 | **Slab** |  | 2027-01-12 | 2027-02-18 |  |  |  |
| CC-SS-B02.320 |  | Shuttering | 7d | 2027-01-12 | 2027-01-20 | CC-SS-B02.295 | Carpenter [7520 h]; Helper [3760 h]; Physical Progress [4100 h]; Formwork [4507 Sq m]; TATA Projects Ltd-25 | 5,251,376.12 |
| CC-SS-B02.400 |  | Reinforcement Bottom Net with chairs | 3d | 2027-01-20 | 2027-01-23 | CC-SS-B02.320 | Barbender [1670 h]; Helper [840 h]; Physical Progress [1750 h]; Reinforcement Steel [25 MT1]; TATA Projects Ltd-25 | 2,412,812.5 |
| CC-SS-B02.435 |  | Laying of PT Tendon | 4d | 2027-01-23 | 2027-01-29 | CC-SS-B02.400 | Physical Progress [2350 h]; TATA Projects Ltd-25 |  |
| CC-SS-B02.460 |  | Reinforcement Top Net | 3d | 2027-01-29 | 2027-02-02 | CC-SS-B02.435 | Barbender [1670 h]; Helper [840 h]; Physical Progress [1750 h]; Reinforcement Steel [25 MT1]; TATA Projects Ltd-25 | 2,412,812.5 |
| CC-SS-B02.490 |  | MEP Coordination | 1d | 2027-02-02 | 2027-02-03 | CC-SS-B02.400, CC-SS-B02.460, CC-SS-B02.425, CC-SS-B02.430 | Physical Progress [590 h]; TATA Projects Ltd-25 |  |
| CC-SS-B02.495 |  | Concrete of Slab | 1d | 2027-02-03 | 2027-02-04 | CC-SS-B02.490 | Mason [50 h]; Helper [50 h]; Physical Progress [590 h]; Concrete M40 [1127 m3]; TATA Projects Ltd-25 | 11,120,109 |
| CC-SS-B02.505 |  | Wait for Strength Gain | 6d | 2027-02-04 | 2027-02-11 | CC-SS-B02.495 | Physical Progress [3520 h]; TATA Projects Ltd-25 |  |
| CC-SS-B02.540 |  | PT Work | 6d | 2027-02-11 | 2027-02-18 | CC-SS-B02.505, CC-SS-B03.705 | PT [12 MT1]; Helper [100 h]; PT Fitter [100 h]; Physical Progress [4700 h]; TATA Projects Ltd-25 | 2,280,000 |
|  | 2 | **Pour 2** |  | 2026-12-22 | 2027-02-18 |  |  |  |
|  | 1 | **Column, Core Wall, Shear Wall** |  | 2026-12-22 | 2027-01-12 |  |  |  |
| CC-SS-B02.10 |  | Reinforcement | 7d | 2026-12-22 | 2026-12-31 | CC-SS-B03.490 | Barbender [4400 h]; Helper [2200 h]; Physical Progress [4100 h]; Reinforcement Steel [66 MT1]; TATA Projects Ltd-25 | 6,369,825 |
| CC-SS-B02.30 |  | LPS | 1d | 2026-12-31 | 2027-01-02 | CC-SS-B02.10 | LPS [39529 INR]; Physical Progress [590 h]; TATA Projects Ltd-25 | 39,529 |
| CC-SS-B02.40 |  | Shuttering | 7d | 2027-01-02 | 2027-01-11 | CC-SS-B02.10, CC-SS-B02.30 | Carpenter [2100 h]; Helper [1050 h]; Physical Progress [4100 h]; Formwork [1258 Sq m]; TATA Projects Ltd-25 | 1,465,771.28 |
| CC-SS-B02.65 |  | Concrete | 1d | 2027-01-11 | 2027-01-12 | CC-SS-B02.40 | Mason [50 h]; Helper [50 h]; Physical Progress [590 h]; Concrete M40 [315 m3]; TATA Projects Ltd-25 | 3,108,105 |

| ID | WBS | Activity | Duration | Start | Finish | Predecessors | Resources | Cost |
| --- | --- | --- | --- | --- | --- | --- | --- | --- |
|  | 3 | **Staircase** |  | 2026-12-22 | 2027-01-27 |  |  |  |
| CC-SS-B02.15 |  | Reinforcement of wall upto Flight 1 | 3d | 2026-12-22 | 2026-12-26 | CC-SS-B03.490 | Barbender [70 h]; Helper [40 h]; Physical Progress [1750 h]; Reinforcement Steel [1 MT1]; TATA Projects Ltd-25 | 96,512.5 |
| CC-SS-B02.20 |  | Shuttering of wall upto Flight 1 | 3d | 2026-12-26 | 2026-12-30 | CC-SS-B02.15 | Carpenter [20 h]; Helper [10 h]; Physical Progress [1750 h]; Formwork [10 Sq m]; TATA Projects Ltd-25 | 11,651.6 |
| CC-SS-B02.25 |  | Casting of wall upto Flight 1 | 1d | 2026-12-30 | 2026-12-31 | CC-SS-B02.20 | Mason; Helper; Physical Progress [590 h]; Concrete M40 [3 m3]; TATA Projects Ltd-25 | 29,601 |
| CC-SS-B02.35 |  | Shuttering of Staircase upto Flight 1 | 3d | 2026-12-31 | 2027-01-05 | CC-SS-B02.25 | Carpenter [20 h]; Helper [10 h]; Physical Progress [1750 h]; Formwork [10 Sq m]; TATA Projects Ltd-25 | 11,651.6 |
| CC-SS-B02.50 |  | Reinforcement of Staircase upto Flight 1 | 3d | 2027-01-05 | 2027-01-08 | CC-SS-B02.35 | Barbender [70 h]; Helper [40 h]; Physical Progress [1750 h]; Reinforcement Steel [1 MT1]; TATA Projects Ltd-25 | 96,512.5 |
| CC-SS-B02.55 |  | MEP coordination upto Flight 1 | 1d | 2027-01-08 | 2027-01-09 | CC-SS-B02.50 | Physical Progress [590 h]; TATA Projects Ltd-25 |  |
| CC-SS-B02.60 |  | Casting of Staircase upto Flight 1 | 1d | 2027-01-09 | 2027-01-11 | CC-SS-B02.55 | Mason; Helper; Physical Progress [590 h]; Concrete M40 [3 m3]; TATA Projects Ltd-25 | 29,601 |
| CC-SS-B02.70 |  | Reinforcement of wall upto Flight 2 | 3d | 2027-01-11 | 2027-01-14 | CC-SS-B02.60 | Barbender [70 h]; Helper [40 h]; Physical Progress [1750 h]; Reinforcement Steel [1 MT1]; TATA Projects Ltd-25 | 96,512.5 |
| CC-SS-B02.100 |  | Shuttering of wall upto Flight 2 | 3d | 2027-01-14 | 2027-01-18 | CC-SS-B02.70 | Carpenter [20 h]; Helper [10 h]; Physical Progress [1750 h]; Formwork [10 Sq m]; TATA Projects Ltd-25 | 11,651.6 |
| CC-SS-B02.125 |  | Casting of wall upto Flight 2 | 1d | 2027-01-18 | 2027-01-19 | CC-SS-B02.100 | Mason; Helper; Physical Progress [590 h]; Concrete M40 [3 m3]; TATA Projects Ltd-25 | 29,601 |
| CC-SS-B02.140 |  | Shuttering of Staircase upto Flight 2 | 3d | 2027-01-19 | 2027-01-22 | CC-SS-B02.125 | Carpenter [20 h]; Helper [10 h]; Physical Progress [1750 h]; Formwork [10 Sq m]; TATA Projects Ltd-25 | 11,651.6 |
| CC-SS-B02.190 |  | Reinforcement of Staircase upto Flight 2 | 3d | 2027-01-22 | 2027-01-27 | CC-SS-B02.140 | Barbender [70 h]; Helper [40 h]; Physical Progress [1750 h]; Reinforcement Steel [1 MT1]; TATA Projects Ltd-25 | 96,512.5 |
|  | 2 | **Slab** |  | 2027-01-12 | 2027-02-18 |  |  |  |
| CC-SS-B02.75 |  | Shuttering | 7d | 2027-01-12 | 2027-01-20 | CC-SS-B02.65 | Carpenter [5400 h]; Helper [2700 h]; Physical Progress [4100 h]; Formwork [3236 Sq m]; TATA Projects Ltd-25 | 3,770,457.76 |
| CC-SS-B02.150 |  | Reinforcement Bottom Net with chairs | 3d | 2027-01-20 | 2027-01-23 | CC-SS-B02.75 | Barbender [1200 h]; Helper [600 h]; Physical Progress [1750 h]; Reinforcement Steel [18 MT1]; TATA Projects Ltd-25 | 1,737,225 |
| CC-SS-B02.200 |  | Laying of PT Tendon | 4d | 2027-01-23 | 2027-01-29 | CC-SS-B02.150 | Physical Progress [2350 h]; TATA Projects Ltd-25 |  |
| CC-SS-B02.240 |  | Reinforcement Top Net | 3d | 2027-01-29 | 2027-02-02 | CC-SS-B02.200 | Barbender [1200 h]; Helper [600 h]; Physical Progress [1750 h]; Reinforcement Steel [18 MT1]; TATA Projects Ltd-25 | 1,737,225 |
| CC-SS-B02.280 |  | MEP Coordination | 1d | 2027-02-02 | 2027-02-03 | CC-SS-B02.150, CC-SS-B02.240, CC-SS-B02.190 | Physical Progress [590 h]; TATA Projects Ltd-25 |  |
| CC-SS-B02.300 |  | Concrete of Slab | 1d | 2027-02-03 | 2027-02-04 | CC-SS-B02.280 | Mason [50 h]; Helper [50 h]; Physical Progress [590 h]; Concrete M40 [809 m3]; TATA Projects Ltd-25 | 7,982,403 |
| CC-SS-B02.325 |  | Wait for Strength Gain | 6d | 2027-02-04 | 2027-02-11 | CC-SS-B02.300 | Physical Progress [3520 h]; TATA Projects Ltd-25 |  |
| CC-SS-B02.380 |  | PT Work | 6d | 2027-02-11 | 2027-02-18 | CC-SS-B02.325, CC-SS-B03.535 | PT [9 MT1]; Helper [100 h]; PT Fitter [100 h]; Physical Progress [4700 h]; TATA Projects Ltd-25 | 1,710,000 |
|  | 3 | **Pour 3** |  | 2026-12-29 | 2027-02-24 |  |  |  |
|  | 1 | **Column, Core Wall, Shear Wall** |  | 2026-12-29 | 2027-01-18 |  |  |  |
| CC-SS-B02.45 |  | Reinforcement | 7d | 2026-12-29 | 2027-01-07 | CC-SS-B03.575 | Barbender [4070 h]; Helper [2040 h]; Physical Progress [4110 h]; Reinforcement Steel [61 MT1]; TATA Projects Ltd-25 | 5,887,262.5 |
| CC-SS-B02.80 |  | LPS | 1d | 2027-01-07 | 2027-01-08 | CC-SS-B02.45 | LPS [39529 INR]; Physical Progress [590 h]; TATA Projects Ltd-25 | 39,529 |
| CC-SS-B02.95 |  | Shuttering | 7d | 2027-01-08 | 2027-01-16 | CC-SS-B02.45, CC-SS-B02.80 | Carpenter [1950 h]; Helper [980 h]; Physical Progress [4110 h]; Formwork [1166 Sq m]; TATA Projects Ltd-25 | 1,358,576.56 |
| CC-SS-B02.165 |  | Concrete | 1d | 2027-01-16 | 2027-01-18 | CC-SS-B02.95 | Mason [50 h]; Helper [50 h]; Physical Progress [590 h]; Concrete M40 [291 m3]; TATA Projects Ltd-25 | 2,871,297 |

| ID | WBS | Activity | Duration | Start | Finish | Predecessors | Resources | Cost |
| --- | --- | --- | --- | --- | --- | --- | --- | --- |
|  | 2 | **Slab** |  | 2027-01-18 | 2027-02-24 |  |  |  |
| CC-SS-B02.175 |  | Shuttering | 7d | 2027-01-18 | 2027-01-27 | CC-SS-B02.165 | Carpenter [5000 h]; Helper [2500 h]; Physical Progress [4110 h]; Formwork [2999 Sq m]; TATA Projects Ltd-25 | 3,494,314.84 |
| CC-SS-B02.260 |  | Reinforcement Bottom Net with chairs | 3d | 2027-01-27 | 2027-01-30 | CC-SS-B02.175 | Barbender [1140 h]; Helper [570 h]; Physical Progress [1750 h]; Reinforcement Steel [17 MT1]; TATA Projects Ltd-25 | 1,640,712.5 |
| CC-SS-B02.330 |  | Laying of PT Tendon | 4d | 2027-01-30 | 2027-02-04 | CC-SS-B02.260 | Physical Progress [2350 h]; TATA Projects Ltd-25 |  |
| CC-SS-B02.360 |  | Reinforcement Top Net | 3d | 2027-02-04 | 2027-02-08 | CC-SS-B02.330 | Barbender [1140 h]; Helper [570 h]; Physical Progress [1750 h]; Reinforcement Steel [17 MT1]; TATA Projects Ltd-25 | 1,640,712.5 |
| CC-SS-B02.405 |  | MEP Coordination | 1d | 2027-02-08 | 2027-02-09 | CC-SS-B02.260, CC-SS-B02.360 | Physical Progress [590 h]; TATA Projects Ltd-25 |  |
| CC-SS-B02.415 |  | Concrete of Slab | 1d | 2027-02-09 | 2027-02-10 | CC-SS-B02.405 | Mason [50 h]; Helper [50 h]; Physical Progress [590 h]; Concrete M40 [750 m3]; TATA Projects Ltd-25 | 7,400,250 |
| CC-SS-B02.420 |  | Wait for Strength Gain | 6d | 2027-02-10 | 2027-02-17 | CC-SS-B02.415 | Physical Progress [3520 h]; TATA Projects Ltd-25 |  |
| CC-SS-B02.475 |  | PT Work | 6d | 2027-02-17 | 2027-02-24 | CC-SS-B02.420, CC-SS-B03.630 | PT [8 MT1]; Helper [100 h]; PT Fitter [100 h]; Physical Progress [4700 h]; TATA Projects Ltd-25 | 1,520,000 |
|  | 4 | **Pour 4** |  | 2027-01-13 | 2027-03-11 |  |  |  |
|  | 1 | **Column, Core Wall, Shear Wall** |  | 2027-01-13 | 2027-02-02 |  |  |  |
| CC-SS-B02.85 |  | Reinforcement | 7d | 2027-01-13 | 2027-01-21 | CC-SS-B03.635 | Barbender [5140 h]; Helper [2570 h]; Physical Progress [4110 h]; Reinforcement Steel [77 MT1]; TATA Projects Ltd-25 | 7,431,462.5 |
| CC-SS-B02.155 |  | LPS | 1d | 2027-01-21 | 2027-01-22 | CC-SS-B02.85 | LPS [39529 INR]; Physical Progress [590 h]; TATA Projects Ltd-25 | 39,529 |
| CC-SS-B02.170 |  | Shuttering | 7d | 2027-01-22 | 2027-02-01 | CC-SS-B02.85, CC-SS-B02.155 | Carpenter [2430 h]; Helper [1220 h]; Physical Progress [4110 h]; Formwork [1456 Sq m]; TATA Projects Ltd-25 | 1,696,472.96 |
| CC-SS-B02.250 |  | Concrete | 1d | 2027-02-01 | 2027-02-02 | CC-SS-B02.170 | Mason [50 h]; Helper [50 h]; Physical Progress [590 h]; Concrete M40 [364 m3]; TATA Projects Ltd-25 | 3,591,588 |
|  | 3 | **Staircase** |  | 2027-01-13 | 2027-02-16 |  |  |  |
| CC-SS-B02.90 |  | Reinforcement of wall upto Flight 1 | 3d | 2027-01-13 | 2027-01-16 | CC-SS-B03.635 | Barbender [70 h]; Helper [40 h]; Physical Progress [1750 h]; Reinforcement Steel [1 MT1]; TATA Projects Ltd-25 | 96,512.5 |
| CC-SS-B02.120 |  | Shuttering of wall upto Flight 1 | 3d | 2027-01-16 | 2027-01-20 | CC-SS-B02.90 | Carpenter [20 h]; Helper [10 h]; Physical Progress [1750 h]; Formwork [10 Sq m]; TATA Projects Ltd-25 | 11,651.6 |
| CC-SS-B02.145 |  | Casting of wall upto Flight 1 | 1d | 2027-01-20 | 2027-01-21 | CC-SS-B02.120 | Mason; Helper; Physical Progress [590 h]; Concrete M40 [3 m3]; TATA Projects Ltd-25 | 29,601 |
| CC-SS-B02.160 |  | Shuttering of Staircase upto Flight 1 | 3d | 2027-01-21 | 2027-01-25 | CC-SS-B02.145 | Carpenter [20 h]; Helper [10 h]; Physical Progress [1750 h]; Formwork [10 Sq m]; TATA Projects Ltd-25 | 11,651.6 |
| CC-SS-B02.215 |  | Reinforcement of Staircase upto Flight 1 | 3d | 2027-01-25 | 2027-01-29 | CC-SS-B02.160 | Barbender [70 h]; Helper [40 h]; Physical Progress [1750 h]; Reinforcement Steel [1 MT1]; TATA Projects Ltd-25 | 96,512.5 |
| CC-SS-B02.235 |  | MEP coordination upto Flight 1 | 1d | 2027-01-29 | 2027-01-30 | CC-SS-B02.215 | Physical Progress [590 h]; TATA Projects Ltd-25 |  |
| CC-SS-B02.245 |  | Casting of Staircase upto Flight 1 | 1d | 2027-01-30 | 2027-02-01 | CC-SS-B02.235 | Mason; Helper; Physical Progress [590 h]; Concrete M40 [3 m3]; TATA Projects Ltd-25 | 29,601 |
| CC-SS-B02.255 |  | Reinforcement of wall upto Flight 2 | 3d | 2027-02-01 | 2027-02-04 | CC-SS-B02.245 | Barbender [70 h]; Helper [40 h]; Physical Progress [1750 h]; Reinforcement Steel [1 MT1]; TATA Projects Ltd-25 | 96,512.5 |
| CC-SS-B02.315 |  | Shuttering of wall upto Flight 2 | 3d | 2027-02-04 | 2027-02-08 | CC-SS-B02.255 | Carpenter [20 h]; Helper [10 h]; Physical Progress [1750 h]; Formwork [10 Sq m]; TATA Projects Ltd-25 | 11,651.6 |
| CC-SS-B02.345 |  | Casting of wall upto Flight 2 | 1d | 2027-02-08 | 2027-02-09 | CC-SS-B02.315 | Mason; Helper; Physical Progress [590 h]; Concrete M40 [3 m3]; TATA Projects Ltd-25 | 29,601 |
| CC-SS-B02.355 |  | Shuttering of Staircase upto Flight 2 | 3d | 2027-02-09 | 2027-02-12 | CC-SS-B02.345 | Carpenter [20 h]; Helper [10 h]; Physical Progress [1750 h]; Formwork [10 Sq m]; TATA Projects Ltd-25 | 11,651.6 |
| CC-SS-B02.395 |  | Reinforcement of Staircase upto Flight 2 | 3d | 2027-02-12 | 2027-02-16 | CC-SS-B02.355 | Barbender [70 h]; Helper [40 h]; Physical Progress [1750 h]; Reinforcement Steel [1 MT1]; TATA Projects Ltd-25 | 96,512.5 |

| ID | WBS | Activity | Duration | Start | Finish | Predecessors | Resources | Cost |
| --- | --- | --- | --- | --- | --- | --- | --- | --- |
|  | 2 | **Slab** |  | 2027-02-02 | 2027-03-11 |  |  |  |
| CC-SS-B02.265 |  | Shuttering | 7d | 2027-02-02 | 2027-02-10 | CC-SS-B02.250 | Carpenter [6240 h]; Helper [3120 h]; Physical Progress [4110 h]; Formwork [3744 Sq m]; TATA Projects Ltd-25 | 4,362,359.04 |
| CC-SS-B02.365 |  | Reinforcement Bottom Net with chairs | 3d | 2027-02-10 | 2027-02-13 | CC-SS-B02.265 | Barbender [1400 h]; Helper [700 h]; Physical Progress [1750 h]; Reinforcement Steel [21 MT1]; TATA Projects Ltd-25 | 2,026,762.5 |
| CC-SS-B02.410 |  | Laying of PT Tendon | 4d | 2027-02-13 | 2027-02-18 | CC-SS-B02.365 | Physical Progress [2350 h]; TATA Projects Ltd-25 |  |
| CC-SS-B02.445 |  | Reinforcement Top Net | 3d | 2027-02-18 | 2027-02-22 | CC-SS-B02.410 | Barbender [1400 h]; Helper [700 h]; Physical Progress [1750 h]; Reinforcement Steel [21 MT1]; TATA Projects Ltd-25 | 2,026,762.5 |
| CC-SS-B02.465 |  | MEP Coordination | 1d | 2027-02-22 | 2027-02-23 | CC-SS-B02.365, CC-SS-B02.445, CC-SS-B02.395 | Physical Progress [590 h]; TATA Projects Ltd-25 |  |
| CC-SS-B02.480 |  | Concrete of Slab | 1d | 2027-02-23 | 2027-02-24 | CC-SS-B02.465 | Mason [50 h]; Helper [50 h]; Physical Progress [590 h]; Concrete M40 [936 m3]; TATA Projects Ltd-25 | 9,235,512 |
| CC-SS-B02.485 |  | Wait for Strength Gain | 6d | 2027-02-24 | 2027-03-03 | CC-SS-B02.480 | Physical Progress [3520 h]; TATA Projects Ltd-25 |  |
| CC-SS-B02.530 |  | PT Work | 6d | 2027-03-03 | 2027-03-11 | CC-SS-B02.485, CC-SS-B03.695 | PT [10 MT1]; Helper [100 h]; PT Fitter [100 h]; Physical Progress [4700 h]; TATA Projects Ltd-25 | 1,900,000 |
|  | 5 | **Pour 5** |  | 2026-12-30 | 2027-02-22 |  |  |  |
|  | 1 | **Column, Core Wall, Shear Wall** |  | 2026-12-30 | 2027-01-16 |  |  |  |
| CC-SS-B02.350 |  | Reinforcement | 6d | 2026-12-30 | 2027-01-07 | CC-SS-B03.765 | Barbender [5140 h]; Helper [2570 h]; Physical Progress [4110 h]; Reinforcement Steel [77 MT1]; TATA Projects Ltd-25 | 7,431,462.5 |
| CC-SS-B02.440 |  | LPS | 1d | 2027-01-07 | 2027-01-08 | CC-SS-B02.350 | LPS [39529 INR]; Physical Progress [590 h]; TATA Projects Ltd-25 | 39,529 |
| CC-SS-B02.450 |  | Shuttering | 6d | 2027-01-08 | 2027-01-15 | CC-SS-B02.350, CC-SS-B02.440 | Carpenter [2430 h]; Helper [1220 h]; Physical Progress [4110 h]; Formwork [1456 Sq m]; TATA Projects Ltd-25 | 1,696,472.96 |
| CC-SS-B02.500 |  | Concrete | 1d | 2027-01-15 | 2027-01-16 | CC-SS-B02.450 | Mason [50 h]; Helper [50 h]; Physical Progress [590 h]; Concrete M40 [364 m3]; TATA Projects Ltd-25 | 3,591,588 |
|  | 2 | **Slab** |  | 2027-01-16 | 2027-02-22 |  |  |  |
| CC-SS-B02.510 |  | Shuttering | 7d | 2027-01-16 | 2027-01-25 | CC-SS-B02.500 | Carpenter [6240 h]; Helper [3120 h]; Physical Progress [4110 h]; Formwork [3744 Sq m]; TATA Projects Ltd-25 | 4,362,359.04 |
| CC-SS-B02.545 |  | Reinforcement Bottom Net with chairs | 3d | 2027-01-25 | 2027-01-29 | CC-SS-B02.510 | Barbender [1400 h]; Helper [700 h]; Physical Progress [1750 h]; Reinforcement Steel [21 MT1]; TATA Projects Ltd-25 | 2,026,762.5 |
| CC-SS-B02.560 |  | Laying of PT Tendon | 3d | 2027-01-29 | 2027-02-02 | CC-SS-B02.545 | Physical Progress [2350 h]; TATA Projects Ltd-25 |  |
| CC-SS-B02.575 |  | Reinforcement Top Net | 3d | 2027-02-02 | 2027-02-05 | CC-SS-B02.560 | Barbender [1400 h]; Helper [700 h]; Physical Progress [1750 h]; Reinforcement Steel [21 MT1]; TATA Projects Ltd-25 | 2,026,762.5 |
| CC-SS-B02.585 |  | MEP Coordination | 1d | 2027-02-05 | 2027-02-06 | CC-SS-B02.545, CC-SS-B02.575 | Physical Progress [590 h]; TATA Projects Ltd-25 |  |
| CC-SS-B02.590 |  | Concrete of Slab | 1d | 2027-02-06 | 2027-02-08 | CC-SS-B02.585 | Mason [50 h]; Helper [50 h]; Physical Progress [590 h]; Concrete M40 [936 m3]; TATA Projects Ltd-25 | 9,235,512 |
| CC-SS-B02.600 |  | Wait for Strength Gain | 6d | 2027-02-08 | 2027-02-15 | CC-SS-B02.590 | Physical Progress [3520 h]; TATA Projects Ltd-25 |  |
| CC-SS-B02.620 |  | PT Work | 6d | 2027-02-15 | 2027-02-22 | CC-SS-B02.600, CC-SS-B03.795 | PT [10 MT1]; Helper [100 h]; PT Fitter [100 h]; Physical Progress [4700 h]; TATA Projects Ltd-25 | 1,900,000 |

| ID | WBS | Activity | Duration | Start | Finish | Predecessors | Resources | Cost |
| --- | --- | --- | --- | --- | --- | --- | --- | --- |
|  | 6 | **Pour 6** |  | 2027-01-11 | 2027-03-04 |  |  |  |
|  | 1 | **Column, Core Wall, Shear Wall** |  | 2027-01-11 | 2027-01-28 |  |  |  |
| CC-SS-B02.455 |  | Reinforcement | 6d | 2027-01-11 | 2027-01-18 | CC-SS-B03.810 | Barbender [4200 h]; Helper [2100 h]; Physical Progress [4110 h]; Reinforcement Steel [63 MT1]; TATA Projects Ltd-25 | 6,080,287.5 |
| CC-SS-B02.515 |  | LPS | 1d | 2027-01-18 | 2027-01-19 | CC-SS-B02.455 | LPS [39529 INR]; Physical Progress [590 h]; TATA Projects Ltd-25 | 39,529 |
| CC-SS-B02.520 |  | Shuttering | 6d | 2027-01-19 | 2027-01-27 | CC-SS-B02.455, CC-SS-B02.515 | Carpenter [1990 h]; Helper [1000 h]; Physical Progress [4110 h]; Formwork [1192 Sq m]; TATA Projects Ltd-25 | 1,388,870.72 |
| CC-SS-B02.550 |  | Concrete | 1d | 2027-01-27 | 2027-01-28 | CC-SS-B02.520 | Mason [50 h]; Helper [50 h]; Physical Progress [590 h]; Concrete M40 [298 m3]; TATA Projects Ltd-25 | 2,940,366 |
|  | 2 | **Slab** |  | 2027-01-28 | 2027-03-04 |  |  |  |
| CC-SS-B02.555 |  | Shuttering | 7d | 2027-01-28 | 2027-02-05 | CC-SS-B02.550 | Carpenter [5110 h]; Helper [2560 h]; Physical Progress [4110 h]; Formwork [3066 Sq m]; TATA Projects Ltd-25 | 3,572,380.56 |
| CC-SS-B02.580 |  | Reinforcement Bottom Net with chairs | 3d | 2027-02-05 | 2027-02-09 | CC-SS-B02.555 | Barbender [1140 h]; Helper [570 h]; Physical Progress [1750 h]; Reinforcement Steel [17 MT1]; TATA Projects Ltd-25 | 1,640,712.5 |
| CC-SS-B02.605 |  | Laying of PT Tendon | 3d | 2027-02-09 | 2027-02-12 | CC-SS-B02.580 | Physical Progress [2350 h]; TATA Projects Ltd-25 |  |
| CC-SS-B02.615 |  | Reinforcement Top Net | 3d | 2027-02-12 | 2027-02-16 | CC-SS-B02.605 | Barbender [1140 h]; Helper [570 h]; Physical Progress [1750 h]; Reinforcement Steel [17 MT1]; TATA Projects Ltd-25 | 1,640,712.5 |
| CC-SS-B02.630 |  | MEP Coordination | 1d | 2027-02-16 | 2027-02-17 | CC-SS-B02.580, CC-SS-B02.615 | Physical Progress [590 h]; TATA Projects Ltd-25 |  |
| CC-SS-B02.635 |  | Concrete of Slab | 1d | 2027-02-17 | 2027-02-18 | CC-SS-B02.630 | Mason [50 h]; Helper [50 h]; Physical Progress [590 h]; Concrete M40 [767 m3]; TATA Projects Ltd-25 | 7,567,989 |
| CC-SS-B02.640 |  | Wait for Strength Gain | 6d | 2027-02-18 | 2027-02-25 | CC-SS-B02.635 | Physical Progress [3520 h]; TATA Projects Ltd-25 |  |
| CC-SS-B02.660 |  | PT Work | 6d | 2027-02-25 | 2027-03-04 | CC-SS-B02.640, CC-SS-B03.835 | PT [8 MT1]; Helper [100 h]; PT Fitter [100 h]; Physical Progress [4700 h]; TATA Projects Ltd-25 | 1,520,000 |
|  | 7 | **Pour 7** |  | 2027-01-11 | 2027-03-05 |  |  |  |
|  | 1 | **Column, Core Wall, Shear Wall** |  | 2027-01-11 | 2027-01-28 |  |  |  |
| CC-SS-B02.470 |  | Reinforcement | 6d | 2027-01-11 | 2027-01-18 | CC-SS-B03.825 | Barbender [4400 h]; Helper [2200 h]; Physical Progress [4110 h]; Reinforcement Steel [66 MT1]; TATA Projects Ltd-25 | 6,369,825 |
| CC-SS-B02.525 |  | LPS | 1d | 2027-01-18 | 2027-01-19 | CC-SS-B02.470 | LPS [39529 INR]; Physical Progress [590 h]; TATA Projects Ltd-25 | 39,529 |
| CC-SS-B02.535 |  | Shuttering | 6d | 2027-01-19 | 2027-01-27 | CC-SS-B02.470, CC-SS-B02.525 | Carpenter [2100 h]; Helper [1050 h]; Physical Progress [4110 h]; Formwork [1258 Sq m]; TATA Projects Ltd-25 | 1,465,771.28 |
| CC-SS-B02.565 |  | Concrete | 1d | 2027-01-27 | 2027-01-28 | CC-SS-B02.535 | Mason [50 h]; Helper [50 h]; Physical Progress [590 h]; Concrete M40 [315 m3]; TATA Projects Ltd-25 | 3,108,105 |
|  | 2 | **Slab** |  | 2027-01-28 | 2027-03-05 |  |  |  |
| CC-SS-B02.570 |  | Shuttering | 7d | 2027-01-28 | 2027-02-05 | CC-SS-B02.565 | Carpenter [5400 h]; Helper [2700 h]; Physical Progress [4110 h]; Formwork [3236 Sq m]; TATA Projects Ltd-25 | 3,770,457.76 |
| CC-SS-B02.595 |  | Reinforcement Bottom Net with chairs | 3d | 2027-02-05 | 2027-02-09 | CC-SS-B02.570 | Barbender [1200 h]; Helper [600 h]; Physical Progress [1750 h]; Reinforcement Steel [18 MT1]; TATA Projects Ltd-25 | 1,737,225 |
| CC-SS-B02.610 |  | Laying of PT Tendon | 4d | 2027-02-09 | 2027-02-13 | CC-SS-B02.595 | Physical Progress [2350 h]; TATA Projects Ltd-25 |  |
| CC-SS-B02.625 |  | Reinforcement Top Net | 3d | 2027-02-13 | 2027-02-17 | CC-SS-B02.610 | Barbender [1200 h]; Helper [600 h]; Physical Progress [1750 h]; Reinforcement Steel [18 MT1]; TATA Projects Ltd-25 | 1,737,225 |
| CC-SS-B02.645 |  | MEP Coordination | 1d | 2027-02-17 | 2027-02-18 | CC-SS-B02.595, CC-SS-B02.625 | Physical Progress [590 h]; TATA Projects Ltd-25 |  |
| CC-SS-B02.650 |  | Concrete of Slab | 1d | 2027-02-18 | 2027-02-19 | CC-SS-B02.645 | Mason [50 h]; Helper [50 h]; Physical Progress [590 h]; Concrete M40 [809 m3]; TATA Projects Ltd-25 | 7,982,403 |
| CC-SS-B02.655 |  | Wait for Strength Gain | 6d | 2027-02-19 | 2027-02-26 | CC-SS-B02.650 | Physical Progress [3520 h]; TATA Projects Ltd-25 |  |
| CC-SS-B02.665 |  | PT Work | 6d | 2027-02-26 | 2027-03-05 | CC-SS-B02.655, CC-SS-B03.840 | PT [9 MT1]; Helper [100 h]; PT Fitter [100 h]; Physical Progress [4700 h]; TATA Projects Ltd-25 | 1,710,000 |

| ID | WBS | Activity | Duration | Start | Finish | Predecessors | Resources | Cost |
| --- | --- | --- | --- | --- | --- | --- | --- | --- |
|  | 2 | **Basement 01** |  | 2027-02-04 | 2027-04-28 |  |  |  |
|  | 1 | **Pour 1** |  | 2027-02-04 | 2027-04-08 |  |  |  |
|  | 1 | **Column, Core Wall, Shear Wall - First Lift** |  | 2027-02-04 | 2027-02-16 |  |  |  |
| CC-SS-B01.155 |  | Reinforcement | 4d | 2027-02-04 | 2027-02-09 | CC-SS-B02.495 | Barbender [3070 h]; Helper [1540 h]; Physical Progress [2350 h]; Reinforcement Steel [46 MT1]; TATA Projects Ltd-25 | 4,439,575 |
| CC-SS-B01.230 |  | LPS | 1d | 2027-02-09 | 2027-02-10 | CC-SS-B01.155 | LPS [39529 INR]; Physical Progress [590 h]; TATA Projects Ltd-25 | 39,529 |
| CC-SS-B01.260 |  | Shuttering | 4d | 2027-02-10 | 2027-02-15 | CC-SS-B01.155, CC-SS-B01.230 | Carpenter [1460 h]; Helper [730 h]; Physical Progress [2350 h]; Formwork [876 Sq m]; TATA Projects Ltd-25 | 1,020,680.16 |
| CC-SS-B01.360 |  | Concrete | 1d | 2027-02-15 | 2027-02-16 | CC-SS-B01.260 | Mason [50 h]; Helper [50 h]; Physical Progress [590 h]; Concrete M40 [219 m3]; TATA Projects Ltd-25 | 2,160,873 |
|  | 3 | **Staircase - 1** |  | 2027-02-04 | 2027-03-17 |  |  |  |
| CC-SS-B01.170 |  | Reinforcement of wall upto Flight 1 | 2d | 2027-02-04 | 2027-02-06 | CC-SS-B02.495 | Barbender [70 h]; Helper [40 h]; Physical Progress [1170 h]; Reinforcement Steel [1 MT1]; TATA Projects Ltd-25 | 96,512.5 |
| CC-SS-B01.205 |  | Shuttering of wall upto Flight 1 | 2d | 2027-02-06 | 2027-02-09 | CC-SS-B01.170 | Carpenter [20 h]; Helper [10 h]; Physical Progress [1170 h]; Formwork [10 Sq m]; TATA Projects Ltd-25 | 11,651.6 |
| CC-SS-B01.240 |  | Casting of wall upto Flight 1 | 1d | 2027-02-09 | 2027-02-10 | CC-SS-B01.205 | Mason; Helper; Physical Progress [590 h]; Concrete M40 [3 m3]; TATA Projects Ltd-25 | 29,601 |
| CC-SS-B01.270 |  | Shuttering of Staircase upto Flight 1 | 1d | 2027-02-10 | 2027-02-11 | CC-SS-B01.240 | Carpenter [20 h]; Helper [10 h]; Physical Progress [590 h]; Formwork [10 Sq m]; TATA Projects Ltd-25 | 11,651.6 |
| CC-SS-B01.295 |  | Reinforcement of Staircase upto Flight 1 | 1d | 2027-02-11 | 2027-02-12 | CC-SS-B01.270 | Barbender [70 h]; Helper [40 h]; Physical Progress [590 h]; Reinforcement Steel [1 MT1]; TATA Projects Ltd-25 | 96,512.5 |
| CC-SS-B01.320 |  | MEP coordination upto Flight 1 | 1d | 2027-02-12 | 2027-02-13 | CC-SS-B01.295 | Physical Progress [590 h]; TATA Projects Ltd-25 |  |
| CC-SS-B01.340 |  | Casting of Staircase upto Flight 1 | 1d | 2027-02-13 | 2027-02-15 | CC-SS-B01.320 | Mason; Helper; Physical Progress [590 h]; Concrete M40 [3 m3]; TATA Projects Ltd-25 | 29,601 |
| CC-SS-B01.370 |  | Reinforcement of wall upto Flight 2 | 2d | 2027-02-15 | 2027-02-17 | CC-SS-B01.340 | Barbender [70 h]; Helper [40 h]; Physical Progress [1170 h]; Reinforcement Steel [1 MT1]; TATA Projects Ltd-25 | 96,512.5 |
| CC-SS-B01.410 |  | Shuttering of wall upto Flight 2 | 2d | 2027-02-17 | 2027-02-19 | CC-SS-B01.370 | Carpenter [20 h]; Helper [10 h]; Physical Progress [1170 h]; Formwork [10 Sq m]; TATA Projects Ltd-25 | 11,651.6 |
| CC-SS-B01.440 |  | Casting of wall upto Flight 2 | 1d | 2027-02-19 | 2027-02-20 | CC-SS-B01.410 | Mason; Helper; Physical Progress [590 h]; Concrete M40 [3 m3]; TATA Projects Ltd-25 | 29,601 |
| CC-SS-B01.465 |  | Shuttering of Staircase upto Flight 2 | 1d | 2027-02-20 | 2027-02-22 | CC-SS-B01.440 | Carpenter [20 h]; Helper [10 h]; Physical Progress [590 h]; Formwork [10 Sq m]; TATA Projects Ltd-25 | 11,651.6 |
| CC-SS-B01.495 |  | Reinforcement of Staircase upto Flight 2 | 1d | 2027-02-22 | 2027-02-23 | CC-SS-B01.465 | Barbender [70 h]; Helper [40 h]; Physical Progress [590 h]; Reinforcement Steel [1 MT1]; TATA Projects Ltd-25 | 96,512.5 |
| CC-SS-B01.515 |  | MEP coordination upto Flight 2 | 1d | 2027-02-23 | 2027-02-24 | CC-SS-B01.495 | Physical Progress [590 h]; TATA Projects Ltd-25 |  |
| CC-SS-B01.535 |  | Casting of Staircase upto Flight 2 | 1d | 2027-02-24 | 2027-02-25 | CC-SS-B01.515 | Mason; Helper; Physical Progress [590 h]; Concrete M40 [3 m3]; TATA Projects Ltd-25 | 29,601 |
| CC-SS-B01.555 |  | Reinforcement of wall upto Flight 3 | 2d | 2027-02-25 | 2027-02-27 | CC-SS-B01.535 | Barbender [70 h]; Helper [40 h]; Physical Progress [1170 h]; Reinforcement Steel [1 MT1]; TATA Projects Ltd-25 | 96,512.5 |
| CC-SS-B01.600 |  | Shuttering of wall upto Flight 3 | 2d | 2027-02-27 | 2027-03-02 | CC-SS-B01.555 | Carpenter [20 h]; Helper [10 h]; Physical Progress [1170 h]; Formwork [10 Sq m]; TATA Projects Ltd-25 | 11,651.6 |
| CC-SS-B01.620 |  | Casting of wall upto Flight 3 | 1d | 2027-03-02 | 2027-03-03 | CC-SS-B01.600 | Mason; Helper; Physical Progress [590 h]; Concrete M40 [3 m3]; TATA Projects Ltd-25 | 29,601 |
| CC-SS-B01.640 |  | Shuttering of Staircase upto Flight 3 | 1d | 2027-03-03 | 2027-03-04 | CC-SS-B01.620 | Carpenter [20 h]; Helper [10 h]; Physical Progress [590 h]; Formwork [10 Sq m]; TATA Projects Ltd-25 | 11,651.6 |
| CC-SS-B01.670 |  | Reinforcement of Staircase upto Flight 3 | 1d | 2027-03-04 | 2027-03-05 | CC-SS-B01.640 | Barbender [70 h]; Helper [40 h]; Physical Progress [590 h]; Reinforcement Steel [1 MT1]; TATA Projects Ltd-25 | 96,512.5 |
| CC-SS-B01.685 |  | MEP coordination upto Flight 3 | 1d | 2027-03-05 | 2027-03-06 | CC-SS-B01.670 | Physical Progress [590 h]; TATA Projects Ltd-25 |  |
| CC-SS-B01.700 |  | Casting of Staircase upto Flight 3 | 1d | 2027-03-06 | 2027-03-08 | CC-SS-B01.685 | Mason; Helper; Physical Progress [590 h]; Concrete M40 [3 m3]; TATA Projects Ltd-25 | 29,601 |
| CC-SS-B01.730 |  | Reinforcement of wall upto Flight 4 | 2d | 2027-03-08 | 2027-03-11 | CC-SS-B01.700 | Barbender [70 h]; Helper [40 h]; Physical Progress [1170 h]; Reinforcement Steel [1 MT1]; TATA Projects Ltd-25 | 96,512.5 |
| CC-SS-B01.770 |  | Shuttering of wall upto Flight 4 | 2d | 2027-03-11 | 2027-03-13 | CC-SS-B01.730 | Carpenter [20 h]; Helper [10 h]; Physical Progress [1170 h]; Formwork [10 Sq m]; TATA Projects Ltd-25 | 11,651.6 |
| CC-SS-B01.805 |  | Casting of wall upto Flight 4 | 1d | 2027-03-13 | 2027-03-15 | CC-SS-B01.770 | Mason; Helper; Physical Progress [590 h]; Concrete M40 [3 m3]; TATA Projects Ltd-25 | 29,601 |
| CC-SS-B01.820 |  | Shuttering of Staircase upto Flight 4 | 1d | 2027-03-15 | 2027-03-16 | CC-SS-B01.805 | Carpenter [20 h]; Helper [10 h]; Physical Progress [590 h]; Formwork [10 Sq m]; TATA Projects Ltd-25 | 11,651.6 |
| CC-SS-B01.840 |  | Reinforcement of Staircase upto Flight 4 | 1d | 2027-03-16 | 2027-03-17 | CC-SS-B01.820 | Barbender [70 h]; Helper [40 h]; Physical Progress [590 h]; Reinforcement Steel [1 MT1]; TATA Projects Ltd-25 | 96,512.5 |

| ID | WBS | Activity | Duration | Start | Finish | Predecessors | Resources | Cost |
| --- | --- | --- | --- | --- | --- | --- | --- | --- |
|  | 4 | **Column, Core Wall, Shear Wall - Second Lift** |  | 2027-02-16 | 2027-02-27 |  |  |  |
| CC-SS-B01.380 |  | Reinforcement | 4d | 2027-02-16 | 2027-02-20 | CC-SS-B01.360 | Barbender [3070 h]; Helper [1540 h]; Physical Progress [2350 h]; Reinforcement Steel [46 MT1]; TATA Projects Ltd-25 | 4,439,575 |
| CC-SS-B01.460 |  | LPS | 1d | 2027-02-20 | 2027-02-22 | CC-SS-B01.380 | LPS [39529 INR]; Physical Progress [590 h]; TATA Projects Ltd-25 | 39,529 |
| CC-SS-B01.490 |  | Shuttering | 4d | 2027-02-22 | 2027-02-26 | CC-SS-B01.380, CC-SS-B01.460 | Carpenter [1460 h]; Helper [730 h]; Physical Progress [2350 h]; Formwork [876 Sq m]; TATA Projects Ltd-25 | 1,020,680.16 |
| CC-SS-B01.570 |  | Concrete | 1d | 2027-02-26 | 2027-02-27 | CC-SS-B01.490 | Mason [50 h]; Helper [50 h]; Physical Progress [590 h]; Concrete M40 [219 m3]; TATA Projects Ltd-25 | 2,160,873 |
|  | 5 | **Staircase - 2** |  | 2027-02-04 | 2027-03-17 |  |  |  |
| CC-SS-B01.175 |  | Reinforcement of wall upto Flight 1 | 2d | 2027-02-04 | 2027-02-06 | CC-SS-B02.495 | Barbender [70 h]; Helper [40 h]; Physical Progress [1170 h]; Reinforcement Steel [1 MT1]; TATA Projects Ltd-25 | 96,512.5 |
| CC-SS-B01.210 |  | Shuttering of wall upto Flight 1 | 2d | 2027-02-06 | 2027-02-09 | CC-SS-B01.175 | Carpenter [20 h]; Helper [10 h]; Physical Progress [1170 h]; Formwork [10 Sq m]; TATA Projects Ltd-25 | 11,651.6 |
| CC-SS-B01.245 |  | Casting of wall upto Flight 1 | 1d | 2027-02-09 | 2027-02-10 | CC-SS-B01.210 | Mason; Helper; Physical Progress [590 h]; Concrete M40 [3 m3]; TATA Projects Ltd-25 | 29,601 |
| CC-SS-B01.275 |  | Shuttering of Staircase upto Flight 1 | 1d | 2027-02-10 | 2027-02-11 | CC-SS-B01.245 | Carpenter [20 h]; Helper [10 h]; Physical Progress [590 h]; Formwork [10 Sq m]; TATA Projects Ltd-25 | 11,651.6 |
| CC-SS-B01.300 |  | Reinforcement of Staircase upto Flight 1 | 1d | 2027-02-11 | 2027-02-12 | CC-SS-B01.275 | Barbender [70 h]; Helper [40 h]; Physical Progress [590 h]; Reinforcement Steel [1 MT1]; TATA Projects Ltd-25 | 96,512.5 |
| CC-SS-B01.325 |  | MEP coordination upto Flight 1 | 1d | 2027-02-12 | 2027-02-13 | CC-SS-B01.300 | Physical Progress [590 h]; TATA Projects Ltd-25 |  |
| CC-SS-B01.345 |  | Casting of Staircase upto Flight 1 | 1d | 2027-02-13 | 2027-02-15 | CC-SS-B01.325 | Mason; Helper; Physical Progress [590 h]; Concrete M40 [3 m3]; TATA Projects Ltd-25 | 29,601 |
| CC-SS-B01.375 |  | Reinforcement of wall upto Flight 2 | 2d | 2027-02-15 | 2027-02-17 | CC-SS-B01.345 | Barbender [70 h]; Helper [40 h]; Physical Progress [1170 h]; Reinforcement Steel [1 MT1]; TATA Projects Ltd-25 | 96,512.5 |
| CC-SS-B01.415 |  | Shuttering of wall upto Flight 2 | 2d | 2027-02-17 | 2027-02-19 | CC-SS-B01.375 | Carpenter [20 h]; Helper [10 h]; Physical Progress [1170 h]; Formwork [10 Sq m]; TATA Projects Ltd-25 | 11,651.6 |
| CC-SS-B01.445 |  | Casting of wall upto Flight 2 | 1d | 2027-02-19 | 2027-02-20 | CC-SS-B01.415 | Mason; Helper; Physical Progress [590 h]; Concrete M40 [3 m3]; TATA Projects Ltd-25 | 29,601 |
| CC-SS-B01.470 |  | Shuttering of Staircase upto Flight 2 | 1d | 2027-02-20 | 2027-02-22 | CC-SS-B01.445 | Carpenter [20 h]; Helper [10 h]; Physical Progress [590 h]; Formwork [10 Sq m]; TATA Projects Ltd-25 | 11,651.6 |
| CC-SS-B01.500 |  | Reinforcement of Staircase upto Flight 2 | 1d | 2027-02-22 | 2027-02-23 | CC-SS-B01.470 | Barbender [70 h]; Helper [40 h]; Physical Progress [590 h]; Reinforcement Steel [1 MT1]; TATA Projects Ltd-25 | 96,512.5 |
| CC-SS-B01.520 |  | MEP coordination upto Flight 2 | 1d | 2027-02-23 | 2027-02-24 | CC-SS-B01.500 | Physical Progress [590 h]; TATA Projects Ltd-25 |  |
| CC-SS-B01.540 |  | Casting of Staircase upto Flight 2 | 1d | 2027-02-24 | 2027-02-25 | CC-SS-B01.520 | Mason; Helper; Physical Progress [590 h]; Concrete M40 [3 m3]; TATA Projects Ltd-25 | 29,601 |
| CC-SS-B01.560 |  | Reinforcement of wall upto Flight 3 | 2d | 2027-02-25 | 2027-02-27 | CC-SS-B01.540 | Barbender [70 h]; Helper [40 h]; Physical Progress [1170 h]; Reinforcement Steel [1 MT1]; TATA Projects Ltd-25 | 96,512.5 |
| CC-SS-B01.605 |  | Shuttering of wall upto Flight 3 | 2d | 2027-02-27 | 2027-03-02 | CC-SS-B01.560 | Carpenter [20 h]; Helper [10 h]; Physical Progress [1170 h]; Formwork [10 Sq m]; TATA Projects Ltd-25 | 11,651.6 |
| CC-SS-B01.625 |  | Casting of wall upto Flight 3 | 1d | 2027-03-02 | 2027-03-03 | CC-SS-B01.605 | Mason; Helper; Physical Progress [590 h]; Concrete M40 [3 m3]; TATA Projects Ltd-25 | 29,601 |
| CC-SS-B01.645 |  | Shuttering of Staircase upto Flight 3 | 1d | 2027-03-03 | 2027-03-04 | CC-SS-B01.625 | Carpenter [20 h]; Helper [10 h]; Physical Progress [590 h]; Formwork [10 Sq m]; TATA Projects Ltd-25 | 11,651.6 |
| CC-SS-B01.675 |  | Reinforcement of Staircase upto Flight 3 | 1d | 2027-03-04 | 2027-03-05 | CC-SS-B01.645 | Barbender [70 h]; Helper [40 h]; Physical Progress [590 h]; Reinforcement Steel [1 MT1]; TATA Projects Ltd-25 | 96,512.5 |
| CC-SS-B01.690 |  | MEP coordination upto Flight 3 | 1d | 2027-03-05 | 2027-03-06 | CC-SS-B01.675 | Physical Progress [590 h]; TATA Projects Ltd-25 |  |
| CC-SS-B01.705 |  | Casting of Staircase upto Flight 3 | 1d | 2027-03-06 | 2027-03-08 | CC-SS-B01.690 | Mason; Helper; Physical Progress [590 h]; Concrete M40 [3 m3]; TATA Projects Ltd-25 | 29,601 |
| CC-SS-B01.735 |  | Reinforcement of wall upto Flight 4 | 2d | 2027-03-08 | 2027-03-11 | CC-SS-B01.705 | Barbender [70 h]; Helper [40 h]; Physical Progress [1170 h]; Reinforcement Steel [1 MT1]; TATA Projects Ltd-25 | 96,512.5 |
| CC-SS-B01.775 |  | Shuttering of wall upto Flight 4 | 2d | 2027-03-11 | 2027-03-13 | CC-SS-B01.735 | Carpenter [20 h]; Helper [10 h]; Physical Progress [1170 h]; Formwork [10 Sq m]; TATA Projects Ltd-25 | 11,651.6 |
| CC-SS-B01.810 |  | Casting of wall upto Flight 4 | 1d | 2027-03-13 | 2027-03-15 | CC-SS-B01.775 | Mason; Helper; Physical Progress [590 h]; Concrete M40 [3 m3]; TATA Projects Ltd-25 | 29,601 |
| CC-SS-B01.825 |  | Shuttering of Staircase upto Flight 4 | 1d | 2027-03-15 | 2027-03-16 | CC-SS-B01.810 | Carpenter [20 h]; Helper [10 h]; Physical Progress [590 h]; Formwork [10 Sq m]; TATA Projects Ltd-25 | 11,651.6 |
| CC-SS-B01.845 |  | Reinforcement of Staircase upto Flight 4 | 1d | 2027-03-16 | 2027-03-17 | CC-SS-B01.825 | Barbender [70 h]; Helper [40 h]; Physical Progress [590 h]; Reinforcement Steel [1 MT1]; TATA Projects Ltd-25 | 96,512.5 |

| ID | WBS | Activity | Duration | Start | Finish | Predecessors | Resources | Cost |
| --- | --- | --- | --- | --- | --- | --- | --- | --- |
|  | 2 | **Slab** |  | 2027-02-27 | 2027-04-08 |  |  |  |
| CC-SS-B01.585 |  | Shuttering | 7d | 2027-02-27 | 2027-03-08 | CC-SS-B01.570 | Carpenter [9120 h]; Helper [4560 h]; Physical Progress [4100 h]; Formwork [5470 Sq m]; TATA Projects Ltd-25 | 6,373,425.2 |
| CC-SS-B01.715 |  | Reinforcement Bottom Net with chairs | 3d | 2027-03-08 | 2027-03-12 | CC-SS-B01.585 | Barbender [2200 h]; Helper [1100 h]; Physical Progress [1750 h]; Reinforcement Steel [33 MT1]; TATA Projects Ltd-25 | 3,184,912.5 |
| CC-SS-B01.785 |  | Laying of PT Tendon | 4d | 2027-03-12 | 2027-03-17 | CC-SS-B01.715 | Physical Progress [2350 h]; TATA Projects Ltd-25 |  |
| CC-SS-B01.850 |  | Reinforcement Top Net | 3d | 2027-03-17 | 2027-03-20 | CC-SS-B01.785 | Barbender [2200 h]; Helper [1100 h]; Physical Progress [1750 h]; Reinforcement Steel [33 MT1]; TATA Projects Ltd-25 | 3,184,912.5 |
| CC-SS-B01.890 |  | MEP Coordination | 1d | 2027-03-20 | 2027-03-23 | CC-SS-B01.715, CC-SS-B01.850, CC-SS-B01.845, CC-SS-B01.840 | Physical Progress [590 h]; TATA Projects Ltd-25 |  |
| CC-SS-B01.900 |  | Concrete of Slab | 1d | 2027-03-23 | 2027-03-24 | CC-SS-B01.890 | Mason [50 h]; Helper [50 h]; Physical Progress [590 h]; Concrete M40 [1367 m3]; TATA Projects Ltd-25 | 13,488,189 |
| CC-SS-B01.915 |  | Wait for Strength Gain | 6d | 2027-03-24 | 2027-04-01 | CC-SS-B01.900 | Physical Progress [3520 h]; TATA Projects Ltd-25 |  |
| CC-SS-B01.955 |  | PT Work | 6d | 2027-04-01 | 2027-04-08 | CC-SS-B01.915, CC-SS-B02.540 | PT [14 MT1]; Helper [100 h]; PT Fitter [100 h]; Physical Progress [4700 h]; TATA Projects Ltd-25 | 2,660,000 |
|  | 2 | **Pour 2** |  | 2027-02-04 | 2027-04-08 |  |  |  |
|  | 1 | **Column, Core Wall, Shear Wall - First Lift** |  | 2027-02-04 | 2027-02-16 |  |  |  |
| CC-SS-B01.10 |  | Reinforcement | 4d | 2027-02-04 | 2027-02-09 | CC-SS-B02.300 | Barbender [2200 h]; Helper [1100 h]; Physical Progress [2350 h]; Reinforcement Steel [33 MT1]; TATA Projects Ltd-25 | 3,184,912.5 |
| CC-SS-B01.25 |  | LPS | 1d | 2027-02-09 | 2027-02-10 | CC-SS-B01.10 | LPS [39529 INR]; Physical Progress [590 h]; TATA Projects Ltd-25 | 39,529 |
| CC-SS-B01.35 |  | Shuttering | 4d | 2027-02-10 | 2027-02-15 | CC-SS-B01.10, CC-SS-B01.25 | Carpenter [1050 h]; Helper [530 h]; Physical Progress [2350 h]; Formwork [629 Sq m]; TATA Projects Ltd-25 | 732,885.64 |
| CC-SS-B01.60 |  | Concrete | 1d | 2027-02-15 | 2027-02-16 | CC-SS-B01.35 | Mason [50 h]; Helper [50 h]; Physical Progress [590 h]; Concrete M40 [157 m3]; TATA Projects Ltd-25 | 1,549,119 |
|  | 4 | **Column, Core Wall, Shear Wall - Second Lift** |  | 2027-02-16 | 2027-02-27 |  |  |  |
| CC-SS-B01.75 |  | Reinforcement | 4d | 2027-02-16 | 2027-02-20 | CC-SS-B01.60 | Barbender [2200 h]; Helper [1100 h]; Physical Progress [2350 h]; Reinforcement Steel [33 MT1]; TATA Projects Ltd-25 | 3,184,912.5 |
| CC-SS-B01.95 |  | LPS | 1d | 2027-02-20 | 2027-02-22 | CC-SS-B01.75 | LPS [39529 INR]; Physical Progress [590 h]; TATA Projects Ltd-25 | 39,529 |
| CC-SS-B01.110 |  | Shuttering | 4d | 2027-02-22 | 2027-02-26 | CC-SS-B01.75, CC-SS-B01.95 | Carpenter [1050 h]; Helper [530 h]; Physical Progress [2350 h]; Formwork [629 Sq m]; TATA Projects Ltd-25 | 732,885.64 |
| CC-SS-B01.160 |  | Concrete | 1d | 2027-02-26 | 2027-02-27 | CC-SS-B01.110 | Mason [50 h]; Helper [50 h]; Physical Progress [590 h]; Concrete M40 [157 m3]; TATA Projects Ltd-25 | 1,549,119 |
|  | 3 | **Staircase** |  | 2027-02-04 | 2027-03-17 |  |  |  |
| CC-SS-B01.15 |  | Reinforcement of wall upto Flight 1 | 2d | 2027-02-04 | 2027-02-06 | CC-SS-B02.300 | Barbender [70 h]; Helper [40 h]; Physical Progress [1170 h]; Reinforcement Steel [1 MT1]; TATA Projects Ltd-25 | 96,512.5 |
| CC-SS-B01.20 |  | Shuttering of wall upto Flight 1 | 2d | 2027-02-06 | 2027-02-09 | CC-SS-B01.15 | Carpenter [20 h]; Helper [10 h]; Physical Progress [1170 h]; Formwork [10 Sq m]; TATA Projects Ltd-25 | 11,651.6 |
| CC-SS-B01.30 |  | Casting of wall upto Flight 1 | 1d | 2027-02-09 | 2027-02-10 | CC-SS-B01.20 | Mason; Helper; Physical Progress [590 h]; Concrete M40 [3 m3]; TATA Projects Ltd-25 | 29,601 |
| CC-SS-B01.40 |  | Shuttering of Staircase upto Flight 1 | 1d | 2027-02-10 | 2027-02-11 | CC-SS-B01.30 | Carpenter [20 h]; Helper [10 h]; Physical Progress [590 h]; Formwork [10 Sq m]; TATA Projects Ltd-25 | 11,651.6 |
| CC-SS-B01.45 |  | Reinforcement of Staircase upto Flight 1 | 1d | 2027-02-11 | 2027-02-12 | CC-SS-B01.40 | Barbender [70 h]; Helper [40 h]; Physical Progress [590 h]; Reinforcement Steel [1 MT1]; TATA Projects Ltd-25 | 96,512.5 |
| CC-SS-B01.50 |  | MEP coordination upto Flight 1 | 1d | 2027-02-12 | 2027-02-13 | CC-SS-B01.45 | Physical Progress [590 h]; TATA Projects Ltd-25 |  |
| CC-SS-B01.55 |  | Casting of Staircase upto Flight 1 | 1d | 2027-02-13 | 2027-02-15 | CC-SS-B01.50 | Mason; Helper; Physical Progress [590 h]; Concrete M40 [3 m3]; TATA Projects Ltd-25 | 29,601 |
| CC-SS-B01.70 |  | Reinforcement of wall upto Flight 2 | 2d | 2027-02-15 | 2027-02-17 | CC-SS-B01.55 | Barbender [70 h]; Helper [40 h]; Physical Progress [1170 h]; Reinforcement Steel [1 MT1]; TATA Projects Ltd-25 | 96,512.5 |
| CC-SS-B01.80 |  | Shuttering of wall upto Flight 2 | 2d | 2027-02-17 | 2027-02-19 | CC-SS-B01.70 | Carpenter [20 h]; Helper [10 h]; Physical Progress [1170 h]; Formwork [10 Sq m]; TATA Projects Ltd-25 | 11,651.6 |
| CC-SS-B01.90 |  | Casting of wall upto Flight 2 | 1d | 2027-02-19 | 2027-02-20 | CC-SS-B01.80 | Mason; Helper; Physical Progress [590 h]; Concrete M40 [3 m3]; TATA Projects Ltd-25 | 29,601 |
| CC-SS-B01.105 |  | Shuttering of Staircase upto Flight 2 | 1d | 2027-02-20 | 2027-02-22 | CC-SS-B01.90 | Carpenter [20 h]; Helper [10 h]; Physical Progress [590 h]; Formwork [10 Sq m]; TATA Projects Ltd-25 | 11,651.6 |
| CC-SS-B01.115 |  | Reinforcement of Staircase upto Flight 2 | 1d | 2027-02-22 | 2027-02-23 | CC-SS-B01.105 | Barbender [70 h]; Helper [40 h]; Physical Progress [590 h]; Reinforcement Steel [1 MT1]; TATA Projects Ltd-25 | 96,512.5 |
| CC-SS-B01.125 |  | MEP coordination upto Flight 2 | 1d | 2027-02-23 | 2027-02-24 | CC-SS-B01.115 | Physical Progress [590 h]; TATA Projects Ltd-25 |  |
| CC-SS-B01.135 |  | Casting of Staircase upto Flight 2 | 1d | 2027-02-24 | 2027-02-25 | CC-SS-B01.125 | Mason; Helper; Physical Progress [590 h]; Concrete M40 [3 m3]; TATA Projects Ltd-25 | 29,601 |
| CC-SS-B01.145 |  | Reinforcement of wall upto Flight 3 | 2d | 2027-02-25 | 2027-02-27 | CC-SS-B01.135 | Barbender [70 h]; Helper [40 h]; Physical Progress [1170 h]; Reinforcement Steel [1 MT1]; TATA Projects Ltd-25 | 96,512.5 |
| CC-SS-B01.190 |  | Shuttering of wall upto Flight 3 | 2d | 2027-02-27 | 2027-03-02 | CC-SS-B01.145 | Carpenter [20 h]; Helper [10 h]; Physical Progress [1170 h]; Formwork [10 Sq m]; TATA Projects Ltd-25 | 11,651.6 |
| CC-SS-B01.220 |  | Casting of wall upto Flight 3 | 1d | 2027-03-02 | 2027-03-03 | CC-SS-B01.190 | Mason; Helper; Physical Progress [590 h]; Concrete M40 [3 m3]; TATA Projects Ltd-25 | 29,601 |
| CC-SS-B01.250 |  | Shuttering of Staircase upto Flight 3 | 1d | 2027-03-03 | 2027-03-04 | CC-SS-B01.220 | Carpenter [20 h]; Helper [10 h]; Physical Progress [590 h]; Formwork [10 Sq m]; TATA Projects Ltd-25 | 11,651.6 |
| CC-SS-B01.280 |  | Reinforcement of Staircase upto Flight 3 | 1d | 2027-03-04 | 2027-03-05 | CC-SS-B01.250 | Barbender [70 h]; Helper [40 h]; Physical Progress [590 h]; Reinforcement Steel [1 MT1]; TATA Projects Ltd-25 | 96,512.5 |
| CC-SS-B01.305 |  | MEP coordination upto Flight 3 | 1d | 2027-03-05 | 2027-03-06 | CC-SS-B01.280 | Physical Progress [590 h]; TATA Projects Ltd-25 |  |
| CC-SS-B01.330 |  | Casting of Staircase upto Flight 3 | 1d | 2027-03-06 | 2027-03-08 | CC-SS-B01.305 | Mason; Helper; Physical Progress [590 h]; Concrete M40 [3 m3]; TATA Projects Ltd-25 | 29,601 |
| CC-SS-B01.350 |  | Reinforcement of wall upto Flight 4 | 2d | 2027-03-08 | 2027-03-11 | CC-SS-B01.330 | Barbender [70 h]; Helper [40 h]; Physical Progress [1170 h]; Reinforcement Steel [1 MT1]; TATA Projects Ltd-25 | 96,512.5 |
| CC-SS-B01.390 |  | Shuttering of wall upto Flight 4 | 2d | 2027-03-11 | 2027-03-13 | CC-SS-B01.350 | Carpenter [20 h]; Helper [10 h]; Physical Progress [1170 h]; Formwork [10 Sq m]; TATA Projects Ltd-25 | 11,651.6 |
| CC-SS-B01.430 |  | Casting of wall upto Flight 4 | 1d | 2027-03-13 | 2027-03-15 | CC-SS-B01.390 | Mason; Helper; Physical Progress [590 h]; Concrete M40 [3 m3]; TATA Projects Ltd-25 | 29,601 |
| CC-SS-B01.450 |  | Shuttering of Staircase upto Flight 4 | 1d | 2027-03-15 | 2027-03-16 | CC-SS-B01.430 | Carpenter [20 h]; Helper [10 h]; Physical Progress [590 h]; Formwork [10 Sq m]; TATA Projects Ltd-25 | 11,651.6 |
| CC-SS-B01.475 |  | Reinforcement of Staircase upto Flight 4 | 1d | 2027-03-16 | 2027-03-17 | CC-SS-B01.450 | Barbender [70 h]; Helper [40 h]; Physical Progress [590 h]; Reinforcement Steel [1 MT1]; TATA Projects Ltd-25 | 96,512.5 |

| ID | WBS | Activity | Duration | Start | Finish | Predecessors | Resources | Cost |
| --- | --- | --- | --- | --- | --- | --- | --- | --- |
|  | 2 | **Slab** |  | 2027-02-27 | 2027-04-08 |  |  |  |
| CC-SS-B01.180 |  | Shuttering | 7d | 2027-02-27 | 2027-03-08 | CC-SS-B01.160 | Carpenter [6550 h]; Helper [3280 h]; Physical Progress [4100 h]; Formwork [3927 Sq m]; TATA Projects Ltd-25 | 4,575,583.32 |
| CC-SS-B01.335 |  | Reinforcement Bottom Net with chairs | 3d | 2027-03-08 | 2027-03-12 | CC-SS-B01.180 | Barbender [1600 h]; Helper [800 h]; Physical Progress [1750 h]; Reinforcement Steel [24 MT1]; TATA Projects Ltd-25 | 2,316,300 |
| CC-SS-B01.400 |  | Laying of PT Tendon | 4d | 2027-03-12 | 2027-03-17 | CC-SS-B01.335 | Physical Progress [2350 h]; TATA Projects Ltd-25 |  |
| CC-SS-B01.485 |  | Reinforcement Top Net | 3d | 2027-03-17 | 2027-03-20 | CC-SS-B01.400 | Barbender [1600 h]; Helper [800 h]; Physical Progress [1750 h]; Reinforcement Steel [24 MT1]; TATA Projects Ltd-25 | 2,316,300 |
| CC-SS-B01.550 |  | MEP Coordination | 1d | 2027-03-20 | 2027-03-23 | CC-SS-B01.335, CC-SS-B01.485, CC-SS-B01.475 | Physical Progress [590 h]; TATA Projects Ltd-25 |  |
| CC-SS-B01.565 |  | Concrete of Slab | 1d | 2027-03-23 | 2027-03-24 | CC-SS-B01.550 | Mason [50 h]; Helper [50 h]; Physical Progress [590 h]; Concrete M40 [982 m3]; TATA Projects Ltd-25 | 9,689,394 |
| CC-SS-B01.590 |  | Wait for Strength Gain | 6d | 2027-03-24 | 2027-04-01 | CC-SS-B01.565 | Physical Progress [3520 h]; TATA Projects Ltd-25 |  |
| CC-SS-B01.695 |  | PT Work | 6d | 2027-04-01 | 2027-04-08 | CC-SS-B01.590, CC-SS-B02.380 | PT [10 MT1]; Helper [100 h]; PT Fitter [100 h]; Physical Progress [4700 h]; TATA Projects Ltd-25 | 1,900,000 |
|  | 3 | **Pour 3** |  | 2027-02-10 | 2027-04-14 |  |  |  |
|  | 1 | **Column, Core Wall, Shear Wall - First Lift** |  | 2027-02-10 | 2027-02-22 |  |  |  |
| CC-SS-B01.65 |  | Reinforcement | 4d | 2027-02-10 | 2027-02-15 | CC-SS-B02.415 | Barbender [2070 h]; Helper [1040 h]; Physical Progress [2350 h]; Reinforcement Steel [31 MT1]; TATA Projects Ltd-25 | 2,991,887.5 |
| CC-SS-B01.85 |  | LPS | 1d | 2027-02-15 | 2027-02-16 | CC-SS-B01.65 | LPS [39529 INR]; Physical Progress [590 h]; TATA Projects Ltd-25 | 39,529 |
| CC-SS-B01.100 |  | Shuttering | 4d | 2027-02-16 | 2027-02-20 | CC-SS-B01.65, CC-SS-B01.85 | Carpenter [980 h]; Helper [490 h]; Physical Progress [2350 h]; Formwork [583 Sq m]; TATA Projects Ltd-25 | 679,288.28 |
| CC-SS-B01.140 |  | Concrete | 1d | 2027-02-20 | 2027-02-22 | CC-SS-B01.100 | Mason [50 h]; Helper [50 h]; Physical Progress [590 h]; Concrete M40 [146 m3]; TATA Projects Ltd-25 | 1,440,582 |
|  | 4 | **Column, Core Wall, Shear Wall - Second Lift** |  | 2027-02-22 | 2027-03-05 |  |  |  |
| CC-SS-B01.165 |  | Reinforcement | 4d | 2027-02-22 | 2027-02-26 | CC-SS-B01.140 | Barbender [2070 h]; Helper [1040 h]; Physical Progress [2350 h]; Reinforcement Steel [31 MT1]; TATA Projects Ltd-25 | 2,991,887.5 |
| CC-SS-B01.235 |  | LPS | 1d | 2027-02-26 | 2027-02-27 | CC-SS-B01.165 | LPS [39529 INR]; Physical Progress [590 h]; TATA Projects Ltd-25 | 39,529 |
| CC-SS-B01.265 |  | Shuttering | 4d | 2027-02-27 | 2027-03-04 | CC-SS-B01.165, CC-SS-B01.235 | Carpenter [980 h]; Helper [490 h]; Physical Progress [2350 h]; Formwork [583 Sq m]; TATA Projects Ltd-25 | 679,288.28 |
| CC-SS-B01.365 |  | Concrete | 1d | 2027-03-04 | 2027-03-05 | CC-SS-B01.265 | Mason [50 h]; Helper [50 h]; Physical Progress [590 h]; Concrete M40 [146 m3]; TATA Projects Ltd-25 | 1,440,582 |
|  | 2 | **Slab** |  | 2027-03-05 | 2027-04-14 |  |  |  |
| CC-SS-B01.385 |  | Shuttering | 7d | 2027-03-05 | 2027-03-15 | CC-SS-B01.365 | Carpenter [6070 h]; Helper [3040 h]; Physical Progress [4110 h]; Formwork [3639 Sq m]; TATA Projects Ltd-25 | 4,240,017.24 |
| CC-SS-B01.525 |  | Reinforcement Bottom Net with chairs | 3d | 2027-03-15 | 2027-03-18 | CC-SS-B01.385 | Barbender [1470 h]; Helper [740 h]; Physical Progress [1750 h]; Reinforcement Steel [22 MT1]; TATA Projects Ltd-25 | 2,123,275 |
| CC-SS-B01.595 |  | Laying of PT Tendon | 4d | 2027-03-18 | 2027-03-24 | CC-SS-B01.525 | Physical Progress [2350 h]; TATA Projects Ltd-25 |  |
| CC-SS-B01.655 |  | Reinforcement Top Net | 3d | 2027-03-24 | 2027-03-29 | CC-SS-B01.595 | Barbender [1470 h]; Helper [740 h]; Physical Progress [1750 h]; Reinforcement Steel [22 MT1]; TATA Projects Ltd-25 | 2,123,275 |
| CC-SS-B01.720 |  | MEP Coordination | 1d | 2027-03-29 | 2027-03-30 | CC-SS-B01.525, CC-SS-B01.655 | Physical Progress [590 h]; TATA Projects Ltd-25 |  |
| CC-SS-B01.740 |  | Concrete of Slab | 1d | 2027-03-30 | 2027-03-31 | CC-SS-B01.720 | Mason [50 h]; Helper [50 h]; Physical Progress [590 h]; Concrete M40 [910 m3]; TATA Projects Ltd-25 | 8,978,970 |
| CC-SS-B01.760 |  | Wait for Strength Gain | 6d | 2027-03-31 | 2027-04-07 | CC-SS-B01.740 | Physical Progress [3520 h]; TATA Projects Ltd-25 |  |
| CC-SS-B01.870 |  | PT Work | 6d | 2027-04-07 | 2027-04-14 | CC-SS-B01.760, CC-SS-B02.475 | PT [9 MT1]; Helper [100 h]; PT Fitter [100 h]; Physical Progress [4700 h]; TATA Projects Ltd-25 | 1,710,000 |

| ID | WBS | Activity | Duration | Start | Finish | Predecessors | Resources | Cost |
| --- | --- | --- | --- | --- | --- | --- | --- | --- |
|  | 4 | **Pour 4** |  | 2027-02-24 | 2027-04-28 |  |  |  |
|  | 1 | **Column, Core Wall, Shear Wall - First Lift** |  | 2027-02-24 | 2027-03-08 |  |  |  |
| CC-SS-B01.120 |  | Reinforcement | 4d | 2027-02-24 | 2027-03-01 | CC-SS-B02.480 | Barbender [2540 h]; Helper [1270 h]; Physical Progress [2350 h]; Reinforcement Steel [38 MT1]; TATA Projects Ltd-25 | 3,667,475 |
| CC-SS-B01.185 |  | LPS | 1d | 2027-03-01 | 2027-03-02 | CC-SS-B01.120 | LPS [39529 INR]; Physical Progress [590 h]; TATA Projects Ltd-25 | 39,529 |
| CC-SS-B01.200 |  | Shuttering | 4d | 2027-03-02 | 2027-03-06 | CC-SS-B01.120, CC-SS-B01.185 | Carpenter [1220 h]; Helper [610 h]; Physical Progress [2350 h]; Formwork [728 Sq m]; TATA Projects Ltd-25 | 848,236.48 |
| CC-SS-B01.290 |  | Concrete | 1d | 2027-03-06 | 2027-03-08 | CC-SS-B01.200 | Mason [50 h]; Helper [50 h]; Physical Progress [590 h]; Concrete M40 [182 m3]; TATA Projects Ltd-25 | 1,795,794 |
|  | 4 | **Column, Core Wall, Shear Wall - Second Lift** |  | 2027-03-08 | 2027-03-20 |  |  |  |
| CC-SS-B01.315 |  | Reinforcement | 4d | 2027-03-08 | 2027-03-13 | CC-SS-B01.290 | Barbender [2540 h]; Helper [1270 h]; Physical Progress [2350 h]; Reinforcement Steel [38 MT1]; TATA Projects Ltd-25 | 3,667,475 |
| CC-SS-B01.405 |  | LPS | 1d | 2027-03-13 | 2027-03-15 | CC-SS-B01.315 | LPS [39529 INR]; Physical Progress [590 h]; TATA Projects Ltd-25 | 39,529 |
| CC-SS-B01.425 |  | Shuttering | 4d | 2027-03-15 | 2027-03-19 | CC-SS-B01.315, CC-SS-B01.405 | Carpenter [1220 h]; Helper [610 h]; Physical Progress [2350 h]; Formwork [728 Sq m]; TATA Projects Ltd-25 | 848,236.48 |
| CC-SS-B01.510 |  | Concrete | 1d | 2027-03-19 | 2027-03-20 | CC-SS-B01.425 | Mason [50 h]; Helper [50 h]; Physical Progress [590 h]; Concrete M40 [182 m3]; TATA Projects Ltd-25 | 1,795,794 |
|  | 3 | **Staircase** |  | 2027-02-24 | 2027-04-08 |  |  |  |
| CC-SS-B01.130 |  | Reinforcement of wall upto Flight 1 | 2d | 2027-02-24 | 2027-02-26 | CC-SS-B02.480 | Barbender [70 h]; Helper [40 h]; Physical Progress [1170 h]; Reinforcement Steel [1 MT1]; TATA Projects Ltd-25 | 96,512.5 |
| CC-SS-B01.150 |  | Shuttering of wall upto Flight 1 | 2d | 2027-02-26 | 2027-03-01 | CC-SS-B01.130 | Carpenter [20 h]; Helper [10 h]; Physical Progress [1170 h]; Formwork [10 Sq m]; TATA Projects Ltd-25 | 11,651.6 |
| CC-SS-B01.195 |  | Casting of wall upto Flight 1 | 1d | 2027-03-01 | 2027-03-02 | CC-SS-B01.150 | Mason; Helper; Physical Progress [590 h]; Concrete M40 [3 m3]; TATA Projects Ltd-25 | 29,601 |
| CC-SS-B01.215 |  | Shuttering of Staircase upto Flight 1 | 1d | 2027-03-02 | 2027-03-03 | CC-SS-B01.195 | Carpenter [20 h]; Helper [10 h]; Physical Progress [590 h]; Formwork [10 Sq m]; TATA Projects Ltd-25 | 11,651.6 |
| CC-SS-B01.225 |  | Reinforcement of Staircase upto Flight 1 | 1d | 2027-03-03 | 2027-03-04 | CC-SS-B01.215 | Barbender [70 h]; Helper [40 h]; Physical Progress [590 h]; Reinforcement Steel [1 MT1]; TATA Projects Ltd-25 | 96,512.5 |
| CC-SS-B01.255 |  | MEP coordination upto Flight 1 | 1d | 2027-03-04 | 2027-03-05 | CC-SS-B01.225 | Physical Progress [590 h]; TATA Projects Ltd-25 |  |
| CC-SS-B01.285 |  | Casting of Staircase upto Flight 1 | 1d | 2027-03-05 | 2027-03-06 | CC-SS-B01.255 | Mason; Helper; Physical Progress [590 h]; Concrete M40 [3 m3]; TATA Projects Ltd-25 | 29,601 |
| CC-SS-B01.310 |  | Reinforcement of wall upto Flight 2 | 2d | 2027-03-06 | 2027-03-09 | CC-SS-B01.285 | Barbender [70 h]; Helper [40 h]; Physical Progress [1170 h]; Reinforcement Steel [1 MT1]; TATA Projects Ltd-25 | 96,512.5 |
| CC-SS-B01.355 |  | Shuttering of wall upto Flight 2 | 2d | 2027-03-09 | 2027-03-12 | CC-SS-B01.310 | Carpenter [20 h]; Helper [10 h]; Physical Progress [1170 h]; Formwork [10 Sq m]; TATA Projects Ltd-25 | 11,651.6 |
| CC-SS-B01.395 |  | Casting of wall upto Flight 2 | 1d | 2027-03-12 | 2027-03-13 | CC-SS-B01.355 | Mason; Helper; Physical Progress [590 h]; Concrete M40 [3 m3]; TATA Projects Ltd-25 | 29,601 |
| CC-SS-B01.420 |  | Shuttering of Staircase upto Flight 2 | 1d | 2027-03-13 | 2027-03-15 | CC-SS-B01.395 | Carpenter [20 h]; Helper [10 h]; Physical Progress [590 h]; Formwork [10 Sq m]; TATA Projects Ltd-25 | 11,651.6 |
| CC-SS-B01.435 |  | Reinforcement of Staircase upto Flight 2 | 1d | 2027-03-15 | 2027-03-16 | CC-SS-B01.420 | Barbender [70 h]; Helper [40 h]; Physical Progress [590 h]; Reinforcement Steel [1 MT1]; TATA Projects Ltd-25 | 96,512.5 |
| CC-SS-B01.455 |  | MEP coordination upto Flight 2 | 1d | 2027-03-16 | 2027-03-17 | CC-SS-B01.435 | Physical Progress [590 h]; TATA Projects Ltd-25 |  |
| CC-SS-B01.480 |  | Casting of Staircase upto Flight 2 | 1d | 2027-03-17 | 2027-03-18 | CC-SS-B01.455 | Mason; Helper; Physical Progress [590 h]; Concrete M40 [3 m3]; TATA Projects Ltd-25 | 29,601 |
| CC-SS-B01.505 |  | Reinforcement of wall upto Flight 3 | 2d | 2027-03-18 | 2027-03-20 | CC-SS-B01.480 | Barbender [70 h]; Helper [40 h]; Physical Progress [1170 h]; Reinforcement Steel [1 MT1]; TATA Projects Ltd-25 | 96,512.5 |
| CC-SS-B01.545 |  | Shuttering of wall upto Flight 3 | 2d | 2027-03-20 | 2027-03-24 | CC-SS-B01.505 | Carpenter [20 h]; Helper [10 h]; Physical Progress [1170 h]; Formwork [10 Sq m]; TATA Projects Ltd-25 | 11,651.6 |
| CC-SS-B01.580 |  | Casting of wall upto Flight 3 | 1d | 2027-03-24 | 2027-03-25 | CC-SS-B01.545 | Mason; Helper; Physical Progress [590 h]; Concrete M40 [3 m3]; TATA Projects Ltd-25 | 29,601 |
| CC-SS-B01.610 |  | Shuttering of Staircase upto Flight 3 | 1d | 2027-03-25 | 2027-03-27 | CC-SS-B01.580 | Carpenter [20 h]; Helper [10 h]; Physical Progress [590 h]; Formwork [10 Sq m]; TATA Projects Ltd-25 | 11,651.6 |
| CC-SS-B01.615 |  | Reinforcement of Staircase upto Flight 3 | 1d | 2027-03-27 | 2027-03-29 | CC-SS-B01.610 | Barbender [70 h]; Helper [40 h]; Physical Progress [590 h]; Reinforcement Steel [1 MT1]; TATA Projects Ltd-25 | 96,512.5 |
| CC-SS-B01.630 |  | MEP coordination upto Flight 3 | 1d | 2027-03-29 | 2027-03-30 | CC-SS-B01.615 | Physical Progress [590 h]; TATA Projects Ltd-25 |  |
| CC-SS-B01.650 |  | Casting of Staircase upto Flight 3 | 1d | 2027-03-30 | 2027-03-31 | CC-SS-B01.630 | Mason; Helper; Physical Progress [590 h]; Concrete M40 [3 m3]; TATA Projects Ltd-25 | 29,601 |
| CC-SS-B01.680 |  | Reinforcement of wall upto Flight 4 | 2d | 2027-03-31 | 2027-04-02 | CC-SS-B01.650 | Barbender [70 h]; Helper [40 h]; Physical Progress [1170 h]; Reinforcement Steel [1 MT1]; TATA Projects Ltd-25 | 96,512.5 |
| CC-SS-B01.710 |  | Shuttering of wall upto Flight 4 | 2d | 2027-04-02 | 2027-04-05 | CC-SS-B01.680 | Carpenter [20 h]; Helper [10 h]; Physical Progress [1170 h]; Formwork [10 Sq m]; TATA Projects Ltd-25 | 11,651.6 |
| CC-SS-B01.755 |  | Casting of wall upto Flight 4 | 1d | 2027-04-05 | 2027-04-06 | CC-SS-B01.710 | Mason; Helper; Physical Progress [590 h]; Concrete M40 [3 m3]; TATA Projects Ltd-25 | 29,601 |
| CC-SS-B01.780 |  | Shuttering of Staircase upto Flight 4 | 1d | 2027-04-06 | 2027-04-07 | CC-SS-B01.755 | Carpenter [20 h]; Helper [10 h]; Physical Progress [590 h]; Formwork [10 Sq m]; TATA Projects Ltd-25 | 11,651.6 |
| CC-SS-B01.795 |  | Reinforcement of Staircase upto Flight 4 | 1d | 2027-04-07 | 2027-04-08 | CC-SS-B01.780 | Barbender [70 h]; Helper [40 h]; Physical Progress [590 h]; Reinforcement Steel [1 MT1]; TATA Projects Ltd-25 | 96,512.5 |

| ID | WBS | Activity | Duration | Start | Finish | Predecessors | Resources | Cost |
| --- | --- | --- | --- | --- | --- | --- | --- | --- |
|  | 2 | **Slab** |  | 2027-03-20 | 2027-04-28 |  |  |  |
| CC-SS-B01.530 |  | Shuttering | 7d | 2027-03-20 | 2027-03-31 | CC-SS-B01.510 | Carpenter [7580 h]; Helper [3790 h]; Physical Progress [4110 h]; Formwork [4544 Sq m]; TATA Projects Ltd-25 | 5,294,487.04 |
| CC-SS-B01.660 |  | Reinforcement Bottom Net with chairs | 3d | 2027-03-31 | 2027-04-03 | CC-SS-B01.530 | Barbender [1870 h]; Helper [940 h]; Physical Progress [1750 h]; Reinforcement Steel [28 MT1]; TATA Projects Ltd-25 | 2,702,350 |
| CC-SS-B01.725 |  | Laying of PT Tendon | 4d | 2027-04-03 | 2027-04-08 | CC-SS-B01.660 | Physical Progress [2350 h]; TATA Projects Ltd-25 |  |
| CC-SS-B01.800 |  | Reinforcement Top Net | 3d | 2027-04-08 | 2027-04-12 | CC-SS-B01.725 | Barbender [1870 h]; Helper [940 h]; Physical Progress [1750 h]; Reinforcement Steel [28 MT1]; TATA Projects Ltd-25 | 2,702,350 |
| CC-SS-B01.855 |  | MEP Coordination | 1d | 2027-04-12 | 2027-04-13 | CC-SS-B01.660, CC-SS-B01.800, CC-SS-B01.795 | Physical Progress [590 h]; TATA Projects Ltd-25 |  |
| CC-SS-B01.875 |  | Concrete of Slab | 1d | 2027-04-13 | 2027-04-14 | CC-SS-B01.855 | Mason [50 h]; Helper [50 h]; Physical Progress [590 h]; Concrete M40 [1136 m3]; TATA Projects Ltd-25 | 11,208,912 |
| CC-SS-B01.885 |  | Wait for Strength Gain | 6d | 2027-04-14 | 2027-04-21 | CC-SS-B01.875 | Physical Progress [3520 h]; TATA Projects Ltd-25 |  |
| CC-SS-B01.935 |  | PT Work | 6d | 2027-04-21 | 2027-04-28 | CC-SS-B01.885, CC-SS-B02.530 | PT [12 MT1]; Helper [100 h]; PT Fitter [100 h]; Physical Progress [4700 h]; TATA Projects Ltd-25 | 2,280,000 |
|  | 5 | **Pour 5** |  | 2027-02-08 | 2027-04-10 |  |  |  |
|  | 1 | **Column, Core Wall, Shear Wall - First Lift** |  | 2027-02-08 | 2027-02-19 |  |  |  |
| CC-SS-B01.575 |  | Reinforcement | 4d | 2027-02-08 | 2027-02-12 | CC-SS-B02.590 | Barbender [2540 h]; Helper [1270 h]; Physical Progress [2350 h]; Reinforcement Steel [38 MT1]; TATA Projects Ltd-25 | 3,667,475 |
| CC-SS-B01.635 |  | LPS | 1d | 2027-02-12 | 2027-02-13 | CC-SS-B01.575 | LPS [39529 INR]; Physical Progress [590 h]; TATA Projects Ltd-25 | 39,529 |
| CC-SS-B01.665 |  | Shuttering | 4d | 2027-02-13 | 2027-02-18 | CC-SS-B01.575, CC-SS-B01.635 | Carpenter [1220 h]; Helper [610 h]; Physical Progress [2350 h]; Formwork [728 Sq m]; TATA Projects Ltd-25 | 848,236.48 |
| CC-SS-B01.745 |  | Concrete | 1d | 2027-02-18 | 2027-02-19 | CC-SS-B01.665 | Mason [50 h]; Helper [50 h]; Physical Progress [590 h]; Concrete M40 [182 m3]; TATA Projects Ltd-25 | 1,795,794 |
|  | 4 | **Column, Core Wall, Shear Wall - Second Lift** |  | 2027-02-19 | 2027-03-03 |  |  |  |
| CC-SS-B01.765 |  | Reinforcement | 4d | 2027-02-19 | 2027-02-24 | CC-SS-B01.745 | Barbender [2540 h]; Helper [1270 h]; Physical Progress [2350 h]; Reinforcement Steel [38 MT1]; TATA Projects Ltd-25 | 3,667,475 |
| CC-SS-B01.830 |  | LPS | 1d | 2027-02-24 | 2027-02-25 | CC-SS-B01.765 | LPS [39529 INR]; Physical Progress [590 h]; TATA Projects Ltd-25 | 39,529 |
| CC-SS-B01.860 |  | Shuttering | 4d | 2027-02-25 | 2027-03-02 | CC-SS-B01.765, CC-SS-B01.830 | Carpenter [1220 h]; Helper [610 h]; Physical Progress [2350 h]; Formwork [728 Sq m]; TATA Projects Ltd-25 | 848,236.48 |
| CC-SS-B01.905 |  | Concrete | 1d | 2027-03-02 | 2027-03-03 | CC-SS-B01.860 | Mason [50 h]; Helper [50 h]; Physical Progress [590 h]; Concrete M40 [182 m3]; TATA Projects Ltd-25 | 1,795,794 |
|  | 2 | **Slab** |  | 2027-03-03 | 2027-04-10 |  |  |  |
| CC-SS-B01.920 |  | Shuttering | 7d | 2027-03-03 | 2027-03-12 | CC-SS-B01.905 | Carpenter [7580 h]; Helper [3790 h]; Physical Progress [4110 h]; Formwork [4544 Sq m]; TATA Projects Ltd-25 | 5,294,487.04 |
| CC-SS-B01.965 |  | Reinforcement Bottom Net with chairs | 3d | 2027-03-12 | 2027-03-16 | CC-SS-B01.920 | Barbender [1870 h]; Helper [940 h]; Physical Progress [1750 h]; Reinforcement Steel [28 MT1]; TATA Projects Ltd-25 | 2,702,350 |
| CC-SS-B01.980 |  | Laying of PT Tendon | 3d | 2027-03-16 | 2027-03-19 | CC-SS-B01.965 | Physical Progress [2350 h]; TATA Projects Ltd-25 |  |
| CC-SS-B01.995 |  | Reinforcement Top Net | 3d | 2027-03-19 | 2027-03-24 | CC-SS-B01.980 | Barbender [1870 h]; Helper [940 h]; Physical Progress [1750 h]; Reinforcement Steel [28 MT1]; TATA Projects Ltd-25 | 2,702,350 |
| CC-SS-B01.1005 |  | MEP Coordination | 1d | 2027-03-24 | 2027-03-25 | CC-SS-B01.965, CC-SS-B01.995 | Physical Progress [590 h]; TATA Projects Ltd-25 |  |
| CC-SS-B01.1010 |  | Concrete of Slab | 1d | 2027-03-25 | 2027-03-27 | CC-SS-B01.1005 | Mason [50 h]; Helper [50 h]; Physical Progress [590 h]; Concrete M40 [1136 m3]; TATA Projects Ltd-25 | 11,208,912 |
| CC-SS-B01.1020 |  | Wait for Strength Gain | 6d | 2027-03-27 | 2027-04-03 | CC-SS-B01.1010 | Physical Progress [3520 h]; TATA Projects Ltd-25 |  |
| CC-SS-B01.1040 |  | PT Work | 6d | 2027-04-03 | 2027-04-10 | CC-SS-B01.1020, CC-SS-B02.620 | PT [12 MT1]; Helper [100 h]; PT Fitter [100 h]; Physical Progress [4700 h]; TATA Projects Ltd-25 | 2,280,000 |

| ID | WBS | Activity | Duration | Start | Finish | Predecessors | Resources | Cost |
| --- | --- | --- | --- | --- | --- | --- | --- | --- |
|  | 6 | **Pour 6** |  | 2027-02-18 | 2027-04-21 |  |  |  |
|  | 1 | **Column, Core Wall, Shear Wall - First Lift** |  | 2027-02-18 | 2027-03-02 |  |  |  |
| CC-SS-B01.750 |  | Reinforcement | 4d | 2027-02-18 | 2027-02-23 | CC-SS-B02.635 | Barbender [2070 h]; Helper [1040 h]; Physical Progress [2350 h]; Reinforcement Steel [31 MT1]; TATA Projects Ltd-25 | 2,991,887.5 |
| CC-SS-B01.815 |  | LPS | 1d | 2027-02-23 | 2027-02-24 | CC-SS-B01.750 | LPS [39529 INR]; Physical Progress [590 h]; TATA Projects Ltd-25 | 39,529 |
| CC-SS-B01.835 |  | Shuttering | 4d | 2027-02-24 | 2027-03-01 | CC-SS-B01.750, CC-SS-B01.815 | Carpenter [1000 h]; Helper [500 h]; Physical Progress [2350 h]; Formwork [596 Sq m]; TATA Projects Ltd-25 | 694,435.36 |
| CC-SS-B01.895 |  | Concrete | 1d | 2027-03-01 | 2027-03-02 | CC-SS-B01.835 | Mason [50 h]; Helper [50 h]; Physical Progress [590 h]; Concrete M40 [149 m3]; TATA Projects Ltd-25 | 1,470,183 |
|  | 4 | **Column, Core Wall, Shear Wall - Second Lift** |  | 2027-03-02 | 2027-03-15 |  |  |  |
| CC-SS-B01.910 |  | Reinforcement | 4d | 2027-03-02 | 2027-03-06 | CC-SS-B01.895 | Barbender [2070 h]; Helper [1040 h]; Physical Progress [2350 h]; Reinforcement Steel [31 MT1]; TATA Projects Ltd-25 | 2,991,887.5 |
| CC-SS-B01.940 |  | LPS | 1d | 2027-03-06 | 2027-03-08 | CC-SS-B01.910 | LPS [39529 INR]; Physical Progress [590 h]; TATA Projects Ltd-25 | 39,529 |
| CC-SS-B01.945 |  | Shuttering | 4d | 2027-03-08 | 2027-03-13 | CC-SS-B01.910, CC-SS-B01.940 | Carpenter [1000 h]; Helper [500 h]; Physical Progress [2350 h]; Formwork [596 Sq m]; TATA Projects Ltd-25 | 694,435.36 |
| CC-SS-B01.970 |  | Concrete | 1d | 2027-03-13 | 2027-03-15 | CC-SS-B01.945 | Mason [50 h]; Helper [50 h]; Physical Progress [590 h]; Concrete M40 [149 m3]; TATA Projects Ltd-25 | 1,470,183 |
|  | 2 | **Slab** |  | 2027-03-15 | 2027-04-21 |  |  |  |
| CC-SS-B01.975 |  | Shuttering | 7d | 2027-03-15 | 2027-03-24 | CC-SS-B01.970 | Carpenter [6210 h]; Helper [3110 h]; Physical Progress [4110 h]; Formwork [3721 Sq m]; TATA Projects Ltd-25 | 4,335,560.36 |
| CC-SS-B01.1000 |  | Reinforcement Bottom Net with chairs | 3d | 2027-03-24 | 2027-03-29 | CC-SS-B01.975 | Barbender [1540 h]; Helper [770 h]; Physical Progress [1750 h]; Reinforcement Steel [23 MT1]; TATA Projects Ltd-25 | 2,219,787.5 |
| CC-SS-B01.1025 |  | Laying of PT Tendon | 3d | 2027-03-29 | 2027-04-01 | CC-SS-B01.1000 | Physical Progress [2350 h]; TATA Projects Ltd-25 |  |
| CC-SS-B01.1035 |  | Reinforcement Top Net | 3d | 2027-04-01 | 2027-04-05 | CC-SS-B01.1025 | Barbender [1540 h]; Helper [770 h]; Physical Progress [1750 h]; Reinforcement Steel [23 MT1]; TATA Projects Ltd-25 | 2,219,787.5 |
| CC-SS-B01.1050 |  | MEP Coordination | 1d | 2027-04-05 | 2027-04-06 | CC-SS-B01.1000, CC-SS-B01.1035 | Physical Progress [590 h]; TATA Projects Ltd-25 |  |
| CC-SS-B01.1055 |  | Concrete of Slab | 1d | 2027-04-06 | 2027-04-07 | CC-SS-B01.1050 | Mason [50 h]; Helper [50 h]; Physical Progress [590 h]; Concrete M40 [930 m3]; TATA Projects Ltd-25 | 9,176,310 |
| CC-SS-B01.1060 |  | Wait for Strength Gain | 6d | 2027-04-07 | 2027-04-14 | CC-SS-B01.1055 | Physical Progress [3520 h]; TATA Projects Ltd-25 |  |
| CC-SS-B01.1080 |  | PT Work | 6d | 2027-04-14 | 2027-04-21 | CC-SS-B01.1060, CC-SS-B02.660 | PT [10 MT1]; Helper [100 h]; PT Fitter [100 h]; Physical Progress [4700 h]; TATA Projects Ltd-25 | 1,900,000 |
|  | 7 | **Pour 7** |  | 2027-02-19 | 2027-04-23 |  |  |  |
|  | 1 | **Column, Core Wall, Shear Wall - First Lift** |  | 2027-02-19 | 2027-03-03 |  |  |  |
| CC-SS-B01.790 |  | Reinforcement | 4d | 2027-02-19 | 2027-02-24 | CC-SS-B02.650 | Barbender [2200 h]; Helper [1100 h]; Physical Progress [2350 h]; Reinforcement Steel [33 MT1]; TATA Projects Ltd-25 | 3,184,912.5 |
| CC-SS-B01.865 |  | LPS | 1d | 2027-02-24 | 2027-02-25 | CC-SS-B01.790 | LPS [39529 INR]; Physical Progress [590 h]; TATA Projects Ltd-25 | 39,529 |
| CC-SS-B01.880 |  | Shuttering | 4d | 2027-02-25 | 2027-03-02 | CC-SS-B01.790, CC-SS-B01.865 | Carpenter [1050 h]; Helper [530 h]; Physical Progress [2350 h]; Formwork [629 Sq m]; TATA Projects Ltd-25 | 732,885.64 |
| CC-SS-B01.925 |  | Concrete | 1d | 2027-03-02 | 2027-03-03 | CC-SS-B01.880 | Mason [50 h]; Helper [50 h]; Physical Progress [590 h]; Concrete M40 [157 m3]; TATA Projects Ltd-25 | 1,549,119 |

| ID | WBS | Activity | Duration | Start | Finish | Predecessors | Resources | Cost |
| --- | --- | --- | --- | --- | --- | --- | --- | --- |
|  | 4 | **Column, Core Wall, Shear Wall - Second Lift** |  | 2027-03-03 | 2027-03-16 |  |  |  |
| CC-SS-B01.930 |  | Reinforcement | 4d | 2027-03-03 | 2027-03-08 | CC-SS-B01.925 | Barbender [2200 h]; Helper [1100 h]; Physical Progress [2350 h]; Reinforcement Steel [33 MT1]; TATA Projects Ltd-25 | 3,184,912.5 |
| CC-SS-B01.950 |  | LPS | 1d | 2027-03-08 | 2027-03-09 | CC-SS-B01.930 | LPS [39529 INR]; Physical Progress [590 h]; TATA Projects Ltd-25 | 39,529 |
| CC-SS-B01.960 |  | Shuttering | 4d | 2027-03-09 | 2027-03-15 | CC-SS-B01.930, CC-SS-B01.950 | Carpenter [1050 h]; Helper [530 h]; Physical Progress [2350 h]; Formwork [629 Sq m]; TATA Projects Ltd-25 | 732,885.64 |
| CC-SS-B01.985 |  | Concrete | 1d | 2027-03-15 | 2027-03-16 | CC-SS-B01.960 | Mason [50 h]; Helper [50 h]; Physical Progress [590 h]; Concrete M40 [157 m3]; TATA Projects Ltd-25 | 1,549,119 |
|  | 2 | **Slab** |  | 2027-03-16 | 2027-04-23 |  |  |  |
| CC-SS-B01.990 |  | Shuttering | 7d | 2027-03-16 | 2027-03-25 | CC-SS-B01.985 | Carpenter [6550 h]; Helper [3280 h]; Physical Progress [4110 h]; Formwork [3927 Sq m]; TATA Projects Ltd-25 | 4,575,583.32 |
| CC-SS-B01.1015 |  | Reinforcement Bottom Net with chairs | 3d | 2027-03-25 | 2027-03-30 | CC-SS-B01.990 | Barbender [1600 h]; Helper [800 h]; Physical Progress [1750 h]; Reinforcement Steel [24 MT1]; TATA Projects Ltd-25 | 2,316,300 |
| CC-SS-B01.1030 |  | Laying of PT Tendon | 4d | 2027-03-30 | 2027-04-03 | CC-SS-B01.1015 | Physical Progress [2350 h]; TATA Projects Ltd-25 |  |
| CC-SS-B01.1045 |  | Reinforcement Top Net | 3d | 2027-04-03 | 2027-04-07 | CC-SS-B01.1030 | Barbender [1600 h]; Helper [800 h]; Physical Progress [1750 h]; Reinforcement Steel [24 MT1]; TATA Projects Ltd-25 | 2,316,300 |
| CC-SS-B01.1065 |  | MEP Coordination | 1d | 2027-04-07 | 2027-04-08 | CC-SS-B01.1015, CC-SS-B01.1045 | Physical Progress [590 h]; TATA Projects Ltd-25 |  |
| CC-SS-B01.1070 |  | Concrete of Slab | 1d | 2027-04-08 | 2027-04-09 | CC-SS-B01.1065 | Mason [50 h]; Helper [50 h]; Physical Progress [590 h]; Concrete M40 [982 m3]; TATA Projects Ltd-25 | 9,689,394 |
| CC-SS-B01.1075 |  | Wait for Strength Gain | 6d | 2027-04-09 | 2027-04-16 | CC-SS-B01.1070 | Physical Progress [3520 h]; TATA Projects Ltd-25 |  |
| CC-SS-B01.1085 |  | PT Work | 6d | 2027-04-16 | 2027-04-23 | CC-SS-B01.1075, CC-SS-B02.665 | PT [10 MT1]; Helper [100 h]; PT Fitter [100 h]; Physical Progress [4700 h]; TATA Projects Ltd-25 | 1,900,000 |
|  | 1 | **Superstructure** |  | 2027-03-24 | 2028-03-17 |  |  |  |
|  | 1 | **Ground Floor** |  | 2027-03-24 | 2027-05-22 |  |  |  |
|  | 2 | **Pour 1** |  | 2027-03-24 | 2027-05-13 |  |  |  |
|  | 1 | **Column, Core Wall, Shear Wall** |  | 2027-03-31 | 2027-04-12 |  |  |  |
| CC-SS-GF115 |  | Reinforcement | 4d | 2027-03-31 | 2027-04-05 | CC-SS-B01.900, E-GFC-ST-CC-110, CC-SS-B01.740 | Barbender [9740 h]; Helper [4870 h]; Physical Progress [5960 h]; Reinforcement Steel [146 MT1]; TATA Projects Ltd-25 | 14,090,825 |
| CC-SS-GF170 |  | LPS | 1d | 2027-04-05 | 2027-04-06 | CC-SS-GF115 | LPS [39529 INR]; Physical Progress [1490 h]; TATA Projects Ltd-25 | 39,529 |
| CC-SS-GF195 |  | Shuttering | 4d | 2027-04-06 | 2027-04-10 | CC-SS-GF115, CC-SS-GF170 | Carpenter [4380 h]; Helper [2190 h]; Physical Progress [5960 h]; Formwork [2628 Sq m]; TATA Projects Ltd-25 | 3,062,040.48 |
| CC-SS-GF280 |  | Concrete | 1d | 2027-04-10 | 2027-04-12 | CC-SS-GF195 | Mason [50 h]; Helper [50 h]; Physical Progress [1490 h]; Concrete M40 [657 m3]; TATA Projects Ltd-25 | 6,482,619 |
|  | 3 | **Staircase - 1** |  | 2027-03-24 | 2027-04-13 |  |  |  |
| CC-SS-GF120 |  | Reinforcement of wall upto Flight 1 | 2d | 2027-03-24 | 2027-03-27 | CC-SS-B01.900 | Barbender [70 h]; Helper [40 h]; Physical Progress [2980 h]; Reinforcement Steel [1 MT1]; TATA Projects Ltd-25 | 96,512.5 |
| CC-SS-GF145 |  | Shuttering of wall upto Flight 1 | 2d | 2027-03-27 | 2027-03-30 | CC-SS-GF120 | Carpenter [20 h]; Helper [10 h]; Physical Progress [2980 h]; Formwork [10 Sq m]; TATA Projects Ltd-25 | 11,651.6 |
| CC-SS-GF175 |  | Casting of wall upto Flight 1 | 1d | 2027-03-30 | 2027-03-31 | CC-SS-GF145 | Mason; Helper; Physical Progress [1490 h]; Concrete M40 [3 m3]; TATA Projects Ltd-25 | 29,601 |
| CC-SS-GF200 |  | Shuttering of Staircase upto Flight 1 | 1d | 2027-03-31 | 2027-04-01 | CC-SS-GF175 | Carpenter [20 h]; Helper [10 h]; Physical Progress [1490 h]; Formwork [10 Sq m]; TATA Projects Ltd-25 | 11,651.6 |
| CC-SS-GF215 |  | Reinforcement of Staircase upto Flight 1 | 1d | 2027-04-01 | 2027-04-02 | CC-SS-GF200 | Barbender [70 h]; Helper [40 h]; Physical Progress [1490 h]; Reinforcement Steel [1 MT1]; TATA Projects Ltd-25 | 96,512.5 |
| CC-SS-GF240 |  | MEP coordination upto Flight 1 | 1d | 2027-04-02 | 2027-04-03 | CC-SS-GF215 | Physical Progress [1490 h]; TATA Projects Ltd-25 |  |
| CC-SS-GF260 |  | Casting of Staircase upto Flight 1 | 1d | 2027-04-03 | 2027-04-05 | CC-SS-GF240 | Mason; Helper; Physical Progress [1490 h]; Concrete M40 [3 m3]; TATA Projects Ltd-25 | 29,601 |
| CC-SS-GF285 |  | Reinforcement of wall upto Flight 2 | 2d | 2027-04-05 | 2027-04-07 | CC-SS-GF260 | Barbender [70 h]; Helper [40 h]; Physical Progress [2980 h]; Reinforcement Steel [1 MT1]; TATA Projects Ltd-25 | 96,512.5 |
| CC-SS-GF305 |  | Shuttering of wall upto Flight 2 | 2d | 2027-04-07 | 2027-04-09 | CC-SS-GF285 | Carpenter [20 h]; Helper [10 h]; Physical Progress [2980 h]; Formwork [10 Sq m]; TATA Projects Ltd-25 | 11,651.6 |
| CC-SS-GF325 |  | Casting of wall upto Flight 2 | 1d | 2027-04-09 | 2027-04-10 | CC-SS-GF305 | Mason; Helper; Physical Progress [1490 h]; Concrete M40 [3 m3]; TATA Projects Ltd-25 | 29,601 |
| CC-SS-GF340 |  | Shuttering of Staircase upto Flight 2 | 1d | 2027-04-10 | 2027-04-12 | CC-SS-GF325 | Carpenter [20 h]; Helper [10 h]; Physical Progress [1490 h]; Formwork [10 Sq m]; TATA Projects Ltd-25 | 11,651.6 |
| CC-SS-GF355 |  | Reinforcement of Staircase upto Flight 2 | 1d | 2027-04-12 | 2027-04-13 | CC-SS-GF340 | Barbender [70 h]; Helper [40 h]; Physical Progress [1490 h]; Reinforcement Steel [1 MT1]; TATA Projects Ltd-25 | 96,512.5 |

| ID | WBS | Activity | Duration | Start | Finish | Predecessors | Resources | Cost |
| --- | --- | --- | --- | --- | --- | --- | --- | --- |
|  | 4 | **Staircase - 2** |  | 2027-03-24 | 2027-04-13 |  |  |  |
| CC-SS-GF130 |  | Reinforcement of wall upto Flight 1 | 2d | 2027-03-24 | 2027-03-27 | CC-SS-B01.900 | Barbender [70 h]; Helper [40 h]; Physical Progress [2980 h]; Reinforcement Steel [1 MT1]; TATA Projects Ltd-25 | 96,512.5 |
| CC-SS-GF160 |  | Shuttering of wall upto Flight 1 | 2d | 2027-03-27 | 2027-03-30 | CC-SS-GF130 | Carpenter [20 h]; Helper [10 h]; Physical Progress [2980 h]; Formwork [10 Sq m]; TATA Projects Ltd-25 | 11,651.6 |
| CC-SS-GF190 |  | Casting of wall upto Flight 1 | 1d | 2027-03-30 | 2027-03-31 | CC-SS-GF160 | Mason; Helper; Physical Progress [1490 h]; Concrete M40 [3 m3]; TATA Projects Ltd-25 | 29,601 |
| CC-SS-GF210 |  | Shuttering of Staircase upto Flight 1 | 1d | 2027-03-31 | 2027-04-01 | CC-SS-GF190 | Carpenter [20 h]; Helper [10 h]; Physical Progress [1490 h]; Formwork [10 Sq m]; TATA Projects Ltd-25 | 11,651.6 |
| CC-SS-GF235 |  | Reinforcement of Staircase upto Flight 1 | 1d | 2027-04-01 | 2027-04-02 | CC-SS-GF210 | Barbender [70 h]; Helper [40 h]; Physical Progress [1490 h]; Reinforcement Steel [1 MT1]; TATA Projects Ltd-25 | 96,512.5 |
| CC-SS-GF255 |  | MEP coordination upto Flight 1 | 1d | 2027-04-02 | 2027-04-03 | CC-SS-GF235 | Physical Progress [1490 h]; TATA Projects Ltd-25 |  |
| CC-SS-GF275 |  | Casting of Staircase upto Flight 1 | 1d | 2027-04-03 | 2027-04-05 | CC-SS-GF255 | Mason; Helper; Physical Progress [1490 h]; Concrete M40 [3 m3]; TATA Projects Ltd-25 | 29,601 |
| CC-SS-GF290 |  | Reinforcement of wall upto Flight 2 | 2d | 2027-04-05 | 2027-04-07 | CC-SS-GF275 | Barbender [70 h]; Helper [40 h]; Physical Progress [2980 h]; Reinforcement Steel [1 MT1]; TATA Projects Ltd-25 | 96,512.5 |
| CC-SS-GF315 |  | Shuttering of wall upto Flight 2 | 2d | 2027-04-07 | 2027-04-09 | CC-SS-GF290 | Carpenter [20 h]; Helper [10 h]; Physical Progress [2980 h]; Formwork [10 Sq m]; TATA Projects Ltd-25 | 11,651.6 |
| CC-SS-GF335 |  | Casting of wall upto Flight 2 | 1d | 2027-04-09 | 2027-04-10 | CC-SS-GF315 | Mason; Helper; Physical Progress [1490 h]; Concrete M40 [3 m3]; TATA Projects Ltd-25 | 29,601 |
| CC-SS-GF350 |  | Shuttering of Staircase upto Flight 2 | 1d | 2027-04-10 | 2027-04-12 | CC-SS-GF335 | Carpenter [20 h]; Helper [10 h]; Physical Progress [1490 h]; Formwork [10 Sq m]; TATA Projects Ltd-25 | 11,651.6 |
| CC-SS-GF360 |  | Reinforcement of Staircase upto Flight 2 | 1d | 2027-04-12 | 2027-04-13 | CC-SS-GF350 | Barbender [70 h]; Helper [40 h]; Physical Progress [1490 h]; Reinforcement Steel [1 MT1]; TATA Projects Ltd-25 | 96,512.5 |
|  | 2 | **Slab** |  | 2027-04-12 | 2027-05-13 |  |  |  |
| CC-SS-GF295 |  | Shuttering | 5d | 2027-04-12 | 2027-04-17 | CC-SS-GF280 | Carpenter [3280 h]; Helper [1640 h]; Physical Progress [8940 h]; Formwork [1966 Sq m]; TATA Projects Ltd-25 | 2,290,704.56 |
| CC-SS-GF365 |  | Reinforcement Bottom Net with chairs | 3d | 2027-04-17 | 2027-04-21 | CC-SS-GF295 | Barbender [1200 h]; Helper [600 h]; Physical Progress [4470 h]; Reinforcement Steel [18 MT1]; TATA Projects Ltd-25 | 1,737,225 |
| CC-SS-GF375 |  | Laying of PT Tendon | 3d | 2027-04-21 | 2027-04-24 | CC-SS-GF365 | Physical Progress [5960 h]; TATA Projects Ltd-25 |  |
| CC-SS-GF390 |  | Reinforcement Top Net | 2d | 2027-04-24 | 2027-04-27 | CC-SS-GF375 | Barbender [1200 h]; Helper [600 h]; Physical Progress [2980 h]; Reinforcement Steel [18 MT1]; TATA Projects Ltd-25 | 1,737,225 |
| CC-SS-GF405 |  | MEP Coordination | 1d | 2027-04-27 | 2027-04-28 | CC-SS-GF365, CC-SS-GF355, CC-SS-GF390, CC-SS-GF360 | Physical Progress [1490 h]; TATA Projects Ltd-25 |  |
| CC-SS-GF410 |  | Concrete of Slab | 1d | 2027-04-28 | 2027-04-29 | CC-SS-GF405 | Mason [50 h]; Helper [50 h]; Physical Progress [1490 h]; Concrete M40 [492 m3]; TATA Projects Ltd-25 | 4,854,564 |
| CC-SS-GF415 |  | Wait for Strength Gain | 6d | 2027-04-29 | 2027-05-07 | CC-SS-GF410 | Physical Progress [8940 h]; TATA Projects Ltd-25 |  |
| CC-SS-GF420 |  | PT Work | 5d | 2027-05-07 | 2027-05-13 | CC-SS-GF415, CC-SS-B01.955 | PT [13 MT1]; Helper [100 h]; PT Fitter [100 h]; Physical Progress [11920 h]; TATA Projects Ltd-25 | 2,470,000 |
|  | 4 | **Pour 2** |  | 2027-03-24 | 2027-05-07 |  |  |  |
|  | 1 | **Column, Core Wall, Shear Wall** |  | 2027-03-24 | 2027-04-06 |  |  |  |
| CC-SS-GF10 |  | Reinforcement | 4d | 2027-03-24 | 2027-03-30 | CC-SS-B01.565 | Barbender [7940 h]; Helper [3970 h]; Physical Progress [5960 h]; Reinforcement Steel [119 MT1]; TATA Projects Ltd-25 | 11,484,987.5 |
| CC-SS-GF25 |  | LPS | 1d | 2027-03-30 | 2027-03-31 | CC-SS-GF10 | LPS [39529 INR]; Physical Progress [1490 h]; TATA Projects Ltd-25 | 39,529 |
| CC-SS-GF35 |  | Shuttering | 4d | 2027-03-31 | 2027-04-05 | CC-SS-GF10, CC-SS-GF25 | Carpenter [3570 h]; Helper [1790 h]; Physical Progress [5960 h]; Formwork [2139 Sq m]; TATA Projects Ltd-25 | 2,492,277.24 |
| CC-SS-GF60 |  | Concrete | 1d | 2027-04-05 | 2027-04-06 | CC-SS-GF35 | Mason [50 h]; Helper [50 h]; Physical Progress [1490 h]; Concrete M40 [535 m3]; TATA Projects Ltd-25 | 5,278,845 |

| ID | WBS | Activity | Duration | Start | Finish | Predecessors | Resources | Cost |
| --- | --- | --- | --- | --- | --- | --- | --- | --- |
|  | 3 | **Staircase** |  | 2027-03-24 | 2027-04-13 |  |  |  |
| CC-SS-GF15 |  | Reinforcement of wall upto Flight 1 | 2d | 2027-03-24 | 2027-03-27 | CC-SS-B01.565 | Barbender [70 h]; Helper [40 h]; Physical Progress [2980 h]; Reinforcement Steel [1 MT1]; TATA Projects Ltd-25 | 96,512.5 |
| CC-SS-GF20 |  | Shuttering of wall upto Flight 1 | 2d | 2027-03-27 | 2027-03-30 | CC-SS-GF15 | Carpenter [20 h]; Helper [10 h]; Physical Progress [2980 h]; Formwork [10 Sq m]; TATA Projects Ltd-25 | 11,651.6 |
| CC-SS-GF30 |  | Casting of wall upto Flight 1 | 1d | 2027-03-30 | 2027-03-31 | CC-SS-GF20 | Mason; Helper; Physical Progress [1490 h]; Concrete M40 [3 m3]; TATA Projects Ltd-25 | 29,601 |
| CC-SS-GF40 |  | Shuttering of Staircase upto Flight 1 | 1d | 2027-03-31 | 2027-04-01 | CC-SS-GF30 | Carpenter [20 h]; Helper [10 h]; Physical Progress [1490 h]; Formwork [10 Sq m]; TATA Projects Ltd-25 | 11,651.6 |
| CC-SS-GF45 |  | Reinforcement of Staircase upto Flight 1 | 1d | 2027-04-01 | 2027-04-02 | CC-SS-GF40 | Barbender [70 h]; Helper [40 h]; Physical Progress [1490 h]; Reinforcement Steel [1 MT1]; TATA Projects Ltd-25 | 96,512.5 |
| CC-SS-GF50 |  | MEP coordination upto Flight 1 | 1d | 2027-04-02 | 2027-04-03 | CC-SS-GF45 | Physical Progress [1490 h]; TATA Projects Ltd-25 |  |
| CC-SS-GF55 |  | Casting of Staircase upto Flight 1 | 1d | 2027-04-03 | 2027-04-05 | CC-SS-GF50 | Mason; Helper; Physical Progress [1490 h]; Concrete M40 [3 m3]; TATA Projects Ltd-25 | 29,601 |
| CC-SS-GF65 |  | Reinforcement of wall upto Flight 2 | 2d | 2027-04-05 | 2027-04-07 | CC-SS-GF55 | Barbender [70 h]; Helper [40 h]; Physical Progress [2980 h]; Reinforcement Steel [1 MT1]; TATA Projects Ltd-25 | 96,512.5 |
| CC-SS-GF75 |  | Shuttering of wall upto Flight 2 | 2d | 2027-04-07 | 2027-04-09 | CC-SS-GF65 | Carpenter [20 h]; Helper [10 h]; Physical Progress [2980 h]; Formwork [10 Sq m]; TATA Projects Ltd-25 | 11,651.6 |
| CC-SS-GF80 |  | Casting of wall upto Flight 2 | 1d | 2027-04-09 | 2027-04-10 | CC-SS-GF75 | Mason; Helper; Physical Progress [1490 h]; Concrete M40 [3 m3]; TATA Projects Ltd-25 | 29,601 |
| CC-SS-GF85 |  | Shuttering of Staircase upto Flight 2 | 1d | 2027-04-10 | 2027-04-12 | CC-SS-GF80 | Carpenter [20 h]; Helper [10 h]; Physical Progress [1490 h]; Formwork [10 Sq m]; TATA Projects Ltd-25 | 11,651.6 |
| CC-SS-GF90 |  | Reinforcement of Staircase upto Flight 2 | 1d | 2027-04-12 | 2027-04-13 | CC-SS-GF85 | Barbender [70 h]; Helper [40 h]; Physical Progress [1490 h]; Reinforcement Steel [1 MT1]; TATA Projects Ltd-25 | 96,512.5 |
|  | 2 | **Slab** |  | 2027-04-06 | 2027-05-07 |  |  |  |
| CC-SS-GF70 |  | Shuttering | 5d | 2027-04-06 | 2027-04-12 | CC-SS-GF60 | Carpenter [2670 h]; Helper [1340 h]; Physical Progress [8940 h]; Formwork [1600 Sq m]; TATA Projects Ltd-25 | 1,864,256 |
| CC-SS-GF95 |  | Reinforcement Bottom Net with chairs | 3d | 2027-04-12 | 2027-04-15 | CC-SS-GF70 | Barbender [1000 h]; Helper [500 h]; Physical Progress [4470 h]; Reinforcement Steel [15 MT1]; TATA Projects Ltd-25 | 1,447,687.5 |
| CC-SS-GF125 |  | Laying of PT Tendon | 3d | 2027-04-15 | 2027-04-19 | CC-SS-GF95 | Physical Progress [5960 h]; TATA Projects Ltd-25 |  |
| CC-SS-GF180 |  | Reinforcement Top Net | 2d | 2027-04-19 | 2027-04-21 | CC-SS-GF125 | Barbender [1000 h]; Helper [500 h]; Physical Progress [2980 h]; Reinforcement Steel [15 MT1]; TATA Projects Ltd-25 | 1,447,687.5 |
| CC-SS-GF220 |  | MEP Coordination | 1d | 2027-04-21 | 2027-04-22 | CC-SS-GF95, CC-SS-GF180, CC-SS-GF90 | Physical Progress [1490 h]; TATA Projects Ltd-25 |  |
| CC-SS-GF245 |  | Concrete of Slab | 1d | 2027-04-22 | 2027-04-23 | CC-SS-GF220 | Mason [50 h]; Helper [50 h]; Physical Progress [1490 h]; Concrete M40 [400 m3]; TATA Projects Ltd-25 | 3,946,800 |
| CC-SS-GF265 |  | Wait for Strength Gain | 6d | 2027-04-23 | 2027-04-30 | CC-SS-GF245 | Physical Progress [8940 h]; TATA Projects Ltd-25 |  |
| CC-SS-GF345 |  | PT Work | 5d | 2027-04-30 | 2027-05-07 | CC-SS-GF265, CC-SS-B01.695 | PT [10 MT1]; Helper [100 h]; PT Fitter [100 h]; Physical Progress [11920 h]; TATA Projects Ltd-25 | 1,900,000 |
|  | 3 | **Pour 3** |  | 2027-04-14 | 2027-05-22 |  |  |  |
|  | 1 | **Column, Core Wall, Shear Wall** |  | 2027-04-14 | 2027-04-26 |  |  |  |
| CC-SS-GF100 |  | Reinforcement | 4d | 2027-04-14 | 2027-04-19 | CC-SS-B01.875 | Barbender [4670 h]; Helper [2340 h]; Physical Progress [5960 h]; Reinforcement Steel [70 MT1]; TATA Projects Ltd-25 | 6,755,875 |
| CC-SS-GF135 |  | LPS | 1d | 2027-04-19 | 2027-04-20 | CC-SS-GF100 | LPS [39529 INR]; Physical Progress [1490 h]; TATA Projects Ltd-25 | 39,529 |
| CC-SS-GF150 |  | Shuttering | 4d | 2027-04-20 | 2027-04-24 | CC-SS-GF100, CC-SS-GF135 | Carpenter [2090 h]; Helper [1050 h]; Physical Progress [5960 h]; Formwork [1249 Sq m]; TATA Projects Ltd-25 | 1,455,284.84 |
| CC-SS-GF225 |  | Concrete | 1d | 2027-04-24 | 2027-04-26 | CC-SS-GF150 | Mason [50 h]; Helper [50 h]; Physical Progress [1490 h]; Concrete M40 [312 m3]; TATA Projects Ltd-25 | 3,078,504 |

| ID | WBS | Activity | Duration | Start | Finish | Predecessors | Resources | Cost |
| --- | --- | --- | --- | --- | --- | --- | --- | --- |
|  | 4 | **Staircase** |  | 2027-04-14 | 2027-05-04 |  |  |  |
| CC-SS-GF105 |  | Reinforcement of wall upto Flight 1 | 2d | 2027-04-14 | 2027-04-16 | CC-SS-B01.875 | Barbender [70 h]; Helper [40 h]; Physical Progress [2980 h]; Reinforcement Steel [1 MT1]; TATA Projects Ltd-25 | 96,512.5 |
| CC-SS-GF110 |  | Shuttering of wall upto Flight 1 | 2d | 2027-04-16 | 2027-04-19 | CC-SS-GF105 | Carpenter [20 h]; Helper [10 h]; Physical Progress [2980 h]; Formwork [10 Sq m]; TATA Projects Ltd-25 | 11,651.6 |
| CC-SS-GF140 |  | Casting of wall upto Flight 1 | 1d | 2027-04-19 | 2027-04-20 | CC-SS-GF110 | Mason; Helper; Physical Progress [1490 h]; Concrete M40 [3 m3]; TATA Projects Ltd-25 | 29,601 |
| CC-SS-GF155 |  | Shuttering of Staircase upto Flight 1 | 1d | 2027-04-20 | 2027-04-21 | CC-SS-GF140 | Carpenter [20 h]; Helper [10 h]; Physical Progress [1490 h]; Formwork [10 Sq m]; TATA Projects Ltd-25 | 11,651.6 |
| CC-SS-GF165 |  | Reinforcement of Staircase upto Flight 1 | 1d | 2027-04-21 | 2027-04-22 | CC-SS-GF155 | Barbender [70 h]; Helper [40 h]; Physical Progress [1490 h]; Reinforcement Steel [1 MT1]; TATA Projects Ltd-25 | 96,512.5 |
| CC-SS-GF185 |  | MEP coordination upto Flight 1 | 1d | 2027-04-22 | 2027-04-23 | CC-SS-GF165 | Physical Progress [1490 h]; TATA Projects Ltd-25 |  |
| CC-SS-GF205 |  | Casting of Staircase upto Flight 1 | 1d | 2027-04-23 | 2027-04-24 | CC-SS-GF185 | Mason; Helper; Physical Progress [1490 h]; Concrete M40 [3 m3]; TATA Projects Ltd-25 | 29,601 |
| CC-SS-GF230 |  | Reinforcement of wall upto Flight 2 | 2d | 2027-04-24 | 2027-04-27 | CC-SS-GF205 | Barbender [70 h]; Helper [40 h]; Physical Progress [2980 h]; Reinforcement Steel [1 MT1]; TATA Projects Ltd-25 | 96,512.5 |
| CC-SS-GF270 |  | Shuttering of wall upto Flight 2 | 2d | 2027-04-27 | 2027-04-29 | CC-SS-GF230 | Carpenter [20 h]; Helper [10 h]; Physical Progress [2980 h]; Formwork [10 Sq m]; TATA Projects Ltd-25 | 11,651.6 |
| CC-SS-GF300 |  | Casting of wall upto Flight 2 | 1d | 2027-04-29 | 2027-04-30 | CC-SS-GF270 | Mason; Helper; Physical Progress [1490 h]; Concrete M40 [3 m3]; TATA Projects Ltd-25 | 29,601 |
| CC-SS-GF310 |  | Shuttering of Staircase upto Flight 2 | 1d | 2027-04-30 | 2027-05-03 | CC-SS-GF300 | Carpenter [20 h]; Helper [10 h]; Physical Progress [1490 h]; Formwork [10 Sq m]; TATA Projects Ltd-25 | 11,651.6 |
| CC-SS-GF320 |  | Reinforcement of Staircase upto Flight 2 | 1d | 2027-05-03 | 2027-05-04 | CC-SS-GF310 | Barbender [70 h]; Helper [40 h]; Physical Progress [1490 h]; Reinforcement Steel [1 MT1]; TATA Projects Ltd-25 | 96,512.5 |
|  | 2 | **Slab** |  | 2027-04-26 | 2027-05-22 |  |  |  |
| CC-SS-GF250 |  | Shuttering | 4d | 2027-04-26 | 2027-04-30 | CC-SS-GF225 | Carpenter [1560 h]; Helper [780 h]; Physical Progress [8940 h]; Formwork [934 Sq m]; TATA Projects Ltd-25 | 1,088,259.44 |
| CC-SS-GF330 |  | Reinforcement Bottom Net with chairs | 2d | 2027-04-30 | 2027-05-04 | CC-SS-GF250 | Barbender [600 h]; Helper [300 h]; Physical Progress [4470 h]; Reinforcement Steel [9 MT1]; TATA Projects Ltd-25 | 868,612.5 |
| CC-SS-GF370 |  | Laying of PT Tendon | 2d | 2027-05-04 | 2027-05-06 | CC-SS-GF330 | Physical Progress [5960 h]; TATA Projects Ltd-25 |  |
| CC-SS-GF380 |  | Reinforcement Top Net | 2d | 2027-05-06 | 2027-05-08 | CC-SS-GF370 | Barbender [600 h]; Helper [300 h]; Physical Progress [2980 h]; Reinforcement Steel [9 MT1]; TATA Projects Ltd-25 | 868,612.5 |
| CC-SS-GF385 |  | MEP Coordination | 1d | 2027-05-08 | 2027-05-10 | CC-SS-GF330, CC-SS-GF380, CC-SS-GF320 | Physical Progress [1490 h]; TATA Projects Ltd-25 |  |
| CC-SS-GF395 |  | Concrete of Slab | 1d | 2027-05-10 | 2027-05-11 | CC-SS-GF385 | Mason [50 h]; Helper [50 h]; Physical Progress [1490 h]; Concrete M40 [234 m3]; TATA Projects Ltd-25 | 2,308,878 |
| CC-SS-GF400 |  | Wait for Strength Gain | 6d | 2027-05-11 | 2027-05-18 | CC-SS-GF395 | Physical Progress [8940 h]; TATA Projects Ltd-25 |  |
| CC-SS-GF425 |  | PT Work | 4d | 2027-05-18 | 2027-05-22 | CC-SS-GF400, CC-SS-B01.870, CC-SS-B01.935 | PT [6 MT1]; Helper [100 h]; PT Fitter [100 h]; Physical Progress [11920 h]; TATA Projects Ltd-25 | 1,140,000 |
|  | 2 | **First Mezanine** |  | 2027-04-23 | 2027-06-17 |  |  |  |
|  | 2 | **Pour 1** |  | 2027-04-29 | 2027-06-11 |  |  |  |
|  | 1 | **Column, Core Wall, Shear Wall** |  | 2027-04-29 | 2027-05-12 |  |  |  |
| CC-SS-1stM.115 |  | Reinforcement | 4d | 2027-04-29 | 2027-05-05 | CC-SS-GF410, E-GFC-ST-CC-115 | Barbender [9600 h]; Helper [4800 h]; Physical Progress [5960 h]; Reinforcement Steel [144 MT1]; TATA Projects Ltd-25 | 13,897,800 |
| CC-SS-1stM.170 |  | LPS | 1d | 2027-05-05 | 2027-05-06 | CC-SS-1stM.115 | LPS [39529 INR]; Physical Progress [1490 h]; TATA Projects Ltd-25 | 39,529 |
| CC-SS-1stM.195 |  | Shuttering | 4d | 2027-05-06 | 2027-05-11 | CC-SS-1stM.115, CC-SS-1stM.170 | Carpenter [4180 h]; Helper [2090 h]; Physical Progress [5960 h]; Formwork [2503 Sq m]; TATA Projects Ltd-25 | 2,916,395.48 |
| CC-SS-1stM.280 |  | Concrete | 1d | 2027-05-11 | 2027-05-12 | CC-SS-1stM.195 | Mason [50 h]; Helper [50 h]; Physical Progress [1490 h]; Concrete M40 [626 m3]; TATA Projects Ltd-25 | 6,176,742 |

| ID | WBS | Activity | Duration | Start | Finish | Predecessors | Resources | Cost |
| --- | --- | --- | --- | --- | --- | --- | --- | --- |
|  | 3 | **Staircase - 1** |  | 2027-04-29 | 2027-05-19 |  |  |  |
| CC-SS-1stM.120 |  | Reinforcement of wall upto Flight 1 | 2d | 2027-04-29 | 2027-05-03 | CC-SS-GF410 | Barbender [70 h]; Helper [40 h]; Physical Progress [2980 h]; Reinforcement Steel [1 MT1]; TATA Projects Ltd-25 | 96,512.5 |
| CC-SS-1stM.145 |  | Shuttering of wall upto Flight 1 | 2d | 2027-05-03 | 2027-05-05 | CC-SS-1stM.120 | Carpenter [20 h]; Helper [10 h]; Physical Progress [2980 h]; Formwork [10 Sq m]; TATA Projects Ltd-25 | 11,651.6 |
| CC-SS-1stM.175 |  | Casting of wall upto Flight 1 | 1d | 2027-05-05 | 2027-05-06 | CC-SS-1stM.145 | Mason; Helper; Physical Progress [1490 h]; Concrete M40 [3 m3]; TATA Projects Ltd-25 | 29,601 |
| CC-SS-1stM.200 |  | Shuttering of Staircase upto Flight 1 | 1d | 2027-05-06 | 2027-05-07 | CC-SS-1stM.175 | Carpenter [20 h]; Helper [10 h]; Physical Progress [1490 h]; Formwork [10 Sq m]; TATA Projects Ltd-25 | 11,651.6 |
| CC-SS-1stM.215 |  | Reinforcement of Staircase upto Flight 1 | 1d | 2027-05-07 | 2027-05-08 | CC-SS-1stM.200 | Barbender [70 h]; Helper [40 h]; Physical Progress [1490 h]; Reinforcement Steel [1 MT1]; TATA Projects Ltd-25 | 96,512.5 |
| CC-SS-1stM.240 |  | MEP coordination upto Flight 1 | 1d | 2027-05-08 | 2027-05-10 | CC-SS-1stM.215 | Physical Progress [1490 h]; TATA Projects Ltd-25 |  |
| CC-SS-1stM.260 |  | Casting of Staircase upto Flight 1 | 1d | 2027-05-10 | 2027-05-11 | CC-SS-1stM.240 | Mason; Helper; Physical Progress [1490 h]; Concrete M40 [3 m3]; TATA Projects Ltd-25 | 29,601 |
| CC-SS-1stM.285 |  | Reinforcement of wall upto Flight 2 | 2d | 2027-05-11 | 2027-05-13 | CC-SS-1stM.260 | Barbender [70 h]; Helper [40 h]; Physical Progress [2980 h]; Reinforcement Steel [1 MT1]; TATA Projects Ltd-25 | 96,512.5 |
| CC-SS-1stM.305 |  | Shuttering of wall upto Flight 2 | 2d | 2027-05-13 | 2027-05-15 | CC-SS-1stM.285 | Carpenter [20 h]; Helper [10 h]; Physical Progress [2980 h]; Formwork [10 Sq m]; TATA Projects Ltd-25 | 11,651.6 |
| CC-SS-1stM.325 |  | Casting of wall upto Flight 2 | 1d | 2027-05-15 | 2027-05-17 | CC-SS-1stM.305 | Mason; Helper; Physical Progress [1490 h]; Concrete M40 [3 m3]; TATA Projects Ltd-25 | 29,601 |
| CC-SS-1stM.340 |  | Shuttering of Staircase upto Flight 2 | 1d | 2027-05-17 | 2027-05-18 | CC-SS-1stM.325 | Carpenter [20 h]; Helper [10 h]; Physical Progress [1490 h]; Formwork [10 Sq m]; TATA Projects Ltd-25 | 11,651.6 |
| CC-SS-1stM.355 |  | Reinforcement of Staircase upto Flight 2 | 1d | 2027-05-18 | 2027-05-19 | CC-SS-1stM.340 | Barbender [70 h]; Helper [40 h]; Physical Progress [1490 h]; Reinforcement Steel [1 MT1]; TATA Projects Ltd-25 | 96,512.5 |
|  | 4 | **Staircase - 2** |  | 2027-04-29 | 2027-05-19 |  |  |  |
| CC-SS-1stM.130 |  | Reinforcement of wall upto Flight 1 | 2d | 2027-04-29 | 2027-05-03 | CC-SS-GF410 | Barbender [70 h]; Helper [40 h]; Physical Progress [2980 h]; Reinforcement Steel [1 MT1]; TATA Projects Ltd-25 | 96,512.5 |
| CC-SS-1stM.160 |  | Shuttering of wall upto Flight 1 | 2d | 2027-05-03 | 2027-05-05 | CC-SS-1stM.130 | Carpenter [20 h]; Helper [10 h]; Physical Progress [2980 h]; Formwork [10 Sq m]; TATA Projects Ltd-25 | 11,651.6 |
| CC-SS-1stM.190 |  | Casting of wall upto Flight 1 | 1d | 2027-05-05 | 2027-05-06 | CC-SS-1stM.160 | Mason; Helper; Physical Progress [1490 h]; Concrete M40 [3 m3]; TATA Projects Ltd-25 | 29,601 |
| CC-SS-1stM.210 |  | Shuttering of Staircase upto Flight 1 | 1d | 2027-05-06 | 2027-05-07 | CC-SS-1stM.190 | Carpenter [20 h]; Helper [10 h]; Physical Progress [1490 h]; Formwork [10 Sq m]; TATA Projects Ltd-25 | 11,651.6 |
| CC-SS-1stM.235 |  | Reinforcement of Staircase upto Flight 1 | 1d | 2027-05-07 | 2027-05-08 | CC-SS-1stM.210 | Barbender [70 h]; Helper [40 h]; Physical Progress [1490 h]; Reinforcement Steel [1 MT1]; TATA Projects Ltd-25 | 96,512.5 |
| CC-SS-1stM.255 |  | MEP coordination upto Flight 1 | 1d | 2027-05-08 | 2027-05-10 | CC-SS-1stM.235 | Physical Progress [1490 h]; TATA Projects Ltd-25 |  |
| CC-SS-1stM.275 |  | Casting of Staircase upto Flight 1 | 1d | 2027-05-10 | 2027-05-11 | CC-SS-1stM.255 | Mason; Helper; Physical Progress [1490 h]; Concrete M40 [3 m3]; TATA Projects Ltd-25 | 29,601 |
| CC-SS-1stM.290 |  | Reinforcement of wall upto Flight 2 | 2d | 2027-05-11 | 2027-05-13 | CC-SS-1stM.275 | Barbender [70 h]; Helper [40 h]; Physical Progress [2980 h]; Reinforcement Steel [1 MT1]; TATA Projects Ltd-25 | 96,512.5 |
| CC-SS-1stM.315 |  | Shuttering of wall upto Flight 2 | 2d | 2027-05-13 | 2027-05-15 | CC-SS-1stM.290 | Carpenter [20 h]; Helper [10 h]; Physical Progress [2980 h]; Formwork [10 Sq m]; TATA Projects Ltd-25 | 11,651.6 |
| CC-SS-1stM.335 |  | Casting of wall upto Flight 2 | 1d | 2027-05-15 | 2027-05-17 | CC-SS-1stM.315 | Mason; Helper; Physical Progress [1490 h]; Concrete M40 [3 m3]; TATA Projects Ltd-25 | 29,601 |
| CC-SS-1stM.350 |  | Shuttering of Staircase upto Flight 2 | 1d | 2027-05-17 | 2027-05-18 | CC-SS-1stM.335 | Carpenter [20 h]; Helper [10 h]; Physical Progress [1490 h]; Formwork [10 Sq m]; TATA Projects Ltd-25 | 11,651.6 |
| CC-SS-1stM.360 |  | Reinforcement of Staircase upto Flight 2 | 1d | 2027-05-18 | 2027-05-19 | CC-SS-1stM.350 | Barbender [70 h]; Helper [40 h]; Physical Progress [1490 h]; Reinforcement Steel [1 MT1]; TATA Projects Ltd-25 | 96,512.5 |

| ID | WBS | Activity | Duration | Start | Finish | Predecessors | Resources | Cost |
| --- | --- | --- | --- | --- | --- | --- | --- | --- |
|  | 2 | **Slab** |  | 2027-05-12 | 2027-06-11 |  |  |  |
| CC-SS-1stM.295 |  | Shuttering | 5d | 2027-05-12 | 2027-05-18 | CC-SS-1stM.280 | Carpenter [3380 h]; Helper [1690 h]; Physical Progress [8940 h]; Formwork [2028 Sq m]; TATA Projects Ltd-25 | 2,362,944.48 |
| CC-SS-1stM.365 |  | Reinforcement Bottom Net with chairs | 3d | 2027-05-18 | 2027-05-21 | CC-SS-1stM.295 | Barbender [1270 h]; Helper [640 h]; Physical Progress [4470 h]; Reinforcement Steel [19 MT1]; TATA Projects Ltd-25 | 1,833,737.5 |
| CC-SS-1stM.375 |  | Laying of PT Tendon | 3d | 2027-05-21 | 2027-05-25 | CC-SS-1stM.365, E-ShopD-Civil-PT-CC-15 | Physical Progress [5960 h]; TATA Projects Ltd-25 |  |
| CC-SS-1stM.390 |  | Reinforcement Top Net | 2d | 2027-05-25 | 2027-05-27 | CC-SS-1stM.375 | Barbender [1270 h]; Helper [640 h]; Physical Progress [2980 h]; Reinforcement Steel [19 MT1]; TATA Projects Ltd-25 | 1,833,737.5 |
| CC-SS-1stM.405 |  | MEP Coordination | 1d | 2027-05-27 | 2027-05-28 | CC-SS-1stM.365, CC-SS-1stM.355, CC-SS-1stM.390, CC-SS-1stM.360 | Physical Progress [1490 h]; TATA Projects Ltd-25 |  |
| CC-SS-1stM.410 |  | Concrete of Slab | 1d | 2027-05-28 | 2027-05-29 | CC-SS-1stM.405 | Mason [50 h]; Helper [50 h]; Physical Progress [1490 h]; Concrete M40 [507 m3]; TATA Projects Ltd-25 | 5,002,569 |
| CC-SS-1stM.415 |  | Wait for Strength Gain | 6d | 2027-05-29 | 2027-06-05 | CC-SS-1stM.410 | Physical Progress [8940 h]; TATA Projects Ltd-25 |  |
| CC-SS-1stM.425 |  | PT Work | 5d | 2027-06-05 | 2027-06-11 | CC-SS-1stM.415, CC-SS-GF420 | PT [13 MT1]; Helper [100 h]; PT Fitter [100 h]; Physical Progress [11920 h]; TATA Projects Ltd-25 | 2,470,000 |
|  | 4 | **Pour 2** |  | 2027-04-23 | 2027-06-05 |  |  |  |
|  | 1 | **Column, Core Wall, Shear Wall** |  | 2027-04-23 | 2027-05-06 |  |  |  |
| CC-SS-1stM.10 |  | Reinforcement | 4d | 2027-04-23 | 2027-04-28 | CC-SS-GF245 | Barbender [7800 h]; Helper [3900 h]; Physical Progress [5960 h]; Reinforcement Steel [117 MT1]; TATA Projects Ltd-25 | 11,291,962.5 |
| CC-SS-1stM.25 |  | LPS | 1d | 2027-04-28 | 2027-04-29 | CC-SS-1stM.10 | LPS [39529 INR]; Physical Progress [1490 h]; TATA Projects Ltd-25 | 39,529 |
| CC-SS-1stM.35 |  | Shuttering | 4d | 2027-04-29 | 2027-05-05 | CC-SS-1stM.10, CC-SS-1stM.25 | Carpenter [3400 h]; Helper [1700 h]; Physical Progress [5960 h]; Formwork [2036 Sq m]; TATA Projects Ltd-25 | 2,372,265.76 |
| CC-SS-1stM.60 |  | Concrete | 1d | 2027-05-05 | 2027-05-06 | CC-SS-1stM.35 | Mason [50 h]; Helper [50 h]; Physical Progress [1490 h]; Concrete M40 [509 m3]; TATA Projects Ltd-25 | 5,022,303 |
|  | 3 | **Staircase** |  | 2027-04-23 | 2027-05-13 |  |  |  |
| CC-SS-1stM.15 |  | Reinforcement of wall upto Flight 1 | 2d | 2027-04-23 | 2027-04-26 | CC-SS-GF245 | Barbender [70 h]; Helper [40 h]; Physical Progress [2980 h]; Reinforcement Steel [1 MT1]; TATA Projects Ltd-25 | 96,512.5 |
| CC-SS-1stM.20 |  | Shuttering of wall upto Flight 1 | 2d | 2027-04-26 | 2027-04-28 | CC-SS-1stM.15 | Carpenter [20 h]; Helper [10 h]; Physical Progress [2980 h]; Formwork [10 Sq m]; TATA Projects Ltd-25 | 11,651.6 |
| CC-SS-1stM.30 |  | Casting of wall upto Flight 1 | 1d | 2027-04-28 | 2027-04-29 | CC-SS-1stM.20 | Mason; Helper; Physical Progress [1490 h]; Concrete M40 [3 m3]; TATA Projects Ltd-25 | 29,601 |
| CC-SS-1stM.40 |  | Shuttering of Staircase upto Flight 1 | 1d | 2027-04-29 | 2027-04-30 | CC-SS-1stM.30 | Carpenter [20 h]; Helper [10 h]; Physical Progress [1490 h]; Formwork [10 Sq m]; TATA Projects Ltd-25 | 11,651.6 |
| CC-SS-1stM.45 |  | Reinforcement of Staircase upto Flight 1 | 1d | 2027-04-30 | 2027-05-03 | CC-SS-1stM.40 | Barbender [70 h]; Helper [40 h]; Physical Progress [1490 h]; Reinforcement Steel [1 MT1]; TATA Projects Ltd-25 | 96,512.5 |
| CC-SS-1stM.50 |  | MEP coordination upto Flight 1 | 1d | 2027-05-03 | 2027-05-04 | CC-SS-1stM.45 | Physical Progress [1490 h]; TATA Projects Ltd-25 |  |
| CC-SS-1stM.55 |  | Casting of Staircase upto Flight 1 | 1d | 2027-05-04 | 2027-05-05 | CC-SS-1stM.50 | Mason; Helper; Physical Progress [1490 h]; Concrete M40 [3 m3]; TATA Projects Ltd-25 | 29,601 |
| CC-SS-1stM.65 |  | Reinforcement of wall upto Flight 2 | 2d | 2027-05-05 | 2027-05-07 | CC-SS-1stM.55 | Barbender [70 h]; Helper [40 h]; Physical Progress [2980 h]; Reinforcement Steel [1 MT1]; TATA Projects Ltd-25 | 96,512.5 |
| CC-SS-1stM.75 |  | Shuttering of wall upto Flight 2 | 2d | 2027-05-07 | 2027-05-10 | CC-SS-1stM.65 | Carpenter [20 h]; Helper [10 h]; Physical Progress [2980 h]; Formwork [10 Sq m]; TATA Projects Ltd-25 | 11,651.6 |
| CC-SS-1stM.80 |  | Casting of wall upto Flight 2 | 1d | 2027-05-10 | 2027-05-11 | CC-SS-1stM.75 | Mason; Helper; Physical Progress [1490 h]; Concrete M40 [3 m3]; TATA Projects Ltd-25 | 29,601 |
| CC-SS-1stM.85 |  | Shuttering of Staircase upto Flight 2 | 1d | 2027-05-11 | 2027-05-12 | CC-SS-1stM.80 | Carpenter [20 h]; Helper [10 h]; Physical Progress [1490 h]; Formwork [10 Sq m]; TATA Projects Ltd-25 | 11,651.6 |
| CC-SS-1stM.90 |  | Reinforcement of Staircase upto Flight 2 | 1d | 2027-05-12 | 2027-05-13 | CC-SS-1stM.85 | Barbender [70 h]; Helper [40 h]; Physical Progress [1490 h]; Reinforcement Steel [1 MT1]; TATA Projects Ltd-25 | 96,512.5 |

| ID | WBS | Activity | Duration | Start | Finish | Predecessors | Resources | Cost |
| --- | --- | --- | --- | --- | --- | --- | --- | --- |
|  | 2 | **Slab** |  | 2027-05-06 | 2027-06-05 |  |  |  |
| CC-SS-1stM.70 |  | Shuttering | 5d | 2027-05-06 | 2027-05-12 | CC-SS-1stM.60 | Carpenter [2750 h]; Helper [1380 h]; Physical Progress [8940 h]; Formwork [1650 Sq m]; TATA Projects Ltd-25 | 1,922,514 |
| CC-SS-1stM.95 |  | Reinforcement Bottom Net with chairs | 3d | 2027-05-12 | 2027-05-15 | CC-SS-1stM.70 | Barbender [1000 h]; Helper [500 h]; Physical Progress [4470 h]; Reinforcement Steel [15 MT1]; TATA Projects Ltd-25 | 1,447,687.5 |
| CC-SS-1stM.125 |  | Laying of PT Tendon | 3d | 2027-05-15 | 2027-05-19 | CC-SS-1stM.95 | Physical Progress [5960 h]; TATA Projects Ltd-25 |  |
| CC-SS-1stM.180 |  | Reinforcement Top Net | 2d | 2027-05-19 | 2027-05-21 | CC-SS-1stM.125 | Barbender [1000 h]; Helper [500 h]; Physical Progress [2980 h]; Reinforcement Steel [15 MT1]; TATA Projects Ltd-25 | 1,447,687.5 |
| CC-SS-1stM.220 |  | MEP Coordination | 1d | 2027-05-21 | 2027-05-22 | CC-SS-1stM.95, CC-SS-1stM.180, CC-SS-1stM.90 | Physical Progress [1490 h]; TATA Projects Ltd-25 |  |
| CC-SS-1stM.245 |  | Concrete of Slab | 1d | 2027-05-22 | 2027-05-24 | CC-SS-1stM.220 | Mason [50 h]; Helper [50 h]; Physical Progress [1490 h]; Concrete M40 [412 m3]; TATA Projects Ltd-25 | 4,065,204 |
| CC-SS-1stM.265 |  | Wait for Strength Gain | 6d | 2027-05-24 | 2027-05-31 | CC-SS-1stM.245 | Physical Progress [8940 h]; TATA Projects Ltd-25 |  |
| CC-SS-1stM.345 |  | PT Work | 5d | 2027-05-31 | 2027-06-05 | CC-SS-1stM.265, CC-SS-GF345 | PT [10 MT1]; Helper [100 h]; PT Fitter [100 h]; Physical Progress [11920 h]; TATA Projects Ltd-25 | 1,900,000 |
|  | 3 | **Pour 3** |  | 2027-05-11 | 2027-06-17 |  |  |  |
|  | 1 | **Column, Core Wall, Shear Wall** |  | 2027-05-11 | 2027-05-22 |  |  |  |
| CC-SS-1stM.100 |  | Reinforcement | 4d | 2027-05-11 | 2027-05-15 | CC-SS-GF395 | Barbender [4600 h]; Helper [2300 h]; Physical Progress [5960 h]; Reinforcement Steel [69 MT1]; TATA Projects Ltd-25 | 6,659,362.5 |
| CC-SS-1stM.135 |  | LPS | 1d | 2027-05-15 | 2027-05-17 | CC-SS-1stM.100 | LPS [39529 INR]; Physical Progress [1490 h]; TATA Projects Ltd-25 | 39,529 |
| CC-SS-1stM.150 |  | Shuttering | 4d | 2027-05-17 | 2027-05-21 | CC-SS-1stM.100, CC-SS-1stM.135 | Carpenter [1990 h]; Helper [1000 h]; Physical Progress [5960 h]; Formwork [1189 Sq m]; TATA Projects Ltd-25 | 1,385,375.24 |
| CC-SS-1stM.225 |  | Concrete | 1d | 2027-05-21 | 2027-05-22 | CC-SS-1stM.150 | Mason [50 h]; Helper [50 h]; Physical Progress [1490 h]; Concrete M40 [297 m3]; TATA Projects Ltd-25 | 2,930,499 |
|  | 4 | **Staircase** |  | 2027-05-11 | 2027-05-29 |  |  |  |
| CC-SS-1stM.105 |  | Reinforcement of wall upto Flight 1 | 2d | 2027-05-11 | 2027-05-13 | CC-SS-GF395 | Barbender [70 h]; Helper [40 h]; Physical Progress [2980 h]; Reinforcement Steel [1 MT1]; TATA Projects Ltd-25 | 96,512.5 |
| CC-SS-1stM.110 |  | Shuttering of wall upto Flight 1 | 2d | 2027-05-13 | 2027-05-15 | CC-SS-1stM.105 | Carpenter [20 h]; Helper [10 h]; Physical Progress [2980 h]; Formwork [10 Sq m]; TATA Projects Ltd-25 | 11,651.6 |
| CC-SS-1stM.140 |  | Casting of wall upto Flight 1 | 1d | 2027-05-15 | 2027-05-17 | CC-SS-1stM.110 | Mason; Helper; Physical Progress [1490 h]; Concrete M40 [3 m3]; TATA Projects Ltd-25 | 29,601 |
| CC-SS-1stM.155 |  | Shuttering of Staircase upto Flight 1 | 1d | 2027-05-17 | 2027-05-18 | CC-SS-1stM.140 | Carpenter [20 h]; Helper [10 h]; Physical Progress [1490 h]; Formwork [10 Sq m]; TATA Projects Ltd-25 | 11,651.6 |
| CC-SS-1stM.165 |  | Reinforcement of Staircase upto Flight 1 | 1d | 2027-05-18 | 2027-05-19 | CC-SS-1stM.155 | Barbender [70 h]; Helper [40 h]; Physical Progress [1490 h]; Reinforcement Steel [1 MT1]; TATA Projects Ltd-25 | 96,512.5 |
| CC-SS-1stM.185 |  | MEP coordination upto Flight 1 | 1d | 2027-05-19 | 2027-05-20 | CC-SS-1stM.165 | Physical Progress [1490 h]; TATA Projects Ltd-25 |  |
| CC-SS-1stM.205 |  | Casting of Staircase upto Flight 1 | 1d | 2027-05-20 | 2027-05-21 | CC-SS-1stM.185 | Mason; Helper; Physical Progress [1490 h]; Concrete M40 [3 m3]; TATA Projects Ltd-25 | 29,601 |
| CC-SS-1stM.230 |  | Reinforcement of wall upto Flight 2 | 2d | 2027-05-21 | 2027-05-24 | CC-SS-1stM.205 | Barbender [70 h]; Helper [40 h]; Physical Progress [2980 h]; Reinforcement Steel [1 MT1]; TATA Projects Ltd-25 | 96,512.5 |
| CC-SS-1stM.270 |  | Shuttering of wall upto Flight 2 | 2d | 2027-05-24 | 2027-05-26 | CC-SS-1stM.230 | Carpenter [20 h]; Helper [10 h]; Physical Progress [2980 h]; Formwork [10 Sq m]; TATA Projects Ltd-25 | 11,651.6 |
| CC-SS-1stM.300 |  | Casting of wall upto Flight 2 | 1d | 2027-05-26 | 2027-05-27 | CC-SS-1stM.270 | Mason; Helper; Physical Progress [1490 h]; Concrete M40 [3 m3]; TATA Projects Ltd-25 | 29,601 |
| CC-SS-1stM.310 |  | Shuttering of Staircase upto Flight 2 | 1d | 2027-05-27 | 2027-05-28 | CC-SS-1stM.300 | Carpenter [20 h]; Helper [10 h]; Physical Progress [1490 h]; Formwork [10 Sq m]; TATA Projects Ltd-25 | 11,651.6 |
| CC-SS-1stM.320 |  | Reinforcement of Staircase upto Flight 2 | 1d | 2027-05-28 | 2027-05-29 | CC-SS-1stM.310 | Barbender [70 h]; Helper [40 h]; Physical Progress [1490 h]; Reinforcement Steel [1 MT1]; TATA Projects Ltd-25 | 96,512.5 |

| ID | WBS | Activity | Duration | Start | Finish | Predecessors | Resources | Cost |
| --- | --- | --- | --- | --- | --- | --- | --- | --- |
|  | 2 | **Slab** |  | 2027-05-22 | 2027-06-17 |  |  |  |
| CC-SS-1stM.250 |  | Shuttering | 4d | 2027-05-22 | 2027-05-27 | CC-SS-1stM.225 | Carpenter [1610 h]; Helper [810 h]; Physical Progress [8940 h]; Formwork [964 Sq m]; TATA Projects Ltd-25 | 1,123,214.24 |
| CC-SS-1stM.330 |  | Reinforcement Bottom Net with chairs | 2d | 2027-05-27 | 2027-05-29 | CC-SS-1stM.250 | Barbender [600 h]; Helper [300 h]; Physical Progress [4470 h]; Reinforcement Steel [9 MT1]; TATA Projects Ltd-25 | 868,612.5 |
| CC-SS-1stM.370 |  | Laying of PT Tendon | 2d | 2027-05-29 | 2027-06-01 | CC-SS-1stM.330 | Physical Progress [5960 h]; TATA Projects Ltd-25 |  |
| CC-SS-1stM.380 |  | Reinforcement Top Net | 2d | 2027-06-01 | 2027-06-03 | CC-SS-1stM.370 | Barbender [600 h]; Helper [300 h]; Physical Progress [2980 h]; Reinforcement Steel [9 MT1]; TATA Projects Ltd-25 | 868,612.5 |
| CC-SS-1stM.385 |  | MEP Coordination | 1d | 2027-06-03 | 2027-06-04 | CC-SS-1stM.330, CC-SS-1stM.380, CC-SS-1stM.320 | Physical Progress [1490 h]; TATA Projects Ltd-25 |  |
| CC-SS-1stM.395 |  | Concrete of Slab | 1d | 2027-06-04 | 2027-06-05 | CC-SS-1stM.385 | Mason [50 h]; Helper [50 h]; Physical Progress [1490 h]; Concrete M40 [241 m3]; TATA Projects Ltd-25 | 2,377,947 |
| CC-SS-1stM.400 |  | Wait for Strength Gain | 6d | 2027-06-05 | 2027-06-12 | CC-SS-1stM.395 | Physical Progress [8940 h]; TATA Projects Ltd-25 |  |
| CC-SS-1stM.420 |  | PT Work | 4d | 2027-06-12 | 2027-06-17 | CC-SS-1stM.400 | PT [6 MT1]; Helper [100 h]; PT Fitter [100 h]; Physical Progress [11920 h]; TATA Projects Ltd-25 | 1,140,000 |
|  | 4 | **Second Mezanine** |  | 2027-05-24 | 2027-11-05 |  |  |  |
|  | 2 | **Pour 1** |  | 2027-05-29 | 2027-08-02 |  |  |  |
|  | 1 | **Column, Core Wall, Shear Wall - First Lift** |  | 2027-05-29 | 2027-06-10 |  |  |  |
| CC-SS-2ndM.640 |  | Reinforcement | 4d | 2027-05-29 | 2027-06-03 | CC-SS-1stM.410 | Barbender [2540 h]; Helper [1270 h]; Physical Progress [5960 h]; Reinforcement Steel [38 MT1]; TATA Projects Ltd-25 | 3,667,475 |
| CC-SS-2ndM.655 |  | LPS | 1d | 2027-06-03 | 2027-06-04 | CC-SS-2ndM.640 | LPS [39529 INR]; Physical Progress [1490 h]; TATA Projects Ltd-25 | 39,529 |
| CC-SS-2ndM.645 |  | Shuttering | 4d | 2027-06-04 | 2027-06-09 | CC-SS-2ndM.640, CC-SS-2ndM.655 | Carpenter [1020 h]; Helper [510 h]; Physical Progress [5960 h]; Formwork [611 Sq m]; TATA Projects Ltd-25 | 711,912.76 |
| CC-SS-2ndM.650 |  | Concrete | 1d | 2027-06-09 | 2027-06-10 | CC-SS-2ndM.645 | Mason [50 h]; Helper [50 h]; Physical Progress [1490 h]; Concrete M40 [153 m3]; TATA Projects Ltd-25 | 1,509,651 |
|  | 5 | **Column, Core Wall, Shear Wall - Second Lift** |  | 2027-06-10 | 2027-06-22 |  |  |  |
| CC-SS-2ndM.10 |  | Reinforcement | 4d | 2027-06-10 | 2027-06-15 | CC-SS-2ndM.650, E-GFC-ST-CC-105 | Barbender [2540 h]; Helper [1270 h]; Physical Progress [5960 h]; Reinforcement Steel [38 MT1]; TATA Projects Ltd-25 | 3,667,475 |
| CC-SS-2ndM.25 |  | LPS | 1d | 2027-06-15 | 2027-06-16 | CC-SS-2ndM.10 | LPS [39529 INR]; Physical Progress [1490 h]; TATA Projects Ltd-25 | 39,529 |
| CC-SS-2ndM.15 |  | Shuttering | 4d | 2027-06-16 | 2027-06-21 | CC-SS-2ndM.10, CC-SS-2ndM.25 | Carpenter [1020 h]; Helper [510 h]; Physical Progress [5960 h]; Formwork [611 Sq m]; TATA Projects Ltd-25 | 711,912.76 |
| CC-SS-2ndM.20 |  | Concrete | 1d | 2027-06-21 | 2027-06-22 | CC-SS-2ndM.15 | Mason [50 h]; Helper [50 h]; Physical Progress [1490 h]; Concrete M40 [153 m3]; TATA Projects Ltd-25 | 1,509,651 |
|  | 3 | **Staircase - 1** |  | 2027-05-29 | 2027-07-10 |  |  |  |
| CC-SS-2ndM.100 |  | Reinforcement of wall upto Flight 1 | 2d | 2027-05-29 | 2027-06-01 | CC-SS-1stM.410 | Barbender [70 h]; Helper [40 h]; Physical Progress [2980 h]; Reinforcement Steel [1 MT1]; TATA Projects Ltd-25 | 96,512.5 |
| CC-SS-2ndM.105 |  | Shuttering of wall upto Flight 1 | 2d | 2027-06-01 | 2027-06-03 | CC-SS-2ndM.100 | Carpenter [20 h]; Helper [10 h]; Physical Progress [2980 h]; Formwork [10 Sq m]; TATA Projects Ltd-25 | 11,651.6 |
| CC-SS-2ndM.110 |  | Casting of wall upto Flight 1 | 1d | 2027-06-03 | 2027-06-04 | CC-SS-2ndM.105 | Mason; Helper; Physical Progress [1490 h]; Concrete M40 [3 m3]; TATA Projects Ltd-25 | 29,601 |
| CC-SS-2ndM.120 |  | Shuttering of Staircase upto Flight 1 | 1d | 2027-06-04 | 2027-06-05 | CC-SS-2ndM.110 | Carpenter [20 h]; Helper [10 h]; Physical Progress [1490 h]; Formwork [10 Sq m]; TATA Projects Ltd-25 | 11,651.6 |
| CC-SS-2ndM.115 |  | Reinforcement of Staircase upto Flight 1 | 1d | 2027-06-05 | 2027-06-07 | CC-SS-2ndM.120 | Barbender [70 h]; Helper [40 h]; Physical Progress [1490 h]; Reinforcement Steel [1 MT1]; TATA Projects Ltd-25 | 96,512.5 |
| CC-SS-2ndM.155 |  | MEP coordination upto Flight 1 | 1d | 2027-06-07 | 2027-06-08 | CC-SS-2ndM.115 | Physical Progress [1490 h]; TATA Projects Ltd-25 |  |
| CC-SS-2ndM.125 |  | Casting of Staircase upto Flight 1 | 1d | 2027-06-08 | 2027-06-09 | CC-SS-2ndM.155 | Mason; Helper; Physical Progress [1490 h]; Concrete M40 [3 m3]; TATA Projects Ltd-25 | 29,601 |
| CC-SS-2ndM.130 |  | Reinforcement of wall upto Flight 2 | 2d | 2027-06-09 | 2027-06-11 | CC-SS-2ndM.125 | Barbender [70 h]; Helper [40 h]; Physical Progress [2980 h]; Reinforcement Steel [1 MT1]; TATA Projects Ltd-25 | 96,512.5 |
| CC-SS-2ndM.135 |  | Shuttering of wall upto Flight 2 | 2d | 2027-06-11 | 2027-06-14 | CC-SS-2ndM.130 | Carpenter [20 h]; Helper [10 h]; Physical Progress [2980 h]; Formwork [10 Sq m]; TATA Projects Ltd-25 | 11,651.6 |
| CC-SS-2ndM.140 |  | Casting of wall upto Flight 2 | 1d | 2027-06-14 | 2027-06-15 | CC-SS-2ndM.135 | Mason; Helper; Physical Progress [1490 h]; Concrete M40 [3 m3]; TATA Projects Ltd-25 | 29,601 |
| CC-SS-2ndM.150 |  | Shuttering of Staircase upto Flight 2 | 1d | 2027-06-15 | 2027-06-16 | CC-SS-2ndM.140 | Carpenter [20 h]; Helper [10 h]; Physical Progress [1490 h]; Formwork [10 Sq m]; TATA Projects Ltd-25 | 11,651.6 |
| CC-SS-2ndM.205 |  | Reinforcement of Staircase upto Flight 2 | 1d | 2027-06-16 | 2027-06-17 | CC-SS-2ndM.150 | Barbender [70 h]; Helper [40 h]; Physical Progress [1490 h]; Reinforcement Steel [1 MT1]; TATA Projects Ltd-25 | 96,512.5 |
| CC-SS-2ndM.225 |  | MEP coordination upto Flight 2 | 1d | 2027-06-17 | 2027-06-18 | CC-SS-2ndM.205 | Physical Progress [1490 h]; TATA Projects Ltd-25 |  |
| CC-SS-2ndM.185 |  | Casting of Staircase upto Flight 2 | 1d | 2027-06-18 | 2027-06-19 | CC-SS-2ndM.225 | Mason; Helper; Physical Progress [1490 h]; Concrete M40 [3 m3]; TATA Projects Ltd-25 | 29,601 |
| CC-SS-2ndM.160 |  | Reinforcement of wall upto Flight 3 | 2d | 2027-06-19 | 2027-06-22 | CC-SS-2ndM.185 | Barbender [70 h]; Helper [40 h]; Physical Progress [2980 h]; Reinforcement Steel [1 MT1]; TATA Projects Ltd-25 | 96,512.5 |
| CC-SS-2ndM.165 |  | Shuttering of wall upto Flight 3 | 2d | 2027-06-22 | 2027-06-24 | CC-SS-2ndM.160 | Carpenter [20 h]; Helper [10 h]; Physical Progress [2980 h]; Formwork [10 Sq m]; TATA Projects Ltd-25 | 11,651.6 |
| CC-SS-2ndM.170 |  | Casting of wall upto Flight 3 | 1d | 2027-06-24 | 2027-06-25 | CC-SS-2ndM.165 | Mason; Helper; Physical Progress [1490 h]; Concrete M40 [3 m3]; TATA Projects Ltd-25 | 29,601 |
| CC-SS-2ndM.180 |  | Shuttering of Staircase upto Flight 3 | 1d | 2027-06-25 | 2027-06-26 | CC-SS-2ndM.170 | Carpenter [20 h]; Helper [10 h]; Physical Progress [1490 h]; Formwork [10 Sq m]; TATA Projects Ltd-25 | 11,651.6 |
| CC-SS-2ndM.175 |  | Reinforcement of Staircase upto Flight 3 | 1d | 2027-06-26 | 2027-06-28 | CC-SS-2ndM.180 | Barbender [70 h]; Helper [40 h]; Physical Progress [1490 h]; Reinforcement Steel [1 MT1]; TATA Projects Ltd-25 | 96,512.5 |
| CC-SS-2ndM.215 |  | MEP coordination upto Flight 3 | 1d | 2027-06-28 | 2027-06-29 | CC-SS-2ndM.175 | Physical Progress [1490 h]; TATA Projects Ltd-25 |  |
| CC-SS-2ndM.220 |  | Casting of Staircase upto Flight 3 | 1d | 2027-06-29 | 2027-06-30 | CC-SS-2ndM.215 | Mason; Helper; Physical Progress [1490 h]; Concrete M40 [3 m3]; TATA Projects Ltd-25 | 29,601 |
| CC-SS-2ndM.190 |  | Reinforcement of wall upto Flight 4 | 2d | 2027-06-30 | 2027-07-02 | CC-SS-2ndM.220 | Barbender [70 h]; Helper [40 h]; Physical Progress [2980 h]; Reinforcement Steel [1 MT1]; TATA Projects Ltd-25 | 96,512.5 |
| CC-SS-2ndM.195 |  | Shuttering of wall upto Flight 4 | 2d | 2027-07-02 | 2027-07-05 | CC-SS-2ndM.190 | Carpenter [20 h]; Helper [10 h]; Physical Progress [2980 h]; Formwork [10 Sq m]; TATA Projects Ltd-25 | 11,651.6 |
| CC-SS-2ndM.200 |  | Casting of wall upto Flight 4 | 1d | 2027-07-05 | 2027-07-07 | CC-SS-2ndM.195 | Mason; Helper; Physical Progress [1490 h]; Concrete M40 [3 m3]; TATA Projects Ltd-25 | 29,601 |
| CC-SS-2ndM.210 |  | Shuttering of Staircase upto Flight 4 | 1d | 2027-07-07 | 2027-07-09 | CC-SS-2ndM.200 | Carpenter [20 h]; Helper [10 h]; Physical Progress [1490 h]; Formwork [10 Sq m]; TATA Projects Ltd-25 | 11,651.6 |
| CC-SS-2ndM.145 |  | Reinforcement of Staircase upto Flight 4 | 1d | 2027-07-09 | 2027-07-10 | CC-SS-2ndM.210 | Barbender [70 h]; Helper [40 h]; Physical Progress [1490 h]; Reinforcement Steel [1 MT1]; TATA Projects Ltd-25 | 96,512.5 |

| ID | WBS | Activity | Duration | Start | Finish | Predecessors | Resources | Cost |
| --- | --- | --- | --- | --- | --- | --- | --- | --- |
|  | 4 | **Staircase - 2** |  | 2027-05-29 | 2027-07-10 |  |  |  |
| CC-SS-2ndM.230 |  | Reinforcement of wall upto Flight 1 | 2d | 2027-05-29 | 2027-06-01 | CC-SS-1stM.410 | Barbender [70 h]; Helper [40 h]; Physical Progress [2980 h]; Reinforcement Steel [1 MT1]; TATA Projects Ltd-25 | 96,512.5 |
| CC-SS-2ndM.235 |  | Shuttering of wall upto Flight 1 | 2d | 2027-06-01 | 2027-06-03 | CC-SS-2ndM.230 | Carpenter [20 h]; Helper [10 h]; Physical Progress [2980 h]; Formwork [10 Sq m]; TATA Projects Ltd-25 | 11,651.6 |
| CC-SS-2ndM.240 |  | Casting of wall upto Flight 1 | 1d | 2027-06-03 | 2027-06-04 | CC-SS-2ndM.235 | Mason; Helper; Physical Progress [1490 h]; Concrete M40 [3 m3]; TATA Projects Ltd-25 | 29,601 |
| CC-SS-2ndM.250 |  | Shuttering of Staircase upto Flight 1 | 1d | 2027-06-04 | 2027-06-05 | CC-SS-2ndM.240 | Carpenter [20 h]; Helper [10 h]; Physical Progress [1490 h]; Formwork [10 Sq m]; TATA Projects Ltd-25 | 11,651.6 |
| CC-SS-2ndM.245 |  | Reinforcement of Staircase upto Flight 1 | 1d | 2027-06-05 | 2027-06-07 | CC-SS-2ndM.250 | Barbender [70 h]; Helper [40 h]; Physical Progress [1490 h]; Reinforcement Steel [1 MT1]; TATA Projects Ltd-25 | 96,512.5 |
| CC-SS-2ndM.285 |  | MEP coordination upto Flight 1 | 1d | 2027-06-07 | 2027-06-08 | CC-SS-2ndM.245 | Physical Progress [1490 h]; TATA Projects Ltd-25 |  |
| CC-SS-2ndM.255 |  | Casting of Staircase upto Flight 1 | 1d | 2027-06-08 | 2027-06-09 | CC-SS-2ndM.285 | Mason; Helper; Physical Progress [1490 h]; Concrete M40 [3 m3]; TATA Projects Ltd-25 | 29,601 |
| CC-SS-2ndM.260 |  | Reinforcement of wall upto Flight 2 | 2d | 2027-06-09 | 2027-06-11 | CC-SS-2ndM.255 | Barbender [70 h]; Helper [40 h]; Physical Progress [2980 h]; Reinforcement Steel [1 MT1]; TATA Projects Ltd-25 | 96,512.5 |
| CC-SS-2ndM.265 |  | Shuttering of wall upto Flight 2 | 2d | 2027-06-11 | 2027-06-14 | CC-SS-2ndM.260 | Carpenter [20 h]; Helper [10 h]; Physical Progress [2980 h]; Formwork [10 Sq m]; TATA Projects Ltd-25 | 11,651.6 |
| CC-SS-2ndM.270 |  | Casting of wall upto Flight 2 | 1d | 2027-06-14 | 2027-06-15 | CC-SS-2ndM.265 | Mason; Helper; Physical Progress [1490 h]; Concrete M40 [3 m3]; TATA Projects Ltd-25 | 29,601 |
| CC-SS-2ndM.280 |  | Shuttering of Staircase upto Flight 2 | 1d | 2027-06-15 | 2027-06-16 | CC-SS-2ndM.270 | Carpenter [20 h]; Helper [10 h]; Physical Progress [1490 h]; Formwork [10 Sq m]; TATA Projects Ltd-25 | 11,651.6 |
| CC-SS-2ndM.335 |  | Reinforcement of Staircase upto Flight 2 | 1d | 2027-06-16 | 2027-06-17 | CC-SS-2ndM.280 | Barbender [70 h]; Helper [40 h]; Physical Progress [1490 h]; Reinforcement Steel [1 MT1]; TATA Projects Ltd-25 | 96,512.5 |
| CC-SS-2ndM.355 |  | MEP coordination upto Flight 2 | 1d | 2027-06-17 | 2027-06-18 | CC-SS-2ndM.335 | Physical Progress [1490 h]; TATA Projects Ltd-25 |  |
| CC-SS-2ndM.315 |  | Casting of Staircase upto Flight 2 | 1d | 2027-06-18 | 2027-06-19 | CC-SS-2ndM.355 | Mason; Helper; Physical Progress [1490 h]; Concrete M40 [3 m3]; TATA Projects Ltd-25 | 29,601 |
| CC-SS-2ndM.290 |  | Reinforcement of wall upto Flight 3 | 2d | 2027-06-19 | 2027-06-22 | CC-SS-2ndM.315 | Barbender [70 h]; Helper [40 h]; Physical Progress [2980 h]; Reinforcement Steel [1 MT1]; TATA Projects Ltd-25 | 96,512.5 |
| CC-SS-2ndM.295 |  | Shuttering of wall upto Flight 3 | 2d | 2027-06-22 | 2027-06-24 | CC-SS-2ndM.290 | Carpenter [20 h]; Helper [10 h]; Physical Progress [2980 h]; Formwork [10 Sq m]; TATA Projects Ltd-25 | 11,651.6 |
| CC-SS-2ndM.300 |  | Casting of wall upto Flight 3 | 1d | 2027-06-24 | 2027-06-25 | CC-SS-2ndM.295 | Mason; Helper; Physical Progress [1490 h]; Concrete M40 [3 m3]; TATA Projects Ltd-25 | 29,601 |
| CC-SS-2ndM.310 |  | Shuttering of Staircase upto Flight 3 | 1d | 2027-06-25 | 2027-06-26 | CC-SS-2ndM.300 | Carpenter [20 h]; Helper [10 h]; Physical Progress [1490 h]; Formwork [10 Sq m]; TATA Projects Ltd-25 | 11,651.6 |
| CC-SS-2ndM.305 |  | Reinforcement of Staircase upto Flight 3 | 1d | 2027-06-26 | 2027-06-28 | CC-SS-2ndM.310 | Barbender [70 h]; Helper [40 h]; Physical Progress [1490 h]; Reinforcement Steel [1 MT1]; TATA Projects Ltd-25 | 96,512.5 |
| CC-SS-2ndM.345 |  | MEP coordination upto Flight 3 | 1d | 2027-06-28 | 2027-06-29 | CC-SS-2ndM.305 | Physical Progress [1490 h]; TATA Projects Ltd-25 |  |
| CC-SS-2ndM.350 |  | Casting of Staircase upto Flight 3 | 1d | 2027-06-29 | 2027-06-30 | CC-SS-2ndM.345 | Mason; Helper; Physical Progress [1490 h]; Concrete M40 [3 m3]; TATA Projects Ltd-25 | 29,601 |
| CC-SS-2ndM.320 |  | Reinforcement of wall upto Flight 4 | 2d | 2027-06-30 | 2027-07-02 | CC-SS-2ndM.350 | Barbender [70 h]; Helper [40 h]; Physical Progress [2980 h]; Reinforcement Steel [1 MT1]; TATA Projects Ltd-25 | 96,512.5 |
| CC-SS-2ndM.325 |  | Shuttering of wall upto Flight 4 | 2d | 2027-07-02 | 2027-07-05 | CC-SS-2ndM.320 | Carpenter [20 h]; Helper [10 h]; Physical Progress [2980 h]; Formwork [10 Sq m]; TATA Projects Ltd-25 | 11,651.6 |
| CC-SS-2ndM.330 |  | Casting of wall upto Flight 4 | 1d | 2027-07-05 | 2027-07-07 | CC-SS-2ndM.325 | Mason; Helper; Physical Progress [1490 h]; Concrete M40 [3 m3]; TATA Projects Ltd-25 | 29,601 |
| CC-SS-2ndM.340 |  | Shuttering of Staircase upto Flight 4 | 1d | 2027-07-07 | 2027-07-09 | CC-SS-2ndM.330 | Carpenter [20 h]; Helper [10 h]; Physical Progress [1490 h]; Formwork [10 Sq m]; TATA Projects Ltd-25 | 11,651.6 |
| CC-SS-2ndM.275 |  | Reinforcement of Staircase upto Flight 4 | 1d | 2027-07-09 | 2027-07-10 | CC-SS-2ndM.340 | Barbender [70 h]; Helper [40 h]; Physical Progress [1490 h]; Reinforcement Steel [1 MT1]; TATA Projects Ltd-25 | 96,512.5 |

| ID | WBS | Activity | Duration | Start | Finish | Predecessors | Resources | Cost |
| --- | --- | --- | --- | --- | --- | --- | --- | --- |
|  | 2 | **Slab** |  | 2027-06-22 | 2027-08-02 |  |  |  |
| CC-SS-2ndM.660 |  | Shuttering | 5d | 2027-06-22 | 2027-06-28 | CC-SS-2ndM.650, CC-SS-2ndM.20 | Carpenter [3610 h]; Helper [1810 h]; Physical Progress [8940 h]; Formwork [2165 Sq m]; TATA Projects Ltd-25 | 2,522,571.4 |
| CC-SS-2ndM.665 |  | Reinforcement Bottom Net with chairs | 3d | 2027-06-28 | 2027-07-01 | CC-SS-2ndM.660 | Barbender [940 h]; Helper [470 h]; Physical Progress [4470 h]; Reinforcement Steel [14 MT1]; TATA Projects Ltd-25 | 1,351,175 |
| CC-SS-2ndM.690 |  | Laying of PT Tendon | 3d | 2027-07-01 | 2027-07-05 | CC-SS-2ndM.665 | Physical Progress [5960 h]; TATA Projects Ltd-25 |  |
| CC-SS-2ndM.695 |  | Reinforcement Top Net | 2d | 2027-07-05 | 2027-07-09 | CC-SS-2ndM.690 | Barbender [940 h]; Helper [470 h]; Physical Progress [2980 h]; Reinforcement Steel [14 MT1]; TATA Projects Ltd-25 | 1,351,175 |
| CC-SS-2ndM.670 |  | MEP Coordination | 1d | 2027-07-10 | 2027-07-12 | CC-SS-2ndM.665, CC-SS-2ndM.695, CC-SS-2ndM.145, CC-SS-2ndM.275 | Physical Progress [1490 h]; TATA Projects Ltd-25 |  |
| CC-SS-2ndM.675 |  | Concrete of Slab | 1d | 2027-07-12 | 2027-07-14 | CC-SS-2ndM.670 | Mason [50 h]; Helper [50 h]; Physical Progress [1490 h]; Concrete M40 [352 m3]; TATA Projects Ltd-25 | 3,473,184 |
| CC-SS-2ndM.680 |  | Wait for Strength Gain | 6d | 2027-07-14 | 2027-07-24 | CC-SS-2ndM.675 | Physical Progress [8940 h]; TATA Projects Ltd-25 |  |
| CC-SS-2ndM.685 |  | PT Work | 5d | 2027-07-24 | 2027-08-02 | CC-SS-2ndM.680, CC-SS-1stM.425 | PT [7 MT1]; Helper [100 h]; PT Fitter [100 h]; Physical Progress [11920 h]; TATA Projects Ltd-25 | 1,330,000 |
|  | 4 | **Pour 2** |  | 2027-05-24 | 2027-07-24 |  |  |  |
|  | 1 | **Column, Core Wall, Shear Wall - First Lift** |  | 2027-05-24 | 2027-06-04 |  |  |  |
| CC-SS-2ndM.700 |  | Reinforcement | 4d | 2027-05-24 | 2027-05-28 | CC-SS-1stM.245, CC-SS-B01.1010 | Barbender [3140 h]; Helper [1570 h]; Physical Progress [5960 h]; Reinforcement Steel [47 MT1]; TATA Projects Ltd-25 | 4,536,087.5 |
| CC-SS-2ndM.715 |  | LPS | 1d | 2027-05-28 | 2027-05-29 | CC-SS-2ndM.700 | LPS [39529 INR]; Physical Progress [1490 h]; TATA Projects Ltd-25 | 39,529 |
| CC-SS-2ndM.705 |  | Shuttering | 4d | 2027-05-29 | 2027-06-03 | CC-SS-2ndM.700, CC-SS-2ndM.715 | Carpenter [1280 h]; Helper [640 h]; Physical Progress [5960 h]; Formwork [763 Sq m]; TATA Projects Ltd-25 | 889,017.08 |
| CC-SS-2ndM.710 |  | Concrete | 1d | 2027-06-03 | 2027-06-04 | CC-SS-2ndM.705 | Mason [50 h]; Helper [50 h]; Physical Progress [1490 h]; Concrete M40 [191 m3]; TATA Projects Ltd-25 | 1,884,597 |
|  | 5 | **Column, Core Wall, Shear Wall - Second Lift** |  | 2027-06-04 | 2027-06-16 |  |  |  |
| CC-SS-2ndM.30 |  | Reinforcement | 4d | 2027-06-04 | 2027-06-09 | CC-SS-2ndM.710 | Barbender [3140 h]; Helper [1570 h]; Physical Progress [5960 h]; Reinforcement Steel [47 MT1]; TATA Projects Ltd-25 | 4,536,087.5 |
| CC-SS-2ndM.45 |  | LPS | 1d | 2027-06-09 | 2027-06-10 | CC-SS-2ndM.30 | LPS [39529 INR]; Physical Progress [1490 h]; TATA Projects Ltd-25 | 39,529 |
| CC-SS-2ndM.35 |  | Shuttering | 4d | 2027-06-10 | 2027-06-15 | CC-SS-2ndM.30, CC-SS-2ndM.45 | Carpenter [1280 h]; Helper [640 h]; Physical Progress [5960 h]; Formwork [763 Sq m]; TATA Projects Ltd-25 | 889,017.08 |
| CC-SS-2ndM.40 |  | Concrete | 1d | 2027-06-15 | 2027-06-16 | CC-SS-2ndM.35 | Mason [50 h]; Helper [50 h]; Physical Progress [1490 h]; Concrete M40 [191 m3]; TATA Projects Ltd-25 | 1,884,597 |
|  | 3 | **Staircase** |  | 2027-05-24 | 2027-07-02 |  |  |  |
| CC-SS-2ndM.360 |  | Reinforcement of wall upto Flight 1 | 2d | 2027-05-24 | 2027-05-26 | CC-SS-1stM.245 | Barbender [70 h]; Helper [40 h]; Physical Progress [2980 h]; Reinforcement Steel [1 MT1]; TATA Projects Ltd-25 | 96,512.5 |
| CC-SS-2ndM.365 |  | Shuttering of wall upto Flight 1 | 2d | 2027-05-26 | 2027-05-28 | CC-SS-2ndM.360 | Carpenter [20 h]; Helper [10 h]; Physical Progress [2980 h]; Formwork [10 Sq m]; TATA Projects Ltd-25 | 11,651.6 |
| CC-SS-2ndM.370 |  | Casting of wall upto Flight 1 | 1d | 2027-05-28 | 2027-05-29 | CC-SS-2ndM.365 | Mason; Helper; Physical Progress [1490 h]; Concrete M40 [3 m3]; TATA Projects Ltd-25 | 29,601 |
| CC-SS-2ndM.380 |  | Shuttering of Staircase upto Flight 1 | 1d | 2027-05-29 | 2027-05-31 | CC-SS-2ndM.370 | Carpenter [20 h]; Helper [10 h]; Physical Progress [1490 h]; Formwork [10 Sq m]; TATA Projects Ltd-25 | 11,651.6 |
| CC-SS-2ndM.375 |  | Reinforcement of Staircase upto Flight 1 | 1d | 2027-05-31 | 2027-06-01 | CC-SS-2ndM.380 | Barbender [70 h]; Helper [40 h]; Physical Progress [1490 h]; Reinforcement Steel [1 MT1]; TATA Projects Ltd-25 | 96,512.5 |
| CC-SS-2ndM.415 |  | MEP coordination upto Flight 1 | 1d | 2027-06-01 | 2027-06-02 | CC-SS-2ndM.375 | Physical Progress [1490 h]; TATA Projects Ltd-25 |  |
| CC-SS-2ndM.385 |  | Casting of Staircase upto Flight 1 | 1d | 2027-06-02 | 2027-06-03 | CC-SS-2ndM.415 | Mason; Helper; Physical Progress [1490 h]; Concrete M40 [3 m3]; TATA Projects Ltd-25 | 29,601 |
| CC-SS-2ndM.390 |  | Reinforcement of wall upto Flight 2 | 2d | 2027-06-03 | 2027-06-05 | CC-SS-2ndM.385 | Barbender [70 h]; Helper [40 h]; Physical Progress [2980 h]; Reinforcement Steel [1 MT1]; TATA Projects Ltd-25 | 96,512.5 |
| CC-SS-2ndM.395 |  | Shuttering of wall upto Flight 2 | 2d | 2027-06-05 | 2027-06-08 | CC-SS-2ndM.390 | Carpenter [20 h]; Helper [10 h]; Physical Progress [2980 h]; Formwork [10 Sq m]; TATA Projects Ltd-25 | 11,651.6 |
| CC-SS-2ndM.400 |  | Casting of wall upto Flight 2 | 1d | 2027-06-08 | 2027-06-09 | CC-SS-2ndM.395 | Mason; Helper; Physical Progress [1490 h]; Concrete M40 [3 m3]; TATA Projects Ltd-25 | 29,601 |
| CC-SS-2ndM.410 |  | Shuttering of Staircase upto Flight 2 | 1d | 2027-06-09 | 2027-06-10 | CC-SS-2ndM.400 | Carpenter [20 h]; Helper [10 h]; Physical Progress [1490 h]; Formwork [10 Sq m]; TATA Projects Ltd-25 | 11,651.6 |
| CC-SS-2ndM.465 |  | Reinforcement of Staircase upto Flight 2 | 1d | 2027-06-10 | 2027-06-11 | CC-SS-2ndM.410 | Barbender [70 h]; Helper [40 h]; Physical Progress [1490 h]; Reinforcement Steel [1 MT1]; TATA Projects Ltd-25 | 96,512.5 |
| CC-SS-2ndM.485 |  | MEP coordination upto Flight 2 | 1d | 2027-06-11 | 2027-06-12 | CC-SS-2ndM.465 | Physical Progress [1490 h]; TATA Projects Ltd-25 |  |
| CC-SS-2ndM.445 |  | Casting of Staircase upto Flight 2 | 1d | 2027-06-12 | 2027-06-14 | CC-SS-2ndM.485 | Mason; Helper; Physical Progress [1490 h]; Concrete M40 [3 m3]; TATA Projects Ltd-25 | 29,601 |
| CC-SS-2ndM.420 |  | Reinforcement of wall upto Flight 3 | 2d | 2027-06-14 | 2027-06-16 | CC-SS-2ndM.445 | Barbender [70 h]; Helper [40 h]; Physical Progress [2980 h]; Reinforcement Steel [1 MT1]; TATA Projects Ltd-25 | 96,512.5 |
| CC-SS-2ndM.425 |  | Shuttering of wall upto Flight 3 | 2d | 2027-06-16 | 2027-06-18 | CC-SS-2ndM.420 | Carpenter [20 h]; Helper [10 h]; Physical Progress [2980 h]; Formwork [10 Sq m]; TATA Projects Ltd-25 | 11,651.6 |
| CC-SS-2ndM.430 |  | Casting of wall upto Flight 3 | 1d | 2027-06-18 | 2027-06-19 | CC-SS-2ndM.425 | Mason; Helper; Physical Progress [1490 h]; Concrete M40 [3 m3]; TATA Projects Ltd-25 | 29,601 |
| CC-SS-2ndM.440 |  | Shuttering of Staircase upto Flight 3 | 1d | 2027-06-19 | 2027-06-21 | CC-SS-2ndM.430 | Carpenter [20 h]; Helper [10 h]; Physical Progress [1490 h]; Formwork [10 Sq m]; TATA Projects Ltd-25 | 11,651.6 |
| CC-SS-2ndM.435 |  | Reinforcement of Staircase upto Flight 3 | 1d | 2027-06-21 | 2027-06-22 | CC-SS-2ndM.440 | Barbender [70 h]; Helper [40 h]; Physical Progress [1490 h]; Reinforcement Steel [1 MT1]; TATA Projects Ltd-25 | 96,512.5 |
| CC-SS-2ndM.475 |  | MEP coordination upto Flight 3 | 1d | 2027-06-22 | 2027-06-23 | CC-SS-2ndM.435 | Physical Progress [1490 h]; TATA Projects Ltd-25 |  |
| CC-SS-2ndM.480 |  | Casting of Staircase upto Flight 3 | 1d | 2027-06-23 | 2027-06-24 | CC-SS-2ndM.475 | Mason; Helper; Physical Progress [1490 h]; Concrete M40 [3 m3]; TATA Projects Ltd-25 | 29,601 |
| CC-SS-2ndM.450 |  | Reinforcement of wall upto Flight 4 | 2d | 2027-06-24 | 2027-06-26 | CC-SS-2ndM.480 | Barbender [70 h]; Helper [40 h]; Physical Progress [2980 h]; Reinforcement Steel [1 MT1]; TATA Projects Ltd-25 | 96,512.5 |
| CC-SS-2ndM.455 |  | Shuttering of wall upto Flight 4 | 2d | 2027-06-26 | 2027-06-29 | CC-SS-2ndM.450 | Carpenter [20 h]; Helper [10 h]; Physical Progress [2980 h]; Formwork [10 Sq m]; TATA Projects Ltd-25 | 11,651.6 |
| CC-SS-2ndM.460 |  | Casting of wall upto Flight 4 | 1d | 2027-06-29 | 2027-06-30 | CC-SS-2ndM.455 | Mason; Helper; Physical Progress [1490 h]; Concrete M40 [3 m3]; TATA Projects Ltd-25 | 29,601 |
| CC-SS-2ndM.470 |  | Shuttering of Staircase upto Flight 4 | 1d | 2027-06-30 | 2027-07-01 | CC-SS-2ndM.460 | Carpenter [20 h]; Helper [10 h]; Physical Progress [1490 h]; Formwork [10 Sq m]; TATA Projects Ltd-25 | 11,651.6 |
| CC-SS-2ndM.405 |  | Reinforcement of Staircase upto Flight 4 | 1d | 2027-07-01 | 2027-07-02 | CC-SS-2ndM.470 | Barbender [70 h]; Helper [40 h]; Physical Progress [1490 h]; Reinforcement Steel [1 MT1]; TATA Projects Ltd-25 | 96,512.5 |

| ID | WBS | Activity | Duration | Start | Finish | Predecessors | Resources | Cost |
| --- | --- | --- | --- | --- | --- | --- | --- | --- |
|  | 2 | **Slab** |  | 2027-06-16 | 2027-07-24 |  |  |  |
| CC-SS-2ndM.720 |  | Shuttering | 6d | 2027-06-16 | 2027-06-23 | CC-SS-2ndM.710, CC-SS-2ndM.40 | Carpenter [4520 h]; Helper [2260 h]; Physical Progress [8940 h]; Formwork [2707 Sq m]; TATA Projects Ltd-25 | 3,154,088.12 |
| CC-SS-2ndM.725 |  | Reinforcement Bottom Net with chairs | 3d | 2027-06-23 | 2027-06-26 | CC-SS-2ndM.720 | Barbender [1200 h]; Helper [600 h]; Physical Progress [4470 h]; Reinforcement Steel [18 MT1]; TATA Projects Ltd-25 | 1,737,225 |
| CC-SS-2ndM.750 |  | Laying of PT Tendon | 3d | 2027-06-26 | 2027-06-30 | CC-SS-2ndM.725 | Physical Progress [5960 h]; TATA Projects Ltd-25 |  |
| CC-SS-2ndM.755 |  | Reinforcement Top Net | 2d | 2027-06-30 | 2027-07-02 | CC-SS-2ndM.750 | Barbender [1200 h]; Helper [600 h]; Physical Progress [2980 h]; Reinforcement Steel [18 MT1]; TATA Projects Ltd-25 | 1,737,225 |
| CC-SS-2ndM.730 |  | MEP Coordination | 1d | 2027-07-02 | 2027-07-03 | CC-SS-2ndM.725, CC-SS-2ndM.755, CC-SS-2ndM.405 | Physical Progress [1490 h]; TATA Projects Ltd-25 |  |
| CC-SS-2ndM.735 |  | Concrete of Slab | 1d | 2027-07-03 | 2027-07-05 | CC-SS-2ndM.730 | Mason [50 h]; Helper [50 h]; Physical Progress [1490 h]; Concrete M40 [440 m3]; TATA Projects Ltd-25 | 4,341,480 |
| CC-SS-2ndM.740 |  | Wait for Strength Gain | 6d | 2027-07-05 | 2027-07-16 | CC-SS-2ndM.735 | Physical Progress [8940 h]; TATA Projects Ltd-25 |  |
| CC-SS-2ndM.745 |  | PT Work | 5d | 2027-07-16 | 2027-07-24 | CC-SS-2ndM.740, CC-SS-1stM.345 | PT [8 MT1]; Helper [100 h]; PT Fitter [100 h]; Physical Progress [11920 h]; TATA Projects Ltd-25 | 1,520,000 |
|  | 3 | **Pour 3** |  | 2027-06-05 | 2027-08-11 |  |  |  |
|  | 1 | **Column, Core Wall, Shear Wall - First Lift** |  | 2027-06-05 | 2027-06-17 |  |  |  |
| CC-SS-2ndM.760 |  | Reinforcement | 4d | 2027-06-05 | 2027-06-10 | CC-SS-1stM.395 | Barbender [1340 h]; Helper [670 h]; Physical Progress [5960 h]; Reinforcement Steel [20 MT1]; TATA Projects Ltd-25 | 1,930,250 |
| CC-SS-2ndM.775 |  | LPS | 1d | 2027-06-10 | 2027-06-11 | CC-SS-2ndM.760 | LPS [39529 INR]; Physical Progress [1490 h]; TATA Projects Ltd-25 | 39,529 |
| CC-SS-2ndM.765 |  | Shuttering | 4d | 2027-06-11 | 2027-06-16 | CC-SS-2ndM.760, CC-SS-2ndM.775 | Carpenter [550 h]; Helper [280 h]; Physical Progress [5960 h]; Formwork [327 Sq m]; TATA Projects Ltd-25 | 381,007.32 |
| CC-SS-2ndM.770 |  | Concrete | 1d | 2027-06-16 | 2027-06-17 | CC-SS-2ndM.765 | Mason [50 h]; Helper [50 h]; Physical Progress [1490 h]; Concrete M40 [82 m3]; TATA Projects Ltd-25 | 809,094 |
|  | 5 | **Column, Core Wall, Shear Wall - Second Lift** |  | 2027-06-17 | 2027-06-29 |  |  |  |
| CC-SS-2ndM.50 |  | Reinforcement | 4d | 2027-06-17 | 2027-06-22 | CC-SS-2ndM.770 | Barbender [1340 h]; Helper [670 h]; Physical Progress [5960 h]; Reinforcement Steel [20 MT1]; TATA Projects Ltd-25 | 1,930,250 |
| CC-SS-2ndM.65 |  | LPS | 1d | 2027-06-22 | 2027-06-23 | CC-SS-2ndM.50 | LPS [39529 INR]; Physical Progress [1490 h]; TATA Projects Ltd-25 | 39,529 |
| CC-SS-2ndM.55 |  | Shuttering | 4d | 2027-06-23 | 2027-06-28 | CC-SS-2ndM.50, CC-SS-2ndM.65 | Carpenter [550 h]; Helper [280 h]; Physical Progress [5960 h]; Formwork [327 Sq m]; TATA Projects Ltd-25 | 381,007.32 |
| CC-SS-2ndM.60 |  | Concrete | 1d | 2027-06-28 | 2027-06-29 | CC-SS-2ndM.55 | Mason [50 h]; Helper [50 h]; Physical Progress [1490 h]; Concrete M40 [82 m3]; TATA Projects Ltd-25 | 809,094 |
|  | 3 | **Staircase** |  | 2027-06-05 | 2027-07-21 |  |  |  |
| CC-SS-2ndM.490 |  | Reinforcement of wall upto Flight 1 | 2d | 2027-06-05 | 2027-06-08 | CC-SS-1stM.395 | Barbender [70 h]; Helper [40 h]; Physical Progress [2980 h]; Reinforcement Steel [1 MT1]; TATA Projects Ltd-25 | 96,512.5 |
| CC-SS-2ndM.495 |  | Shuttering of wall upto Flight 1 | 2d | 2027-06-08 | 2027-06-10 | CC-SS-2ndM.490 | Carpenter [20 h]; Helper [10 h]; Physical Progress [2980 h]; Formwork [10 Sq m]; TATA Projects Ltd-25 | 11,651.6 |
| CC-SS-2ndM.500 |  | Casting of wall upto Flight 1 | 1d | 2027-06-10 | 2027-06-11 | CC-SS-2ndM.495 | Mason; Helper; Physical Progress [1490 h]; Concrete M40 [3 m3]; TATA Projects Ltd-25 | 29,601 |
| CC-SS-2ndM.510 |  | Shuttering of Staircase upto Flight 1 | 1d | 2027-06-11 | 2027-06-12 | CC-SS-2ndM.500 | Carpenter [20 h]; Helper [10 h]; Physical Progress [1490 h]; Formwork [10 Sq m]; TATA Projects Ltd-25 | 11,651.6 |
| CC-SS-2ndM.505 |  | Reinforcement of Staircase upto Flight 1 | 1d | 2027-06-12 | 2027-06-14 | CC-SS-2ndM.510 | Barbender [70 h]; Helper [40 h]; Physical Progress [1490 h]; Reinforcement Steel [1 MT1]; TATA Projects Ltd-25 | 96,512.5 |
| CC-SS-2ndM.545 |  | MEP coordination upto Flight 1 | 1d | 2027-06-14 | 2027-06-15 | CC-SS-2ndM.505 | Physical Progress [1490 h]; TATA Projects Ltd-25 |  |
| CC-SS-2ndM.515 |  | Casting of Staircase upto Flight 1 | 1d | 2027-06-15 | 2027-06-16 | CC-SS-2ndM.545 | Mason; Helper; Physical Progress [1490 h]; Concrete M40 [3 m3]; TATA Projects Ltd-25 | 29,601 |
| CC-SS-2ndM.520 |  | Reinforcement of wall upto Flight 2 | 2d | 2027-06-16 | 2027-06-18 | CC-SS-2ndM.515 | Barbender [70 h]; Helper [40 h]; Physical Progress [2980 h]; Reinforcement Steel [1 MT1]; TATA Projects Ltd-25 | 96,512.5 |
| CC-SS-2ndM.525 |  | Shuttering of wall upto Flight 2 | 2d | 2027-06-18 | 2027-06-21 | CC-SS-2ndM.520 | Carpenter [20 h]; Helper [10 h]; Physical Progress [2980 h]; Formwork [10 Sq m]; TATA Projects Ltd-25 | 11,651.6 |
| CC-SS-2ndM.530 |  | Casting of wall upto Flight 2 | 1d | 2027-06-21 | 2027-06-22 | CC-SS-2ndM.525 | Mason; Helper; Physical Progress [1490 h]; Concrete M40 [3 m3]; TATA Projects Ltd-25 | 29,601 |
| CC-SS-2ndM.540 |  | Shuttering of Staircase upto Flight 2 | 1d | 2027-06-22 | 2027-06-23 | CC-SS-2ndM.530 | Carpenter [20 h]; Helper [10 h]; Physical Progress [1490 h]; Formwork [10 Sq m]; TATA Projects Ltd-25 | 11,651.6 |
| CC-SS-2ndM.595 |  | Reinforcement of Staircase upto Flight 2 | 1d | 2027-06-23 | 2027-06-24 | CC-SS-2ndM.540 | Barbender [70 h]; Helper [40 h]; Physical Progress [1490 h]; Reinforcement Steel [1 MT1]; TATA Projects Ltd-25 | 96,512.5 |
| CC-SS-2ndM.615 |  | MEP coordination upto Flight 2 | 1d | 2027-06-24 | 2027-06-25 | CC-SS-2ndM.595 | Physical Progress [1490 h]; TATA Projects Ltd-25 |  |
| CC-SS-2ndM.575 |  | Casting of Staircase upto Flight 2 | 1d | 2027-06-25 | 2027-06-26 | CC-SS-2ndM.615 | Mason; Helper; Physical Progress [1490 h]; Concrete M40 [3 m3]; TATA Projects Ltd-25 | 29,601 |
| CC-SS-2ndM.550 |  | Reinforcement of wall upto Flight 3 | 2d | 2027-06-26 | 2027-06-29 | CC-SS-2ndM.575 | Barbender [70 h]; Helper [40 h]; Physical Progress [2980 h]; Reinforcement Steel [1 MT1]; TATA Projects Ltd-25 | 96,512.5 |
| CC-SS-2ndM.555 |  | Shuttering of wall upto Flight 3 | 2d | 2027-06-29 | 2027-07-01 | CC-SS-2ndM.550 | Carpenter [20 h]; Helper [10 h]; Physical Progress [2980 h]; Formwork [10 Sq m]; TATA Projects Ltd-25 | 11,651.6 |
| CC-SS-2ndM.560 |  | Casting of wall upto Flight 3 | 1d | 2027-07-01 | 2027-07-02 | CC-SS-2ndM.555 | Mason; Helper; Physical Progress [1490 h]; Concrete M40 [3 m3]; TATA Projects Ltd-25 | 29,601 |
| CC-SS-2ndM.570 |  | Shuttering of Staircase upto Flight 3 | 1d | 2027-07-02 | 2027-07-03 | CC-SS-2ndM.560 | Carpenter [20 h]; Helper [10 h]; Physical Progress [1490 h]; Formwork [10 Sq m]; TATA Projects Ltd-25 | 11,651.6 |
| CC-SS-2ndM.565 |  | Reinforcement of Staircase upto Flight 3 | 1d | 2027-07-03 | 2027-07-05 | CC-SS-2ndM.570 | Barbender [70 h]; Helper [40 h]; Physical Progress [1490 h]; Reinforcement Steel [1 MT1]; TATA Projects Ltd-25 | 96,512.5 |
| CC-SS-2ndM.605 |  | MEP coordination upto Flight 3 | 1d | 2027-07-05 | 2027-07-07 | CC-SS-2ndM.565 | Physical Progress [1490 h]; TATA Projects Ltd-25 |  |
| CC-SS-2ndM.610 |  | Casting of Staircase upto Flight 3 | 1d | 2027-07-07 | 2027-07-09 | CC-SS-2ndM.605 | Mason; Helper; Physical Progress [1490 h]; Concrete M40 [3 m3]; TATA Projects Ltd-25 | 29,601 |
| CC-SS-2ndM.580 |  | Reinforcement of wall upto Flight 4 | 2d | 2027-07-09 | 2027-07-12 | CC-SS-2ndM.610 | Barbender [70 h]; Helper [40 h]; Physical Progress [2980 h]; Reinforcement Steel [1 MT1]; TATA Projects Ltd-25 | 96,512.5 |
| CC-SS-2ndM.585 |  | Shuttering of wall upto Flight 4 | 2d | 2027-07-12 | 2027-07-16 | CC-SS-2ndM.580 | Carpenter [20 h]; Helper [10 h]; Physical Progress [2980 h]; Formwork [10 Sq m]; TATA Projects Ltd-25 | 11,651.6 |
| CC-SS-2ndM.590 |  | Casting of wall upto Flight 4 | 1d | 2027-07-16 | 2027-07-17 | CC-SS-2ndM.585 | Mason; Helper; Physical Progress [1490 h]; Concrete M40 [3 m3]; TATA Projects Ltd-25 | 29,601 |
| CC-SS-2ndM.600 |  | Shuttering of Staircase upto Flight 4 | 1d | 2027-07-17 | 2027-07-19 | CC-SS-2ndM.590 | Carpenter [20 h]; Helper [10 h]; Physical Progress [1490 h]; Formwork [10 Sq m]; TATA Projects Ltd-25 | 11,651.6 |
| CC-SS-2ndM.535 |  | Reinforcement of Staircase upto Flight 4 | 1d | 2027-07-19 | 2027-07-21 | CC-SS-2ndM.600 | Barbender [70 h]; Helper [40 h]; Physical Progress [1490 h]; Reinforcement Steel [1 MT1]; TATA Projects Ltd-25 | 96,512.5 |

| ID | WBS | Activity | Duration | Start | Finish | Predecessors | Resources | Cost |
| --- | --- | --- | --- | --- | --- | --- | --- | --- |
|  | 2 | **Slab** |  | 2027-06-29 | 2027-08-11 |  |  |  |
| CC-SS-2ndM.780 |  | Shuttering | 4d | 2027-06-29 | 2027-07-03 | CC-SS-2ndM.770, CC-SS-2ndM.60 | Carpenter [1940 h]; Helper [970 h]; Physical Progress [8940 h]; Formwork [1162 Sq m]; TATA Projects Ltd-25 | 1,353,915.92 |
| CC-SS-2ndM.785 |  | Reinforcement Bottom Net with chairs | 2d | 2027-07-03 | 2027-07-07 | CC-SS-2ndM.780 | Barbender [540 h]; Helper [270 h]; Physical Progress [4470 h]; Reinforcement Steel [8 MT1]; TATA Projects Ltd-25 | 772,100 |
| CC-SS-2ndM.810 |  | Laying of PT Tendon | 2d | 2027-07-07 | 2027-07-10 | CC-SS-2ndM.785 | Physical Progress [5960 h]; TATA Projects Ltd-25 |  |
| CC-SS-2ndM.815 |  | Reinforcement Top Net | 2d | 2027-07-10 | 2027-07-14 | CC-SS-2ndM.810 | Barbender [540 h]; Helper [270 h]; Physical Progress [2980 h]; Reinforcement Steel [8 MT1]; TATA Projects Ltd-25 | 772,100 |
| CC-SS-2ndM.790 |  | MEP Coordination | 1d | 2027-07-21 | 2027-07-23 | CC-SS-2ndM.785, CC-SS-2ndM.815, CC-SS-2ndM.535 | Physical Progress [1490 h]; TATA Projects Ltd-25 |  |
| CC-SS-2ndM.795 |  | Concrete of Slab | 1d | 2027-07-23 | 2027-07-24 | CC-SS-2ndM.790 | Mason [50 h]; Helper [50 h]; Physical Progress [1490 h]; Concrete M40 [189 m3]; TATA Projects Ltd-25 | 1,864,863 |
| CC-SS-2ndM.800 |  | Wait for Strength Gain | 6d | 2027-07-24 | 2027-08-04 | CC-SS-2ndM.795 | Physical Progress [8940 h]; TATA Projects Ltd-25 |  |
| CC-SS-2ndM.805 |  | PT Work | 4d | 2027-08-04 | 2027-08-11 | CC-SS-2ndM.800 | PT [4 MT1]; Helper [100 h]; PT Fitter [100 h]; Physical Progress [11920 h]; TATA Projects Ltd-25 | 760,000 |
|  | 6 | **Pour 4** |  | 2027-08-11 | 2027-11-05 |  |  |  |
|  | 2 | **Slab** |  | 2027-08-11 | 2027-11-05 |  |  |  |
| CC-SS-2ndM.70 |  | Erection of Structural Steel Beams | 25d | 2027-08-11 | 2027-09-20 | CC-SS-2ndM.805, CC-SS-2ndM.745, CC-SS-2ndM.685, SSF10 SS+30d | Str. Steel Fitter [5430 h]; Rigger [10860 h]; Welder [10860 h]; Khalasi Helper [10860 h]; Physical Progress [44690 h]; Structural Steel [813 MT1]; Vermiculite Paint [581 Sq m]; Intumescent Paint [509 Sq m]; TATA Projects Ltd-25 | 144,348,906 |
| CC-SS-2ndM.75 |  | Metal Deck Sheet | 8d | 2027-09-20 | 2027-10-01 | CC-SS-2ndM.70 | Physical Progress [11920 h]; Composite Slab Metal Deck [11 MT1]; TATA Projects Ltd-25 | 2,254,824 |
| CC-SS-2ndM.95 |  | Shear Studs | 4d | 2027-10-01 | 2027-10-07 | CC-SS-2ndM.75 | Physical Progress [8940 h]; Shear Studs [4 MT1]; TATA Projects Ltd-25 | 940,000 |
| CC-SS-2ndM.90 |  | Reinforcement Bottom Net with chairs | 3d | 2027-10-07 | 2027-10-12 | CC-SS-2ndM.95 | Barbender [1400 h]; Helper [700 h]; Physical Progress [4470 h]; Reinforcement Steel [21 MT1]; TATA Projects Ltd-25 | 2,026,762.5 |
| CC-SS-2ndM.620 |  | Laying of PT Tendons | 4d | 2027-10-12 | 2027-10-16 | CC-SS-2ndM.90 | Physical Progress [5960 h]; TATA Projects Ltd-25 |  |
| CC-SS-2ndM.625 |  | Reinforcement Top Net | 3d | 2027-10-16 | 2027-10-20 | CC-SS-2ndM.620 | Barbender [1400 h]; Helper [700 h]; Physical Progress [4470 h]; Reinforcement Steel [21 MT1]; TATA Projects Ltd-25 | 2,026,762.5 |
| CC-SS-2ndM.80 |  | MEP Coordination | 1d | 2027-10-20 | 2027-10-21 | CC-SS-2ndM.625 | Physical Progress [1490 h]; TATA Projects Ltd-25 |  |
| CC-SS-2ndM.85 |  | Concrete of Slab | 1d | 2027-10-21 | 2027-10-22 | CC-SS-2ndM.80 | Physical Progress [1490 h]; Concrete M40 [528 m3]; Additional for scaff above 4.5m Height [30 LP]; TATA Projects Ltd-25 | 10,633,776 |
| CC-SS-2ndM.630 |  | Wait for Strength Gain | 6d | 2027-10-22 | 2027-10-30 | CC-SS-2ndM.85 | Physical Progress [8940 h]; TATA Projects Ltd-25 |  |
| CC-SS-2ndM.635 |  | PT Work | 5d | 2027-10-30 | 2027-11-05 | CC-SS-2ndM.630 | PT [10 MT1]; Helper [100 h]; PT Fitter [100 h]; Physical Progress [7450 h]; TATA Projects Ltd-25 | 1,900,000 |
|  | 3 | **First Floor** |  | 2027-07-05 | 2027-09-16 |  |  |  |
|  | 2 | **Pour 1** |  | 2027-07-14 | 2027-09-13 |  |  |  |
|  | 1 | **Column, Core Wall, Shear Wall** |  | 2027-07-14 | 2027-07-31 |  |  |  |
| CC-SS-1stF.10 |  | Reinforcement | 4d | 2027-07-14 | 2027-07-21 | CC-SS-2ndM.675 | Barbender [9600 h]; Helper [4800 h]; Physical Progress [5960 h]; Reinforcement Steel [144 MT1]; TATA Projects Ltd-25 | 13,897,800 |
| CC-SS-1stF.25 |  | LPS | 1d | 2027-07-21 | 2027-07-23 | CC-SS-1stF.10 | LPS [39529 INR]; Physical Progress [1490 h]; TATA Projects Ltd-25 | 39,529 |
| CC-SS-1stF.15 |  | Shuttering | 4d | 2027-07-23 | 2027-07-30 | CC-SS-1stF.10, CC-SS-1stF.25 | Carpenter [4180 h]; Helper [2090 h]; Physical Progress [5960 h]; Formwork [2503 Sq m]; TATA Projects Ltd-25 | 2,916,395.48 |
| CC-SS-1stF.20 |  | Concrete | 1d | 2027-07-30 | 2027-07-31 | CC-SS-1stF.15 | Mason [50 h]; Helper [50 h]; Physical Progress [1490 h]; Concrete M40 [626 m3]; TATA Projects Ltd-25 | 6,176,742 |

| ID | WBS | Activity | Duration | Start | Finish | Predecessors | Resources | Cost |
| --- | --- | --- | --- | --- | --- | --- | --- | --- |
|  | 3 | **Staircase - 1** |  | 2027-07-14 | 2027-08-11 |  |  |  |
| CC-SS-1stF.60 |  | Reinforcement of wall upto Flight 1 | 2d | 2027-07-14 | 2027-07-17 | CC-SS-2ndM.675 | Barbender [70 h]; Helper [40 h]; Physical Progress [2980 h]; Reinforcement Steel [1 MT1]; TATA Projects Ltd-25 | 96,512.5 |
| CC-SS-1stF.65 |  | Shuttering of wall upto Flight 1 | 2d | 2027-07-17 | 2027-07-21 | CC-SS-1stF.60 | Carpenter [20 h]; Helper [10 h]; Physical Progress [2980 h]; Formwork [10 Sq m]; TATA Projects Ltd-25 | 11,651.6 |
| CC-SS-1stF.70 |  | Casting of wall upto Flight 1 | 1d | 2027-07-21 | 2027-07-23 | CC-SS-1stF.65 | Mason; Helper; Physical Progress [1490 h]; Concrete M40 [3 m3]; TATA Projects Ltd-25 | 29,601 |
| CC-SS-1stF.80 |  | Shuttering of Staircase upto Flight 1 | 1d | 2027-07-23 | 2027-07-24 | CC-SS-1stF.70 | Carpenter [20 h]; Helper [10 h]; Physical Progress [1490 h]; Formwork [10 Sq m]; TATA Projects Ltd-25 | 11,651.6 |
| CC-SS-1stF.75 |  | Reinforcement of Staircase upto Flight 1 | 1d | 2027-07-24 | 2027-07-26 | CC-SS-1stF.80 | Barbender [70 h]; Helper [40 h]; Physical Progress [1490 h]; Reinforcement Steel [1 MT1]; TATA Projects Ltd-25 | 96,512.5 |
| CC-SS-1stF.115 |  | MEP coordination upto Flight 1 | 1d | 2027-07-26 | 2027-07-28 | CC-SS-1stF.75 | Physical Progress [1490 h]; TATA Projects Ltd-25 |  |
| CC-SS-1stF.85 |  | Casting of Staircase upto Flight 1 | 1d | 2027-07-28 | 2027-07-30 | CC-SS-1stF.115 | Mason; Helper; Physical Progress [1490 h]; Concrete M40 [3 m3]; TATA Projects Ltd-25 | 29,601 |
| CC-SS-1stF.90 |  | Reinforcement of wall upto Flight 2 | 2d | 2027-07-30 | 2027-08-02 | CC-SS-1stF.85 | Barbender [70 h]; Helper [40 h]; Physical Progress [2980 h]; Reinforcement Steel [1 MT1]; TATA Projects Ltd-25 | 96,512.5 |
| CC-SS-1stF.95 |  | Shuttering of wall upto Flight 2 | 2d | 2027-08-02 | 2027-08-06 | CC-SS-1stF.90 | Carpenter [20 h]; Helper [10 h]; Physical Progress [2980 h]; Formwork [10 Sq m]; TATA Projects Ltd-25 | 11,651.6 |
| CC-SS-1stF.100 |  | Casting of wall upto Flight 2 | 1d | 2027-08-06 | 2027-08-07 | CC-SS-1stF.95 | Mason; Helper; Physical Progress [1490 h]; Concrete M40 [3 m3]; TATA Projects Ltd-25 | 29,601 |
| CC-SS-1stF.110 |  | Shuttering of Staircase upto Flight 2 | 1d | 2027-08-07 | 2027-08-09 | CC-SS-1stF.100 | Carpenter [20 h]; Helper [10 h]; Physical Progress [1490 h]; Formwork [10 Sq m]; TATA Projects Ltd-25 | 11,651.6 |
| CC-SS-1stF.105 |  | Reinforcement of Staircase upto Flight 2 | 1d | 2027-08-09 | 2027-08-11 | CC-SS-1stF.110 | Barbender [70 h]; Helper [40 h]; Physical Progress [1490 h]; Reinforcement Steel [1 MT1]; TATA Projects Ltd-25 | 96,512.5 |
|  | 4 | **Staircase - 2** |  | 2027-07-14 | 2027-08-11 |  |  |  |
| CC-SS-1stF.310 |  | Reinforcement of wall upto Flight 1 | 2d | 2027-07-14 | 2027-07-17 | CC-SS-2ndM.675 | Barbender [70 h]; Helper [40 h]; Physical Progress [2980 h]; Reinforcement Steel [1 MT1]; TATA Projects Ltd-25 | 96,512.5 |
| CC-SS-1stF.315 |  | Shuttering of wall upto Flight 1 | 2d | 2027-07-17 | 2027-07-21 | CC-SS-1stF.310 | Carpenter [20 h]; Helper [10 h]; Physical Progress [2980 h]; Formwork [10 Sq m]; TATA Projects Ltd-25 | 11,651.6 |
| CC-SS-1stF.320 |  | Casting of wall upto Flight 1 | 1d | 2027-07-21 | 2027-07-23 | CC-SS-1stF.315 | Mason; Helper; Physical Progress [1490 h]; Concrete M40 [3 m3]; TATA Projects Ltd-25 | 29,601 |
| CC-SS-1stF.330 |  | Shuttering of Staircase upto Flight 1 | 1d | 2027-07-23 | 2027-07-24 | CC-SS-1stF.320 | Carpenter [20 h]; Helper [10 h]; Physical Progress [1490 h]; Formwork [10 Sq m]; TATA Projects Ltd-25 | 11,651.6 |
| CC-SS-1stF.325 |  | Reinforcement of Staircase upto Flight 1 | 1d | 2027-07-24 | 2027-07-26 | CC-SS-1stF.330 | Barbender [70 h]; Helper [40 h]; Physical Progress [1490 h]; Reinforcement Steel [1 MT1]; TATA Projects Ltd-25 | 96,512.5 |
| CC-SS-1stF.365 |  | MEP coordination upto Flight 1 | 1d | 2027-07-26 | 2027-07-28 | CC-SS-1stF.325 | Physical Progress [1490 h]; TATA Projects Ltd-25 |  |
| CC-SS-1stF.335 |  | Casting of Staircase upto Flight 1 | 1d | 2027-07-28 | 2027-07-30 | CC-SS-1stF.365 | Mason; Helper; Physical Progress [1490 h]; Concrete M40 [3 m3]; TATA Projects Ltd-25 | 29,601 |
| CC-SS-1stF.340 |  | Reinforcement of wall upto Flight 2 | 2d | 2027-07-30 | 2027-08-02 | CC-SS-1stF.335 | Barbender [70 h]; Helper [40 h]; Physical Progress [2980 h]; Reinforcement Steel [1 MT1]; TATA Projects Ltd-25 | 96,512.5 |
| CC-SS-1stF.345 |  | Shuttering of wall upto Flight 2 | 2d | 2027-08-02 | 2027-08-06 | CC-SS-1stF.340 | Carpenter [20 h]; Helper [10 h]; Physical Progress [2980 h]; Formwork [10 Sq m]; TATA Projects Ltd-25 | 11,651.6 |
| CC-SS-1stF.350 |  | Casting of wall upto Flight 2 | 1d | 2027-08-06 | 2027-08-07 | CC-SS-1stF.345 | Mason; Helper; Physical Progress [1490 h]; Concrete M40 [3 m3]; TATA Projects Ltd-25 | 29,601 |
| CC-SS-1stF.360 |  | Shuttering of Staircase upto Flight 2 | 1d | 2027-08-07 | 2027-08-09 | CC-SS-1stF.350 | Carpenter [20 h]; Helper [10 h]; Physical Progress [1490 h]; Formwork [10 Sq m]; TATA Projects Ltd-25 | 11,651.6 |
| CC-SS-1stF.355 |  | Reinforcement of Staircase upto Flight 2 | 1d | 2027-08-09 | 2027-08-11 | CC-SS-1stF.360 | Barbender [70 h]; Helper [40 h]; Physical Progress [1490 h]; Reinforcement Steel [1 MT1]; TATA Projects Ltd-25 | 96,512.5 |

| ID | WBS | Activity | Duration | Start | Finish | Predecessors | Resources | Cost |
| --- | --- | --- | --- | --- | --- | --- | --- | --- |
|  | 2 | **Slab** |  | 2027-07-31 | 2027-09-13 |  |  |  |
| CC-SS-1stF.30 |  | Shuttering | 5d | 2027-07-31 | 2027-08-09 | CC-SS-1stF.20 | Carpenter [240 h]; Helper [120 h]; Physical Progress [8940 h]; Formwork [144 Sq m]; TATA Projects Ltd-25 | 167,783.04 |
| CC-SS-1stF.35 |  | Reinforcement Bottom Net with chairs | 3d | 2027-08-09 | 2027-08-14 | CC-SS-1stF.30 | Barbender [1270 h]; Helper [640 h]; Physical Progress [4470 h]; Reinforcement Steel [19 MT1]; TATA Projects Ltd-25 | 1,833,737.5 |
| CC-SS-1stF.120 |  | Laying of PT Tendon | 3d | 2027-08-14 | 2027-08-20 | CC-SS-1stF.35 | Physical Progress [5960 h]; TATA Projects Ltd-25 |  |
| CC-SS-1stF.125 |  | Reinforcement Top Net | 2d | 2027-08-20 | 2027-08-23 | CC-SS-1stF.120 | Barbender [1270 h]; Helper [640 h]; Physical Progress [2980 h]; Reinforcement Steel [19 MT1]; TATA Projects Ltd-25 | 1,833,737.5 |
| CC-SS-1stF.40 |  | MEP Coordination | 1d | 2027-08-23 | 2027-08-25 | CC-SS-1stF.35, CC-SS-1stF.105, CC-SS-1stF.125, CC-SS-1stF.355 | Physical Progress [1490 h]; TATA Projects Ltd-25 |  |
| CC-SS-1stF.45 |  | Concrete of Slab | 1d | 2027-08-25 | 2027-08-27 | CC-SS-1stF.40 | Mason [50 h]; Helper [50 h]; Physical Progress [1490 h]; Concrete M40 [499 m3]; TATA Projects Ltd-25 | 4,923,633 |
| CC-SS-1stF.50 |  | Wait for Strength Gain | 6d | 2027-08-27 | 2027-09-06 | CC-SS-1stF.45 | Physical Progress [8940 h]; TATA Projects Ltd-25 |  |
| CC-SS-1stF.55 |  | PT Work | 5d | 2027-09-06 | 2027-09-13 | CC-SS-1stF.50 | PT [16 MT1]; Helper [100 h]; PT Fitter [100 h]; Physical Progress [11920 h]; TATA Projects Ltd-25 | 3,040,000 |
|  | 4 | **Pour 2** |  | 2027-07-05 | 2027-09-06 |  |  |  |
|  | 1 | **Column, Core Wall, Shear Wall** |  | 2027-07-05 | 2027-07-23 |  |  |  |
| CC-SS-1stF.130 |  | Reinforcement | 4d | 2027-07-05 | 2027-07-12 | CC-SS-2ndM.735 | Barbender [7800 h]; Helper [3900 h]; Physical Progress [5960 h]; Reinforcement Steel [117 MT1]; TATA Projects Ltd-25 | 11,291,962.5 |
| CC-SS-1stF.145 |  | LPS | 1d | 2027-07-12 | 2027-07-14 | CC-SS-1stF.130 | LPS [39529 INR]; Physical Progress [1490 h]; TATA Projects Ltd-25 | 39,529 |
| CC-SS-1stF.135 |  | Shuttering | 4d | 2027-07-14 | 2027-07-21 | CC-SS-1stF.130, CC-SS-1stF.145 | Carpenter [3400 h]; Helper [1700 h]; Physical Progress [5960 h]; Formwork [2036 Sq m]; TATA Projects Ltd-25 | 2,372,265.76 |
| CC-SS-1stF.140 |  | Concrete | 1d | 2027-07-21 | 2027-07-23 | CC-SS-1stF.135 | Mason [50 h]; Helper [50 h]; Physical Progress [1490 h]; Concrete M40 [509 m3]; TATA Projects Ltd-25 | 5,022,303 |
|  | 3 | **Staircase** |  | 2027-07-05 | 2027-08-02 |  |  |  |
| CC-SS-1stF.370 |  | Reinforcement of wall upto Flight 1 | 2d | 2027-07-05 | 2027-07-09 | CC-SS-2ndM.735 | Barbender [70 h]; Helper [40 h]; Physical Progress [2980 h]; Reinforcement Steel [1 MT1]; TATA Projects Ltd-25 | 96,512.5 |
| CC-SS-1stF.375 |  | Shuttering of wall upto Flight 1 | 2d | 2027-07-09 | 2027-07-12 | CC-SS-1stF.370 | Carpenter [20 h]; Helper [10 h]; Physical Progress [2980 h]; Formwork [10 Sq m]; TATA Projects Ltd-25 | 11,651.6 |
| CC-SS-1stF.380 |  | Casting of wall upto Flight 1 | 1d | 2027-07-12 | 2027-07-14 | CC-SS-1stF.375 | Mason; Helper; Physical Progress [1490 h]; Concrete M40 [3 m3]; TATA Projects Ltd-25 | 29,601 |
| CC-SS-1stF.390 |  | Shuttering of Staircase upto Flight 1 | 1d | 2027-07-14 | 2027-07-16 | CC-SS-1stF.380 | Carpenter [20 h]; Helper [10 h]; Physical Progress [1490 h]; Formwork [10 Sq m]; TATA Projects Ltd-25 | 11,651.6 |
| CC-SS-1stF.385 |  | Reinforcement of Staircase upto Flight 1 | 1d | 2027-07-16 | 2027-07-17 | CC-SS-1stF.390 | Barbender [70 h]; Helper [40 h]; Physical Progress [1490 h]; Reinforcement Steel [1 MT1]; TATA Projects Ltd-25 | 96,512.5 |
| CC-SS-1stF.425 |  | MEP coordination upto Flight 1 | 1d | 2027-07-17 | 2027-07-19 | CC-SS-1stF.385 | Physical Progress [1490 h]; TATA Projects Ltd-25 |  |
| CC-SS-1stF.395 |  | Casting of Staircase upto Flight 1 | 1d | 2027-07-19 | 2027-07-21 | CC-SS-1stF.425 | Mason; Helper; Physical Progress [1490 h]; Concrete M40 [3 m3]; TATA Projects Ltd-25 | 29,601 |
| CC-SS-1stF.400 |  | Reinforcement of wall upto Flight 2 | 2d | 2027-07-21 | 2027-07-24 | CC-SS-1stF.395 | Barbender [70 h]; Helper [40 h]; Physical Progress [2980 h]; Reinforcement Steel [1 MT1]; TATA Projects Ltd-25 | 96,512.5 |
| CC-SS-1stF.405 |  | Shuttering of wall upto Flight 2 | 2d | 2027-07-24 | 2027-07-28 | CC-SS-1stF.400 | Carpenter [20 h]; Helper [10 h]; Physical Progress [2980 h]; Formwork [10 Sq m]; TATA Projects Ltd-25 | 11,651.6 |
| CC-SS-1stF.410 |  | Casting of wall upto Flight 2 | 1d | 2027-07-28 | 2027-07-30 | CC-SS-1stF.405 | Mason; Helper; Physical Progress [1490 h]; Concrete M40 [3 m3]; TATA Projects Ltd-25 | 29,601 |
| CC-SS-1stF.420 |  | Shuttering of Staircase upto Flight 2 | 1d | 2027-07-30 | 2027-07-31 | CC-SS-1stF.410 | Carpenter [20 h]; Helper [10 h]; Physical Progress [1490 h]; Formwork [10 Sq m]; TATA Projects Ltd-25 | 11,651.6 |
| CC-SS-1stF.415 |  | Reinforcement of Staircase upto Flight 2 | 1d | 2027-07-31 | 2027-08-02 | CC-SS-1stF.420 | Barbender [70 h]; Helper [40 h]; Physical Progress [1490 h]; Reinforcement Steel [1 MT1]; TATA Projects Ltd-25 | 96,512.5 |

| ID | WBS | Activity | Duration | Start | Finish | Predecessors | Resources | Cost |
| --- | --- | --- | --- | --- | --- | --- | --- | --- |
|  | 2 | **Slab** |  | 2027-07-23 | 2027-09-06 |  |  |  |
| CC-SS-1stF.150 |  | Shuttering | 5d | 2027-07-23 | 2027-07-31 | CC-SS-1stF.140 | Carpenter [200 h]; Helper [100 h]; Physical Progress [8940 h]; Formwork [117 Sq m]; TATA Projects Ltd-25 | 136,323.72 |
| CC-SS-1stF.155 |  | Reinforcement Bottom Net with chairs | 3d | 2027-07-31 | 2027-08-06 | CC-SS-1stF.150 | Barbender [1000 h]; Helper [500 h]; Physical Progress [4470 h]; Reinforcement Steel [15 MT1]; TATA Projects Ltd-25 | 1,447,687.5 |
| CC-SS-1stF.180 |  | Laying of PT Tendon | 3d | 2027-08-06 | 2027-08-11 | CC-SS-1stF.155 | Physical Progress [5960 h]; TATA Projects Ltd-25 |  |
| CC-SS-1stF.185 |  | Reinforcement Top Net | 2d | 2027-08-11 | 2027-08-14 | CC-SS-1stF.180 | Barbender [1000 h]; Helper [500 h]; Physical Progress [2980 h]; Reinforcement Steel [15 MT1]; TATA Projects Ltd-25 | 1,447,687.5 |
| CC-SS-1stF.160 |  | MEP Coordination | 1d | 2027-08-14 | 2027-08-16 | CC-SS-1stF.155, CC-SS-1stF.185, CC-SS-1stF.415 | Physical Progress [1490 h]; TATA Projects Ltd-25 |  |
| CC-SS-1stF.165 |  | Concrete of Slab | 1d | 2027-08-16 | 2027-08-18 | CC-SS-1stF.160 | Mason [50 h]; Helper [50 h]; Physical Progress [1490 h]; Concrete M40 [406 m3]; TATA Projects Ltd-25 | 4,006,002 |
| CC-SS-1stF.170 |  | Wait for Strength Gain | 6d | 2027-08-18 | 2027-08-28 | CC-SS-1stF.165 | Physical Progress [8940 h]; TATA Projects Ltd-25 |  |
| CC-SS-1stF.175 |  | PT Work | 5d | 2027-08-28 | 2027-09-06 | CC-SS-1stF.170 | PT [13 MT1]; Helper [100 h]; PT Fitter [100 h]; Physical Progress [11920 h]; TATA Projects Ltd-25 | 2,470,000 |
|  | 3 | **Pour 3** |  | 2027-07-24 | 2027-09-16 |  |  |  |
|  | 1 | **Column, Core Wall, Shear Wall** |  | 2027-07-24 | 2027-08-11 |  |  |  |
| CC-SS-1stF.190 |  | Reinforcement | 4d | 2027-07-24 | 2027-07-31 | CC-SS-2ndM.795 | Barbender [4600 h]; Helper [2300 h]; Physical Progress [5960 h]; Reinforcement Steel [69 MT1]; TATA Projects Ltd-25 | 6,659,362.5 |
| CC-SS-1stF.205 |  | LPS | 1d | 2027-07-31 | 2027-08-02 | CC-SS-1stF.190 | LPS [39529 INR]; Physical Progress [1490 h]; TATA Projects Ltd-25 | 39,529 |
| CC-SS-1stF.195 |  | Shuttering | 4d | 2027-08-02 | 2027-08-09 | CC-SS-1stF.190, CC-SS-1stF.205 | Carpenter [1990 h]; Helper [1000 h]; Physical Progress [5960 h]; Formwork [1189 Sq m]; TATA Projects Ltd-25 | 1,385,375.24 |
| CC-SS-1stF.200 |  | Concrete | 1d | 2027-08-09 | 2027-08-11 | CC-SS-1stF.195 | Mason [50 h]; Helper [50 h]; Physical Progress [1490 h]; Concrete M40 [297 m3]; TATA Projects Ltd-25 | 2,930,499 |
|  | 4 | **Staircase** |  | 2027-07-24 | 2027-08-21 |  |  |  |
| CC-SS-1stF.250 |  | Reinforcement of wall upto Flight 1 | 2d | 2027-07-24 | 2027-07-28 | CC-SS-2ndM.795 | Barbender [70 h]; Helper [40 h]; Physical Progress [2980 h]; Reinforcement Steel [1 MT1]; TATA Projects Ltd-25 | 96,512.5 |
| CC-SS-1stF.255 |  | Shuttering of wall upto Flight 1 | 2d | 2027-07-28 | 2027-07-31 | CC-SS-1stF.250 | Carpenter [20 h]; Helper [10 h]; Physical Progress [2980 h]; Formwork [10 Sq m]; TATA Projects Ltd-25 | 11,651.6 |
| CC-SS-1stF.260 |  | Casting of wall upto Flight 1 | 1d | 2027-07-31 | 2027-08-02 | CC-SS-1stF.255 | Mason; Helper; Physical Progress [1490 h]; Concrete M40 [3 m3]; TATA Projects Ltd-25 | 29,601 |
| CC-SS-1stF.270 |  | Shuttering of Staircase upto Flight 1 | 1d | 2027-08-02 | 2027-08-04 | CC-SS-1stF.260 | Carpenter [20 h]; Helper [10 h]; Physical Progress [1490 h]; Formwork [10 Sq m]; TATA Projects Ltd-25 | 11,651.6 |
| CC-SS-1stF.265 |  | Reinforcement of Staircase upto Flight 1 | 1d | 2027-08-04 | 2027-08-06 | CC-SS-1stF.270 | Barbender [70 h]; Helper [40 h]; Physical Progress [1490 h]; Reinforcement Steel [1 MT1]; TATA Projects Ltd-25 | 96,512.5 |
| CC-SS-1stF.305 |  | MEP coordination upto Flight 1 | 1d | 2027-08-06 | 2027-08-07 | CC-SS-1stF.265 | Physical Progress [1490 h]; TATA Projects Ltd-25 |  |
| CC-SS-1stF.275 |  | Casting of Staircase upto Flight 1 | 1d | 2027-08-07 | 2027-08-09 | CC-SS-1stF.305 | Mason; Helper; Physical Progress [1490 h]; Concrete M40 [3 m3]; TATA Projects Ltd-25 | 29,601 |
| CC-SS-1stF.280 |  | Reinforcement of wall upto Flight 2 | 2d | 2027-08-09 | 2027-08-13 | CC-SS-1stF.275 | Barbender [70 h]; Helper [40 h]; Physical Progress [2980 h]; Reinforcement Steel [1 MT1]; TATA Projects Ltd-25 | 96,512.5 |
| CC-SS-1stF.285 |  | Shuttering of wall upto Flight 2 | 2d | 2027-08-13 | 2027-08-16 | CC-SS-1stF.280 | Carpenter [20 h]; Helper [10 h]; Physical Progress [2980 h]; Formwork [10 Sq m]; TATA Projects Ltd-25 | 11,651.6 |
| CC-SS-1stF.290 |  | Casting of wall upto Flight 2 | 1d | 2027-08-16 | 2027-08-18 | CC-SS-1stF.285 | Mason; Helper; Physical Progress [1490 h]; Concrete M40 [3 m3]; TATA Projects Ltd-25 | 29,601 |
| CC-SS-1stF.300 |  | Shuttering of Staircase upto Flight 2 | 1d | 2027-08-18 | 2027-08-20 | CC-SS-1stF.290 | Carpenter [20 h]; Helper [10 h]; Physical Progress [1490 h]; Formwork [10 Sq m]; TATA Projects Ltd-25 | 11,651.6 |
| CC-SS-1stF.295 |  | Reinforcement of Staircase upto Flight 2 | 1d | 2027-08-20 | 2027-08-21 | CC-SS-1stF.300 | Barbender [70 h]; Helper [40 h]; Physical Progress [1490 h]; Reinforcement Steel [1 MT1]; TATA Projects Ltd-25 | 96,512.5 |

| ID | WBS | Activity | Duration | Start | Finish | Predecessors | Resources | Cost |
| --- | --- | --- | --- | --- | --- | --- | --- | --- |
|  | 2 | **Slab** |  | 2027-08-11 | 2027-09-16 |  |  |  |
| CC-SS-1stF.210 |  | Shuttering | 4d | 2027-08-11 | 2027-08-18 | CC-SS-1stF.200 | Carpenter [120 h]; Helper [60 h]; Physical Progress [8940 h]; Formwork [69 Sq m]; TATA Projects Ltd-25 | 80,396.04 |
| CC-SS-1stF.215 |  | Reinforcement Bottom Net with chairs | 2d | 2027-08-18 | 2027-08-21 | CC-SS-1stF.210 | Barbender [600 h]; Helper [300 h]; Physical Progress [4470 h]; Reinforcement Steel [9 MT1]; TATA Projects Ltd-25 | 868,612.5 |
| CC-SS-1stF.240 |  | Laying of PT Tendon | 2d | 2027-08-21 | 2027-08-25 | CC-SS-1stF.215 | Physical Progress [5960 h]; TATA Projects Ltd-25 |  |
| CC-SS-1stF.245 |  | Reinforcement Top Net | 2d | 2027-08-25 | 2027-08-28 | CC-SS-1stF.240 | Barbender [600 h]; Helper [300 h]; Physical Progress [2980 h]; Reinforcement Steel [9 MT1]; TATA Projects Ltd-25 | 868,612.5 |
| CC-SS-1stF.220 |  | MEP Coordination | 1d | 2027-08-28 | 2027-08-30 | CC-SS-1stF.215, CC-SS-1stF.245, CC-SS-1stF.295 | Physical Progress [1490 h]; TATA Projects Ltd-25 |  |
| CC-SS-1stF.225 |  | Concrete of Slab | 1d | 2027-08-30 | 2027-09-02 | CC-SS-1stF.220 | Mason [50 h]; Helper [50 h]; Physical Progress [1490 h]; Concrete M40 [237 m3]; TATA Projects Ltd-25 | 2,338,479 |
| CC-SS-1stF.230 |  | Wait for Strength Gain | 6d | 2027-09-02 | 2027-09-10 | CC-SS-1stF.225 | Physical Progress [8940 h]; TATA Projects Ltd-25 |  |
| CC-SS-1stF.235 |  | PT Work | 4d | 2027-09-10 | 2027-09-16 | CC-SS-1stF.230 | PT [7 MT1]; Helper [100 h]; PT Fitter [100 h]; Physical Progress [11920 h]; TATA Projects Ltd-25 | 1,330,000 |
|  | 5 | **Third Mezanine** |  | 2027-08-18 | 2028-01-13 |  |  |  |
|  | 2 | **Pour 1** |  | 2027-08-27 | 2027-11-01 |  |  |  |
|  | 1 | **Column, Core Wall, Shear Wall - First Lift** |  | 2027-08-27 | 2027-09-11 |  |  |  |
| CC-SS-3rdM.10 |  | Reinforcement | 4d | 2027-08-27 | 2027-09-03 | CC-SS-1stF.45, E-GFC-ST-CC-205 | Barbender [2600 h]; Helper [1300 h]; Physical Progress [5960 h]; Reinforcement Steel [39 MT1]; TATA Projects Ltd-25 | 3,763,987.5 |
| CC-SS-3rdM.25 |  | LPS | 1d | 2027-09-03 | 2027-09-04 | CC-SS-3rdM.10 | LPS [39529 INR]; Physical Progress [1490 h]; TATA Projects Ltd-25 | 39,529 |
| CC-SS-3rdM.15 |  | Shuttering | 4d | 2027-09-04 | 2027-09-10 | CC-SS-3rdM.10, CC-SS-3rdM.25 | Carpenter [1120 h]; Helper [560 h]; Physical Progress [5960 h]; Formwork [668 Sq m]; TATA Projects Ltd-25 | 778,326.88 |
| CC-SS-3rdM.20 |  | Concrete | 1d | 2027-09-10 | 2027-09-11 | CC-SS-3rdM.15 | Mason [50 h]; Helper [50 h]; Physical Progress [1490 h]; Concrete M40 [167 m3]; TATA Projects Ltd-25 | 1,647,789 |
|  | 3 | **Staircase - 1** |  | 2027-08-27 | 2027-10-15 |  |  |  |
| CC-SS-3rdM.280 |  | Reinforcement of wall upto Flight 1 | 2d | 2027-08-27 | 2027-08-30 | CC-SS-1stF.45 | Barbender [70 h]; Helper [40 h]; Physical Progress [2980 h]; Reinforcement Steel [1 MT1]; TATA Projects Ltd-25 | 96,512.5 |
| CC-SS-3rdM.285 |  | Shuttering of wall upto Flight 1 | 2d | 2027-08-30 | 2027-09-03 | CC-SS-3rdM.280 | Carpenter [20 h]; Helper [10 h]; Physical Progress [2980 h]; Formwork [10 Sq m]; TATA Projects Ltd-25 | 11,651.6 |
| CC-SS-3rdM.290 |  | Casting of wall upto Flight 1 | 1d | 2027-09-03 | 2027-09-04 | CC-SS-3rdM.285 | Mason; Helper; Physical Progress [1490 h]; Concrete M40 [3 m3]; TATA Projects Ltd-25 | 29,601 |
| CC-SS-3rdM.300 |  | Shuttering of Staircase upto Flight 1 | 1d | 2027-09-04 | 2027-09-06 | CC-SS-3rdM.290 | Carpenter [20 h]; Helper [10 h]; Physical Progress [1490 h]; Formwork [10 Sq m]; TATA Projects Ltd-25 | 11,651.6 |
| CC-SS-3rdM.295 |  | Reinforcement of Staircase upto Flight 1 | 1d | 2027-09-06 | 2027-09-07 | CC-SS-3rdM.300 | Barbender [70 h]; Helper [40 h]; Physical Progress [1490 h]; Reinforcement Steel [1 MT1]; TATA Projects Ltd-25 | 96,512.5 |
| CC-SS-3rdM.335 |  | MEP coordination upto Flight 1 | 1d | 2027-09-07 | 2027-09-09 | CC-SS-3rdM.295 | Physical Progress [1490 h]; TATA Projects Ltd-25 |  |
| CC-SS-3rdM.305 |  | Casting of Staircase upto Flight 1 | 1d | 2027-09-09 | 2027-09-10 | CC-SS-3rdM.335 | Mason; Helper; Physical Progress [1490 h]; Concrete M40 [3 m3]; TATA Projects Ltd-25 | 29,601 |
| CC-SS-3rdM.310 |  | Reinforcement of wall upto Flight 2 | 2d | 2027-09-10 | 2027-09-13 | CC-SS-3rdM.305 | Barbender [70 h]; Helper [40 h]; Physical Progress [2980 h]; Reinforcement Steel [1 MT1]; TATA Projects Ltd-25 | 96,512.5 |
| CC-SS-3rdM.315 |  | Shuttering of wall upto Flight 2 | 2d | 2027-09-13 | 2027-09-16 | CC-SS-3rdM.310 | Carpenter [20 h]; Helper [10 h]; Physical Progress [2980 h]; Formwork [10 Sq m]; TATA Projects Ltd-25 | 11,651.6 |
| CC-SS-3rdM.320 |  | Casting of wall upto Flight 2 | 1d | 2027-09-16 | 2027-09-17 | CC-SS-3rdM.315 | Mason; Helper; Physical Progress [1490 h]; Concrete M40 [3 m3]; TATA Projects Ltd-25 | 29,601 |
| CC-SS-3rdM.330 |  | Shuttering of Staircase upto Flight 2 | 1d | 2027-09-17 | 2027-09-18 | CC-SS-3rdM.320 | Carpenter [20 h]; Helper [10 h]; Physical Progress [1490 h]; Formwork [10 Sq m]; TATA Projects Ltd-25 | 11,651.6 |
| CC-SS-3rdM.385 |  | Reinforcement of Staircase upto Flight 2 | 1d | 2027-09-18 | 2027-09-20 | CC-SS-3rdM.330 | Barbender [70 h]; Helper [40 h]; Physical Progress [1490 h]; Reinforcement Steel [1 MT1]; TATA Projects Ltd-25 | 96,512.5 |
| CC-SS-3rdM.405 |  | MEP coordination upto Flight 2 | 1d | 2027-09-20 | 2027-09-21 | CC-SS-3rdM.385 | Physical Progress [1490 h]; TATA Projects Ltd-25 |  |
| CC-SS-3rdM.365 |  | Casting of Staircase upto Flight 2 | 1d | 2027-09-21 | 2027-09-23 | CC-SS-3rdM.405 | Mason; Helper; Physical Progress [1490 h]; Concrete M40 [3 m3]; TATA Projects Ltd-25 | 29,601 |
| CC-SS-3rdM.340 |  | Reinforcement of wall upto Flight 3 | 2d | 2027-09-23 | 2027-09-25 | CC-SS-3rdM.365 | Barbender [70 h]; Helper [40 h]; Physical Progress [2980 h]; Reinforcement Steel [1 MT1]; TATA Projects Ltd-25 | 96,512.5 |
| CC-SS-3rdM.345 |  | Shuttering of wall upto Flight 3 | 2d | 2027-09-25 | 2027-09-28 | CC-SS-3rdM.340 | Carpenter [20 h]; Helper [10 h]; Physical Progress [2980 h]; Formwork [10 Sq m]; TATA Projects Ltd-25 | 11,651.6 |
| CC-SS-3rdM.350 |  | Casting of wall upto Flight 3 | 1d | 2027-09-28 | 2027-09-30 | CC-SS-3rdM.345 | Mason; Helper; Physical Progress [1490 h]; Concrete M40 [3 m3]; TATA Projects Ltd-25 | 29,601 |
| CC-SS-3rdM.360 |  | Shuttering of Staircase upto Flight 3 | 1d | 2027-09-30 | 2027-10-01 | CC-SS-3rdM.350 | Carpenter [20 h]; Helper [10 h]; Physical Progress [1490 h]; Formwork [10 Sq m]; TATA Projects Ltd-25 | 11,651.6 |
| CC-SS-3rdM.355 |  | Reinforcement of Staircase upto Flight 3 | 1d | 2027-10-01 | 2027-10-04 | CC-SS-3rdM.360 | Barbender [70 h]; Helper [40 h]; Physical Progress [1490 h]; Reinforcement Steel [1 MT1]; TATA Projects Ltd-25 | 96,512.5 |
| CC-SS-3rdM.395 |  | MEP coordination upto Flight 3 | 1d | 2027-10-04 | 2027-10-05 | CC-SS-3rdM.355 | Physical Progress [1490 h]; TATA Projects Ltd-25 |  |
| CC-SS-3rdM.400 |  | Casting of Staircase upto Flight 3 | 1d | 2027-10-05 | 2027-10-06 | CC-SS-3rdM.395 | Mason; Helper; Physical Progress [1490 h]; Concrete M40 [3 m3]; TATA Projects Ltd-25 | 29,601 |
| CC-SS-3rdM.370 |  | Reinforcement of wall upto Flight 4 | 2d | 2027-10-06 | 2027-10-08 | CC-SS-3rdM.400 | Barbender [70 h]; Helper [40 h]; Physical Progress [2980 h]; Reinforcement Steel [1 MT1]; TATA Projects Ltd-25 | 96,512.5 |
| CC-SS-3rdM.375 |  | Shuttering of wall upto Flight 4 | 2d | 2027-10-08 | 2027-10-12 | CC-SS-3rdM.370 | Carpenter [20 h]; Helper [10 h]; Physical Progress [2980 h]; Formwork [10 Sq m]; TATA Projects Ltd-25 | 11,651.6 |
| CC-SS-3rdM.380 |  | Casting of wall upto Flight 4 | 1d | 2027-10-12 | 2027-10-13 | CC-SS-3rdM.375 | Mason; Helper; Physical Progress [1490 h]; Concrete M40 [3 m3]; TATA Projects Ltd-25 | 29,601 |
| CC-SS-3rdM.390 |  | Shuttering of Staircase upto Flight 4 | 1d | 2027-10-13 | 2027-10-14 | CC-SS-3rdM.380 | Carpenter [20 h]; Helper [10 h]; Physical Progress [1490 h]; Formwork [10 Sq m]; TATA Projects Ltd-25 | 11,651.6 |
| CC-SS-3rdM.325 |  | Reinforcement of Staircase upto Flight 4 | 1d | 2027-10-14 | 2027-10-15 | CC-SS-3rdM.390 | Barbender [70 h]; Helper [40 h]; Physical Progress [1490 h]; Reinforcement Steel [1 MT1]; TATA Projects Ltd-25 | 96,512.5 |

| ID | WBS | Activity | Duration | Start | Finish | Predecessors | Resources | Cost |
| --- | --- | --- | --- | --- | --- | --- | --- | --- |
|  | 5 | **Column, Core Wall, Shear Wall - Second Lift** |  | 2027-09-11 | 2027-09-25 |  |  |  |
| CC-SS-3rdM.190 |  | Reinforcement | 4d | 2027-09-11 | 2027-09-17 | CC-SS-3rdM.20 | Barbender [2600 h]; Helper [1300 h]; Physical Progress [5960 h]; Reinforcement Steel [39 MT1]; TATA Projects Ltd-25 | 3,763,987.5 |
| CC-SS-3rdM.205 |  | LPS | 1d | 2027-09-17 | 2027-09-18 | CC-SS-3rdM.190 | LPS [39529 INR]; Physical Progress [1490 h]; TATA Projects Ltd-25 | 39,529 |
| CC-SS-3rdM.195 |  | Shuttering | 4d | 2027-09-18 | 2027-09-24 | CC-SS-3rdM.190, CC-SS-3rdM.205 | Carpenter [1120 h]; Helper [560 h]; Physical Progress [5960 h]; Formwork [668 Sq m]; TATA Projects Ltd-25 | 778,326.88 |
| CC-SS-3rdM.200 |  | Concrete | 1d | 2027-09-24 | 2027-09-25 | CC-SS-3rdM.195 | Mason [50 h]; Helper [50 h]; Physical Progress [1490 h]; Concrete M40 [167 m3]; TATA Projects Ltd-25 | 1,647,789 |
|  | 4 | **Staircase - 2** |  | 2027-08-27 | 2027-10-15 |  |  |  |
| CC-SS-3rdM.410 |  | Reinforcement of wall upto Flight 1 | 2d | 2027-08-27 | 2027-08-30 | CC-SS-1stF.45 | Barbender [70 h]; Helper [40 h]; Physical Progress [2980 h]; Reinforcement Steel [1 MT1]; TATA Projects Ltd-25 | 96,512.5 |
| CC-SS-3rdM.415 |  | Shuttering of wall upto Flight 1 | 2d | 2027-08-30 | 2027-09-03 | CC-SS-3rdM.410 | Carpenter [20 h]; Helper [10 h]; Physical Progress [2980 h]; Formwork [10 Sq m]; TATA Projects Ltd-25 | 11,651.6 |
| CC-SS-3rdM.420 |  | Casting of wall upto Flight 1 | 1d | 2027-09-03 | 2027-09-04 | CC-SS-3rdM.415 | Mason; Helper; Physical Progress [1490 h]; Concrete M40 [3 m3]; TATA Projects Ltd-25 | 29,601 |
| CC-SS-3rdM.430 |  | Shuttering of Staircase upto Flight 1 | 1d | 2027-09-04 | 2027-09-06 | CC-SS-3rdM.420 | Carpenter [20 h]; Helper [10 h]; Physical Progress [1490 h]; Formwork [10 Sq m]; TATA Projects Ltd-25 | 11,651.6 |
| CC-SS-3rdM.425 |  | Reinforcement of Staircase upto Flight 1 | 1d | 2027-09-06 | 2027-09-07 | CC-SS-3rdM.430 | Barbender [70 h]; Helper [40 h]; Physical Progress [1490 h]; Reinforcement Steel [1 MT1]; TATA Projects Ltd-25 | 96,512.5 |
| CC-SS-3rdM.465 |  | MEP coordination upto Flight 1 | 1d | 2027-09-07 | 2027-09-09 | CC-SS-3rdM.425 | Physical Progress [1490 h]; TATA Projects Ltd-25 |  |
| CC-SS-3rdM.435 |  | Casting of Staircase upto Flight 1 | 1d | 2027-09-09 | 2027-09-10 | CC-SS-3rdM.465 | Mason; Helper; Physical Progress [1490 h]; Concrete M40 [3 m3]; TATA Projects Ltd-25 | 29,601 |
| CC-SS-3rdM.440 |  | Reinforcement of wall upto Flight 2 | 2d | 2027-09-10 | 2027-09-13 | CC-SS-3rdM.435 | Barbender [70 h]; Helper [40 h]; Physical Progress [2980 h]; Reinforcement Steel [1 MT1]; TATA Projects Ltd-25 | 96,512.5 |
| CC-SS-3rdM.445 |  | Shuttering of wall upto Flight 2 | 2d | 2027-09-13 | 2027-09-16 | CC-SS-3rdM.440 | Carpenter [20 h]; Helper [10 h]; Physical Progress [2980 h]; Formwork [10 Sq m]; TATA Projects Ltd-25 | 11,651.6 |
| CC-SS-3rdM.450 |  | Casting of wall upto Flight 2 | 1d | 2027-09-16 | 2027-09-17 | CC-SS-3rdM.445 | Mason; Helper; Physical Progress [1490 h]; Concrete M40 [3 m3]; TATA Projects Ltd-25 | 29,601 |
| CC-SS-3rdM.460 |  | Shuttering of Staircase upto Flight 2 | 1d | 2027-09-17 | 2027-09-18 | CC-SS-3rdM.450 | Carpenter [20 h]; Helper [10 h]; Physical Progress [1490 h]; Formwork [10 Sq m]; TATA Projects Ltd-25 | 11,651.6 |
| CC-SS-3rdM.515 |  | Reinforcement of Staircase upto Flight 2 | 1d | 2027-09-18 | 2027-09-20 | CC-SS-3rdM.460 | Barbender [70 h]; Helper [40 h]; Physical Progress [1490 h]; Reinforcement Steel [1 MT1]; TATA Projects Ltd-25 | 96,512.5 |
| CC-SS-3rdM.535 |  | MEP coordination upto Flight 2 | 1d | 2027-09-20 | 2027-09-21 | CC-SS-3rdM.515 | Physical Progress [1490 h]; TATA Projects Ltd-25 |  |
| CC-SS-3rdM.495 |  | Casting of Staircase upto Flight 2 | 1d | 2027-09-21 | 2027-09-23 | CC-SS-3rdM.535 | Mason; Helper; Physical Progress [1490 h]; Concrete M40 [3 m3]; TATA Projects Ltd-25 | 29,601 |
| CC-SS-3rdM.470 |  | Reinforcement of wall upto Flight 3 | 2d | 2027-09-23 | 2027-09-25 | CC-SS-3rdM.495 | Barbender [70 h]; Helper [40 h]; Physical Progress [2980 h]; Reinforcement Steel [1 MT1]; TATA Projects Ltd-25 | 96,512.5 |
| CC-SS-3rdM.475 |  | Shuttering of wall upto Flight 3 | 2d | 2027-09-25 | 2027-09-28 | CC-SS-3rdM.470 | Carpenter [20 h]; Helper [10 h]; Physical Progress [2980 h]; Formwork [10 Sq m]; TATA Projects Ltd-25 | 11,651.6 |
| CC-SS-3rdM.480 |  | Casting of wall upto Flight 3 | 1d | 2027-09-28 | 2027-09-30 | CC-SS-3rdM.475 | Mason; Helper; Physical Progress [1490 h]; Concrete M40 [3 m3]; TATA Projects Ltd-25 | 29,601 |
| CC-SS-3rdM.490 |  | Shuttering of Staircase upto Flight 3 | 1d | 2027-09-30 | 2027-10-01 | CC-SS-3rdM.480 | Carpenter [20 h]; Helper [10 h]; Physical Progress [1490 h]; Formwork [10 Sq m]; TATA Projects Ltd-25 | 11,651.6 |
| CC-SS-3rdM.485 |  | Reinforcement of Staircase upto Flight 3 | 1d | 2027-10-01 | 2027-10-04 | CC-SS-3rdM.490 | Barbender [70 h]; Helper [40 h]; Physical Progress [1490 h]; Reinforcement Steel [1 MT1]; TATA Projects Ltd-25 | 96,512.5 |
| CC-SS-3rdM.525 |  | MEP coordination upto Flight 3 | 1d | 2027-10-04 | 2027-10-05 | CC-SS-3rdM.485 | Physical Progress [1490 h]; TATA Projects Ltd-25 |  |
| CC-SS-3rdM.530 |  | Casting of Staircase upto Flight 3 | 1d | 2027-10-05 | 2027-10-06 | CC-SS-3rdM.525 | Mason; Helper; Physical Progress [1490 h]; Concrete M40 [3 m3]; TATA Projects Ltd-25 | 29,601 |
| CC-SS-3rdM.500 |  | Reinforcement of wall upto Flight 4 | 2d | 2027-10-06 | 2027-10-08 | CC-SS-3rdM.530 | Barbender [70 h]; Helper [40 h]; Physical Progress [2980 h]; Reinforcement Steel [1 MT1]; TATA Projects Ltd-25 | 96,512.5 |
| CC-SS-3rdM.505 |  | Shuttering of wall upto Flight 4 | 2d | 2027-10-08 | 2027-10-12 | CC-SS-3rdM.500 | Carpenter [20 h]; Helper [10 h]; Physical Progress [2980 h]; Formwork [10 Sq m]; TATA Projects Ltd-25 | 11,651.6 |
| CC-SS-3rdM.510 |  | Casting of wall upto Flight 4 | 1d | 2027-10-12 | 2027-10-13 | CC-SS-3rdM.505 | Mason; Helper; Physical Progress [1490 h]; Concrete M40 [3 m3]; TATA Projects Ltd-25 | 29,601 |
| CC-SS-3rdM.520 |  | Shuttering of Staircase upto Flight 4 | 1d | 2027-10-13 | 2027-10-14 | CC-SS-3rdM.510 | Carpenter [20 h]; Helper [10 h]; Physical Progress [1490 h]; Formwork [10 Sq m]; TATA Projects Ltd-25 | 11,651.6 |
| CC-SS-3rdM.455 |  | Reinforcement of Staircase upto Flight 4 | 1d | 2027-10-14 | 2027-10-15 | CC-SS-3rdM.520 | Barbender [70 h]; Helper [40 h]; Physical Progress [1490 h]; Reinforcement Steel [1 MT1]; TATA Projects Ltd-25 | 96,512.5 |

| ID | WBS | Activity | Duration | Start | Finish | Predecessors | Resources | Cost |
| --- | --- | --- | --- | --- | --- | --- | --- | --- |
|  | 2 | **Slab** |  | 2027-09-25 | 2027-11-01 |  |  |  |
| CC-SS-3rdM.30 |  | Shuttering | 5d | 2027-09-25 | 2027-10-04 | CC-SS-3rdM.20, CC-SS-3rdM.200 | Carpenter [3830 h]; Helper [1920 h]; Physical Progress [8940 h]; Formwork [2295 Sq m]; TATA Projects Ltd-25 | 2,674,042.2 |
| CC-SS-3rdM.35 |  | Reinforcement Bottom Net with chairs | 3d | 2027-10-04 | 2027-10-07 | CC-SS-3rdM.30 | Barbender [940 h]; Helper [470 h]; Physical Progress [4470 h]; Reinforcement Steel [14 MT1]; TATA Projects Ltd-25 | 1,351,175 |
| CC-SS-3rdM.60 |  | Laying of PT Tendon | 3d | 2027-10-07 | 2027-10-12 | CC-SS-3rdM.35, E-ShopD-Civil-PT-CC-25 | Physical Progress [5960 h]; TATA Projects Ltd-25 |  |
| CC-SS-3rdM.65 |  | Reinforcement Top Net | 2d | 2027-10-12 | 2027-10-14 | CC-SS-3rdM.60 | Barbender [940 h]; Helper [470 h]; Physical Progress [2980 h]; Reinforcement Steel [14 MT1]; TATA Projects Ltd-25 | 1,351,175 |
| CC-SS-3rdM.40 |  | MEP Coordination | 1d | 2027-10-15 | 2027-10-16 | CC-SS-3rdM.35, CC-SS-3rdM.65, CC-SS-3rdM.455, CC-SS-3rdM.325 | Physical Progress [1490 h]; TATA Projects Ltd-25 |  |
| CC-SS-3rdM.45 |  | Concrete of Slab | 1d | 2027-10-16 | 2027-10-18 | CC-SS-3rdM.40 | Mason [50 h]; Helper [50 h]; Physical Progress [1490 h]; Concrete M40 [373 m3]; TATA Projects Ltd-25 | 3,680,391 |
| CC-SS-3rdM.50 |  | Wait for Strength Gain | 6d | 2027-10-18 | 2027-10-25 | CC-SS-3rdM.45 | Physical Progress [8940 h]; TATA Projects Ltd-25 |  |
| CC-SS-3rdM.55 |  | PT Work | 5d | 2027-10-25 | 2027-11-01 | CC-SS-3rdM.50, CC-SS-1stF.55 | PT [6 MT1]; Helper [100 h]; PT Fitter [100 h]; Physical Progress [5960 h]; TATA Projects Ltd-25 | 1,140,000 |
|  | 4 | **Pour 2** |  | 2027-08-18 | 2027-10-25 |  |  |  |
|  | 1 | **Column, Core Wall, Shear Wall - First Lift** |  | 2027-08-18 | 2027-09-04 |  |  |  |
| CC-SS-3rdM.70 |  | Reinforcement | 4d | 2027-08-18 | 2027-08-25 | CC-SS-1stF.165 | Barbender [3200 h]; Helper [1600 h]; Physical Progress [5960 h]; Reinforcement Steel [48 MT1]; TATA Projects Ltd-25 | 4,632,600 |
| CC-SS-3rdM.85 |  | LPS | 1d | 2027-08-25 | 2027-08-27 | CC-SS-3rdM.70 | LPS [39529 INR]; Physical Progress [1490 h]; TATA Projects Ltd-25 | 39,529 |
| CC-SS-3rdM.75 |  | Shuttering | 4d | 2027-08-27 | 2027-09-03 | CC-SS-3rdM.70, CC-SS-3rdM.85 | Carpenter [1400 h]; Helper [700 h]; Physical Progress [5960 h]; Formwork [835 Sq m]; TATA Projects Ltd-25 | 972,908.6 |
| CC-SS-3rdM.80 |  | Concrete | 1d | 2027-09-03 | 2027-09-04 | CC-SS-3rdM.75 | Mason [50 h]; Helper [50 h]; Physical Progress [1490 h]; Concrete M40 [209 m3]; TATA Projects Ltd-25 | 2,062,203 |
|  | 5 | **Column, Core Wall, Shear Wall - Second Lift** |  | 2027-09-04 | 2027-09-18 |  |  |  |
| CC-SS-3rdM.210 |  | Reinforcement | 4d | 2027-09-04 | 2027-09-10 | CC-SS-3rdM.80 | Barbender [3200 h]; Helper [1600 h]; Physical Progress [5960 h]; Reinforcement Steel [48 MT1]; TATA Projects Ltd-25 | 4,632,600 |
| CC-SS-3rdM.225 |  | LPS | 1d | 2027-09-10 | 2027-09-11 | CC-SS-3rdM.210 | LPS [39529 INR]; Physical Progress [1490 h]; TATA Projects Ltd-25 | 39,529 |
| CC-SS-3rdM.215 |  | Shuttering | 4d | 2027-09-11 | 2027-09-17 | CC-SS-3rdM.210, CC-SS-3rdM.225 | Carpenter [1400 h]; Helper [700 h]; Physical Progress [5960 h]; Formwork [835 Sq m]; TATA Projects Ltd-25 | 972,908.6 |
| CC-SS-3rdM.220 |  | Concrete | 1d | 2027-09-17 | 2027-09-18 | CC-SS-3rdM.215 | Mason [50 h]; Helper [50 h]; Physical Progress [1490 h]; Concrete M40 [209 m3]; TATA Projects Ltd-25 | 2,062,203 |
|  | 3 | **Staircase** |  | 2027-08-18 | 2027-10-08 |  |  |  |
| CC-SS-3rdM.540 |  | Reinforcement of wall upto Flight 1 | 2d | 2027-08-18 | 2027-08-21 | CC-SS-1stF.165 | Barbender [70 h]; Helper [40 h]; Physical Progress [2980 h]; Reinforcement Steel [1 MT1]; TATA Projects Ltd-25 | 96,512.5 |
| CC-SS-3rdM.545 |  | Shuttering of wall upto Flight 1 | 2d | 2027-08-21 | 2027-08-25 | CC-SS-3rdM.540 | Carpenter [20 h]; Helper [10 h]; Physical Progress [2980 h]; Formwork [10 Sq m]; TATA Projects Ltd-25 | 11,651.6 |
| CC-SS-3rdM.550 |  | Casting of wall upto Flight 1 | 1d | 2027-08-25 | 2027-08-27 | CC-SS-3rdM.545 | Mason; Helper; Physical Progress [1490 h]; Concrete M40 [3 m3]; TATA Projects Ltd-25 | 29,601 |
| CC-SS-3rdM.560 |  | Shuttering of Staircase upto Flight 1 | 1d | 2027-08-27 | 2027-08-28 | CC-SS-3rdM.550 | Carpenter [20 h]; Helper [10 h]; Physical Progress [1490 h]; Formwork [10 Sq m]; TATA Projects Ltd-25 | 11,651.6 |
| CC-SS-3rdM.555 |  | Reinforcement of Staircase upto Flight 1 | 1d | 2027-08-28 | 2027-08-30 | CC-SS-3rdM.560 | Barbender [70 h]; Helper [40 h]; Physical Progress [1490 h]; Reinforcement Steel [1 MT1]; TATA Projects Ltd-25 | 96,512.5 |
| CC-SS-3rdM.595 |  | MEP coordination upto Flight 1 | 1d | 2027-08-30 | 2027-09-02 | CC-SS-3rdM.555 | Physical Progress [1490 h]; TATA Projects Ltd-25 |  |
| CC-SS-3rdM.565 |  | Casting of Staircase upto Flight 1 | 1d | 2027-09-02 | 2027-09-03 | CC-SS-3rdM.595 | Mason; Helper; Physical Progress [1490 h]; Concrete M40 [3 m3]; TATA Projects Ltd-25 | 29,601 |
| CC-SS-3rdM.570 |  | Reinforcement of wall upto Flight 2 | 2d | 2027-09-03 | 2027-09-06 | CC-SS-3rdM.565 | Barbender [70 h]; Helper [40 h]; Physical Progress [2980 h]; Reinforcement Steel [1 MT1]; TATA Projects Ltd-25 | 96,512.5 |
| CC-SS-3rdM.575 |  | Shuttering of wall upto Flight 2 | 2d | 2027-09-06 | 2027-09-09 | CC-SS-3rdM.570 | Carpenter [20 h]; Helper [10 h]; Physical Progress [2980 h]; Formwork [10 Sq m]; TATA Projects Ltd-25 | 11,651.6 |
| CC-SS-3rdM.580 |  | Casting of wall upto Flight 2 | 1d | 2027-09-09 | 2027-09-10 | CC-SS-3rdM.575 | Mason; Helper; Physical Progress [1490 h]; Concrete M40 [3 m3]; TATA Projects Ltd-25 | 29,601 |
| CC-SS-3rdM.590 |  | Shuttering of Staircase upto Flight 2 | 1d | 2027-09-10 | 2027-09-11 | CC-SS-3rdM.580 | Carpenter [20 h]; Helper [10 h]; Physical Progress [1490 h]; Formwork [10 Sq m]; TATA Projects Ltd-25 | 11,651.6 |
| CC-SS-3rdM.645 |  | Reinforcement of Staircase upto Flight 2 | 1d | 2027-09-11 | 2027-09-13 | CC-SS-3rdM.590 | Barbender [70 h]; Helper [40 h]; Physical Progress [1490 h]; Reinforcement Steel [1 MT1]; TATA Projects Ltd-25 | 96,512.5 |
| CC-SS-3rdM.665 |  | MEP coordination upto Flight 2 | 1d | 2027-09-13 | 2027-09-14 | CC-SS-3rdM.645 | Physical Progress [1490 h]; TATA Projects Ltd-25 |  |
| CC-SS-3rdM.625 |  | Casting of Staircase upto Flight 2 | 1d | 2027-09-14 | 2027-09-16 | CC-SS-3rdM.665 | Mason; Helper; Physical Progress [1490 h]; Concrete M40 [3 m3]; TATA Projects Ltd-25 | 29,601 |
| CC-SS-3rdM.600 |  | Reinforcement of wall upto Flight 3 | 2d | 2027-09-16 | 2027-09-18 | CC-SS-3rdM.625 | Barbender [70 h]; Helper [40 h]; Physical Progress [2980 h]; Reinforcement Steel [1 MT1]; TATA Projects Ltd-25 | 96,512.5 |
| CC-SS-3rdM.605 |  | Shuttering of wall upto Flight 3 | 2d | 2027-09-18 | 2027-09-21 | CC-SS-3rdM.600 | Carpenter [20 h]; Helper [10 h]; Physical Progress [2980 h]; Formwork [10 Sq m]; TATA Projects Ltd-25 | 11,651.6 |
| CC-SS-3rdM.610 |  | Casting of wall upto Flight 3 | 1d | 2027-09-21 | 2027-09-23 | CC-SS-3rdM.605 | Mason; Helper; Physical Progress [1490 h]; Concrete M40 [3 m3]; TATA Projects Ltd-25 | 29,601 |
| CC-SS-3rdM.620 |  | Shuttering of Staircase upto Flight 3 | 1d | 2027-09-23 | 2027-09-24 | CC-SS-3rdM.610 | Carpenter [20 h]; Helper [10 h]; Physical Progress [1490 h]; Formwork [10 Sq m]; TATA Projects Ltd-25 | 11,651.6 |
| CC-SS-3rdM.615 |  | Reinforcement of Staircase upto Flight 3 | 1d | 2027-09-24 | 2027-09-25 | CC-SS-3rdM.620 | Barbender [70 h]; Helper [40 h]; Physical Progress [1490 h]; Reinforcement Steel [1 MT1]; TATA Projects Ltd-25 | 96,512.5 |
| CC-SS-3rdM.655 |  | MEP coordination upto Flight 3 | 1d | 2027-09-25 | 2027-09-27 | CC-SS-3rdM.615 | Physical Progress [1490 h]; TATA Projects Ltd-25 |  |
| CC-SS-3rdM.660 |  | Casting of Staircase upto Flight 3 | 1d | 2027-09-27 | 2027-09-28 | CC-SS-3rdM.655 | Mason; Helper; Physical Progress [1490 h]; Concrete M40 [3 m3]; TATA Projects Ltd-25 | 29,601 |
| CC-SS-3rdM.630 |  | Reinforcement of wall upto Flight 4 | 2d | 2027-09-28 | 2027-10-01 | CC-SS-3rdM.660 | Barbender [70 h]; Helper [40 h]; Physical Progress [2980 h]; Reinforcement Steel [1 MT1]; TATA Projects Ltd-25 | 96,512.5 |
| CC-SS-3rdM.635 |  | Shuttering of wall upto Flight 4 | 2d | 2027-10-01 | 2027-10-05 | CC-SS-3rdM.630 | Carpenter [20 h]; Helper [10 h]; Physical Progress [2980 h]; Formwork [10 Sq m]; TATA Projects Ltd-25 | 11,651.6 |
| CC-SS-3rdM.640 |  | Casting of wall upto Flight 4 | 1d | 2027-10-05 | 2027-10-06 | CC-SS-3rdM.635 | Mason; Helper; Physical Progress [1490 h]; Concrete M40 [3 m3]; TATA Projects Ltd-25 | 29,601 |
| CC-SS-3rdM.650 |  | Shuttering of Staircase upto Flight 4 | 1d | 2027-10-06 | 2027-10-07 | CC-SS-3rdM.640 | Carpenter [20 h]; Helper [10 h]; Physical Progress [1490 h]; Formwork [10 Sq m]; TATA Projects Ltd-25 | 11,651.6 |
| CC-SS-3rdM.585 |  | Reinforcement of Staircase upto Flight 4 | 1d | 2027-10-07 | 2027-10-08 | CC-SS-3rdM.650 | Barbender [70 h]; Helper [40 h]; Physical Progress [1490 h]; Reinforcement Steel [1 MT1]; TATA Projects Ltd-25 | 96,512.5 |

| ID | WBS | Activity | Duration | Start | Finish | Predecessors | Resources | Cost |
| --- | --- | --- | --- | --- | --- | --- | --- | --- |
|  | 2 | **Slab** |  | 2027-09-18 | 2027-10-25 |  |  |  |
| CC-SS-3rdM.90 |  | Shuttering | 6d | 2027-09-18 | 2027-09-27 | CC-SS-3rdM.80, CC-SS-3rdM.220 | Carpenter [4780 h]; Helper [2390 h]; Physical Progress [8940 h]; Formwork [2868 Sq m]; TATA Projects Ltd-25 | 3,341,678.88 |
| CC-SS-3rdM.95 |  | Reinforcement Bottom Net with chairs | 3d | 2027-09-27 | 2027-10-01 | CC-SS-3rdM.90 | Barbender [1140 h]; Helper [570 h]; Physical Progress [4470 h]; Reinforcement Steel [17 MT1]; TATA Projects Ltd-25 | 1,640,712.5 |
| CC-SS-3rdM.120 |  | Laying of PT Tendon | 3d | 2027-10-01 | 2027-10-06 | CC-SS-3rdM.95 | Physical Progress [5960 h]; TATA Projects Ltd-25 |  |
| CC-SS-3rdM.125 |  | Reinforcement Top Net | 2d | 2027-10-06 | 2027-10-08 | CC-SS-3rdM.120 | Barbender [1140 h]; Helper [570 h]; Physical Progress [2980 h]; Reinforcement Steel [17 MT1]; TATA Projects Ltd-25 | 1,640,712.5 |
| CC-SS-3rdM.100 |  | MEP Coordination | 1d | 2027-10-08 | 2027-10-11 | CC-SS-3rdM.95, CC-SS-3rdM.125, CC-SS-3rdM.585 | Physical Progress [1490 h]; TATA Projects Ltd-25 |  |
| CC-SS-3rdM.105 |  | Concrete of Slab | 1d | 2027-10-11 | 2027-10-12 | CC-SS-3rdM.100 | Mason [50 h]; Helper [50 h]; Physical Progress [1490 h]; Concrete M40 [466 m3]; TATA Projects Ltd-25 | 4,598,022 |
| CC-SS-3rdM.110 |  | Wait for Strength Gain | 6d | 2027-10-12 | 2027-10-19 | CC-SS-3rdM.105 | Physical Progress [8940 h]; TATA Projects Ltd-25 |  |
| CC-SS-3rdM.115 |  | PT Work | 5d | 2027-10-19 | 2027-10-25 | CC-SS-3rdM.110, CC-SS-1stF.175 | PT [8 MT1]; Helper [100 h]; PT Fitter [100 h]; Physical Progress [11920 h]; TATA Projects Ltd-25 | 1,520,000 |
|  | 3 | **Pour 3** |  | 2027-09-02 | 2027-11-03 |  |  |  |
|  | 1 | **Column, Core Wall, Shear Wall - First Lift** |  | 2027-09-02 | 2027-09-16 |  |  |  |
| CC-SS-3rdM.130 |  | Reinforcement | 4d | 2027-09-02 | 2027-09-07 | CC-SS-1stF.225 | Barbender [1400 h]; Helper [700 h]; Physical Progress [5960 h]; Reinforcement Steel [21 MT1]; TATA Projects Ltd-25 | 2,026,762.5 |
| CC-SS-3rdM.145 |  | LPS | 1d | 2027-09-07 | 2027-09-09 | CC-SS-3rdM.130 | LPS [39529 INR]; Physical Progress [1490 h]; TATA Projects Ltd-25 | 39,529 |
| CC-SS-3rdM.135 |  | Shuttering | 4d | 2027-09-09 | 2027-09-14 | CC-SS-3rdM.130, CC-SS-3rdM.145 | Carpenter [600 h]; Helper [300 h]; Physical Progress [5960 h]; Formwork [358 Sq m]; TATA Projects Ltd-25 | 417,127.28 |
| CC-SS-3rdM.140 |  | Concrete | 1d | 2027-09-14 | 2027-09-16 | CC-SS-3rdM.135 | Mason [50 h]; Helper [50 h]; Physical Progress [1490 h]; Concrete M40 [90 m3]; TATA Projects Ltd-25 | 888,030 |
|  | 5 | **Column, Core Wall, Shear Wall - Second Lift** |  | 2027-09-16 | 2027-09-30 |  |  |  |
| CC-SS-3rdM.230 |  | Reinforcement | 4d | 2027-09-16 | 2027-09-21 | CC-SS-3rdM.140 | Barbender [1400 h]; Helper [700 h]; Physical Progress [5960 h]; Reinforcement Steel [21 MT1]; TATA Projects Ltd-25 | 2,026,762.5 |
| CC-SS-3rdM.245 |  | LPS | 1d | 2027-09-21 | 2027-09-23 | CC-SS-3rdM.230 | LPS [39529 INR]; Physical Progress [1490 h]; TATA Projects Ltd-25 | 39,529 |
| CC-SS-3rdM.235 |  | Shuttering | 4d | 2027-09-23 | 2027-09-28 | CC-SS-3rdM.230, CC-SS-3rdM.245 | Carpenter [600 h]; Helper [300 h]; Physical Progress [5960 h]; Formwork [358 Sq m]; TATA Projects Ltd-25 | 417,127.28 |
| CC-SS-3rdM.240 |  | Concrete | 1d | 2027-09-28 | 2027-09-30 | CC-SS-3rdM.235 | Mason [50 h]; Helper [50 h]; Physical Progress [1490 h]; Concrete M40 [90 m3]; TATA Projects Ltd-25 | 888,030 |
|  | 3 | **Staircase** |  | 2027-09-02 | 2027-10-19 |  |  |  |
| CC-SS-3rdM.670 |  | Reinforcement of wall upto Flight 1 | 2d | 2027-09-02 | 2027-09-04 | CC-SS-1stF.225 | Barbender [70 h]; Helper [40 h]; Physical Progress [2980 h]; Reinforcement Steel [1 MT1]; TATA Projects Ltd-25 | 96,512.5 |
| CC-SS-3rdM.675 |  | Shuttering of wall upto Flight 1 | 2d | 2027-09-04 | 2027-09-07 | CC-SS-3rdM.670 | Carpenter [20 h]; Helper [10 h]; Physical Progress [2980 h]; Formwork [10 Sq m]; TATA Projects Ltd-25 | 11,651.6 |
| CC-SS-3rdM.680 |  | Casting of wall upto Flight 1 | 1d | 2027-09-07 | 2027-09-09 | CC-SS-3rdM.675 | Mason; Helper; Physical Progress [1490 h]; Concrete M40 [3 m3]; TATA Projects Ltd-25 | 29,601 |
| CC-SS-3rdM.690 |  | Shuttering of Staircase upto Flight 1 | 1d | 2027-09-09 | 2027-09-10 | CC-SS-3rdM.680 | Carpenter [20 h]; Helper [10 h]; Physical Progress [1490 h]; Formwork [10 Sq m]; TATA Projects Ltd-25 | 11,651.6 |
| CC-SS-3rdM.685 |  | Reinforcement of Staircase upto Flight 1 | 1d | 2027-09-10 | 2027-09-11 | CC-SS-3rdM.690 | Barbender [70 h]; Helper [40 h]; Physical Progress [1490 h]; Reinforcement Steel [1 MT1]; TATA Projects Ltd-25 | 96,512.5 |
| CC-SS-3rdM.725 |  | MEP coordination upto Flight 1 | 1d | 2027-09-11 | 2027-09-13 | CC-SS-3rdM.685 | Physical Progress [1490 h]; TATA Projects Ltd-25 |  |
| CC-SS-3rdM.695 |  | Casting of Staircase upto Flight 1 | 1d | 2027-09-13 | 2027-09-14 | CC-SS-3rdM.725 | Mason; Helper; Physical Progress [1490 h]; Concrete M40 [3 m3]; TATA Projects Ltd-25 | 29,601 |
| CC-SS-3rdM.700 |  | Reinforcement of wall upto Flight 2 | 2d | 2027-09-14 | 2027-09-17 | CC-SS-3rdM.695 | Barbender [70 h]; Helper [40 h]; Physical Progress [2980 h]; Reinforcement Steel [1 MT1]; TATA Projects Ltd-25 | 96,512.5 |
| CC-SS-3rdM.705 |  | Shuttering of wall upto Flight 2 | 2d | 2027-09-17 | 2027-09-20 | CC-SS-3rdM.700 | Carpenter [20 h]; Helper [10 h]; Physical Progress [2980 h]; Formwork [10 Sq m]; TATA Projects Ltd-25 | 11,651.6 |
| CC-SS-3rdM.710 |  | Casting of wall upto Flight 2 | 1d | 2027-09-20 | 2027-09-21 | CC-SS-3rdM.705 | Mason; Helper; Physical Progress [1490 h]; Concrete M40 [3 m3]; TATA Projects Ltd-25 | 29,601 |
| CC-SS-3rdM.720 |  | Shuttering of Staircase upto Flight 2 | 1d | 2027-09-21 | 2027-09-23 | CC-SS-3rdM.710 | Carpenter [20 h]; Helper [10 h]; Physical Progress [1490 h]; Formwork [10 Sq m]; TATA Projects Ltd-25 | 11,651.6 |
| CC-SS-3rdM.775 |  | Reinforcement of Staircase upto Flight 2 | 1d | 2027-09-23 | 2027-09-24 | CC-SS-3rdM.720 | Barbender [70 h]; Helper [40 h]; Physical Progress [1490 h]; Reinforcement Steel [1 MT1]; TATA Projects Ltd-25 | 96,512.5 |
| CC-SS-3rdM.795 |  | MEP coordination upto Flight 2 | 1d | 2027-09-24 | 2027-09-25 | CC-SS-3rdM.775 | Physical Progress [1490 h]; TATA Projects Ltd-25 |  |
| CC-SS-3rdM.755 |  | Casting of Staircase upto Flight 2 | 1d | 2027-09-25 | 2027-09-27 | CC-SS-3rdM.795 | Mason; Helper; Physical Progress [1490 h]; Concrete M40 [3 m3]; TATA Projects Ltd-25 | 29,601 |
| CC-SS-3rdM.730 |  | Reinforcement of wall upto Flight 3 | 2d | 2027-09-27 | 2027-09-30 | CC-SS-3rdM.755 | Barbender [70 h]; Helper [40 h]; Physical Progress [2980 h]; Reinforcement Steel [1 MT1]; TATA Projects Ltd-25 | 96,512.5 |
| CC-SS-3rdM.735 |  | Shuttering of wall upto Flight 3 | 2d | 2027-09-30 | 2027-10-04 | CC-SS-3rdM.730 | Carpenter [20 h]; Helper [10 h]; Physical Progress [2980 h]; Formwork [10 Sq m]; TATA Projects Ltd-25 | 11,651.6 |
| CC-SS-3rdM.740 |  | Casting of wall upto Flight 3 | 1d | 2027-10-04 | 2027-10-05 | CC-SS-3rdM.735 | Mason; Helper; Physical Progress [1490 h]; Concrete M40 [3 m3]; TATA Projects Ltd-25 | 29,601 |
| CC-SS-3rdM.750 |  | Shuttering of Staircase upto Flight 3 | 1d | 2027-10-05 | 2027-10-06 | CC-SS-3rdM.740 | Carpenter [20 h]; Helper [10 h]; Physical Progress [1490 h]; Formwork [10 Sq m]; TATA Projects Ltd-25 | 11,651.6 |
| CC-SS-3rdM.745 |  | Reinforcement of Staircase upto Flight 3 | 1d | 2027-10-06 | 2027-10-07 | CC-SS-3rdM.750 | Barbender [70 h]; Helper [40 h]; Physical Progress [1490 h]; Reinforcement Steel [1 MT1]; TATA Projects Ltd-25 | 96,512.5 |
| CC-SS-3rdM.785 |  | MEP coordination upto Flight 3 | 1d | 2027-10-07 | 2027-10-08 | CC-SS-3rdM.745 | Physical Progress [1490 h]; TATA Projects Ltd-25 |  |
| CC-SS-3rdM.790 |  | Casting of Staircase upto Flight 3 | 1d | 2027-10-08 | 2027-10-11 | CC-SS-3rdM.785 | Mason; Helper; Physical Progress [1490 h]; Concrete M40 [3 m3]; TATA Projects Ltd-25 | 29,601 |
| CC-SS-3rdM.760 |  | Reinforcement of wall upto Flight 4 | 2d | 2027-10-11 | 2027-10-13 | CC-SS-3rdM.790 | Barbender [70 h]; Helper [40 h]; Physical Progress [2980 h]; Reinforcement Steel [1 MT1]; TATA Projects Ltd-25 | 96,512.5 |
| CC-SS-3rdM.765 |  | Shuttering of wall upto Flight 4 | 2d | 2027-10-13 | 2027-10-15 | CC-SS-3rdM.760 | Carpenter [20 h]; Helper [10 h]; Physical Progress [2980 h]; Formwork [10 Sq m]; TATA Projects Ltd-25 | 11,651.6 |
| CC-SS-3rdM.770 |  | Casting of wall upto Flight 4 | 1d | 2027-10-15 | 2027-10-16 | CC-SS-3rdM.765 | Mason; Helper; Physical Progress [1490 h]; Concrete M40 [3 m3]; TATA Projects Ltd-25 | 29,601 |
| CC-SS-3rdM.780 |  | Shuttering of Staircase upto Flight 4 | 1d | 2027-10-16 | 2027-10-18 | CC-SS-3rdM.770 | Carpenter [20 h]; Helper [10 h]; Physical Progress [1490 h]; Formwork [10 Sq m]; TATA Projects Ltd-25 | 11,651.6 |
| CC-SS-3rdM.715 |  | Reinforcement of Staircase upto Flight 4 | 1d | 2027-10-18 | 2027-10-19 | CC-SS-3rdM.780 | Barbender [70 h]; Helper [40 h]; Physical Progress [1490 h]; Reinforcement Steel [1 MT1]; TATA Projects Ltd-25 | 96,512.5 |

| ID | WBS | Activity | Duration | Start | Finish | Predecessors | Resources | Cost |
| --- | --- | --- | --- | --- | --- | --- | --- | --- |
|  | 2 | **Slab** |  | 2027-09-30 | 2027-11-03 |  |  |  |
| CC-SS-3rdM.150 |  | Shuttering | 4d | 2027-09-30 | 2027-10-06 | CC-SS-3rdM.140, CC-SS-3rdM.240 | Carpenter [2060 h]; Helper [1030 h]; Physical Progress [8940 h]; Formwork [1231 Sq m]; TATA Projects Ltd-25 | 1,434,311.96 |
| CC-SS-3rdM.155 |  | Reinforcement Bottom Net with chairs | 2d | 2027-10-06 | 2027-10-08 | CC-SS-3rdM.150 | Barbender [470 h]; Helper [240 h]; Physical Progress [4470 h]; Reinforcement Steel [7 MT1]; TATA Projects Ltd-25 | 675,587.5 |
| CC-SS-3rdM.180 |  | Laying of PT Tendon | 2d | 2027-10-08 | 2027-10-12 | CC-SS-3rdM.155 | Physical Progress [5960 h]; TATA Projects Ltd-25 |  |
| CC-SS-3rdM.185 |  | Reinforcement Top Net | 2d | 2027-10-12 | 2027-10-14 | CC-SS-3rdM.180 | Barbender [470 h]; Helper [240 h]; Physical Progress [2980 h]; Reinforcement Steel [7 MT1]; TATA Projects Ltd-25 | 675,587.5 |
| CC-SS-3rdM.160 |  | MEP Coordination | 1d | 2027-10-19 | 2027-10-20 | CC-SS-3rdM.155, CC-SS-3rdM.185, CC-SS-3rdM.715 | Physical Progress [1490 h]; TATA Projects Ltd-25 |  |
| CC-SS-3rdM.165 |  | Concrete of Slab | 1d | 2027-10-20 | 2027-10-21 | CC-SS-3rdM.160 | Mason [50 h]; Helper [50 h]; Physical Progress [1490 h]; Concrete M40 [200 m3]; TATA Projects Ltd-25 | 1,973,400 |
| CC-SS-3rdM.170 |  | Wait for Strength Gain | 6d | 2027-10-21 | 2027-10-28 | CC-SS-3rdM.165 | Physical Progress [8940 h]; TATA Projects Ltd-25 |  |
| CC-SS-3rdM.175 |  | PT Work | 4d | 2027-10-28 | 2027-11-03 | CC-SS-3rdM.170, CC-SS-1stF.235 | PT [3 MT1]; Helper [100 h]; PT Fitter [100 h]; Physical Progress [11920 h]; TATA Projects Ltd-25 | 570,000 |
|  | 6 | **Pour 4** |  | 2027-11-03 | 2028-01-13 |  |  |  |
|  | 2 | **Slab** |  | 2027-11-03 | 2028-01-13 |  |  |  |
| CC-SS-3rdM.250 |  | Erection of Structural Steel Beams | 25d | 2027-11-03 | 2027-12-02 | CC-SS-3rdM.175, CC-SS-3rdM.115, CC-SS-3rdM.55 | Str. Steel Fitter [6260 h]; Rigger [12520 h]; Welder [12520 h]; Khalasi Helper [12520 h]; Physical Progress [29800 h]; Structural Steel [938 MT1]; Vermiculite Paint [671 Sq m]; Intumescent Paint [587 Sq m]; TATA Projects Ltd-25 | 166,542,306 |
| CC-SS-3rdM.255 |  | Metal Deck Sheet | 8d | 2027-12-02 | 2027-12-11 | CC-SS-3rdM.250 | Physical Progress [11920 h]; Composite Slab Metal Deck [11 MT1]; TATA Projects Ltd-25 | 2,254,824 |
| CC-SS-3rdM.275 |  | Shear Studs | 4d | 2027-12-11 | 2027-12-16 | CC-SS-3rdM.255 | Physical Progress [5960 h]; Shear Studs [4 MT1]; TATA Projects Ltd-25 | 940,000 |
| CC-SS-3rdM.270 |  | Reinforcement Bottom Net with chairs | 3d | 2027-12-16 | 2027-12-20 | CC-SS-3rdM.275 | Barbender [1400 h]; Helper [700 h]; Physical Progress [4470 h]; Reinforcement Steel [21 MT1]; TATA Projects Ltd-25 | 2,026,762.5 |
| CC-SS-3rdM.800 |  | Laying of PT Tendons | 3d | 2027-12-20 | 2027-12-23 | CC-SS-3rdM.270 | Physical Progress [4470 h]; TATA Projects Ltd-25 |  |
| CC-SS-3rdM.805 |  | Reinforcement Top Net | 3d | 2027-12-23 | 2027-12-28 | CC-SS-3rdM.800 | Barbender [1400 h]; Helper [700 h]; Physical Progress [4470 h]; Reinforcement Steel [21 MT1]; TATA Projects Ltd-25 | 2,026,762.5 |
| CC-SS-3rdM.260 |  | MEP Coordination | 1d | 2027-12-28 | 2027-12-29 | CC-SS-3rdM.805 | Physical Progress [1490 h]; TATA Projects Ltd-25 |  |
| CC-SS-3rdM.265 |  | Concrete of Slab | 1d | 2027-12-29 | 2027-12-30 | CC-SS-3rdM.260 | Physical Progress [1490 h]; Concrete M40 [560 m3]; Additional for scaff above 4.5m Height [30 LP]; TATA Projects Ltd-25 | 10,949,520 |
| CC-SS-3rdM.810 |  | Wait for Strength Gain | 6d | 2027-12-30 | 2028-01-07 | CC-SS-3rdM.265 | Physical Progress [8940 h]; TATA Projects Ltd-25 |  |
| CC-SS-3rdM.815 |  | PT Work | 5d | 2028-01-07 | 2028-01-13 | CC-SS-3rdM.810 | PT [10 MT1]; Helper [100 h]; PT Fitter [100 h]; Physical Progress [7450 h]; TATA Projects Ltd-25 | 1,900,000 |
|  | 6 | **Second Floor** |  | 2027-10-12 | 2028-03-17 |  |  |  |
|  | 2 | **Pour 1** |  | 2027-10-18 | 2027-12-11 |  |  |  |
|  | 1 | **Column, Core Wall, Shear Wall - First Lift** |  | 2027-10-18 | 2027-10-30 |  |  |  |
| CC-SS-2ndF.10 |  | Reinforcement | 4d | 2027-10-18 | 2027-10-22 | CC-SS-3rdM.45, E-GFC-ST-CC-210 | Barbender [3400 h]; Helper [1700 h]; Physical Progress [5960 h]; Reinforcement Steel [51 MT1]; TATA Projects Ltd-25 | 4,922,137.5 |
| CC-SS-2ndF.25 |  | LPS | 1d | 2027-10-22 | 2027-10-23 | CC-SS-2ndF.10 | LPS [39529 INR]; Physical Progress [1490 h]; TATA Projects Ltd-25 | 39,529 |
| CC-SS-2ndF.15 |  | Shuttering | 4d | 2027-10-23 | 2027-10-28 | CC-SS-2ndF.10, CC-SS-2ndF.25, E-GFC-ST-CC-210 | Carpenter [1480 h]; Helper [740 h]; Physical Progress [5960 h]; Formwork [885 Sq m]; TATA Projects Ltd-25 | 1,031,166.6 |
| CC-SS-2ndF.20 |  | Concrete | 1d | 2027-10-28 | 2027-10-30 | CC-SS-2ndF.15 | Mason [50 h]; Helper [50 h]; Physical Progress [1490 h]; Concrete M40 [221 m3]; TATA Projects Ltd-25 | 2,180,607 |

| ID | WBS | Activity | Duration | Start | Finish | Predecessors | Resources | Cost |
| --- | --- | --- | --- | --- | --- | --- | --- | --- |
|  | 3 | **Staircase - 1** |  | 2027-10-18 | 2027-11-17 |  |  |  |
| CC-SS-2ndF.280 |  | Reinforcement of wall upto Flight 1 | 2d | 2027-10-18 | 2027-10-20 | CC-SS-3rdM.45 | Barbender [70 h]; Helper [40 h]; Physical Progress [2980 h]; Reinforcement Steel [1 MT1]; TATA Projects Ltd-25 | 96,512.5 |
| CC-SS-2ndF.285 |  | Shuttering of wall upto Flight 1 | 2d | 2027-10-20 | 2027-10-22 | CC-SS-2ndF.280 | Carpenter [20 h]; Helper [10 h]; Physical Progress [2980 h]; Formwork [10 Sq m]; TATA Projects Ltd-25 | 11,651.6 |
| CC-SS-2ndF.290 |  | Casting of wall upto Flight 1 | 1d | 2027-10-22 | 2027-10-23 | CC-SS-2ndF.285 | Mason; Helper; Physical Progress [1490 h]; Concrete M40 [3 m3]; TATA Projects Ltd-25 | 29,601 |
| CC-SS-2ndF.300 |  | Shuttering of Staircase upto Flight 1 | 1d | 2027-10-23 | 2027-10-25 | CC-SS-2ndF.290 | Carpenter [20 h]; Helper [10 h]; Physical Progress [1490 h]; Formwork [10 Sq m]; TATA Projects Ltd-25 | 11,651.6 |
| CC-SS-2ndF.295 |  | Reinforcement of Staircase upto Flight 1 | 1d | 2027-10-25 | 2027-10-26 | CC-SS-2ndF.300 | Barbender [70 h]; Helper [40 h]; Physical Progress [1490 h]; Reinforcement Steel [1 MT1]; TATA Projects Ltd-25 | 96,512.5 |
| CC-SS-2ndF.335 |  | MEP coordination upto Flight 1 | 1d | 2027-10-26 | 2027-10-27 | CC-SS-2ndF.295 | Physical Progress [1490 h]; TATA Projects Ltd-25 |  |
| CC-SS-2ndF.305 |  | Casting of Staircase upto Flight 1 | 1d | 2027-10-27 | 2027-10-28 | CC-SS-2ndF.335 | Mason; Helper; Physical Progress [1490 h]; Concrete M40 [3 m3]; TATA Projects Ltd-25 | 29,601 |
| CC-SS-2ndF.310 |  | Reinforcement of wall upto Flight 2 | 2d | 2027-10-28 | 2027-11-01 | CC-SS-2ndF.305 | Barbender [70 h]; Helper [40 h]; Physical Progress [2980 h]; Reinforcement Steel [1 MT1]; TATA Projects Ltd-25 | 96,512.5 |
| CC-SS-2ndF.315 |  | Shuttering of wall upto Flight 2 | 2d | 2027-11-01 | 2027-11-03 | CC-SS-2ndF.310 | Carpenter [20 h]; Helper [10 h]; Physical Progress [2980 h]; Formwork [10 Sq m]; TATA Projects Ltd-25 | 11,651.6 |
| CC-SS-2ndF.320 |  | Casting of wall upto Flight 2 | 1d | 2027-11-03 | 2027-11-04 | CC-SS-2ndF.315 | Mason; Helper; Physical Progress [1490 h]; Concrete M40 [3 m3]; TATA Projects Ltd-25 | 29,601 |
| CC-SS-2ndF.330 |  | Shuttering of Staircase upto Flight 2 | 1d | 2027-11-04 | 2027-11-05 | CC-SS-2ndF.320 | Carpenter [20 h]; Helper [10 h]; Physical Progress [1490 h]; Formwork [10 Sq m]; TATA Projects Ltd-25 | 11,651.6 |
| CC-SS-2ndF.325 |  | Reinforcement of Staircase upto Flight 2 | 1d | 2027-11-05 | 2027-11-06 | CC-SS-2ndF.330 | Barbender [70 h]; Helper [40 h]; Physical Progress [1490 h]; Reinforcement Steel [1 MT1]; TATA Projects Ltd-25 | 96,512.5 |
| CC-SS-2ndF.430 |  | MEP coordination upto Flight 2 | 1d | 2027-11-06 | 2027-11-08 | CC-SS-2ndF.325 | Physical Progress [1490 h]; TATA Projects Ltd-25 |  |
| CC-SS-2ndF.400 |  | Casting of Staircase upto Flight 2 | 1d | 2027-11-08 | 2027-11-09 | CC-SS-2ndF.430 | Mason; Helper; Physical Progress [1490 h]; Concrete M40 [3 m3]; TATA Projects Ltd-25 | 29,601 |
| CC-SS-2ndF.405 |  | Reinforcement of wall upto Flight 3 | 2d | 2027-11-09 | 2027-11-11 | CC-SS-2ndF.400 | Barbender [70 h]; Helper [40 h]; Physical Progress [2980 h]; Reinforcement Steel [1 MT1]; TATA Projects Ltd-25 | 96,512.5 |
| CC-SS-2ndF.410 |  | Shuttering of wall upto Flight 3 | 2d | 2027-11-11 | 2027-11-13 | CC-SS-2ndF.405 | Carpenter [20 h]; Helper [10 h]; Physical Progress [2980 h]; Formwork [10 Sq m]; TATA Projects Ltd-25 | 11,651.6 |
| CC-SS-2ndF.415 |  | Casting of wall upto Flight 3 | 1d | 2027-11-13 | 2027-11-15 | CC-SS-2ndF.410 | Mason; Helper; Physical Progress [1490 h]; Concrete M40 [3 m3]; TATA Projects Ltd-25 | 29,601 |
| CC-SS-2ndF.425 |  | Shuttering of Staircase upto Flight 3 | 1d | 2027-11-15 | 2027-11-16 | CC-SS-2ndF.415 | Carpenter [20 h]; Helper [10 h]; Physical Progress [1490 h]; Formwork [10 Sq m]; TATA Projects Ltd-25 | 11,651.6 |
| CC-SS-2ndF.420 |  | Reinforcement of Staircase upto Flight 3 | 1d | 2027-11-16 | 2027-11-17 | CC-SS-2ndF.425 | Barbender [70 h]; Helper [40 h]; Physical Progress [1490 h]; Reinforcement Steel [1 MT1]; TATA Projects Ltd-25 | 96,512.5 |
|  | 5 | **Column, Core Wall, Shear Wall - Second Lift** |  | 2027-10-30 | 2027-11-11 |  |  |  |
| CC-SS-2ndF.190 |  | Reinforcement | 4d | 2027-10-30 | 2027-11-04 | CC-SS-2ndF.20 | Barbender [3400 h]; Helper [1700 h]; Physical Progress [5960 h]; Reinforcement Steel [51 MT1]; TATA Projects Ltd-25 | 4,922,137.5 |
| CC-SS-2ndF.205 |  | LPS | 1d | 2027-11-04 | 2027-11-05 | CC-SS-2ndF.190 | LPS [39529 INR]; Physical Progress [1490 h]; TATA Projects Ltd-25 | 39,529 |
| CC-SS-2ndF.195 |  | Shuttering | 4d | 2027-11-05 | 2027-11-10 | CC-SS-2ndF.190, CC-SS-2ndF.205 | Carpenter [1480 h]; Helper [740 h]; Physical Progress [5960 h]; Formwork [885 Sq m]; TATA Projects Ltd-25 | 1,031,166.6 |
| CC-SS-2ndF.200 |  | Concrete | 1d | 2027-11-10 | 2027-11-11 | CC-SS-2ndF.195 | Mason [50 h]; Helper [50 h]; Physical Progress [1490 h]; Concrete M40 [221 m3]; TATA Projects Ltd-25 | 2,180,607 |

| ID | WBS | Activity | Duration | Start | Finish | Predecessors | Resources | Cost |
| --- | --- | --- | --- | --- | --- | --- | --- | --- |
|  | 4 | **Staircase - 2** |  | 2027-10-18 | 2027-11-17 |  |  |  |
| CC-SS-2ndF.340 |  | Reinforcement of wall upto Flight 1 | 2d | 2027-10-18 | 2027-10-20 | CC-SS-3rdM.45 | Barbender [70 h]; Helper [40 h]; Physical Progress [2980 h]; Reinforcement Steel [1 MT1]; TATA Projects Ltd-25 | 96,512.5 |
| CC-SS-2ndF.345 |  | Shuttering of wall upto Flight 1 | 2d | 2027-10-20 | 2027-10-22 | CC-SS-2ndF.340 | Carpenter [20 h]; Helper [10 h]; Physical Progress [2980 h]; Formwork [10 Sq m]; TATA Projects Ltd-25 | 11,651.6 |
| CC-SS-2ndF.350 |  | Casting of wall upto Flight 1 | 1d | 2027-10-22 | 2027-10-23 | CC-SS-2ndF.345 | Mason; Helper; Physical Progress [1490 h]; Concrete M40 [3 m3]; TATA Projects Ltd-25 | 29,601 |
| CC-SS-2ndF.360 |  | Shuttering of Staircase upto Flight 1 | 1d | 2027-10-23 | 2027-10-25 | CC-SS-2ndF.350 | Carpenter [20 h]; Helper [10 h]; Physical Progress [1490 h]; Formwork [10 Sq m]; TATA Projects Ltd-25 | 11,651.6 |
| CC-SS-2ndF.355 |  | Reinforcement of Staircase upto Flight 1 | 1d | 2027-10-25 | 2027-10-26 | CC-SS-2ndF.360 | Barbender [70 h]; Helper [40 h]; Physical Progress [1490 h]; Reinforcement Steel [1 MT1]; TATA Projects Ltd-25 | 96,512.5 |
| CC-SS-2ndF.395 |  | MEP coordination upto Flight 1 | 1d | 2027-10-26 | 2027-10-27 | CC-SS-2ndF.355 | Physical Progress [1490 h]; TATA Projects Ltd-25 |  |
| CC-SS-2ndF.365 |  | Casting of Staircase upto Flight 1 | 1d | 2027-10-27 | 2027-10-28 | CC-SS-2ndF.395 | Mason; Helper; Physical Progress [1490 h]; Concrete M40 [3 m3]; TATA Projects Ltd-25 | 29,601 |
| CC-SS-2ndF.370 |  | Reinforcement of wall upto Flight 2 | 2d | 2027-10-28 | 2027-11-01 | CC-SS-2ndF.365 | Barbender [70 h]; Helper [40 h]; Physical Progress [2980 h]; Reinforcement Steel [1 MT1]; TATA Projects Ltd-25 | 96,512.5 |
| CC-SS-2ndF.375 |  | Shuttering of wall upto Flight 2 | 2d | 2027-11-01 | 2027-11-03 | CC-SS-2ndF.370 | Carpenter [20 h]; Helper [10 h]; Physical Progress [2980 h]; Formwork [10 Sq m]; TATA Projects Ltd-25 | 11,651.6 |
| CC-SS-2ndF.380 |  | Casting of wall upto Flight 2 | 1d | 2027-11-03 | 2027-11-04 | CC-SS-2ndF.375 | Mason; Helper; Physical Progress [1490 h]; Concrete M40 [3 m3]; TATA Projects Ltd-25 | 29,601 |
| CC-SS-2ndF.390 |  | Shuttering of Staircase upto Flight 2 | 1d | 2027-11-04 | 2027-11-05 | CC-SS-2ndF.380 | Carpenter [20 h]; Helper [10 h]; Physical Progress [1490 h]; Formwork [10 Sq m]; TATA Projects Ltd-25 | 11,651.6 |
| CC-SS-2ndF.385 |  | Reinforcement of Staircase upto Flight 2 | 1d | 2027-11-05 | 2027-11-06 | CC-SS-2ndF.390 | Barbender [70 h]; Helper [40 h]; Physical Progress [1490 h]; Reinforcement Steel [1 MT1]; TATA Projects Ltd-25 | 96,512.5 |
| CC-SS-2ndF.465 |  | MEP coordination upto Flight 2 | 1d | 2027-11-06 | 2027-11-08 | CC-SS-2ndF.385 | Physical Progress [1490 h]; TATA Projects Ltd-25 |  |
| CC-SS-2ndF.435 |  | Casting of Staircase upto Flight 2 | 1d | 2027-11-08 | 2027-11-09 | CC-SS-2ndF.465 | Mason; Helper; Physical Progress [1490 h]; Concrete M40 [3 m3]; TATA Projects Ltd-25 | 29,601 |
| CC-SS-2ndF.440 |  | Reinforcement of wall upto Flight 3 | 2d | 2027-11-09 | 2027-11-11 | CC-SS-2ndF.435 | Barbender [70 h]; Helper [40 h]; Physical Progress [2980 h]; Reinforcement Steel [1 MT1]; TATA Projects Ltd-25 | 96,512.5 |
| CC-SS-2ndF.445 |  | Shuttering of wall upto Flight 3 | 2d | 2027-11-11 | 2027-11-13 | CC-SS-2ndF.440 | Carpenter [20 h]; Helper [10 h]; Physical Progress [2980 h]; Formwork [10 Sq m]; TATA Projects Ltd-25 | 11,651.6 |
| CC-SS-2ndF.450 |  | Casting of wall upto Flight 3 | 1d | 2027-11-13 | 2027-11-15 | CC-SS-2ndF.445 | Mason; Helper; Physical Progress [1490 h]; Concrete M40 [3 m3]; TATA Projects Ltd-25 | 29,601 |
| CC-SS-2ndF.460 |  | Shuttering of Staircase upto Flight 3 | 1d | 2027-11-15 | 2027-11-16 | CC-SS-2ndF.450 | Carpenter [20 h]; Helper [10 h]; Physical Progress [1490 h]; Formwork [10 Sq m]; TATA Projects Ltd-25 | 11,651.6 |
| CC-SS-2ndF.455 |  | Reinforcement of Staircase upto Flight 3 | 1d | 2027-11-16 | 2027-11-17 | CC-SS-2ndF.460 | Barbender [70 h]; Helper [40 h]; Physical Progress [1490 h]; Reinforcement Steel [1 MT1]; TATA Projects Ltd-25 | 96,512.5 |
|  | 2 | **Slab** |  | 2027-11-11 | 2027-12-11 |  |  |  |
| CC-SS-2ndF.30 |  | Shuttering | 5d | 2027-11-11 | 2027-11-17 | CC-SS-2ndF.20, CC-SS-2ndF.200 | Carpenter [4870 h]; Helper [2440 h]; Physical Progress [8940 h]; Formwork [2922 Sq m]; TATA Projects Ltd-25 | 3,404,597.52 |
| CC-SS-2ndF.35 |  | Reinforcement Bottom Net with chairs | 3d | 2027-11-17 | 2027-11-20 | CC-SS-2ndF.30 | Barbender [1270 h]; Helper [640 h]; Physical Progress [4470 h]; Reinforcement Steel [19 MT1]; TATA Projects Ltd-25 | 1,833,737.5 |
| CC-SS-2ndF.60 |  | Laying of PT Tendon | 3d | 2027-11-20 | 2027-11-24 | CC-SS-2ndF.35 | Physical Progress [5960 h]; TATA Projects Ltd-25 |  |
| CC-SS-2ndF.65 |  | Reinforcement Top Net | 2d | 2027-11-24 | 2027-11-26 | CC-SS-2ndF.60 | Barbender [1270 h]; Helper [640 h]; Physical Progress [2980 h]; Reinforcement Steel [19 MT1]; TATA Projects Ltd-25 | 1,833,737.5 |
| CC-SS-2ndF.40 |  | MEP Coordination | 1d | 2027-11-26 | 2027-11-27 | CC-SS-2ndF.35, CC-SS-2ndF.65, CC-SS-2ndF.420, CC-SS-2ndF.455 | Physical Progress [1490 h]; TATA Projects Ltd-25 |  |
| CC-SS-2ndF.45 |  | Concrete of Slab | 1d | 2027-11-27 | 2027-11-29 | CC-SS-2ndF.40 | Mason [50 h]; Helper [50 h]; Physical Progress [1490 h]; Concrete M40 [500 m3]; TATA Projects Ltd-25 | 4,933,500 |
| CC-SS-2ndF.50 |  | Wait for Strength Gain | 6d | 2027-11-29 | 2027-12-06 | CC-SS-2ndF.45 | Physical Progress [8940 h]; TATA Projects Ltd-25 |  |
| CC-SS-2ndF.55 |  | PT Work | 5d | 2027-12-06 | 2027-12-11 | CC-SS-2ndF.50 | PT [9 MT1]; Helper [100 h]; PT Fitter [100 h]; Physical Progress [11920 h]; TATA Projects Ltd-25 | 1,710,000 |

| ID | WBS | Activity | Duration | Start | Finish | Predecessors | Resources | Cost |
| --- | --- | --- | --- | --- | --- | --- | --- | --- |
|  | 4 | **Pour 2** |  | 2027-10-12 | 2027-12-07 |  |  |  |
|  | 1 | **Column, Core Wall, Shear Wall - First Lift** |  | 2027-10-12 | 2027-10-23 |  |  |  |
| CC-SS-2ndF.70 |  | Reinforcement | 4d | 2027-10-12 | 2027-10-16 | CC-SS-3rdM.105 | Barbender [2870 h]; Helper [1440 h]; Physical Progress [5960 h]; Reinforcement Steel [43 MT1]; TATA Projects Ltd-25 | 4,150,037.5 |
| CC-SS-2ndF.85 |  | LPS | 1d | 2027-10-16 | 2027-10-18 | CC-SS-2ndF.70 | LPS [39529 INR]; Physical Progress [1490 h]; TATA Projects Ltd-25 | 39,529 |
| CC-SS-2ndF.75 |  | Shuttering | 4d | 2027-10-18 | 2027-10-22 | CC-SS-2ndF.70, CC-SS-2ndF.85 | Carpenter [1260 h]; Helper [630 h]; Physical Progress [5960 h]; Formwork [753 Sq m]; TATA Projects Ltd-25 | 877,365.48 |
| CC-SS-2ndF.80 |  | Concrete | 1d | 2027-10-22 | 2027-10-23 | CC-SS-2ndF.75 | Mason [50 h]; Helper [50 h]; Physical Progress [1490 h]; Concrete M40 [188 m3]; TATA Projects Ltd-25 | 1,854,996 |
|  | 5 | **Column, Core Wall, Shear Wall - Second Lift** |  | 2027-10-23 | 2027-11-05 |  |  |  |
| CC-SS-2ndF.210 |  | Reinforcement | 4d | 2027-10-23 | 2027-10-28 | CC-SS-2ndF.80 | Barbender [2870 h]; Helper [1440 h]; Physical Progress [5960 h]; Reinforcement Steel [43 MT1]; TATA Projects Ltd-25 | 4,150,037.5 |
| CC-SS-2ndF.225 |  | LPS | 1d | 2027-10-28 | 2027-10-30 | CC-SS-2ndF.210 | LPS [39529 INR]; Physical Progress [1490 h]; TATA Projects Ltd-25 | 39,529 |
| CC-SS-2ndF.215 |  | Shuttering | 4d | 2027-10-30 | 2027-11-04 | CC-SS-2ndF.210, CC-SS-2ndF.225 | Carpenter [1260 h]; Helper [630 h]; Physical Progress [5960 h]; Formwork [753 Sq m]; TATA Projects Ltd-25 | 877,365.48 |
| CC-SS-2ndF.220 |  | Concrete | 1d | 2027-11-04 | 2027-11-05 | CC-SS-2ndF.215 | Mason [50 h]; Helper [50 h]; Physical Progress [1490 h]; Concrete M40 [188 m3]; TATA Projects Ltd-25 | 1,854,996 |
|  | 3 | **Staircase** |  | 2027-10-12 | 2027-11-11 |  |  |  |
| CC-SS-2ndF.565 |  | Reinforcement of wall upto Flight 1 | 2d | 2027-10-12 | 2027-10-14 | CC-SS-3rdM.105 | Barbender [70 h]; Helper [40 h]; Physical Progress [2980 h]; Reinforcement Steel [1 MT1]; TATA Projects Ltd-25 | 96,512.5 |
| CC-SS-2ndF.570 |  | Shuttering of wall upto Flight 1 | 2d | 2027-10-14 | 2027-10-16 | CC-SS-2ndF.565 | Carpenter [20 h]; Helper [10 h]; Physical Progress [2980 h]; Formwork [10 Sq m]; TATA Projects Ltd-25 | 11,651.6 |
| CC-SS-2ndF.575 |  | Casting of wall upto Flight 1 | 1d | 2027-10-16 | 2027-10-18 | CC-SS-2ndF.570 | Mason; Helper; Physical Progress [1490 h]; Concrete M40 [3 m3]; TATA Projects Ltd-25 | 29,601 |
| CC-SS-2ndF.585 |  | Shuttering of Staircase upto Flight 1 | 1d | 2027-10-18 | 2027-10-19 | CC-SS-2ndF.575 | Carpenter [20 h]; Helper [10 h]; Physical Progress [1490 h]; Formwork [10 Sq m]; TATA Projects Ltd-25 | 11,651.6 |
| CC-SS-2ndF.580 |  | Reinforcement of Staircase upto Flight 1 | 1d | 2027-10-19 | 2027-10-20 | CC-SS-2ndF.585 | Barbender [70 h]; Helper [40 h]; Physical Progress [1490 h]; Reinforcement Steel [1 MT1]; TATA Projects Ltd-25 | 96,512.5 |
| CC-SS-2ndF.620 |  | MEP coordination upto Flight 1 | 1d | 2027-10-20 | 2027-10-21 | CC-SS-2ndF.580 | Physical Progress [1490 h]; TATA Projects Ltd-25 |  |
| CC-SS-2ndF.590 |  | Casting of Staircase upto Flight 1 | 1d | 2027-10-21 | 2027-10-22 | CC-SS-2ndF.620 | Mason; Helper; Physical Progress [1490 h]; Concrete M40 [3 m3]; TATA Projects Ltd-25 | 29,601 |
| CC-SS-2ndF.595 |  | Reinforcement of wall upto Flight 2 | 2d | 2027-10-22 | 2027-10-25 | CC-SS-2ndF.590 | Barbender [70 h]; Helper [40 h]; Physical Progress [2980 h]; Reinforcement Steel [1 MT1]; TATA Projects Ltd-25 | 96,512.5 |
| CC-SS-2ndF.600 |  | Shuttering of wall upto Flight 2 | 2d | 2027-10-25 | 2027-10-27 | CC-SS-2ndF.595 | Carpenter [20 h]; Helper [10 h]; Physical Progress [2980 h]; Formwork [10 Sq m]; TATA Projects Ltd-25 | 11,651.6 |
| CC-SS-2ndF.605 |  | Casting of wall upto Flight 2 | 1d | 2027-10-27 | 2027-10-28 | CC-SS-2ndF.600 | Mason; Helper; Physical Progress [1490 h]; Concrete M40 [3 m3]; TATA Projects Ltd-25 | 29,601 |
| CC-SS-2ndF.615 |  | Shuttering of Staircase upto Flight 2 | 1d | 2027-10-28 | 2027-10-30 | CC-SS-2ndF.605 | Carpenter [20 h]; Helper [10 h]; Physical Progress [1490 h]; Formwork [10 Sq m]; TATA Projects Ltd-25 | 11,651.6 |
| CC-SS-2ndF.610 |  | Reinforcement of Staircase upto Flight 2 | 1d | 2027-10-30 | 2027-11-01 | CC-SS-2ndF.615 | Barbender [70 h]; Helper [40 h]; Physical Progress [1490 h]; Reinforcement Steel [1 MT1]; TATA Projects Ltd-25 | 96,512.5 |
| CC-SS-2ndF.655 |  | MEP coordination upto Flight 2 | 1d | 2027-11-01 | 2027-11-02 | CC-SS-2ndF.610 | Physical Progress [1490 h]; TATA Projects Ltd-25 |  |
| CC-SS-2ndF.625 |  | Casting of Staircase upto Flight 2 | 1d | 2027-11-02 | 2027-11-03 | CC-SS-2ndF.655 | Mason; Helper; Physical Progress [1490 h]; Concrete M40 [3 m3]; TATA Projects Ltd-25 | 29,601 |
| CC-SS-2ndF.630 |  | Reinforcement of wall upto Flight 3 | 2d | 2027-11-03 | 2027-11-05 | CC-SS-2ndF.625 | Barbender [70 h]; Helper [40 h]; Physical Progress [2980 h]; Reinforcement Steel [1 MT1]; TATA Projects Ltd-25 | 96,512.5 |
| CC-SS-2ndF.635 |  | Shuttering of wall upto Flight 3 | 2d | 2027-11-05 | 2027-11-08 | CC-SS-2ndF.630 | Carpenter [20 h]; Helper [10 h]; Physical Progress [2980 h]; Formwork [10 Sq m]; TATA Projects Ltd-25 | 11,651.6 |
| CC-SS-2ndF.640 |  | Casting of wall upto Flight 3 | 1d | 2027-11-08 | 2027-11-09 | CC-SS-2ndF.635 | Mason; Helper; Physical Progress [1490 h]; Concrete M40 [3 m3]; TATA Projects Ltd-25 | 29,601 |
| CC-SS-2ndF.650 |  | Shuttering of Staircase upto Flight 3 | 1d | 2027-11-09 | 2027-11-10 | CC-SS-2ndF.640 | Carpenter [20 h]; Helper [10 h]; Physical Progress [1490 h]; Formwork [10 Sq m]; TATA Projects Ltd-25 | 11,651.6 |
| CC-SS-2ndF.645 |  | Reinforcement of Staircase upto Flight 3 | 1d | 2027-11-10 | 2027-11-11 | CC-SS-2ndF.650 | Barbender [70 h]; Helper [40 h]; Physical Progress [1490 h]; Reinforcement Steel [1 MT1]; TATA Projects Ltd-25 | 96,512.5 |

| ID | WBS | Activity | Duration | Start | Finish | Predecessors | Resources | Cost |
| --- | --- | --- | --- | --- | --- | --- | --- | --- |
|  | 2 | **Slab** |  | 2027-11-05 | 2027-12-07 |  |  |  |
| CC-SS-2ndF.90 |  | Shuttering | 6d | 2027-11-05 | 2027-11-12 | CC-SS-2ndF.80, CC-SS-2ndF.220 | Carpenter [4150 h]; Helper [2080 h]; Physical Progress [8940 h]; Formwork [2486 Sq m]; TATA Projects Ltd-25 | 2,896,587.76 |
| CC-SS-2ndF.95 |  | Reinforcement Bottom Net with chairs | 3d | 2027-11-12 | 2027-11-16 | CC-SS-2ndF.90 | Barbender [1070 h]; Helper [540 h]; Physical Progress [4470 h]; Reinforcement Steel [16 MT1]; TATA Projects Ltd-25 | 1,544,200 |
| CC-SS-2ndF.120 |  | Laying of PT Tendon | 3d | 2027-11-16 | 2027-11-19 | CC-SS-2ndF.95 | Physical Progress [5960 h]; TATA Projects Ltd-25 |  |
| CC-SS-2ndF.125 |  | Reinforcement Top Net | 2d | 2027-11-19 | 2027-11-22 | CC-SS-2ndF.120 | Barbender [1070 h]; Helper [540 h]; Physical Progress [2980 h]; Reinforcement Steel [16 MT1]; TATA Projects Ltd-25 | 1,544,200 |
| CC-SS-2ndF.100 |  | MEP Coordination | 1d | 2027-11-22 | 2027-11-23 | CC-SS-2ndF.95, CC-SS-2ndF.125, CC-SS-2ndF.645 | Physical Progress [1490 h]; TATA Projects Ltd-25 |  |
| CC-SS-2ndF.105 |  | Concrete of Slab | 1d | 2027-11-23 | 2027-11-24 | CC-SS-2ndF.100 | Mason [50 h]; Helper [50 h]; Physical Progress [1490 h]; Concrete M40 [425 m3]; TATA Projects Ltd-25 | 4,193,475 |
| CC-SS-2ndF.110 |  | Wait for Strength Gain | 6d | 2027-11-24 | 2027-12-01 | CC-SS-2ndF.105 | Physical Progress [8940 h]; TATA Projects Ltd-25 |  |
| CC-SS-2ndF.115 |  | PT Work | 5d | 2027-12-01 | 2027-12-07 | CC-SS-2ndF.110 | PT [8 MT1]; Helper [100 h]; PT Fitter [100 h]; Physical Progress [11920 h]; TATA Projects Ltd-25 | 1,520,000 |
|  | 3 | **Pour 3** |  | 2027-10-21 | 2027-12-10 |  |  |  |
|  | 1 | **Column, Core Wall, Shear Wall - First Lift** |  | 2027-10-21 | 2027-11-03 |  |  |  |
| CC-SS-2ndF.130 |  | Reinforcement | 4d | 2027-10-21 | 2027-10-26 | CC-SS-3rdM.165 | Barbender [1270 h]; Helper [640 h]; Physical Progress [5960 h]; Reinforcement Steel [19 MT1]; TATA Projects Ltd-25 | 1,833,737.5 |
| CC-SS-2ndF.145 |  | LPS | 1d | 2027-10-26 | 2027-10-27 | CC-SS-2ndF.130 | LPS [39529 INR]; Physical Progress [1490 h]; TATA Projects Ltd-25 | 39,529 |
| CC-SS-2ndF.135 |  | Shuttering | 4d | 2027-10-27 | 2027-11-02 | CC-SS-2ndF.130, CC-SS-2ndF.145 | Carpenter [540 h]; Helper [270 h]; Physical Progress [5960 h]; Formwork [323 Sq m]; TATA Projects Ltd-25 | 376,346.68 |
| CC-SS-2ndF.140 |  | Concrete | 1d | 2027-11-02 | 2027-11-03 | CC-SS-2ndF.135 | Mason [50 h]; Helper [50 h]; Physical Progress [1490 h]; Concrete M40 [81 m3]; TATA Projects Ltd-25 | 799,227 |
|  | 5 | **Column, Core Wall, Shear Wall - Second Lift** |  | 2027-11-03 | 2027-11-15 |  |  |  |
| CC-SS-2ndF.230 |  | Reinforcement | 4d | 2027-11-03 | 2027-11-08 | CC-SS-2ndF.140 | Barbender [1270 h]; Helper [640 h]; Physical Progress [5960 h]; Reinforcement Steel [19 MT1]; TATA Projects Ltd-25 | 1,833,737.5 |
| CC-SS-2ndF.245 |  | LPS | 1d | 2027-11-08 | 2027-11-09 | CC-SS-2ndF.230 | LPS [39529 INR]; Physical Progress [1490 h]; TATA Projects Ltd-25 | 39,529 |
| CC-SS-2ndF.235 |  | Shuttering | 4d | 2027-11-09 | 2027-11-13 | CC-SS-2ndF.230, CC-SS-2ndF.245 | Carpenter [540 h]; Helper [270 h]; Physical Progress [5960 h]; Formwork [323 Sq m]; TATA Projects Ltd-25 | 376,346.68 |
| CC-SS-2ndF.240 |  | Concrete | 1d | 2027-11-13 | 2027-11-15 | CC-SS-2ndF.235 | Mason [50 h]; Helper [50 h]; Physical Progress [1490 h]; Concrete M40 [81 m3]; TATA Projects Ltd-25 | 799,227 |
|  | 3 | **Staircase** |  | 2027-10-21 | 2027-11-20 |  |  |  |
| CC-SS-2ndF.470 |  | Reinforcement of wall upto Flight 1 | 2d | 2027-10-21 | 2027-10-23 | CC-SS-3rdM.165 | Barbender [70 h]; Helper [40 h]; Physical Progress [2980 h]; Reinforcement Steel [1 MT1]; TATA Projects Ltd-25 | 96,512.5 |
| CC-SS-2ndF.475 |  | Shuttering of wall upto Flight 1 | 2d | 2027-10-23 | 2027-10-26 | CC-SS-2ndF.470 | Carpenter [20 h]; Helper [10 h]; Physical Progress [2980 h]; Formwork [10 Sq m]; TATA Projects Ltd-25 | 11,651.6 |
| CC-SS-2ndF.480 |  | Casting of wall upto Flight 1 | 1d | 2027-10-26 | 2027-10-27 | CC-SS-2ndF.475 | Mason; Helper; Physical Progress [1490 h]; Concrete M40 [3 m3]; TATA Projects Ltd-25 | 29,601 |
| CC-SS-2ndF.490 |  | Shuttering of Staircase upto Flight 1 | 1d | 2027-10-27 | 2027-10-28 | CC-SS-2ndF.480 | Carpenter [20 h]; Helper [10 h]; Physical Progress [1490 h]; Formwork [10 Sq m]; TATA Projects Ltd-25 | 11,651.6 |
| CC-SS-2ndF.485 |  | Reinforcement of Staircase upto Flight 1 | 1d | 2027-10-28 | 2027-10-30 | CC-SS-2ndF.490 | Barbender [70 h]; Helper [40 h]; Physical Progress [1490 h]; Reinforcement Steel [1 MT1]; TATA Projects Ltd-25 | 96,512.5 |
| CC-SS-2ndF.525 |  | MEP coordination upto Flight 1 | 1d | 2027-10-30 | 2027-11-01 | CC-SS-2ndF.485 | Physical Progress [1490 h]; TATA Projects Ltd-25 |  |
| CC-SS-2ndF.495 |  | Casting of Staircase upto Flight 1 | 1d | 2027-11-01 | 2027-11-02 | CC-SS-2ndF.525 | Mason; Helper; Physical Progress [1490 h]; Concrete M40 [3 m3]; TATA Projects Ltd-25 | 29,601 |
| CC-SS-2ndF.500 |  | Reinforcement of wall upto Flight 2 | 2d | 2027-11-02 | 2027-11-04 | CC-SS-2ndF.495 | Barbender [70 h]; Helper [40 h]; Physical Progress [2980 h]; Reinforcement Steel [1 MT1]; TATA Projects Ltd-25 | 96,512.5 |
| CC-SS-2ndF.505 |  | Shuttering of wall upto Flight 2 | 2d | 2027-11-04 | 2027-11-06 | CC-SS-2ndF.500 | Carpenter [20 h]; Helper [10 h]; Physical Progress [2980 h]; Formwork [10 Sq m]; TATA Projects Ltd-25 | 11,651.6 |
| CC-SS-2ndF.510 |  | Casting of wall upto Flight 2 | 1d | 2027-11-06 | 2027-11-08 | CC-SS-2ndF.505 | Mason; Helper; Physical Progress [1490 h]; Concrete M40 [3 m3]; TATA Projects Ltd-25 | 29,601 |
| CC-SS-2ndF.520 |  | Shuttering of Staircase upto Flight 2 | 1d | 2027-11-08 | 2027-11-09 | CC-SS-2ndF.510 | Carpenter [20 h]; Helper [10 h]; Physical Progress [1490 h]; Formwork [10 Sq m]; TATA Projects Ltd-25 | 11,651.6 |
| CC-SS-2ndF.515 |  | Reinforcement of Staircase upto Flight 2 | 1d | 2027-11-09 | 2027-11-10 | CC-SS-2ndF.520 | Barbender [70 h]; Helper [40 h]; Physical Progress [1490 h]; Reinforcement Steel [1 MT1]; TATA Projects Ltd-25 | 96,512.5 |
| CC-SS-2ndF.560 |  | MEP coordination upto Flight 2 | 1d | 2027-11-10 | 2027-11-11 | CC-SS-2ndF.515 | Physical Progress [1490 h]; TATA Projects Ltd-25 |  |
| CC-SS-2ndF.530 |  | Casting of Staircase upto Flight 2 | 1d | 2027-11-11 | 2027-11-12 | CC-SS-2ndF.560 | Mason; Helper; Physical Progress [1490 h]; Concrete M40 [3 m3]; TATA Projects Ltd-25 | 29,601 |
| CC-SS-2ndF.535 |  | Reinforcement of wall upto Flight 3 | 2d | 2027-11-12 | 2027-11-15 | CC-SS-2ndF.530 | Barbender [70 h]; Helper [40 h]; Physical Progress [2980 h]; Reinforcement Steel [1 MT1]; TATA Projects Ltd-25 | 96,512.5 |
| CC-SS-2ndF.540 |  | Shuttering of wall upto Flight 3 | 2d | 2027-11-15 | 2027-11-17 | CC-SS-2ndF.535 | Carpenter [20 h]; Helper [10 h]; Physical Progress [2980 h]; Formwork [10 Sq m]; TATA Projects Ltd-25 | 11,651.6 |
| CC-SS-2ndF.545 |  | Casting of wall upto Flight 3 | 1d | 2027-11-17 | 2027-11-18 | CC-SS-2ndF.540 | Mason; Helper; Physical Progress [1490 h]; Concrete M40 [3 m3]; TATA Projects Ltd-25 | 29,601 |
| CC-SS-2ndF.555 |  | Shuttering of Staircase upto Flight 3 | 1d | 2027-11-18 | 2027-11-19 | CC-SS-2ndF.545 | Carpenter [20 h]; Helper [10 h]; Physical Progress [1490 h]; Formwork [10 Sq m]; TATA Projects Ltd-25 | 11,651.6 |
| CC-SS-2ndF.550 |  | Reinforcement of Staircase upto Flight 3 | 1d | 2027-11-19 | 2027-11-20 | CC-SS-2ndF.555 | Barbender [70 h]; Helper [40 h]; Physical Progress [1490 h]; Reinforcement Steel [1 MT1]; TATA Projects Ltd-25 | 96,512.5 |

| ID | WBS | Activity | Duration | Start | Finish | Predecessors | Resources | Cost |
| --- | --- | --- | --- | --- | --- | --- | --- | --- |
|  | 2 | **Slab** |  | 2027-11-15 | 2027-12-10 |  |  |  |
| CC-SS-2ndF.150 |  | Shuttering | 4d | 2027-11-15 | 2027-11-19 | CC-SS-2ndF.140, CC-SS-2ndF.240 | Carpenter [1780 h]; Helper [890 h]; Physical Progress [8940 h]; Formwork [1067 Sq m]; TATA Projects Ltd-25 | 1,243,225.72 |
| CC-SS-2ndF.155 |  | Reinforcement Bottom Net with chairs | 2d | 2027-11-19 | 2027-11-22 | CC-SS-2ndF.150 | Barbender [470 h]; Helper [240 h]; Physical Progress [4470 h]; Reinforcement Steel [7 MT1]; TATA Projects Ltd-25 | 675,587.5 |
| CC-SS-2ndF.180 |  | Laying of PT Tendon | 2d | 2027-11-22 | 2027-11-24 | CC-SS-2ndF.155 | Physical Progress [5960 h]; TATA Projects Ltd-25 |  |
| CC-SS-2ndF.185 |  | Reinforcement Top Net | 2d | 2027-11-24 | 2027-11-26 | CC-SS-2ndF.180 | Barbender [470 h]; Helper [240 h]; Physical Progress [2980 h]; Reinforcement Steel [7 MT1]; TATA Projects Ltd-25 | 675,587.5 |
| CC-SS-2ndF.160 |  | MEP Coordination | 1d | 2027-11-26 | 2027-11-27 | CC-SS-2ndF.155, CC-SS-2ndF.185, CC-SS-2ndF.550 | Physical Progress [1490 h]; TATA Projects Ltd-25 |  |
| CC-SS-2ndF.165 |  | Concrete of Slab | 1d | 2027-11-27 | 2027-11-29 | CC-SS-2ndF.160 | Mason [50 h]; Helper [50 h]; Physical Progress [1490 h]; Concrete M40 [183 m3]; TATA Projects Ltd-25 | 1,805,661 |
| CC-SS-2ndF.170 |  | Wait for Strength Gain | 6d | 2027-11-29 | 2027-12-06 | CC-SS-2ndF.165 | Physical Progress [8940 h]; TATA Projects Ltd-25 |  |
| CC-SS-2ndF.175 |  | PT Work | 4d | 2027-12-06 | 2027-12-10 | CC-SS-2ndF.170 | PT [3 MT1]; Helper [100 h]; PT Fitter [100 h]; Physical Progress [11920 h]; TATA Projects Ltd-25 | 570,000 |
|  | 6 | **Pour 4** |  | 2027-12-30 | 2028-03-17 |  |  |  |
|  | 1 | **Columns** |  | 2027-12-30 | 2028-01-19 |  |  |  |
| CC-SS-2ndF.680 |  | Erection of Structural Steel Columns | 16d | 2027-12-30 | 2028-01-19 | CC-SS-3rdM.265, SSF10 | Str. Steel Fitter [1570 h]; Rigger [3130 h]; Welder [3130 h]; Khalasi Helper [3130 h]; Physical Progress [26820 h]; Structural Steel [234 MT1]; Vermiculite Paint [167 Sq m]; Intumescent Paint [146 Sq m]; TATA Projects Ltd-25 | 41,543,658 |
|  | 2 | **Slab** |  | 2028-01-19 | 2028-03-17 |  |  |  |
| CC-SS-2ndF.250 |  | Erection of Structural Steel Beams | 15d | 2028-01-19 | 2028-02-07 | CC-SS-2ndF.175, CC-SS-2ndF.680, SSF10 | Str. Steel Fitter [1560 h]; Rigger [3120 h]; Welder [3120 h]; Khalasi Helper [3120 h]; Physical Progress [22350 h]; Structural Steel [234 MT1]; Vermiculite Paint [167 Sq m]; Intumescent Paint [146 Sq m]; TATA Projects Ltd-25 | 41,543,658 |
| CC-SS-2ndF.255 |  | Metal Deck Sheet | 6d | 2028-02-07 | 2028-02-14 | CC-SS-2ndF.250 | Physical Progress [8940 h]; Composite Slab Metal Deck [11 MT1]; TATA Projects Ltd-25 | 2,254,824 |
| CC-SS-2ndF.275 |  | Shear Studs | 4d | 2028-02-14 | 2028-02-18 | CC-SS-2ndF.255 | Physical Progress [7450 h]; Shear Studs [4 MT1]; TATA Projects Ltd-25 | 940,000 |
| CC-SS-2ndF.270 |  | Reinforcement Bottom Net with chairs | 3d | 2028-02-18 | 2028-02-22 | CC-SS-2ndF.275 | Barbender [1270 h]; Helper [640 h]; Physical Progress [4470 h]; Reinforcement Steel [19 MT1]; TATA Projects Ltd-25 | 1,833,737.5 |
| CC-SS-2ndF.660 |  | Laying of PT Tendons | 3d | 2028-02-22 | 2028-02-25 | CC-SS-2ndF.270 | Physical Progress [4470 h]; TATA Projects Ltd-25 |  |
| CC-SS-2ndF.665 |  | Reinforcement Top Net | 3d | 2028-02-25 | 2028-03-01 | CC-SS-2ndF.660 | Barbender [1270 h]; Helper [640 h]; Physical Progress [4470 h]; Reinforcement Steel [19 MT1]; TATA Projects Ltd-25 | 1,833,737.5 |
| CC-SS-2ndF.260 |  | MEP Coordination | 1d | 2028-03-01 | 2028-03-02 | CC-SS-2ndF.665 | Physical Progress [1490 h]; TATA Projects Ltd-25 |  |
| CC-SS-2ndF.265 |  | Concrete of Slab | 1d | 2028-03-02 | 2028-03-03 | CC-SS-2ndF.260 | Mason [50 h]; Helper [50 h]; Physical Progress [1490 h]; Concrete M40 [511 m3]; TATA Projects Ltd-25 | 5,042,037 |
| CC-SS-2ndF.670 |  | Wait for Strength Gain | 6d | 2028-03-03 | 2028-03-10 | CC-SS-2ndF.265 | Physical Progress [8940 h]; TATA Projects Ltd-25 |  |
| CC-SS-2ndF.675 |  | PT Work | 5d | 2028-03-10 | 2028-03-17 | CC-SS-2ndF.670, CC-SS-3rdM.815, CC-SS-2ndM.635 | PT [10 MT1]; Helper [100 h]; PT Fitter [100 h]; Physical Progress [5960 h]; TATA Projects Ltd-25 | 1,900,000 |
|  | 14 | **Roof Top** |  | 2027-11-29 | 2028-01-13 |  |  |  |
|  | 1 | **Column, Shear Wall** |  | 2027-11-29 | 2027-12-16 |  |  |  |
| CC-SS-Roof10 |  | Reinforcement | 7d | 2027-11-29 | 2027-12-07 | CC-SS-2ndF.165, E-GFC-ST-CC-200 | Barbender [340 h]; Helper [170 h]; Physical Progress [10430 h]; Reinforcement Steel [5 MT1]; TATA Projects Ltd-25 | 482,562.5 |
| CC-SS-Roof15 |  | Shuttering | 7d | 2027-12-07 | 2027-12-15 | CC-SS-Roof10 | Carpenter [10 h]; Helper [10 h]; Physical Progress [10430 h]; Formwork [5 Sq m]; TATA Projects Ltd-25 | 5,825.8 |
| CC-SS-Roof20 |  | Concrete | 1d | 2027-12-15 | 2027-12-16 | CC-SS-Roof15 | Mason [50 h]; Helper [50 h]; Physical Progress [1490 h]; Concrete M40 [20 m3]; TATA Projects Ltd-25 | 197,340 |

| ID | WBS | Activity | Duration | Start | Finish | Predecessors | Calendar | Resources | Cost |
| --- | --- | --- | --- | --- | --- | --- | --- | --- | --- |
|  | 2 | **Slab** |  | 2027-12-16 | 2028-01-13 |  |  |  |  |
| CC-SS-Roof25 |  | Shuttering | 10d | 2027-12-16 | 2027-12-29 | CC-SS-Roof20 |  | Carpenter [10 h]; Helper [10 h]; Physical Progress [14900 h]; Formwork [5 Sq m]; TATA Projects Ltd-25 | 5,825.8 |
| CC-SS-Roof40 |  | Reinforcement | 10d | 2027-12-29 | 2028-01-11 | CC-SS-Roof25 |  | Barbender [340 h]; Helper [170 h]; Physical Progress [14900 h]; Reinforcement Steel [5 MT1]; TATA Projects Ltd-25 | 482,562.5 |
| CC-SS-Roof30 |  | MEP Coordination | 1d | 2028-01-11 | 2028-01-12 | CC-SS-Roof40 |  | Physical Progress [1490 h]; TATA Projects Ltd-25 |  |
| CC-SS-Roof35 |  | Concrete of Slab | 1d | 2028-01-12 | 2028-01-13 | CC-SS-Roof30 |  | Mason [50 h]; Helper [50 h]; Physical Progress [1490 h]; Concrete M40 [10 m3]; TATA Projects Ltd-25 | 98,670 |
|  | 4 | **Wet finishes, MEP, ID** |  | 2027-06-05 | 2029-05-11 |  |  |  |  |
|  | 1 | **Ground Floor** |  | 2027-06-05 | 2029-02-02 |  |  |  |  |
|  | 1 | **Wet Finishes** |  | 2027-06-05 | 2027-09-13 |  |  |  |  |
| CC-WMI-GF10 |  | Deshuttering | 4d | 2027-06-05 | 2027-06-10 | CC-SS-1stM.395 | CSD-LKO Calender (6 day + Holiday)-25 | Physical Progress [1900 h]; TATA Projects Ltd-25 |  |
| CC-WMI-GF15 |  | Brickwork/Blockwork | 30d | 2027-06-10 | 2027-07-15 | CC-WMI-GF10, E-GFC-AR-CC-55 | CSD-LKO Calender (6 day + Holiday)-25 | Masonry [761 CuM]; Mason [5080 h]; Helper [2540 h]; Physical Progress [14240 h]; TATA Projects Ltd-25 | 7,256,408.96 |
| CC-WMI-GF375 |  | Waterproofing of Toilets, Balcony & Kitchen | 15d | 2027-07-15 | 2027-08-02 | CC-WMI-GF15 | CSD-LKO Calender (6 day + Holiday)-25 | Waterproofing [8564838 INR]; Waterprrofing Mason [8160 h]; Helper [4080 h]; Physical Progress [7120 h]; TATA Projects Ltd-25 | 8,564,838 |
| CC-WMI-GF20 |  | Plaster | 15d | 2027-08-25 | 2027-09-13 | CC-WMI-GF25, CC-WMI-GF55, CC-WMI-GF240, CC-WMI-GF375 | CSD-LKO Calender (6 day + Holiday)-25 | Plaster [14779 Sqr Mtr]; Mason [9860 h]; Helper [4930 h]; Physical Progress [7120 h]; TATA Projects Ltd-25 | 8,186,235.89 |
|  | 5 | **MEP** |  | 2027-06-10 | 2029-02-02 |  |  |  |  |
|  | 2 | **HVAC** |  | 2027-07-15 | 2028-11-09 |  |  |  |  |
|  | 1 | **1st Fix** |  | 2027-07-15 | 2027-11-08 |  |  |  |  |
| CC-WMI-GF270 |  | Duct Support Fabrication | 35d | 2027-07-15 | 2027-08-25 | CC-WMI-GF15 | CSD-LKO Calender (6 day + Holiday)-25 | Physical Progress [7120 h]; HVAC [379163 INR]; TATA Projects Ltd-25 | 379,163 |
| CC-WMI-GF60 |  | Installing duct hangers and supports | 30d | 2027-08-25 | 2027-09-30 | CC-WMI-GF270 | CSD-LKO Calender (6 day + Holiday)-25 | Physical Progress [4750 h]; HVAC [758325 INR]; TATA Projects Ltd-25 | 758,325 |
| CC-WMI-GF65 |  | Laying concealed/exposed refrigerant piping | 30d | 2027-09-30 | 2027-11-08 | CC-WMI-GF60 | CSD-LKO Calender (6 day + Holiday)-25 | Physical Progress [7120 h]; HVAC [189581 INR]; TATA Projects Ltd-25 | 189,581 |
| CC-WMI-GF70 |  | Laying concealed/exposed drain piping | 30d | 2027-09-30 | 2027-11-08 | CC-WMI-GF60 | CSD-LKO Calender (6 day + Holiday)-25 | Physical Progress [4750 h]; HVAC [1137488 INR]; TATA Projects Ltd-25 | 1,137,488 |
|  | 2 | **2nd Fix** |  | 2027-09-30 | 2028-04-12 |  |  |  |  |
| CC-WMI-GF75 |  | Duct installation | 35d | 2027-09-30 | 2027-11-13 | CC-WMI-GF60 | CSD-LKO Calender (6 day + Holiday)-25 | Physical Progress [7120 h]; HVAC [2843719 INR]; TATA Projects Ltd-25 | 2,843,719 |
| CC-WMI-GF80 |  | Insulation of ducts (thermal/acoustic) | 10d | 2027-11-13 | 2027-11-25 | CC-WMI-GF75 | CSD-LKO Calender (6 day + Holiday)-25 | Physical Progress [2850 h]; HVAC [1706231 INR]; TATA Projects Ltd-25 | 1,706,231 |
| CC-WMI-GF85 |  | Installation of chilled water piping / VRF piping | 20d | 2027-11-25 | 2027-12-18 | CC-WMI-GF80 | CSD-LKO Calender (6 day + Holiday)-25 | Physical Progress [2850 h]; HVAC [3791626 INR]; TATA Projects Ltd-25 | 3,791,626 |
| CC-WMI-GF265 |  | Installation of indoor units including AHU, FCU | 60d | 2027-12-18 | 2028-03-01 | CC-WMI-GF85, CC-WMI-GF65, CC-WMI-GF70 | CSD-LKO Calender (6 day + Holiday)-25 | Physical Progress [21350 h]; HVAC [3412463 INR]; TATA Projects Ltd-25 | 3,412,463 |
| CC-WMI-GF90 |  | Connecting refrigerant and drain piping to indoor units | 35d | 2028-03-01 | 2028-04-12 | CC-WMI-GF265 | CSD-LKO Calender (6 day + Holiday)-25 | Physical Progress [2850 h]; HVAC [947906 INR]; TATA Projects Ltd-25 | 947,906 |

| ID | WBS | Activity | Duration | Start | Finish | Predecessors | Calendar | Resources | Cost |
| --- | --- | --- | --- | --- | --- | --- | --- | --- | --- |
|  | 3 | **Final Fix** |  | 2028-08-29 | 2028-11-09 |  |  |  |  |
| CC-WMI-GF100 |  | Installing grills, diffusers, dampers | 30d | 2028-08-29 | 2028-10-04 | CC-WMI-GF315 | CSD-LKO Calender (6 day + Holiday)-25 | Physical Progress [2850 h]; HVAC [1895813 INR]; TATA Projects Ltd-25 | 1,895,813 |
| CC-WMI-GF95 |  | Installation of thermostats and control panels | 30d | 2028-10-05 | 2028-11-09 | CC-WMI-GF100, CC-WMI-GF345, CC-WMI-GF90 | CSD-LKO Calender (6 day + Holiday)-25 | Physical Progress [2850 h]; HVAC [947906 INR]; TATA Projects Ltd-25 | 947,906 |
|  | 1 | **Electrical** |  | 2027-06-10 | 2028-12-14 |  |  |  |  |
|  | 1 | **1st Fix** |  | 2027-06-10 | 2027-08-25 |  |  |  |  |
| CC-WMI-GF385 |  | Slab Conduiting | 35d | 2027-06-10 | 2027-07-21 | CC-WMI-GF10 | CSD-LKO Calender (6 day + Holiday)-25 | Physical Progress [11860 h]; Electrical [2122199 INR]; TATA Projects Ltd-25 | 2,122,199 |
| CC-WMI-GF25 |  | Wall Conduiting | 30d | 2027-07-15 | 2027-08-19 | CC-WMI-GF15 | CSD-LKO Calender (6 day + Holiday)-25 | Physical Progress [4750 h]; Electrical [1061100 INR]; TATA Projects Ltd-25 | 1,061,100 |
| CC-WMI-GF55 |  | Installing back boxes for switches, sockets | 5d | 2027-08-19 | 2027-08-25 | CC-WMI-GF25, CC-WMI-GF385 | CSD-LKO Calender (6 day + Holiday)-25 | Physical Progress [2370 h]; Electrical [636660 INR]; TATA Projects Ltd-25 | 636,660 |
|  | 2 | **2nd Fix** |  | 2027-09-13 | 2028-04-06 |  |  |  |  |
| CC-WMI-GF30 |  | Cable tray laying | 35d | 2027-09-13 | 2027-10-26 | CC-WMI-GF20 | CSD-LKO Calender (6 day + Holiday)-25 | Physical Progress [11860 h]; Electrical [848880 INR]; TATA Projects Ltd-25 | 848,880 |
| CC-WMI-GF35 |  | Cabling & Wire Pulling | 45d | 2027-10-26 | 2027-12-18 | CC-WMI-GF30 | CSD-LKO Calender (6 day + Holiday)-25 | Physical Progress [21350 h]; Electrical [4244398 INR]; TATA Projects Ltd-25 | 4,244,398 |
| CC-WMI-GF390 |  | Floor Rising Main Installation | 35d | 2027-12-18 | 2028-02-01 | CC-WMI-GF35 | CSD-LKO Calender (6 day + Holiday)-25 | Physical Progress [2370 h]; Electrical [2971079 INR]; TATA Projects Ltd-25 | 2,971,079 |
| CC-WMI-GF45 |  | DB fixing and connecting | 35d | 2027-12-18 | 2028-02-01 | CC-WMI-GF35 | CSD-LKO Calender (6 day + Holiday)-25 | Physical Progress [7120 h]; Electrical [636660 INR]; TATA Projects Ltd-25 | 636,660 |
| CC-WMI-GF275 |  | Floor/Distribution Panel Installation | 35d | 2028-02-01 | 2028-03-14 | CC-WMI-GF45 | CSD-LKO Calender (6 day + Holiday)-25 | Physical Progress [2370 h]; Electrical [1697759 INR]; TATA Projects Ltd-25 | 1,697,759 |
| CC-WMI-GF280 |  | Equipment Earthing | 20d | 2028-03-14 | 2028-04-06 | CC-WMI-GF275, CC-WMI-GF390 | CSD-LKO Calender (6 day + Holiday)-25 | Physical Progress [4750 h]; Electrical [636660 INR]; TATA Projects Ltd-25 | 636,660 |
|  | 3 | **Final Fix** |  | 2028-10-05 | 2028-12-14 |  |  |  |  |
| CC-WMI-GF50 |  | Switches & Socket | 30d | 2028-10-05 | 2028-11-09 | CC-WMI-GF345 | CSD-LKO Calender (6 day + Holiday)-25 | Physical Progress [9490 h]; Electrical [2122199 INR]; TATA Projects Ltd-25 | 2,122,199 |
| CC-WMI-GF40 |  | Light Fixtures | 30d | 2028-11-10 | 2028-12-14 | CC-WMI-GF50, CC-WMI-GF280 | CSD-LKO Calender (6 day + Holiday)-25 | Physical Progress [7120 h]; Electrical [3183299 INR]; TATA Projects Ltd-25 | 3,183,299 |
|  | 3 | **Plumbing** |  | 2027-07-15 | 2028-11-27 |  |  |  |  |
|  | 1 | **1st Fix** |  | 2027-07-15 | 2027-12-18 |  |  |  |  |
| CC-WMI-GF115 |  | Fixing pipe supports and clamps | 35d | 2027-07-15 | 2027-08-25 | CC-WMI-GF15 | CSD-LKO Calender (6 day + Holiday)-25 | Physical Progress [4750 h]; Plumbing [682120 INR]; TATA Projects Ltd-25 | 682,120 |
| CC-WMI-GF105 |  | Laying water supply pipes (hot & cold) | 35d | 2027-08-25 | 2027-10-07 | CC-WMI-GF115 | CSD-LKO Calender (6 day + Holiday)-25 | Physical Progress [7120 h]; Plumbing [1364241 INR]; TATA Projects Ltd-25 | 1,364,241 |
| CC-WMI-GF110 |  | Laying drainage pipes (soil, waste, vent) | 35d | 2027-08-25 | 2027-10-07 | CC-WMI-GF115 | CSD-LKO Calender (6 day + Holiday)-25 | Physical Progress [7120 h]; Plumbing [1364241 INR]; TATA Projects Ltd-25 | 1,364,241 |
| CC-WMI-GF135 |  | Installation of plumbing fixture base supports (WC frames, sink brackets) | 30d | 2027-10-07 | 2027-11-13 | CC-WMI-GF110 | CSD-LKO Calender (6 day + Holiday)-25 | Physical Progress [2850 h]; Plumbing [682120 INR]; TATA Projects Ltd-25 | 682,120 |
| CC-WMI-GF120 |  | Pressure testing of water supply lines | 25d | 2027-11-13 | 2027-12-13 | CC-WMI-GF105, CC-WMI-GF110, CC-WMI-GF135 | CSD-LKO Calender (6 day + Holiday)-25 | Physical Progress [3320 h]; Plumbing [136424 INR]; TATA Projects Ltd-25 | 136,424 |
| CC-WMI-GF400 |  | Installation of concealed parts of toilet fixtures | 30d | 2027-11-13 | 2027-12-18 | CC-WMI-GF135 | CSD-LKO Calender (6 day + Holiday)-25 | Physical Progress [4750 h]; Plumbing [682120 INR]; TATA Projects Ltd-25 | 682,120 |

| ID | WBS | Activity | Duration | Start | Finish | Predecessors | Calendar | Resources | Cost |
| --- | --- | --- | --- | --- | --- | --- | --- | --- | --- |
|  | 2 | **2nd FIx** |  | 2027-12-13 | 2028-03-07 |  |  |  |  |
| CC-WMI-GF145 |  | Insulation of hot water pipes (if applicable) | 30d | 2027-12-13 | 2028-01-19 | CC-WMI-GF120 | CSD-LKO Calender (6 day + Holiday)-25 | Physical Progress [2850 h]; Plumbing [682120 INR]; TATA Projects Ltd-25 | 682,120 |
| CC-WMI-GF125 |  | Installation of vertical risers and main distribution lines | 35d | 2027-12-18 | 2028-02-01 | CC-WMI-GF20, CC-WMI-GF120, CC-WMI-GF400 | CSD-LKO Calender (6 day + Holiday)-25 | Physical Progress [9490 h]; Plumbing [1364241 INR]; TATA Projects Ltd-25 | 1,364,241 |
| CC-WMI-GF140 |  | Testing drainage lines for leakage/blockage | 30d | 2028-01-19 | 2028-02-24 | CC-WMI-GF135, CC-WMI-GF145 | CSD-LKO Calender (6 day + Holiday)-25 | Physical Progress [2850 h]; Plumbing [136424 INR]; TATA Projects Ltd-25 | 136,424 |
| CC-WMI-GF130 |  | Fixing floor traps and gully traps | 30d | 2028-02-01 | 2028-03-07 | CC-WMI-GF125 | CSD-LKO Calender (6 day + Holiday)-25 | Physical Progress [2850 h]; Plumbing [409272 INR]; TATA Projects Ltd-25 | 409,272 |
|  | 3 | **Final FIx** |  | 2028-10-05 | 2028-11-27 |  |  |  |  |
| CC-WMI-GF150 |  | Installation of sanitary fixtures (WC, washbasins, urinals, sinks) | 10d | 2028-10-05 | 2028-10-16 | CC-WMI-GF345, CC-WMI-GF140, CC-WMI-GF130 | CSD-LKO Calender (6 day + Holiday)-25 | Physical Progress [4750 h]; Plumbing [2728481 INR]; TATA Projects Ltd-25 | 2,728,481 |
| CC-WMI-GF155 |  | Installation of CP fittings (taps, mixers, showers, health faucets) | 10d | 2028-10-18 | 2028-10-28 | CC-WMI-GF150, CC-WMI-GF345 | CSD-LKO Calender (6 day + Holiday)-25 | Physical Progress [4750 h]; Plumbing [1364241 INR]; TATA Projects Ltd-25 | 1,364,241 |
| CC-WMI-GF160 |  | Connection of appliances | 25d | 2028-10-30 | 2028-11-27 | CC-WMI-GF155 | CSD-LKO Calender (6 day + Holiday)-25 | Physical Progress [3320 h]; Plumbing [682120 INR]; TATA Projects Ltd-25 | 682,120 |
|  | 4 | **Firefighting** |  | 2027-07-15 | 2028-12-02 |  |  |  |  |
|  | 1 | **1st Fix** |  | 2027-07-15 | 2027-11-13 |  |  |  |  |
| CC-WMI-GF170 |  | Fixing pipe supports and hangers | 35d | 2027-07-15 | 2027-08-25 | CC-WMI-GF15 | CSD-LKO Calender (6 day + Holiday)-25 | Physical Progress [4750 h]; Firefighting [497018 INR]; TATA Projects Ltd-25 | 497,018 |
| CC-WMI-GF165 |  | Laying branch piping | 35d | 2027-08-25 | 2027-10-07 | CC-WMI-GF170 | CSD-LKO Calender (6 day + Holiday)-25 | Physical Progress [7120 h]; Firefighting [1065039 INR]; TATA Projects Ltd-25 | 1,065,039 |
| CC-WMI-GF175 |  | Hydrostatic pressure testing of piping | 30d | 2027-10-07 | 2027-11-13 | CC-WMI-GF165 | CSD-LKO Calender (6 day + Holiday)-25 | Physical Progress [2850 h]; Firefighting [142005 INR]; TATA Projects Ltd-25 | 142,005 |
|  | 2 | **2nd Fix** |  | 2027-11-13 | 2028-02-07 |  |  |  |  |
| CC-WMI-GF180 |  | Installation of vertical risers and distribution piping in shafts | 35d | 2027-11-13 | 2027-12-24 | CC-WMI-GF20, CC-WMI-GF175 | CSD-LKO Calender (6 day + Holiday)-25 | Physical Progress [11860 h]; Firefighting [1420052 INR]; TATA Projects Ltd-25 | 1,420,052 |
| CC-WMI-GF190 |  | Painting/insulation of exposed fire pipes | 30d | 2027-11-13 | 2027-12-18 | CC-WMI-GF175 | CSD-LKO Calender (6 day + Holiday)-25 | Physical Progress [4750 h]; Firefighting [71003 INR]; TATA Projects Ltd-25 | 71,003 |
| CC-WMI-GF195 |  | Testing risers and branch lines for leakage | 30d | 2027-12-18 | 2028-01-25 | CC-WMI-GF190 | CSD-LKO Calender (6 day + Holiday)-25 | Physical Progress [2850 h]; Firefighting [142005 INR]; TATA Projects Ltd-25 | 142,005 |
| CC-WMI-GF185 |  | Installation of sprinkler branch lines in ceilings | 35d | 2027-12-24 | 2028-02-07 | CC-WMI-GF180 | CSD-LKO Calender (6 day + Holiday)-25 | Physical Progress [11860 h]; Firefighting [1065039 INR]; TATA Projects Ltd-25 | 1,065,039 |
|  | 3 | **Final FIx** |  | 2028-10-05 | 2028-12-02 |  |  |  |  |
| CC-WMI-GF200 |  | Installation of sprinkler heads, nozzles, and final alignment | 35d | 2028-10-05 | 2028-11-15 | CC-WMI-GF345, CC-WMI-GF365, CC-WMI-GF185 | CSD-LKO Calender (6 day + Holiday)-25 | Physical Progress [21350 h]; Firefighting [1065039 INR]; TATA Projects Ltd-25 | 1,065,039 |
| CC-WMI-GF205 |  | Installation of hydrant accessories (valves, hose reels, cabinets) | 25d | 2028-10-05 | 2028-11-03 | CC-WMI-GF345 | CSD-LKO Calender (6 day + Holiday)-25 | Physical Progress [4750 h]; Firefighting [710026 INR]; TATA Projects Ltd-25 | 710,026 |
| CC-WMI-GF210 |  | Installation of portable fire extinguishers | 30d | 2028-10-05 | 2028-11-09 | CC-WMI-GF345 | CSD-LKO Calender (6 day + Holiday)-25 | Physical Progress [2850 h]; Firefighting [71003 INR]; TATA Projects Ltd-25 | 71,003 |
| CC-WMI-GF215 |  | Integration with fire alarm system | 20d | 2028-11-10 | 2028-12-02 | CC-WMI-GF210 | CSD-LKO Calender (6 day + Holiday)-25 | Physical Progress [9490 h]; Firefighting [355013 INR]; TATA Projects Ltd-25 | 355,013 |

| ID | WBS | Activity | Duration | Start | Finish | Predecessors | Calendar | Resources | Cost |
| --- | --- | --- | --- | --- | --- | --- | --- | --- | --- |
|  | 5 | **ELV** |  | 2027-06-10 | 2028-11-27 |  |  |  |  |
|  | 1 | **1st Fix** |  | 2027-06-10 | 2027-08-25 |  |  |  |  |
| CC-WMI-GF395 |  | Slab Conduiting | 35d | 2027-06-10 | 2027-07-21 | CC-WMI-GF10 | CSD-LKO Calender (6 day + Holiday)-25 | Physical Progress [11860 h]; ELV [398847 INR]; TATA Projects Ltd-25 | 398,847 |
| CC-WMI-GF220 |  | Wall Conduiting | 30d | 2027-07-15 | 2027-08-19 | CC-WMI-GF15 | CSD-LKO Calender (6 day + Holiday)-25 | Physical Progress [4750 h]; ELV [170935 INR]; TATA Projects Ltd-25 | 170,935 |
| CC-WMI-GF240 |  | Installing back boxes for switches, sockets | 5d | 2027-08-19 | 2027-08-25 | CC-WMI-GF220, CC-WMI-GF395 | CSD-LKO Calender (6 day + Holiday)-25 | Physical Progress [2370 h]; ELV [284891 INR]; TATA Projects Ltd-25 | 284,891 |
|  | 2 | **2nd Fix** |  | 2027-09-13 | 2028-04-06 |  |  |  |  |
| CC-WMI-GF225 |  | Cable tray installation | 35d | 2027-09-13 | 2027-10-26 | CC-WMI-GF20 | CSD-LKO Calender (6 day + Holiday)-25 | Physical Progress [11860 h]; ELV [284891 INR]; TATA Projects Ltd-25 | 284,891 |
| CC-WMI-GF230 |  | Cabeling of ELV cable - IT/Fire Alarm/Public Address | 45d | 2027-10-26 | 2027-12-18 | CC-WMI-GF225 | CSD-LKO Calender (6 day + Holiday)-25 | Physical Progress [21350 h]; ELV [683738 INR]; TATA Projects Ltd-25 | 683,738 |
| CC-WMI-GF285 |  | ELV Rack Installation | 30d | 2027-12-18 | 2028-01-25 | CC-WMI-GF230 | CSD-LKO Calender (6 day + Holiday)-25 | Physical Progress [4750 h]; ELV [284891 INR]; TATA Projects Ltd-25 | 284,891 |
| CC-WMI-GF235 |  | Termination of cables at junction boxes, patch panels, and control panels | 35d | 2028-01-25 | 2028-03-07 | CC-WMI-GF285 | CSD-LKO Calender (6 day + Holiday)-25 | Physical Progress [14240 h]; ELV [284891 INR]; TATA Projects Ltd-25 | 284,891 |
| CC-WMI-GF250 |  | Fixing devices like CCTV camera bases, card reader bases, smoke detector bases, PA Bases, Wifi Bases | 25d | 2028-03-07 | 2028-04-06 | CC-WMI-GF235 | CSD-LKO Calender (6 day + Holiday)-25 | Physical Progress [1900 h]; ELV [569782 INR]; TATA Projects Ltd-25 | 569,782 |
|  | 3 | **Final Fix** |  | 2028-10-05 | 2028-11-27 |  |  |  |  |
| CC-WMI-GF245 |  | Installation of data and Voice Faceplate | 25d | 2028-10-05 | 2028-11-03 | CC-WMI-GF345, CC-WMI-GF365, CC-WMI-GF250 | CSD-LKO Calender (6 day + Holiday)-25 | Physical Progress [7120 h]; ELV [284891 INR]; TATA Projects Ltd-25 | 284,891 |
| CC-WMI-GF255 |  | Installation of Camera & Wifi | 30d | 2028-10-05 | 2028-11-09 | CC-WMI-GF345, CC-WMI-GF365 | CSD-LKO Calender (6 day + Holiday)-25 | Physical Progress [7120 h]; ELV [284891 INR]; TATA Projects Ltd-25 | 284,891 |
| CC-WMI-GF260 |  | Installation of fire alarm devices + Public Address | 15d | 2028-10-05 | 2028-10-23 | CC-WMI-GF345, CC-WMI-GF365 | CSD-LKO Calender (6 day + Holiday)-25 | Physical Progress [7120 h]; ELV [341869 INR]; TATA Projects Ltd-25 | 341,869 |
| CC-WMI-GF290 |  | Installation of Active System | 15d | 2028-10-24 | 2028-11-09 | CC-WMI-GF260 | CSD-LKO Calender (6 day + Holiday)-25 | Physical Progress [7120 h]; ELV [569782 INR]; TATA Projects Ltd-25 | 569,782 |
| CC-WMI-GF300 |  | Fire Panel Intallation & Integration | 25d | 2028-10-24 | 2028-11-21 | CC-WMI-GF260 | CSD-LKO Calender (6 day + Holiday)-25 | Physical Progress [11860 h]; ELV [284891 INR]; TATA Projects Ltd-25 | 284,891 |
| CC-WMI-GF305 |  | Installation & Integration of Audio Visual System | 25d | 2028-10-24 | 2028-11-21 | CC-WMI-GF260 | CSD-LKO Calender (6 day + Holiday)-25 | Physical Progress [11860 h]; ELV [284891 INR]; TATA Projects Ltd-25 | 284,891 |
| CC-WMI-GF310 |  | Installation & Integration of Access Control | 25d | 2028-10-24 | 2028-11-21 | CC-WMI-GF260 | CSD-LKO Calender (6 day + Holiday)-25 | Physical Progress [11860 h]; ELV [284891 INR]; TATA Projects Ltd-25 | 284,891 |
| CC-WMI-GF295 |  | Integration of Active components | 15d | 2028-11-10 | 2028-11-27 | CC-WMI-GF290 | CSD-LKO Calender (6 day + Holiday)-25 | Physical Progress [7120 h]; ELV [113956 INR]; TATA Projects Ltd-25 | 113,956 |
|  | 6 | **Kitchen** |  | 2028-10-05 | 2029-02-02 |  |  |  |  |
| CC-WMI-GF405 |  | Counters & Cabinet | 20d | 2028-10-05 | 2028-10-28 | CC-WMI-GF345 | CSD-LKO Calender (6 day + Holiday)-25 | Physical Progress [9490 h]; Kitchen [1657850 INR]; TATA Projects Ltd-25 | 1,657,850 |
| CC-WMI-GF415 |  | MEP Services including LNG, Chimney, Exhaust | 20d | 2028-10-30 | 2028-11-21 | CC-WMI-GF405 | CSD-LKO Calender (6 day + Holiday)-25 | Physical Progress [9490 h]; Kitchen [2486774 INR]; TATA Projects Ltd-25 | 2,486,774 |
| CC-WMI-GF420 |  | Installation of Kitchen Equipments | 20d | 2028-11-22 | 2028-12-14 | CC-WMI-GF415 | CSD-LKO Calender (6 day + Holiday)-25 | Physical Progress [9490 h]; Kitchen [11604947 INR]; TATA Projects Ltd-25 | 11,604,947 |
| CC-WMI-GF410 |  | Testing & Commissioning of Kitchen | 40d | 2028-12-15 | 2029-02-02 | CC-WMI-GF420 | CSD-LKO Calender (6 day + Holiday)-25 | Physical Progress [18980 h]; Kitchen [828925 INR]; TATA Projects Ltd-25 | 828,925 |

| ID | WBS | Activity | Duration | Start | Finish | Predecessors | Calendar | Resources | Cost |
| --- | --- | --- | --- | --- | --- | --- | --- | --- | --- |
|  | 2 | **Dry Finishes/ID Works** |  | 2028-04-12 | 2029-01-20 |  |  |  |  |
| CC-WMI-GF360 |  | Running of Wild Air | 1d | 2028-04-12 | 2028-04-13 | CC-F-GF55, CC-WMI-GF75, CC-WMI-GF80, CC-WMI-GF85, CC-WMI-GF265, CC-WMI-GF90 | CSD-LKO Calender (6 day + Holiday)-25 | Physical Progress [470 h]; TATA Projects Ltd-25 |  |
| CC-WMI-GF320 |  | Wall finish ID Works | 35d | 2028-06-12 | 2028-07-21 | CC-WMI-GF360, P-H&CC_ID-Fur-20, P-H&CC_ID-Wall-20, P-H&CC_ID-Floor-20, P-H&CC_ID-SF-20, P-H&CC_ID-FC-20, P-H&CC_ID-Doors-20, CC-WMI-GF30, CC-WMI-GF35, CC-WMI-GF45, CC-WMI-GF390, CC-WMI-GF275, CC-WMI-GF280, CC-WMI-GF145, CC-WMI-GF125, CC-WMI-GF140, CC-WMI-GF130, CC-WMI-GF180, CC-WMI-GF190, CC-WMI-GF195, CC-WMI-GF185, CC-WMI-GF225, CC-WMI-GF230, CC-WMI-GF285, CC-WMI-GF235, CC-WMI-GF250 | CSD-LKO Calender (6 day + Holiday)-25 | ID Work [9755265 INR]; Physical Progress [14240 h]; TATA Projects Ltd-25 | 9,755,265 |
| CC-WMI-GF315 |  | False Ceiling Installation | 30d | 2028-07-22 | 2028-08-28 | CC-WMI-GF320 | CSD-LKO Calender (6 day + Holiday)-25 | ID Work [11706318 INR]; Physical Progress [21350 h]; TATA Projects Ltd-25 | 11,706,318 |
| CC-WMI-GF365 |  | Flooring | 30d | 2028-08-29 | 2028-10-04 | CC-WMI-GF315 | CSD-LKO Calender (6 day + Holiday)-25 | ID Work [9755265 INR]; Physical Progress [14240 h]; TATA Projects Ltd-25 | 9,755,265 |
| CC-WMI-GF380 |  | Flooring of toilets/kitchen/Balcony | 15d | 2028-08-29 | 2028-09-14 | CC-WMI-GF375, CC-WMI-GF315 | CSD-LKO Calender (6 day + Holiday)-25 | ID Work [7804212 INR]; Physical Progress [7120 h]; TATA Projects Ltd-25 | 7,804,212 |
| CC-WMI-GF325 |  | Doors & Windows/Fire Doors/Shaft Doors | 35d | 2028-09-15 | 2028-10-28 | CC-WMI-GF320, CC-WMI-GF380 | CSD-LKO Calender (6 day + Holiday)-25 | ID Work [9755265 INR]; Physical Progress [7120 h]; TATA Projects Ltd-25 | 9,755,265 |
| CC-WMI-GF345 |  | Putty & First Coat of Paint | 15d | 2028-09-15 | 2028-10-04 | CC-WMI-GF320, CC-WMI-GF380 | CSD-LKO Calender (6 day + Holiday)-25 | Painting [4536 Sq m]; Painter [4550 h]; Helper [4550 h]; Physical Progress [7120 h]; TATA Projects Ltd-25 | 1,037,020.32 |
| CC-WMI-GF335 |  | Fixed Furniture | 10d | 2028-10-05 | 2028-10-16 | CC-WMI-GF365 | CSD-LKO Calender (6 day + Holiday)-25 | ID Work [8779739 INR]; Physical Progress [4750 h]; TATA Projects Ltd-25 | 8,779,739 |
| CC-WMI-GF370 |  | Railing for staircase | 35d | 2028-10-05 | 2028-11-15 | CC-WMI-GF320, CC-WMI-GF345 | CSD-LKO Calender (6 day + Holiday)-25 | ID Work [2926580 INR]; Physical Progress [7120 h]; TATA Projects Ltd-25 | 2,926,580 |
| CC-WMI-GF355 |  | False ceiling final finishes | 15d | 2028-11-10 | 2028-11-27 | CC-WMI-GF95 | CSD-LKO Calender (6 day + Holiday)-25 | ID Work [2926580 INR]; Physical Progress [7120 h]; TATA Projects Ltd-25 | 2,926,580 |
| CC-WMI-GF350 |  | Final coat of paint | 15d | 2028-12-15 | 2029-01-03 | CC-WMI-GF355, CC-WMI-GF370, CC-WMI-GF335, CC-WMI-GF40, CC-WMI-GF160, CC-WMI-GF215, CC-WMI-GF200, CC-WMI-GF295, CC-WMI-GF310, CC-WMI-GF305, CC-WMI-GF300, CC-WMI-GF255, CC-WMI-GF245, CC-WMI-GF205, CC-WMI-GF325 | CSD-LKO Calender (6 day + Holiday)-25 | Painting [4536 Sq m]; Painter [4550 h]; Helper [4550 h]; Physical Progress [7120 h]; TATA Projects Ltd-25 | 1,037,020.32 |
| CC-WMI-GF330 |  | Soft Furnishing & Signage | 15d | 2029-01-04 | 2029-01-20 | CC-WMI-GF350 | CSD-LKO Calender (6 day + Holiday)-25 | ID Work [14632898 INR]; Physical Progress [2370 h]; TATA Projects Ltd-25 | 14,632,898 |
| CC-WMI-GF340 |  | Loose Furniture | 15d | 2029-01-04 | 2029-01-20 | CC-WMI-GF350 | CSD-LKO Calender (6 day + Holiday)-25 | ID Work [19510530 INR]; Physical Progress [2370 h]; TATA Projects Ltd-25 | 19,510,530 |
|  | 2 | **First Mezzanine** |  | 2027-07-24 | 2029-01-20 |  |  |  |  |
|  | 1 | **Wet Finishes** |  | 2027-07-24 | 2027-11-04 |  |  |  |  |
| CC-WMI-1stM10 |  | Deshuttering | 4d | 2027-07-24 | 2027-07-29 | CC-SS-2ndM.795 | CSD-LKO Calender (6 day + Holiday)-25 | Physical Progress [1900 h]; TATA Projects Ltd-25 |  |
| CC-WMI-1stM15 |  | Brickwork/Blockwork | 30d | 2027-07-29 | 2027-09-02 | CC-WMI-1stM10, E-GFC-AR-CC-155 | CSD-LKO Calender (6 day + Holiday)-25 | Masonry [761 CuM]; Mason [5080 h]; Helper [2540 h]; Physical Progress [14240 h]; TATA Projects Ltd-25 | 7,256,408.96 |
| CC-WMI-1stM375 |  | Waterproofing of Toilets, Balcony & Kitchen | 15d | 2027-09-02 | 2027-09-21 | CC-WMI-1stM15 | CSD-LKO Calender (6 day + Holiday)-25 | Waterproofing [8564838 INR]; Waterprrofing Mason [8160 h]; Helper [4080 h]; Physical Progress [7120 h]; TATA Projects Ltd-25 | 8,564,838 |
| CC-WMI-1stM20 |  | Plaster | 15d | 2027-10-16 | 2027-11-04 | CC-WMI-1stM25, CC-WMI-1stM55, CC-WMI-1stM240, CC-WMI-1stM375 | CSD-LKO Calender (6 day + Holiday)-25 | Plaster [14779 Sqr Mtr]; Mason [9860 h]; Helper [4930 h]; Physical Progress [7120 h]; TATA Projects Ltd-25 | 8,186,235.89 |
|  | 5 | **MEP** |  | 2027-07-29 | 2028-12-20 |  |  |  |  |
|  | 2 | **HVAC** |  | 2027-09-02 | 2028-11-27 |  |  |  |  |
|  | 1 | **1st Fix** |  | 2027-09-02 | 2027-12-28 |  |  |  |  |
| CC-WMI-1stM270 |  | Duct Support Fabrication | 35d | 2027-09-02 | 2027-10-16 | CC-WMI-1stM15, E-GFC-MEP-CC-195 | CSD-LKO Calender (6 day + Holiday)-25 | Physical Progress [7120 h]; HVAC [379163 INR]; TATA Projects Ltd-25 | 379,163 |
| CC-WMI-1stM60 |  | Installing duct hangers and supports | 30d | 2027-10-16 | 2027-11-22 | CC-WMI-1stM270, E-GFC-MEP-CC-195 | CSD-LKO Calender (6 day + Holiday)-25 | Physical Progress [4750 h]; HVAC [758325 INR]; TATA Projects Ltd-25 | 758,325 |
| CC-WMI-1stM65 |  | Laying concealed/exposed refrigerant piping | 30d | 2027-11-22 | 2027-12-28 | CC-WMI-1stM60, E-GFC-MEP-CC-195 | CSD-LKO Calender (6 day + Holiday)-25 | Physical Progress [7120 h]; HVAC [189581 INR]; TATA Projects Ltd-25 | 189,581 |
| CC-WMI-1stM70 |  | Laying concealed/exposed drain piping | 30d | 2027-11-22 | 2027-12-28 | CC-WMI-1stM60, E-GFC-MEP-CC-195 | CSD-LKO Calender (6 day + Holiday)-25 | Physical Progress [4750 h]; HVAC [1137488 INR]; TATA Projects Ltd-25 | 1,137,488 |

| ID | WBS | Activity | Duration | Start | Finish | Predecessors | Calendar | Resources | Cost |
| --- | --- | --- | --- | --- | --- | --- | --- | --- | --- |
|  | 2 | **2nd Fix** |  | 2027-11-22 | 2028-05-29 |  |  |  |  |
| CC-WMI-1stM75 |  | Duct installation | 35d | 2027-11-22 | 2028-01-04 | CC-WMI-1stM60 | CSD-LKO Calender (6 day + Holiday)-25 | Physical Progress [7120 h]; HVAC [2843719 INR]; TATA Projects Ltd-25 | 2,843,719 |
| CC-WMI-1stM80 |  | Insulation of ducts (thermal/acoustic) | 10d | 2028-01-04 | 2028-01-15 | CC-WMI-1stM75 | CSD-LKO Calender (6 day + Holiday)-25 | Physical Progress [2850 h]; HVAC [1706231 INR]; TATA Projects Ltd-25 | 1,706,231 |
| CC-WMI-1stM85 |  | Installation of chilled water piping / VRF piping | 20d | 2028-01-15 | 2028-02-09 | CC-WMI-1stM80 | CSD-LKO Calender (6 day + Holiday)-25 | Physical Progress [2850 h]; HVAC [3791626 INR]; TATA Projects Ltd-25 | 3,791,626 |
| CC-WMI-1stM265 |  | Installation of indoor units including AHU, FCU | 60d | 2028-02-09 | 2028-04-21 | CC-WMI-1stM85, CC-WMI-1stM65, CC-WMI-1stM70 | CSD-LKO Calender (6 day + Holiday)-25 | Physical Progress [21350 h]; HVAC [3412463 INR]; TATA Projects Ltd-25 | 3,412,463 |
| CC-WMI-1stM90 |  | Connecting refrigerant and drain piping to indoor units | 30d | 2028-04-21 | 2028-05-29 | CC-WMI-1stM265 | CSD-LKO Calender (6 day + Holiday)-25 | Physical Progress [2850 h]; HVAC [947906 INR]; TATA Projects Ltd-25 | 947,906 |
|  | 3 | **Final Fix** |  | 2028-09-14 | 2028-11-27 |  |  |  |  |
| CC-WMI-1stM100 |  | Installing grills, diffusers, dampers | 30d | 2028-09-14 | 2028-10-23 | CC-WMI-1stM315 | CSD-LKO Calender (6 day + Holiday)-25 | Physical Progress [2850 h]; HVAC [1895813 INR]; TATA Projects Ltd-25 | 1,895,813 |
| CC-WMI-1stM95 |  | Installation of thermostats and control panels | 30d | 2028-10-23 | 2028-11-27 | CC-WMI-1stM100, CC-WMI-1stM345, CC-WMI-1stM90 | CSD-LKO Calender (6 day + Holiday)-25 | Physical Progress [2850 h]; HVAC [947906 INR]; TATA Projects Ltd-25 | 947,906 |
|  | 1 | **Electrical** |  | 2027-07-29 | 2028-12-20 |  |  |  |  |
|  | 1 | **1st Fix** |  | 2027-07-29 | 2027-10-16 |  |  |  |  |
| CC-WMI-1stM385 |  | Slab Conduiting | 35d | 2027-07-29 | 2027-09-09 | CC-WMI-1stM10, E-GFC-MEP-CC-195 | CSD-LKO Calender (6 day + Holiday)-25 | Physical Progress [11860 h]; Electrical [2122199 INR]; TATA Projects Ltd-25 | 2,122,199 |
| CC-WMI-1stM25 |  | Wall Conduiting | 30d | 2027-09-02 | 2027-10-11 | CC-WMI-1stM15, E-GFC-MEP-CC-195 | CSD-LKO Calender (6 day + Holiday)-25 | Physical Progress [4750 h]; Electrical [1061100 INR]; TATA Projects Ltd-25 | 1,061,100 |
| CC-WMI-1stM55 |  | Installing back boxes for switches, sockets | 5d | 2027-10-11 | 2027-10-16 | CC-WMI-1stM25, CC-WMI-1stM385, E-GFC-MEP-CC-195 | CSD-LKO Calender (6 day + Holiday)-25 | Physical Progress [2370 h]; Electrical [636660 INR]; TATA Projects Ltd-25 | 636,660 |
|  | 2 | **2nd Fix** |  | 2027-11-04 | 2028-05-11 |  |  |  |  |
| CC-WMI-1stM30 |  | Cable tray laying | 35d | 2027-11-04 | 2027-12-15 | CC-WMI-1stM20 | CSD-LKO Calender (6 day + Holiday)-25 | Physical Progress [11860 h]; Electrical [848880 INR]; TATA Projects Ltd-25 | 848,880 |
| CC-WMI-1stM35 |  | Cabling & Wire Pulling | 45d | 2027-12-15 | 2028-02-09 | CC-WMI-1stM30 | CSD-LKO Calender (6 day + Holiday)-25 | Physical Progress [21350 h]; Electrical [4244398 INR]; TATA Projects Ltd-25 | 4,244,398 |
| CC-WMI-1stM395 |  | Floor Rising Main Installation | 25d | 2028-02-09 | 2028-03-09 | CC-WMI-1stM35 | CSD-LKO Calender (6 day + Holiday)-25 | Physical Progress [2370 h]; Electrical [2971079 INR]; TATA Projects Ltd-25 | 2,971,079 |
| CC-WMI-1stM45 |  | DB fixing and connecting | 35d | 2028-02-09 | 2028-03-22 | CC-WMI-1stM35 | CSD-LKO Calender (6 day + Holiday)-25 | Physical Progress [7120 h]; Electrical [636660 INR]; TATA Projects Ltd-25 | 636,660 |
| CC-WMI-1stM275 |  | Floor/Distribution Panel Installation | 20d | 2028-03-22 | 2028-04-15 | CC-WMI-1stM45 | CSD-LKO Calender (6 day + Holiday)-25 | Physical Progress [2370 h]; Electrical [1697759 INR]; TATA Projects Ltd-25 | 1,697,759 |
| CC-WMI-1stM280 |  | Equipment Earthing | 20d | 2028-04-15 | 2028-05-11 | CC-WMI-1stM275, CC-WMI-1stM395 | CSD-LKO Calender (6 day + Holiday)-25 | Physical Progress [4750 h]; Electrical [636660 INR]; TATA Projects Ltd-25 | 636,660 |
|  | 3 | **Final Fix** |  | 2028-10-10 | 2028-12-20 |  |  |  |  |
| CC-WMI-1stM50 |  | Switches & Socket | 30d | 2028-10-10 | 2028-11-15 | CC-WMI-1stM345 | CSD-LKO Calender (6 day + Holiday)-25 | Physical Progress [9490 h]; Electrical [2122199 INR]; TATA Projects Ltd-25 | 2,122,199 |
| CC-WMI-1stM40 |  | Light Fixtures | 30d | 2028-11-15 | 2028-12-20 | CC-WMI-1stM50, CC-WMI-1stM280 | CSD-LKO Calender (6 day + Holiday)-25 | Physical Progress [7120 h]; Electrical [3183299 INR]; TATA Projects Ltd-25 | 3,183,299 |

| ID | WBS | Activity | Duration | Start | Finish | Predecessors | Calendar | Resources | Cost |
| --- | --- | --- | --- | --- | --- | --- | --- | --- | --- |
|  | 3 | **Plumbing** |  | 2027-09-02 | 2028-12-02 |  |  |  |  |
|  | 1 | **1st Fix** |  | 2027-09-02 | 2028-02-09 |  |  |  |  |
| CC-WMI-1stM115 |  | Fixing pipe supports and clamps | 35d | 2027-09-02 | 2027-10-16 | CC-WMI-1stM15, E-GFC-MEP-CC-195 | CSD-LKO Calender (6 day + Holiday)-25 | Physical Progress [4750 h]; Plumbing [682120 INR]; TATA Projects Ltd-25 | 682,120 |
| CC-WMI-1stM105 |  | Laying water supply pipes (hot & cold) | 35d | 2027-10-16 | 2027-11-27 | CC-WMI-1stM115, E-GFC-MEP-CC-195 | CSD-LKO Calender (6 day + Holiday)-25 | Physical Progress [7120 h]; Plumbing [1364241 INR]; TATA Projects Ltd-25 | 1,364,241 |
| CC-WMI-1stM110 |  | Laying drainage pipes (soil, waste, vent) | 35d | 2027-10-16 | 2027-11-27 | CC-WMI-1stM115, E-GFC-MEP-CC-195 | CSD-LKO Calender (6 day + Holiday)-25 | Physical Progress [7120 h]; Plumbing [1364241 INR]; TATA Projects Ltd-25 | 1,364,241 |
| CC-WMI-1stM135 |  | Installation of plumbing fixture base supports (WC frames, sink brackets) | 30d | 2027-11-27 | 2028-01-04 | CC-WMI-1stM110, E-GFC-MEP-CC-195 | CSD-LKO Calender (6 day + Holiday)-25 | Physical Progress [2850 h]; Plumbing [682120 INR]; TATA Projects Ltd-25 | 682,120 |
| CC-WMI-1stM120 |  | Pressure testing of water supply lines | 25d | 2028-01-04 | 2028-02-03 | CC-WMI-1stM105, CC-WMI-1stM110, CC-WMI-1stM135, E-GFC-MEP-CC-195 | CSD-LKO Calender (6 day + Holiday)-25 | Physical Progress [3320 h]; Plumbing [136424 INR]; TATA Projects Ltd-25 | 136,424 |
| CC-WMI-1stM400 |  | Installation of concealed parts of toilet fixtures | 30d | 2028-01-04 | 2028-02-09 | CC-WMI-1stM135, E-GFC-MEP-CC-195 | CSD-LKO Calender (6 day + Holiday)-25 | Physical Progress [4750 h]; Plumbing [682120 INR]; TATA Projects Ltd-25 | 682,120 |
|  | 2 | **2nd FIx** |  | 2028-02-03 | 2028-04-27 |  |  |  |  |
| CC-WMI-1stM145 |  | Insulation of hot water pipes (if applicable) | 30d | 2028-02-03 | 2028-03-09 | CC-WMI-1stM120 | CSD-LKO Calender (6 day + Holiday)-25 | Physical Progress [2850 h]; Plumbing [682120 INR]; TATA Projects Ltd-25 | 682,120 |
| CC-WMI-1stM125 |  | Installation of vertical risers and main distribution lines | 35d | 2028-02-09 | 2028-03-22 | CC-WMI-1stM20, CC-WMI-1stM120, CC-WMI-1stM400 | CSD-LKO Calender (6 day + Holiday)-25 | Physical Progress [9490 h]; Plumbing [1364241 INR]; TATA Projects Ltd-25 | 1,364,241 |
| CC-WMI-1stM140 |  | Testing drainage lines for leakage/blockage | 30d | 2028-03-09 | 2028-04-15 | CC-WMI-1stM135, CC-WMI-1stM145 | CSD-LKO Calender (6 day + Holiday)-25 | Physical Progress [2850 h]; Plumbing [136424 INR]; TATA Projects Ltd-25 | 136,424 |
| CC-WMI-1stM130 |  | Fixing floor traps and gully traps | 30d | 2028-03-22 | 2028-04-27 | CC-WMI-1stM125 | CSD-LKO Calender (6 day + Holiday)-25 | Physical Progress [2850 h]; Plumbing [409272 INR]; TATA Projects Ltd-25 | 409,272 |
|  | 3 | **Final FIx** |  | 2028-10-10 | 2028-12-02 |  |  |  |  |
| CC-WMI-1stM150 |  | Installation of sanitary fixtures (WC, washbasins, urinals, sinks) | 10d | 2028-10-10 | 2028-10-23 | CC-WMI-1stM345, CC-WMI-1stM140, CC-WMI-1stM130 | CSD-LKO Calender (6 day + Holiday)-25 | Physical Progress [4750 h]; Plumbing [2728481 INR]; TATA Projects Ltd-25 | 2,728,481 |
| CC-WMI-1stM155 |  | Installation of CP fittings (taps, mixers, showers, health faucets) | 10d | 2028-10-23 | 2028-11-03 | CC-WMI-1stM150, CC-WMI-1stM345 | CSD-LKO Calender (6 day + Holiday)-25 | Physical Progress [4750 h]; Plumbing [1364241 INR]; TATA Projects Ltd-25 | 1,364,241 |
| CC-WMI-1stM160 |  | Connection of appliances | 25d | 2028-11-03 | 2028-12-02 | CC-WMI-1stM155 | CSD-LKO Calender (6 day + Holiday)-25 | Physical Progress [3320 h]; Plumbing [682120 INR]; TATA Projects Ltd-25 | 682,120 |
|  | 4 | **Firefighting** |  | 2027-09-02 | 2028-12-08 |  |  |  |  |
|  | 1 | **1st Fix** |  | 2027-09-02 | 2028-01-04 |  |  |  |  |
| CC-WMI-1stM170 |  | Fixing pipe supports and hangers | 35d | 2027-09-02 | 2027-10-16 | CC-WMI-1stM15, E-GFC-MEP-CC-195 | CSD-LKO Calender (6 day + Holiday)-25 | Physical Progress [4750 h]; Firefighting [497018 INR]; TATA Projects Ltd-25 | 497,018 |
| CC-WMI-1stM165 |  | Laying branch piping | 35d | 2027-10-16 | 2027-11-27 | CC-WMI-1stM170, E-GFC-MEP-CC-195 | CSD-LKO Calender (6 day + Holiday)-25 | Physical Progress [7120 h]; Firefighting [1065039 INR]; TATA Projects Ltd-25 | 1,065,039 |
| CC-WMI-1stM175 |  | Hydrostatic pressure testing of piping | 30d | 2027-11-27 | 2028-01-04 | CC-WMI-1stM165, E-GFC-MEP-CC-195 | CSD-LKO Calender (6 day + Holiday)-25 | Physical Progress [2850 h]; Firefighting [142005 INR]; TATA Projects Ltd-25 | 142,005 |
|  | 2 | **2nd Fix** |  | 2028-01-04 | 2028-03-28 |  |  |  |  |
| CC-WMI-1stM180 |  | Installation of vertical risers and distribution piping in shafts | 35d | 2028-01-04 | 2028-02-15 | CC-WMI-1stM20, CC-WMI-1stM175 | CSD-LKO Calender (6 day + Holiday)-25 | Physical Progress [11860 h]; Firefighting [1420052 INR]; TATA Projects Ltd-25 | 1,420,052 |
| CC-WMI-1stM190 |  | Painting/insulation of exposed fire pipes | 30d | 2028-01-04 | 2028-02-09 | CC-WMI-1stM175 | CSD-LKO Calender (6 day + Holiday)-25 | Physical Progress [4750 h]; Firefighting [71003 INR]; TATA Projects Ltd-25 | 71,003 |
| CC-WMI-1stM195 |  | Testing risers and branch lines for leakage | 30d | 2028-02-09 | 2028-03-16 | CC-WMI-1stM190 | CSD-LKO Calender (6 day + Holiday)-25 | Physical Progress [2850 h]; Firefighting [142005 INR]; TATA Projects Ltd-25 | 142,005 |
| CC-WMI-1stM185 |  | Installation of sprinkler branch lines in ceilings | 35d | 2028-02-15 | 2028-03-28 | CC-WMI-1stM180 | CSD-LKO Calender (6 day + Holiday)-25 | Physical Progress [11860 h]; Firefighting [1065039 INR]; TATA Projects Ltd-25 | 1,065,039 |

| ID | WBS | Activity | Duration | Start | Finish | Predecessors | Calendar | Resources | Cost |
| --- | --- | --- | --- | --- | --- | --- | --- | --- | --- |
|  | 3 | **Final FIx** |  | 2028-10-10 | 2028-12-08 |  |  |  |  |
| CC-WMI-1stM200 |  | Installation of sprinkler heads, nozzles, and final alignment | 35d | 2028-10-10 | 2028-11-21 | CC-WMI-1stM345, CC-WMI-1stM365, CC-WMI-1stM185 | CSD-LKO Calender (6 day + Holiday)-25 | Physical Progress [21350 h]; Firefighting [1065039 INR]; TATA Projects Ltd-25 | 1,065,039 |
| CC-WMI-1stM205 |  | Installation of hydrant accessories (valves, hose reels, cabinets) | 25d | 2028-10-10 | 2028-11-09 | CC-WMI-1stM345 | CSD-LKO Calender (6 day + Holiday)-25 | Physical Progress [4750 h]; Firefighting [710026 INR]; TATA Projects Ltd-25 | 710,026 |
| CC-WMI-1stM210 |  | Installation of portable fire extinguishers | 30d | 2028-10-10 | 2028-11-15 | CC-WMI-1stM345 | CSD-LKO Calender (6 day + Holiday)-25 | Physical Progress [2850 h]; Firefighting [71003 INR]; TATA Projects Ltd-25 | 71,003 |
| CC-WMI-1stM215 |  | Integration with fire alarm system | 20d | 2028-11-15 | 2028-12-08 | CC-WMI-1stM210 | CSD-LKO Calender (6 day + Holiday)-25 | Physical Progress [9490 h]; Firefighting [355013 INR]; TATA Projects Ltd-25 | 355,013 |
|  | 5 | **ELV** |  | 2027-07-29 | 2028-12-02 |  |  |  |  |
|  | 1 | **1st Fix** |  | 2027-07-29 | 2027-10-16 |  |  |  |  |
| CC-WMI-1stM390 |  | Slab Conduiting | 35d | 2027-07-29 | 2027-09-09 | CC-WMI-1stM10, E-GFC-MEP-CC-195 | CSD-LKO Calender (6 day + Holiday)-25 | Physical Progress [11860 h]; ELV [398847 INR]; TATA Projects Ltd-25 | 398,847 |
| CC-WMI-1stM220 |  | Wall Conduiting | 30d | 2027-09-02 | 2027-10-11 | CC-WMI-1stM15, E-GFC-MEP-CC-195 | CSD-LKO Calender (6 day + Holiday)-25 | Physical Progress [4750 h]; ELV [170935 INR]; TATA Projects Ltd-25 | 170,935 |
| CC-WMI-1stM240 |  | Installing back boxes for switches, sockets | 5d | 2027-10-11 | 2027-10-16 | CC-WMI-1stM220, CC-WMI-1stM390, E-GFC-MEP-CC-195 | CSD-LKO Calender (6 day + Holiday)-25 | Physical Progress [2370 h]; ELV [284891 INR]; TATA Projects Ltd-25 | 284,891 |
|  | 2 | **2nd Fix** |  | 2027-11-04 | 2028-05-29 |  |  |  |  |
| CC-WMI-1stM225 |  | Cable tray installation | 35d | 2027-11-04 | 2027-12-15 | CC-WMI-1stM20 | CSD-LKO Calender (6 day + Holiday)-25 | Physical Progress [11860 h]; ELV [284891 INR]; TATA Projects Ltd-25 | 284,891 |
| CC-WMI-1stM230 |  | Cabeling of ELV cable - IT/Fire Alarm/Public Address | 45d | 2027-12-15 | 2028-02-09 | CC-WMI-1stM225 | CSD-LKO Calender (6 day + Holiday)-25 | Physical Progress [21350 h]; ELV [683738 INR]; TATA Projects Ltd-25 | 683,738 |
| CC-WMI-1stM285 |  | ELV Rack Installation | 30d | 2028-02-09 | 2028-03-16 | CC-WMI-1stM230 | CSD-LKO Calender (6 day + Holiday)-25 | Physical Progress [4750 h]; ELV [284891 INR]; TATA Projects Ltd-25 | 284,891 |
| CC-WMI-1stM235 |  | Termination of cables at junction boxes, patch panels, and control panels | 35d | 2028-03-16 | 2028-04-27 | CC-WMI-1stM285 | CSD-LKO Calender (6 day + Holiday)-25 | Physical Progress [14240 h]; ELV [284891 INR]; TATA Projects Ltd-25 | 284,891 |
| CC-WMI-1stM250 |  | Fixing devices like CCTV camera bases, card reader bases, smoke detector bases, PA Bases, Wifi Bases | 25d | 2028-04-27 | 2028-05-29 | CC-WMI-1stM235 | CSD-LKO Calender (6 day + Holiday)-25 | Physical Progress [1900 h]; ELV [569782 INR]; TATA Projects Ltd-25 | 569,782 |
|  | 3 | **FInal Fix** |  | 2028-10-10 | 2028-12-02 |  |  |  |  |
| CC-WMI-1stM245 |  | Installation of data and Voice Faceplate | 25d | 2028-10-10 | 2028-11-09 | CC-WMI-1stM345, CC-WMI-1stM365, CC-WMI-1stM250 | CSD-LKO Calender (6 day + Holiday)-25 | Physical Progress [7120 h]; ELV [284891 INR]; TATA Projects Ltd-25 | 284,891 |
| CC-WMI-1stM255 |  | Installation of Camera & Wifi | 30d | 2028-10-10 | 2028-11-15 | CC-WMI-1stM345, CC-WMI-1stM365 | CSD-LKO Calender (6 day + Holiday)-25 | Physical Progress [7120 h]; ELV [284891 INR]; TATA Projects Ltd-25 | 284,891 |
| CC-WMI-1stM260 |  | Installation of fire alarm devices + Public Address | 15d | 2028-10-10 | 2028-10-28 | CC-WMI-1stM345, CC-WMI-1stM365 | CSD-LKO Calender (6 day + Holiday)-25 | Physical Progress [7120 h]; ELV [341869 INR]; TATA Projects Ltd-25 | 341,869 |
| CC-WMI-1stM290 |  | Installation of Active System | 15d | 2028-10-28 | 2028-11-15 | CC-WMI-1stM260 | CSD-LKO Calender (6 day + Holiday)-25 | Physical Progress [7120 h]; ELV [569782 INR]; TATA Projects Ltd-25 | 569,782 |
| CC-WMI-1stM300 |  | Fire Panel Intallation & Integration | 25d | 2028-10-28 | 2028-11-27 | CC-WMI-1stM260 | CSD-LKO Calender (6 day + Holiday)-25 | Physical Progress [11860 h]; ELV [284891 INR]; TATA Projects Ltd-25 | 284,891 |
| CC-WMI-1stM305 |  | Installation & Integration of Audio Visual System | 25d | 2028-10-28 | 2028-11-27 | CC-WMI-1stM260 | CSD-LKO Calender (6 day + Holiday)-25 | Physical Progress [11860 h]; ELV [284891 INR]; TATA Projects Ltd-25 | 284,891 |
| CC-WMI-1stM310 |  | Installation & Integration of Access Control | 25d | 2028-10-28 | 2028-11-27 | CC-WMI-1stM260 | CSD-LKO Calender (6 day + Holiday)-25 | Physical Progress [11860 h]; ELV [284891 INR]; TATA Projects Ltd-25 | 284,891 |
| CC-WMI-1stM295 |  | Integration of Active components | 15d | 2028-11-15 | 2028-12-02 | CC-WMI-1stM290 | CSD-LKO Calender (6 day + Holiday)-25 | Physical Progress [7120 h]; ELV [113956 INR]; TATA Projects Ltd-25 | 113,956 |

| ID | WBS | Activity | Duration | Start | Finish | Predecessors | Calendar | Resources | Cost |
| --- | --- | --- | --- | --- | --- | --- | --- | --- | --- |
|  | 2 | **Dry Finishes/ID Works** |  | 2028-06-27 | 2029-01-20 |  |  |  |  |
| CC-WMI-1stM360 |  | Running of Wild Air | 1d | 2028-06-27 | 2028-06-28 | CC-F-(1stM-3rdM)55, CC-WMI-1stM75, CC-WMI-1stM80, CC-WMI-1stM85, CC-WMI-1stM265, CC-WMI-1stM90 | CSD-LKO Calender (6 day + Holiday)-25 | Physical Progress [470 h]; TATA Projects Ltd-25 |  |
| CC-WMI-1stM320 |  | Wall finish ID Works | 35d | 2028-06-28 | 2028-08-08 | CC-WMI-1stM360, CC-WMI-1stM30, CC-WMI-1stM35, CC-WMI-1stM45, CC-WMI-1stM395, CC-WMI-1stM275, CC-WMI-1stM280, CC-WMI-1stM145, CC-WMI-1stM125, CC-WMI-1stM140, CC-WMI-1stM130, CC-WMI-1stM180, CC-WMI-1stM190, CC-WMI-1stM195, CC-WMI-1stM185, CC-WMI-1stM225, CC-WMI-1stM230, CC-WMI-1stM285, CC-WMI-1stM235, CC-WMI-1stM250 | CSD-LKO Calender (6 day + Holiday)-25 | ID Work [9755265 INR]; Physical Progress [4750 h]; TATA Projects Ltd-25 | 9,755,265 |
| CC-WMI-1stM315 |  | False Ceiling Installation | 30d | 2028-08-08 | 2028-09-14 | CC-WMI-1stM320 | CSD-LKO Calender (6 day + Holiday)-25 | ID Work [11706318 INR]; Physical Progress [7120 h]; TATA Projects Ltd-25 | 11,706,318 |
| CC-WMI-1stM365 |  | Flooring | 20d | 2028-09-14 | 2028-10-10 | CC-WMI-1stM315 | CSD-LKO Calender (6 day + Holiday)-25 | ID Work [9755265 INR]; Physical Progress [9490 h]; TATA Projects Ltd-25 | 9,755,265 |
| CC-WMI-1stM380 |  | Flooring of toilets/kitchen/Balcony | 10d | 2028-09-14 | 2028-09-26 | CC-WMI-1stM375, CC-WMI-1stM315 | CSD-LKO Calender (6 day + Holiday)-25 | ID Work [7804212 INR]; Physical Progress [4750 h]; TATA Projects Ltd-25 | 7,804,212 |
| CC-WMI-1stM325 |  | Doors & Windows/Fire Doors/Shaft Doors | 35d | 2028-09-26 | 2028-11-09 | CC-WMI-1stM320, CC-WMI-1stM380 | CSD-LKO Calender (6 day + Holiday)-25 | ID Work [9755265 INR]; Physical Progress [4750 h]; TATA Projects Ltd-25 | 9,755,265 |
| CC-WMI-1stM345 |  | Putty & First Coat of Paint | 10d | 2028-09-26 | 2028-10-10 | CC-WMI-1stM320, CC-WMI-1stM380 | CSD-LKO Calender (6 day + Holiday)-25 | Painting [4536 Sq m]; Painter [4540 h]; Helper [4540 h]; Physical Progress [4750 h]; TATA Projects Ltd-25 | 1,037,020.32 |
| CC-WMI-1stM335 |  | Fixed Furniture | 8d | 2028-10-10 | 2028-10-20 | CC-WMI-1stM365 | CSD-LKO Calender (6 day + Holiday)-25 | ID Work [8779739 INR]; Physical Progress [3800 h]; TATA Projects Ltd-25 | 8,779,739 |
| CC-WMI-1stM370 |  | Railing for staircase | 35d | 2028-10-10 | 2028-11-21 | CC-WMI-1stM320, CC-WMI-1stM345 | CSD-LKO Calender (6 day + Holiday)-25 | ID Work [2926580 INR]; Physical Progress [7120 h]; TATA Projects Ltd-25 | 2,926,580 |
| CC-WMI-1stM355 |  | False ceiling final finishes | 10d | 2028-11-27 | 2028-12-08 | CC-WMI-1stM95 | CSD-LKO Calender (6 day + Holiday)-25 | ID Work [2926580 INR]; Physical Progress [4750 h]; TATA Projects Ltd-25 | 2,926,580 |
| CC-WMI-1stM350 |  | Final coat of paint | 10d | 2028-12-20 | 2029-01-03 | CC-WMI-1stM355, CC-WMI-1stM370, CC-WMI-1stM335, CC-WMI-1stM40, CC-WMI-1stM160, CC-WMI-1stM215, CC-WMI-1stM200, CC-WMI-1stM295, CC-WMI-1stM310, CC-WMI-1stM305, CC-WMI-1stM300, CC-WMI-1stM255, CC-WMI-1stM245, CC-WMI-1stM205, CC-WMI-1stM325 | CSD-LKO Calender (6 day + Holiday)-25 | Painting [4536 Sq m]; Painter [4540 h]; Helper [4540 h]; Physical Progress [4750 h]; TATA Projects Ltd-25 | 1,037,020.32 |
| CC-WMI-1stM330 |  | Soft Furnishing & Signage | 15d | 2029-01-03 | 2029-01-20 | CC-WMI-1stM350 | CSD-LKO Calender (6 day + Holiday)-25 | ID Work [14632898 INR]; Physical Progress [2370 h]; TATA Projects Ltd-25 | 14,632,898 |
| CC-WMI-1stM340 |  | Loose Furniture | 15d | 2029-01-03 | 2029-01-20 | CC-WMI-1stM350 | CSD-LKO Calender (6 day + Holiday)-25 | ID Work [19510530 INR]; Physical Progress [2370 h]; TATA Projects Ltd-25 | 19,510,530 |
|  | 4 | **Second Mezzanine** |  | 2027-09-02 | 2029-01-31 |  |  |  |  |
|  | 1 | **Wet Finishes** |  | 2027-09-02 | 2027-12-14 |  |  |  |  |
| CC-WMI-2ndM10 |  | Deshuttering | 4d | 2027-09-02 | 2027-09-08 | CC-SS-1stF.225 | CSD-LKO Calender (6 day + Holiday)-25 | Physical Progress [1900 h]; TATA Projects Ltd-25 |  |
| CC-WMI-2ndM15 |  | Brickwork/Blockwork | 30d | 2027-09-08 | 2027-10-15 | CC-WMI-2ndM10, E-GFC-AR-CC-165 | CSD-LKO Calender (6 day + Holiday)-25 | Masonry [761 CuM]; Mason [5080 h]; Helper [2540 h]; Physical Progress [14240 h]; TATA Projects Ltd-25 | 7,256,408.96 |
| CC-WMI-2ndM370 |  | Waterproofing of Toilets, Balcony & Kitchen | 15d | 2027-10-15 | 2027-11-03 | CC-WMI-2ndM15 | CSD-LKO Calender (6 day + Holiday)-25 | Waterproofing [8564838 INR]; Waterprrofing Mason [8160 h]; Helper [4080 h]; Physical Progress [7120 h]; TATA Projects Ltd-25 | 8,564,838 |
| CC-WMI-2ndM20 |  | Plaster | 15d | 2027-11-26 | 2027-12-14 | CC-WMI-2ndM25, CC-WMI-2ndM55, CC-WMI-2ndM240, CC-WMI-2ndM370 | CSD-LKO Calender (6 day + Holiday)-25 | Plaster [14779 Sqr Mtr]; Mason [9860 h]; Helper [4930 h]; Physical Progress [7120 h]; TATA Projects Ltd-25 | 8,186,235.89 |
|  | 5 | **MEP 1st Fix, 2nd Fix** |  | 2027-09-08 | 2028-07-07 |  |  |  |  |
|  | 2 | **HVAC** |  | 2027-10-15 | 2028-06-08 |  |  |  |  |
|  | 1 | **1st Fix** |  | 2027-10-15 | 2028-02-08 |  |  |  |  |
| CC-WMI-2ndM270 |  | Duct Support Fabrication | 35d | 2027-10-15 | 2027-11-26 | CC-WMI-2ndM15 | CSD-LKO Calender (6 day + Holiday)-25 | Physical Progress [7120 h]; HVAC [379163 INR]; TATA Projects Ltd-25 | 379,163 |
| CC-WMI-2ndM60 |  | Installing duct hangers and supports | 30d | 2027-11-26 | 2028-01-03 | CC-WMI-2ndM270 | CSD-LKO Calender (6 day + Holiday)-25 | Physical Progress [4750 h]; HVAC [758325 INR]; TATA Projects Ltd-25 | 758,325 |
| CC-WMI-2ndM65 |  | Laying concealed/exposed refrigerant piping | 30d | 2028-01-03 | 2028-02-08 | CC-WMI-2ndM60 | CSD-LKO Calender (6 day + Holiday)-25 | Physical Progress [7120 h]; HVAC [189581 INR]; TATA Projects Ltd-25 | 189,581 |
| CC-WMI-2ndM70 |  | Laying concealed/exposed drain piping | 30d | 2028-01-03 | 2028-02-08 | CC-WMI-2ndM60 | CSD-LKO Calender (6 day + Holiday)-25 | Physical Progress [4750 h]; HVAC [1137488 INR]; TATA Projects Ltd-25 | 1,137,488 |

| ID | WBS | Activity | Duration | Start | Finish | Predecessors | Calendar | Resources | Cost |
| --- | --- | --- | --- | --- | --- | --- | --- | --- | --- |
|  | 2 | **2nd Fix** |  | 2028-01-03 | 2028-06-08 |  |  |  |  |
| CC-WMI-2ndM75 |  | Duct installation | 35d | 2028-01-03 | 2028-02-14 | CC-WMI-2ndM60, E-GFC-MEP-CC-215 | CSD-LKO Calender (6 day + Holiday)-25 | Physical Progress [7120 h]; HVAC [2843719 INR]; TATA Projects Ltd-25 | 2,843,719 |
| CC-WMI-2ndM80 |  | Insulation of ducts (thermal/acoustic) | 10d | 2028-02-14 | 2028-02-25 | CC-WMI-2ndM75, E-GFC-MEP-CC-215 | CSD-LKO Calender (6 day + Holiday)-25 | Physical Progress [2850 h]; HVAC [1706231 INR]; TATA Projects Ltd-25 | 1,706,231 |
| CC-WMI-2ndM85 |  | Installation of chilled water piping / VRF piping | 20d | 2028-02-25 | 2028-03-21 | CC-WMI-2ndM80, E-GFC-MEP-CC-215 | CSD-LKO Calender (6 day + Holiday)-25 | Physical Progress [2850 h]; HVAC [3791626 INR]; TATA Projects Ltd-25 | 3,791,626 |
| CC-WMI-2ndM265 |  | Installation of indoor units including AHU, FCU | 45d | 2028-03-21 | 2028-05-16 | CC-WMI-2ndM85, CC-WMI-2ndM65, CC-WMI-2ndM70, E-GFC-MEP-CC-215 | CSD-LKO Calender (6 day + Holiday)-25 | Physical Progress [21350 h]; HVAC [3412463 INR]; TATA Projects Ltd-25 | 3,412,463 |
| CC-WMI-2ndM90 |  | Connecting refrigerant and drain piping to indoor units | 20d | 2028-05-16 | 2028-06-08 | CC-WMI-2ndM265, E-GFC-MEP-CC-215 | CSD-LKO Calender (6 day + Holiday)-25 | Physical Progress [2850 h]; HVAC [947906 INR]; TATA Projects Ltd-25 | 947,906 |
|  | 1 | **Electrical** |  | 2027-09-08 | 2028-06-08 |  |  |  |  |
|  | 1 | **1st Fix** |  | 2027-09-08 | 2027-11-26 |  |  |  |  |
| CC-WMI-2ndM380 |  | Slab Conduiting | 35d | 2027-09-08 | 2027-10-21 | CC-WMI-2ndM10 | CSD-LKO Calender (6 day + Holiday)-25 | Physical Progress [11860 h]; Electrical [2122199 INR]; TATA Projects Ltd-25 | 2,122,199 |
| CC-WMI-2ndM25 |  | Wall Conduiting | 30d | 2027-10-15 | 2027-11-20 | CC-WMI-2ndM15 | CSD-LKO Calender (6 day + Holiday)-25 | Physical Progress [4750 h]; Electrical [1061100 INR]; TATA Projects Ltd-25 | 1,061,100 |
| CC-WMI-2ndM55 |  | Installing back boxes for switches, sockets | 5d | 2027-11-20 | 2027-11-26 | CC-WMI-2ndM25, CC-WMI-2ndM380 | CSD-LKO Calender (6 day + Holiday)-25 | Physical Progress [2370 h]; Electrical [636660 INR]; TATA Projects Ltd-25 | 636,660 |
|  | 2 | **2nd Fix** |  | 2027-12-14 | 2028-06-08 |  |  |  |  |
| CC-WMI-2ndM30 |  | Cable tray laying | 25d | 2027-12-14 | 2028-01-14 | CC-WMI-2ndM20, E-GFC-MEP-CC-215 | CSD-LKO Calender (6 day + Holiday)-25 | Physical Progress [11860 h]; Electrical [848880 INR]; TATA Projects Ltd-25 | 848,880 |
| CC-WMI-2ndM35 |  | Cabling & Wire Pulling | 45d | 2028-01-14 | 2028-03-08 | CC-WMI-2ndM30, E-GFC-MEP-CC-215 | CSD-LKO Calender (6 day + Holiday)-25 | Physical Progress [21350 h]; Electrical [4244398 INR]; TATA Projects Ltd-25 | 4,244,398 |
| CC-WMI-2ndM390 |  | Floor Rising Main Installation | 20d | 2028-03-08 | 2028-04-01 | CC-WMI-2ndM35, E-GFC-MEP-CC-215 | CSD-LKO Calender (6 day + Holiday)-25 | Physical Progress [2370 h]; Electrical [2971079 INR]; TATA Projects Ltd-25 | 2,971,079 |
| CC-WMI-2ndM45 |  | DB fixing and connecting | 35d | 2028-03-08 | 2028-04-20 | CC-WMI-2ndM35, E-GFC-MEP-CC-215 | CSD-LKO Calender (6 day + Holiday)-25 | Physical Progress [7120 h]; Electrical [636660 INR]; TATA Projects Ltd-25 | 636,660 |
| CC-WMI-2ndM275 |  | Floor/Distribution Panel Installation | 20d | 2028-04-20 | 2028-05-16 | CC-WMI-2ndM45, E-GFC-MEP-CC-215 | CSD-LKO Calender (6 day + Holiday)-25 | Physical Progress [2370 h]; Electrical [1697759 INR]; TATA Projects Ltd-25 | 1,697,759 |
| CC-WMI-2ndM280 |  | Equipment Earthing | 20d | 2028-05-16 | 2028-06-08 | CC-WMI-2ndM275, CC-WMI-2ndM390, E-GFC-MEP-CC-215 | CSD-LKO Calender (6 day + Holiday)-25 | Physical Progress [4750 h]; Electrical [636660 INR]; TATA Projects Ltd-25 | 636,660 |
|  | 3 | **Plumbing** |  | 2027-10-15 | 2028-06-08 |  |  |  |  |
|  | 1 | **1st Fix** |  | 2027-10-15 | 2028-03-21 |  |  |  |  |
| CC-WMI-2ndM115 |  | Fixing pipe supports and clamps | 35d | 2027-10-15 | 2027-11-26 | CC-WMI-2ndM15 | CSD-LKO Calender (6 day + Holiday)-25 | Physical Progress [4750 h]; Plumbing [682120 INR]; TATA Projects Ltd-25 | 682,120 |
| CC-WMI-2ndM105 |  | Laying water supply pipes (hot & cold) | 35d | 2027-11-26 | 2028-01-08 | CC-WMI-2ndM115 | CSD-LKO Calender (6 day + Holiday)-25 | Physical Progress [7120 h]; Plumbing [1364241 INR]; TATA Projects Ltd-25 | 1,364,241 |
| CC-WMI-2ndM110 |  | Laying drainage pipes (soil, waste, vent) | 35d | 2027-11-26 | 2028-01-08 | CC-WMI-2ndM115 | CSD-LKO Calender (6 day + Holiday)-25 | Physical Progress [7120 h]; Plumbing [1364241 INR]; TATA Projects Ltd-25 | 1,364,241 |
| CC-WMI-2ndM135 |  | Installation of plumbing fixture base supports (WC frames, sink brackets) | 30d | 2028-01-08 | 2028-02-14 | CC-WMI-2ndM110 | CSD-LKO Calender (6 day + Holiday)-25 | Physical Progress [2850 h]; Plumbing [682120 INR]; TATA Projects Ltd-25 | 682,120 |
| CC-WMI-2ndM120 |  | Pressure testing of water supply lines | 25d | 2028-02-14 | 2028-03-15 | CC-WMI-2ndM105, CC-WMI-2ndM110, CC-WMI-2ndM135 | CSD-LKO Calender (6 day + Holiday)-25 | Physical Progress [3320 h]; Plumbing [136424 INR]; TATA Projects Ltd-25 | 136,424 |
| CC-WMI-2ndM395 |  | Installation of concealed parts of toilet fixtures | 30d | 2028-02-14 | 2028-03-21 | CC-WMI-2ndM135 | CSD-LKO Calender (6 day + Holiday)-25 | Physical Progress [4750 h]; Plumbing [682120 INR]; TATA Projects Ltd-25 | 682,120 |

| ID | WBS | Activity | Duration | Start | Finish | Predecessors | Calendar | Resources | Cost |
| --- | --- | --- | --- | --- | --- | --- | --- | --- | --- |
|  | 2 | **2nd FIx** |  | 2028-03-15 | 2028-06-08 |  |  |  |  |
| CC-WMI-2ndM145 |  | Insulation of hot water pipes (if applicable) | 30d | 2028-03-15 | 2028-04-20 | CC-WMI-2ndM120, E-GFC-MEP-CC-215 | CSD-LKO Calender (6 day + Holiday)-25 | Physical Progress [2850 h]; Plumbing [682120 INR]; TATA Projects Ltd-25 | 682,120 |
| CC-WMI-2ndM125 |  | Installation of vertical risers and main distribution lines | 35d | 2028-03-21 | 2028-05-03 | CC-WMI-2ndM20, CC-WMI-2ndM120, CC-WMI-2ndM395, E-GFC-MEP-CC-215 | CSD-LKO Calender (6 day + Holiday)-25 | Physical Progress [9490 h]; Plumbing [1364241 INR]; TATA Projects Ltd-25 | 1,364,241 |
| CC-WMI-2ndM140 |  | Testing drainage lines for leakage/blockage | 30d | 2028-04-20 | 2028-05-27 | CC-WMI-2ndM135, CC-WMI-2ndM145, E-GFC-MEP-CC-215 | CSD-LKO Calender (6 day + Holiday)-25 | Physical Progress [2850 h]; Plumbing [136424 INR]; TATA Projects Ltd-25 | 136,424 |
| CC-WMI-2ndM130 |  | Fixing floor traps and gully traps | 30d | 2028-05-03 | 2028-06-08 | CC-WMI-2ndM125, E-GFC-MEP-CC-215 | CSD-LKO Calender (6 day + Holiday)-25 | Physical Progress [2850 h]; Plumbing [409272 INR]; TATA Projects Ltd-25 | 409,272 |
|  | 4 | **Firefighting** |  | 2027-10-15 | 2028-05-10 |  |  |  |  |
|  | 1 | **1st Fix** |  | 2027-10-15 | 2028-02-14 |  |  |  |  |
| CC-WMI-2ndM170 |  | Fixing pipe supports and hangers | 35d | 2027-10-15 | 2027-11-26 | CC-WMI-2ndM15 | CSD-LKO Calender (6 day + Holiday)-25 | Physical Progress [4750 h]; Firefighting [497018 INR]; TATA Projects Ltd-25 | 497,018 |
| CC-WMI-2ndM165 |  | Laying branch piping | 35d | 2027-11-26 | 2028-01-08 | CC-WMI-2ndM170 | CSD-LKO Calender (6 day + Holiday)-25 | Physical Progress [7120 h]; Firefighting [1065039 INR]; TATA Projects Ltd-25 | 1,065,039 |
| CC-WMI-2ndM175 |  | Hydrostatic pressure testing of piping | 30d | 2028-01-08 | 2028-02-14 | CC-WMI-2ndM165 | CSD-LKO Calender (6 day + Holiday)-25 | Physical Progress [2850 h]; Firefighting [142005 INR]; TATA Projects Ltd-25 | 142,005 |
|  | 2 | **2nd Fix** |  | 2028-02-14 | 2028-05-10 |  |  |  |  |
| CC-WMI-2ndM180 |  | Installation of vertical risers and distribution piping in shafts | 35d | 2028-02-14 | 2028-03-27 | CC-WMI-2ndM20, CC-WMI-2ndM175, E-GFC-MEP-CC-215 | CSD-LKO Calender (6 day + Holiday)-25 | Physical Progress [11860 h]; Firefighting [1420052 INR]; TATA Projects Ltd-25 | 1,420,052 |
| CC-WMI-2ndM190 |  | Painting/insulation of exposed fire pipes | 30d | 2028-02-14 | 2028-03-21 | CC-WMI-2ndM175, E-GFC-MEP-CC-215 | CSD-LKO Calender (6 day + Holiday)-25 | Physical Progress [4750 h]; Firefighting [71003 INR]; TATA Projects Ltd-25 | 71,003 |
| CC-WMI-2ndM195 |  | Testing risers and branch lines for leakage | 30d | 2028-03-21 | 2028-04-26 | CC-WMI-2ndM190, E-GFC-MEP-CC-215 | CSD-LKO Calender (6 day + Holiday)-25 | Physical Progress [2850 h]; Firefighting [142005 INR]; TATA Projects Ltd-25 | 142,005 |
| CC-WMI-2ndM185 |  | Installation of sprinkler branch lines in ceilings | 35d | 2028-03-27 | 2028-05-10 | CC-WMI-2ndM180, E-GFC-MEP-CC-215 | CSD-LKO Calender (6 day + Holiday)-25 | Physical Progress [11860 h]; Firefighting [1065039 INR]; TATA Projects Ltd-25 | 1,065,039 |
|  | 5 | **ELV** |  | 2027-09-08 | 2028-07-07 |  |  |  |  |
|  | 1 | **1st Fix** |  | 2027-09-08 | 2027-11-26 |  |  |  |  |
| CC-WMI-2ndM385 |  | Slab Conduiting | 35d | 2027-09-08 | 2027-10-21 | CC-WMI-2ndM10 | CSD-LKO Calender (6 day + Holiday)-25 | Physical Progress [11860 h]; ELV [398847 INR]; TATA Projects Ltd-25 | 398,847 |
| CC-WMI-2ndM220 |  | Wall Conduiting | 30d | 2027-10-15 | 2027-11-20 | CC-WMI-2ndM15 | CSD-LKO Calender (6 day + Holiday)-25 | Physical Progress [4750 h]; ELV [170935 INR]; TATA Projects Ltd-25 | 170,935 |
| CC-WMI-2ndM240 |  | Installing back boxes for switches, sockets | 5d | 2027-11-20 | 2027-11-26 | CC-WMI-2ndM220, CC-WMI-2ndM385 | CSD-LKO Calender (6 day + Holiday)-25 | Physical Progress [2370 h]; ELV [284891 INR]; TATA Projects Ltd-25 | 284,891 |
|  | 2 | **2nd Fix** |  | 2027-12-14 | 2028-07-07 |  |  |  |  |
| CC-WMI-2ndM225 |  | Cable tray installation | 35d | 2027-12-14 | 2028-01-27 | CC-WMI-2ndM20, E-GFC-MEP-CC-215 | CSD-LKO Calender (6 day + Holiday)-25 | Physical Progress [11860 h]; ELV [284891 INR]; TATA Projects Ltd-25 | 284,891 |
| CC-WMI-2ndM230 |  | Cabeling of ELV cable - IT/Fire Alarm/Public Address | 45d | 2028-01-27 | 2028-03-21 | CC-WMI-2ndM225, E-GFC-MEP-CC-215 | CSD-LKO Calender (6 day + Holiday)-25 | Physical Progress [21350 h]; ELV [683738 INR]; TATA Projects Ltd-25 | 683,738 |
| CC-WMI-2ndM285 |  | ELV Rack Installation | 30d | 2028-03-21 | 2028-04-26 | CC-WMI-2ndM230, E-GFC-MEP-CC-215 | CSD-LKO Calender (6 day + Holiday)-25 | Physical Progress [4750 h]; ELV [284891 INR]; TATA Projects Ltd-25 | 284,891 |
| CC-WMI-2ndM235 |  | Termination of cables at junction boxes, patch panels, and control panels | 35d | 2028-04-26 | 2028-06-08 | CC-WMI-2ndM285, E-GFC-MEP-CC-215 | CSD-LKO Calender (6 day + Holiday)-25 | Physical Progress [14240 h]; ELV [284891 INR]; TATA Projects Ltd-25 | 284,891 |
| CC-WMI-2ndM250 |  | Fixing devices like CCTV camera bases, card reader bases, smoke detector bases, PA Bases, Wifi Bases | 25d | 2028-06-08 | 2028-07-07 | CC-WMI-2ndM235, E-GFC-MEP-CC-215 | CSD-LKO Calender (6 day + Holiday)-25 | Physical Progress [1900 h]; ELV [569782 INR]; TATA Projects Ltd-25 | 569,782 |

| ID | WBS | Activity | Duration | Start | Finish | Predecessors | Calendar | Resources | Cost |
| --- | --- | --- | --- | --- | --- | --- | --- | --- | --- |
|  | 6 | **Dry Finishes/ID Works** |  | 2028-06-27 | 2029-01-31 |  |  |  |  |
| CC-WMI-2ndM360 |  | Running of Wild Air | 1d | 2028-06-27 | 2028-06-28 | CC-F-(1stM-3rdM)55, CC-WMI-2ndM75, CC-WMI-2ndM80, CC-WMI-2ndM85, CC-WMI-2ndM265, CC-WMI-2ndM90 | CSD-LKO Calender (6 day + Holiday)-25 | Physical Progress [470 h]; TATA Projects Ltd-25 |  |
| CC-WMI-2ndM320 |  | Wall finish ID Works | 35d | 2028-07-07 | 2028-08-18 | CC-WMI-2ndM360, CC-WMI-2ndM30, CC-WMI-2ndM35, CC-WMI-2ndM45, CC-WMI-2ndM390, CC-WMI-2ndM275, CC-WMI-2ndM280, CC-WMI-2ndM145, CC-WMI-2ndM125, CC-WMI-2ndM140, CC-WMI-2ndM130, CC-WMI-2ndM180, CC-WMI-2ndM190, CC-WMI-2ndM195, CC-WMI-2ndM185, CC-WMI-2ndM225, CC-WMI-2ndM230, CC-WMI-2ndM285, CC-WMI-2ndM235, CC-WMI-2ndM250 | CSD-LKO Calender (6 day + Holiday)-25 | ID Work [9755265 INR]; Physical Progress [4750 h]; TATA Projects Ltd-25 | 9,755,265 |
| CC-WMI-2ndM315 |  | False Ceiling Installation | 30d | 2028-08-18 | 2028-09-23 | CC-WMI-2ndM320 | CSD-LKO Calender (6 day + Holiday)-25 | ID Work [11706318 INR]; Physical Progress [9490 h]; TATA Projects Ltd-25 | 11,706,318 |
| CC-WMI-2ndM365 |  | Flooring | 20d | 2028-09-23 | 2028-10-20 | CC-WMI-2ndM315 | CSD-LKO Calender (6 day + Holiday)-25 | ID Work [9755265 INR]; Physical Progress [9490 h]; TATA Projects Ltd-25 | 9,755,265 |
| CC-WMI-2ndM375 |  | Flooring of toilets/kitchen/Balcony | 10d | 2028-09-23 | 2028-10-07 | CC-WMI-2ndM370, CC-WMI-2ndM315 | CSD-LKO Calender (6 day + Holiday)-25 | ID Work [7804212 INR]; Physical Progress [4750 h]; TATA Projects Ltd-25 | 7,804,212 |
| CC-WMI-2ndM325 |  | Doors & Windows/Fire Doors/Shaft Doors | 35d | 2028-10-07 | 2028-11-18 | CC-WMI-2ndM320, CC-WMI-2ndM375 | CSD-LKO Calender (6 day + Holiday)-25 | ID Work [9755265 INR]; Physical Progress [4750 h]; TATA Projects Ltd-25 | 9,755,265 |
| CC-WMI-2ndM345 |  | Putty & First Coat of Paint | 10d | 2028-10-07 | 2028-10-20 | CC-WMI-2ndM320, CC-WMI-2ndM375 | CSD-LKO Calender (6 day + Holiday)-25 | Painting [4536 Sq m]; Painter [4540 h]; Helper [4540 h]; Physical Progress [4750 h]; TATA Projects Ltd-25 | 1,037,020.32 |
| CC-WMI-2ndM335 |  | Fixed Furniture | 8d | 2028-10-20 | 2028-10-30 | CC-WMI-2ndM365 | CSD-LKO Calender (6 day + Holiday)-25 | ID Work [8779739 INR]; Physical Progress [3800 h]; TATA Projects Ltd-25 | 8,779,739 |
| CC-WMI-2ndM400 |  | Railing for staircase | 35d | 2028-10-20 | 2028-11-30 | CC-WMI-2ndM320, CC-WMI-2ndM345 | CSD-LKO Calender (6 day + Holiday)-25 | ID Work [2926580 INR]; Physical Progress [7120 h]; TATA Projects Ltd-25 | 2,926,580 |
| CC-WMI-2ndM355 |  | False ceiling final finishes | 10d | 2028-12-06 | 2028-12-18 | CC-WMI-2ndM95 | CSD-LKO Calender (6 day + Holiday)-25 | ID Work [2926580 INR]; Physical Progress [4750 h]; TATA Projects Ltd-25 | 2,926,580 |
| CC-WMI-2ndM350 |  | Final coat of paint | 10d | 2028-12-30 | 2029-01-12 | CC-WMI-2ndM355, CC-WMI-2ndM335, CC-WMI-2ndM40, CC-WMI-2ndM160, CC-WMI-2ndM200, CC-WMI-2ndM215, CC-WMI-2ndM295, CC-WMI-2ndM310, CC-WMI-2ndM305, CC-WMI-2ndM300, CC-WMI-2ndM255, CC-WMI-2ndM245, CC-WMI-2ndM325, CC-WMI-2ndM205, CC-WMI-2ndM400 | CSD-LKO Calender (6 day + Holiday)-25 | Painting [4536 Sq m]; Painter [4540 h]; Helper [4540 h]; Physical Progress [4750 h]; TATA Projects Ltd-25 | 1,037,020.32 |
| CC-WMI-2ndM330 |  | Soft Furnishing & Signage | 15d | 2029-01-12 | 2029-01-31 | CC-WMI-2ndM350 | CSD-LKO Calender (6 day + Holiday)-25 | ID Work [14632898 INR]; Physical Progress [1420 h]; TATA Projects Ltd-25 | 14,632,898 |
| CC-WMI-2ndM340 |  | Loose Furniture | 15d | 2029-01-12 | 2029-01-31 | CC-WMI-2ndM350 | CSD-LKO Calender (6 day + Holiday)-25 | ID Work [19510530 INR]; Physical Progress [1420 h]; TATA Projects Ltd-25 | 19,510,530 |
|  | 7 | **MEP Final Fix** |  | 2028-09-23 | 2028-12-30 |  |  |  |  |
|  | 3 | **HVAC** |  | 2028-09-23 | 2028-12-06 |  |  |  |  |
| CC-WMI-2ndM100 |  | Installing grills, diffusers, dampers | 30d | 2028-09-23 | 2028-11-01 | CC-WMI-2ndM315 | CSD-LKO Calender (6 day + Holiday)-25 | Physical Progress [2850 h]; HVAC [1895813 INR]; TATA Projects Ltd-25 | 1,895,813 |
| CC-WMI-2ndM95 |  | Installation of thermostats and control panels | 30d | 2028-11-01 | 2028-12-06 | CC-WMI-2ndM100, CC-WMI-2ndM345, CC-WMI-2ndM90 | CSD-LKO Calender (6 day + Holiday)-25 | Physical Progress [2850 h]; HVAC [947906 INR]; TATA Projects Ltd-25 | 947,906 |
|  | 1 | **Electrical** |  | 2028-10-20 | 2028-12-30 |  |  |  |  |
| CC-WMI-2ndM50 |  | Switches & Socket | 30d | 2028-10-20 | 2028-11-24 | CC-WMI-2ndM345 | CSD-LKO Calender (6 day + Holiday)-25 | Physical Progress [9490 h]; Electrical [2122199 INR]; TATA Projects Ltd-25 | 2,122,199 |
| CC-WMI-2ndM40 |  | Light Fixtures | 30d | 2028-11-24 | 2028-12-30 | CC-WMI-2ndM50, CC-WMI-2ndM280 | CSD-LKO Calender (6 day + Holiday)-25 | Physical Progress [7120 h]; Electrical [3183299 INR]; TATA Projects Ltd-25 | 3,183,299 |
|  | 2 | **Plumbing** |  | 2028-10-20 | 2028-12-12 |  |  |  |  |
| CC-WMI-2ndM150 |  | Installation of sanitary fixtures (WC, washbasins, urinals, sinks) | 10d | 2028-10-20 | 2028-11-01 | CC-WMI-2ndM345, CC-WMI-2ndM140, CC-WMI-2ndM130 | CSD-LKO Calender (6 day + Holiday)-25 | Physical Progress [4750 h]; Plumbing [2728481 INR]; TATA Projects Ltd-25 | 2,728,481 |
| CC-WMI-2ndM155 |  | Installation of CP fittings (taps, mixers, showers, health faucets) | 10d | 2028-11-01 | 2028-11-13 | CC-WMI-2ndM150, CC-WMI-2ndM345 | CSD-LKO Calender (6 day + Holiday)-25 | Physical Progress [4750 h]; Plumbing [1364241 INR]; TATA Projects Ltd-25 | 1,364,241 |
| CC-WMI-2ndM160 |  | Connection of appliances | 25d | 2028-11-13 | 2028-12-12 | CC-WMI-2ndM155 | CSD-LKO Calender (6 day + Holiday)-25 | Physical Progress [3320 h]; Plumbing [682120 INR]; TATA Projects Ltd-25 | 682,120 |

| ID | WBS | Activity | Duration | Start | Finish | Predecessors | Calendar | Resources | Cost |
| --- | --- | --- | --- | --- | --- | --- | --- | --- | --- |
|  | 4 | **Firefighting** |  | 2028-10-20 | 2028-12-18 |  |  |  |  |
| CC-WMI-2ndM200 |  | Installation of sprinkler heads, nozzles, and final alignment | 35d | 2028-10-20 | 2028-11-30 | CC-WMI-2ndM345, CC-WMI-2ndM365, CC-WMI-2ndM195, CC-WMI-2ndM185 | CSD-LKO Calender (6 day + Holiday)-25 | Physical Progress [18980 h]; Firefighting [1065039 INR]; TATA Projects Ltd-25 | 1,065,039 |
| CC-WMI-2ndM205 |  | Installation of hydrant accessories (valves, hose reels, cabinets) | 25d | 2028-10-20 | 2028-11-18 | CC-WMI-2ndM345 | CSD-LKO Calender (6 day + Holiday)-25 | Physical Progress [4750 h]; Firefighting [710026 INR]; TATA Projects Ltd-25 | 710,026 |
| CC-WMI-2ndM210 |  | Installation of portable fire extinguishers | 30d | 2028-10-20 | 2028-11-24 | CC-WMI-2ndM345 | CSD-LKO Calender (6 day + Holiday)-25 | Physical Progress [2850 h]; Firefighting [71003 INR]; TATA Projects Ltd-25 | 71,003 |
| CC-WMI-2ndM215 |  | Integration with fire alarm system | 20d | 2028-11-24 | 2028-12-18 | CC-WMI-2ndM210 | CSD-LKO Calender (6 day + Holiday)-25 | Physical Progress [9490 h]; Firefighting [355013 INR]; TATA Projects Ltd-25 | 355,013 |
|  | 5 | **ELV** |  | 2028-10-20 | 2028-12-06 |  |  |  |  |
| CC-WMI-2ndM245 |  | Installation of data and Voice Faceplate | 25d | 2028-10-20 | 2028-11-18 | CC-WMI-2ndM345, CC-WMI-2ndM365, CC-WMI-2ndM250 | CSD-LKO Calender (6 day + Holiday)-25 | Physical Progress [4750 h]; ELV [284891 INR]; TATA Projects Ltd-25 | 284,891 |
| CC-WMI-2ndM255 |  | Installation of Camera & Wifi | 30d | 2028-10-20 | 2028-11-24 | CC-WMI-2ndM345, CC-WMI-2ndM365 | CSD-LKO Calender (6 day + Holiday)-25 | Physical Progress [4750 h]; ELV [284891 INR]; TATA Projects Ltd-25 | 284,891 |
| CC-WMI-2ndM260 |  | Installation of fire alarm devices + Public Address | 10d | 2028-10-20 | 2028-11-01 | CC-WMI-2ndM345, CC-WMI-2ndM365 | CSD-LKO Calender (6 day + Holiday)-25 | Physical Progress [4750 h]; ELV [341869 INR]; TATA Projects Ltd-25 | 341,869 |
| CC-WMI-2ndM290 |  | Installation of Active System | 15d | 2028-11-01 | 2028-11-18 | CC-WMI-2ndM260 | CSD-LKO Calender (6 day + Holiday)-25 | Physical Progress [7120 h]; ELV [569782 INR]; TATA Projects Ltd-25 | 569,782 |
| CC-WMI-2ndM300 |  | Fire Panel Intallation & Integration | 25d | 2028-11-01 | 2028-11-30 | CC-WMI-2ndM260 | CSD-LKO Calender (6 day + Holiday)-25 | Physical Progress [11860 h]; ELV [284891 INR]; TATA Projects Ltd-25 | 284,891 |
| CC-WMI-2ndM305 |  | Installation & Integration of Audio Visual System | 25d | 2028-11-01 | 2028-11-30 | CC-WMI-2ndM260 | CSD-LKO Calender (6 day + Holiday)-25 | Physical Progress [11860 h]; ELV [284891 INR]; TATA Projects Ltd-25 | 284,891 |
| CC-WMI-2ndM310 |  | Installation & Integration of Access Control | 25d | 2028-11-01 | 2028-11-30 | CC-WMI-2ndM260 | CSD-LKO Calender (6 day + Holiday)-25 | Physical Progress [11860 h]; ELV [284891 INR]; TATA Projects Ltd-25 | 284,891 |
| CC-WMI-2ndM295 |  | Integration of Active components | 15d | 2028-11-18 | 2028-12-06 | CC-WMI-2ndM290 | CSD-LKO Calender (6 day + Holiday)-25 | Physical Progress [7120 h]; ELV [113956 INR]; TATA Projects Ltd-25 | 113,956 |
|  | 3 | **First Floor** |  | 2027-10-21 | 2029-03-20 |  |  |  |  |
|  | 1 | **Wet Finishes** |  | 2027-10-21 | 2028-02-01 |  |  |  |  |
| CC-WMI-1stF10 |  | Deshuttering | 4d | 2027-10-21 | 2027-10-26 | CC-SS-3rdM.165 | CSD-LKO Calender (6 day + Holiday)-25 | Physical Progress [1900 h]; TATA Projects Ltd-25 |  |
| CC-WMI-1stF15 |  | Brickwork/Blockwork | 30d | 2027-10-26 | 2027-12-01 | CC-WMI-1stF10, E-GFC-AR-CC-150 | CSD-LKO Calender (6 day + Holiday)-25 | Masonry [761 CuM]; Mason [5080 h]; Helper [2540 h]; Physical Progress [14240 h]; TATA Projects Ltd-25 | 7,256,408.96 |
| CC-WMI-1stF220 |  | Waterproofing of Toilets, Balcony & Kitchen | 15d | 2027-12-01 | 2027-12-18 | CC-WMI-1stF15 | CSD-LKO Calender (6 day + Holiday)-25 | Waterproofing [8564838 INR]; Waterprrofing Mason [8160 h]; Helper [4080 h]; Physical Progress [7120 h]; TATA Projects Ltd-25 | 8,564,838 |
| CC-WMI-1stF20 |  | Plaster | 15d | 2028-01-13 | 2028-02-01 | CC-WMI-1stF25, CC-WMI-1stF45, CC-WMI-1stF185, CC-WMI-1stF220 | CSD-LKO Calender (6 day + Holiday)-25 | Plaster [14779 Sqr Mtr]; Mason [9860 h]; Helper [4930 h]; Physical Progress [7120 h]; TATA Projects Ltd-25 | 8,186,235.89 |
|  | 5 | **MEP 1st Fix, 2nd Fix** |  | 2027-10-26 | 2028-08-24 |  |  |  |  |
|  | 2 | **HVAC** |  | 2027-12-01 | 2028-07-24 |  |  |  |  |
|  | 1 | **1st Fix** |  | 2027-12-01 | 2028-03-25 |  |  |  |  |
| CC-WMI-1stF200 |  | Duct Support Fabrication | 35d | 2027-12-01 | 2028-01-13 | CC-WMI-1stF15, E-GFC-MEP-CC-190 | CSD-LKO Calender (6 day + Holiday)-25 | Physical Progress [7120 h]; HVAC [379163 INR]; TATA Projects Ltd-25 | 379,163 |
| CC-WMI-1stF50 |  | Installing duct hangers and supports | 30d | 2028-01-13 | 2028-02-18 | CC-WMI-1stF200, E-GFC-MEP-CC-190 | CSD-LKO Calender (6 day + Holiday)-25 | Physical Progress [4750 h]; HVAC [758325 INR]; TATA Projects Ltd-25 | 758,325 |
| CC-WMI-1stF55 |  | Laying concealed/exposed refrigerant piping | 30d | 2028-02-18 | 2028-03-25 | CC-WMI-1stF50, E-GFC-MEP-CC-190 | CSD-LKO Calender (6 day + Holiday)-25 | Physical Progress [7120 h]; HVAC [189581 INR]; TATA Projects Ltd-25 | 189,581 |
| CC-WMI-1stF60 |  | Laying concealed/exposed drain piping | 30d | 2028-02-18 | 2028-03-25 | CC-WMI-1stF50, E-GFC-MEP-CC-190 | CSD-LKO Calender (6 day + Holiday)-25 | Physical Progress [4750 h]; HVAC [1137488 INR]; TATA Projects Ltd-25 | 1,137,488 |

| ID | WBS | Activity | Duration | Start | Finish | Predecessors | Calendar | Resources | Cost |
| --- | --- | --- | --- | --- | --- | --- | --- | --- | --- |
|  | 2 | **2nd Fix** |  | 2028-02-18 | 2028-07-24 |  |  |  |  |
| CC-WMI-1stF65 |  | Duct installation | 35d | 2028-02-18 | 2028-03-31 | CC-WMI-1stF50 | CSD-LKO Calender (6 day + Holiday)-25 | Physical Progress [7120 h]; HVAC [2843719 INR]; TATA Projects Ltd-25 | 2,843,719 |
| CC-WMI-1stF70 |  | Insulation of ducts (thermal/acoustic) | 10d | 2028-03-31 | 2028-04-12 | CC-WMI-1stF65 | CSD-LKO Calender (6 day + Holiday)-25 | Physical Progress [2850 h]; HVAC [1706231 INR]; TATA Projects Ltd-25 | 1,706,231 |
| CC-WMI-1stF75 |  | Installation of chilled water piping / VRF piping | 20d | 2028-04-12 | 2028-05-09 | CC-WMI-1stF70 | CSD-LKO Calender (6 day + Holiday)-25 | Physical Progress [2850 h]; HVAC [3791626 INR]; TATA Projects Ltd-25 | 3,791,626 |
| CC-WMI-1stF195 |  | Installation of indoor units including AHU, FCU | 45d | 2028-05-09 | 2028-06-30 | CC-WMI-1stF75, CC-WMI-1stF55, CC-WMI-1stF60 | CSD-LKO Calender (6 day + Holiday)-25 | Physical Progress [21350 h]; HVAC [3412463 INR]; TATA Projects Ltd-25 | 3,412,463 |
| CC-WMI-1stF80 |  | Connecting refrigerant and drain piping to indoor units | 20d | 2028-06-30 | 2028-07-24 | CC-WMI-1stF195 | CSD-LKO Calender (6 day + Holiday)-25 | Physical Progress [2850 h]; HVAC [947906 INR]; TATA Projects Ltd-25 | 947,906 |
|  | 1 | **Electrical** |  | 2027-10-26 | 2028-07-06 |  |  |  |  |
|  | 1 | **1st Fix** |  | 2027-10-26 | 2028-01-13 |  |  |  |  |
| CC-WMI-1stF390 |  | Slab Conduiting | 35d | 2027-10-26 | 2027-12-07 | CC-WMI-1stF10, E-GFC-MEP-CC-190 | CSD-LKO Calender (6 day + Holiday)-25 | Physical Progress [11860 h]; Electrical [2122199 INR]; TATA Projects Ltd-25 | 2,122,199 |
| CC-WMI-1stF25 |  | Wall Conduiting | 30d | 2027-12-01 | 2028-01-07 | CC-WMI-1stF15, E-GFC-MEP-CC-190 | CSD-LKO Calender (6 day + Holiday)-25 | Physical Progress [4750 h]; Electrical [1061100 INR]; TATA Projects Ltd-25 | 1,061,100 |
| CC-WMI-1stF45 |  | Installing back boxes for switches, sockets | 5d | 2028-01-07 | 2028-01-13 | CC-WMI-1stF25, CC-WMI-1stF390, E-GFC-MEP-CC-190 | CSD-LKO Calender (6 day + Holiday)-25 | Physical Progress [2370 h]; Electrical [636660 INR]; TATA Projects Ltd-25 | 636,660 |
|  | 2 | **2nd Fix** |  | 2028-02-01 | 2028-07-06 |  |  |  |  |
| CC-WMI-1stF30 |  | Cable tray laying | 25d | 2028-02-01 | 2028-03-01 | CC-WMI-1stF20 | CSD-LKO Calender (6 day + Holiday)-25 | Physical Progress [11860 h]; Electrical [848880 INR]; TATA Projects Ltd-25 | 848,880 |
| CC-WMI-1stF35 |  | Cabling & Wire Pulling | 45d | 2028-03-01 | 2028-04-25 | CC-WMI-1stF30 | CSD-LKO Calender (6 day + Holiday)-25 | Physical Progress [21350 h]; Electrical [4244398 INR]; TATA Projects Ltd-25 | 4,244,398 |
| CC-WMI-1stF395 |  | Floor Rising Main Installation | 20d | 2028-04-25 | 2028-05-20 | CC-WMI-1stF35 | CSD-LKO Calender (6 day + Holiday)-25 | Physical Progress [2370 h]; Electrical [2971079 INR]; TATA Projects Ltd-25 | 2,971,079 |
| CC-WMI-1stF40 |  | DB fixing and connecting | 20d | 2028-04-25 | 2028-05-20 | CC-WMI-1stF35 | CSD-LKO Calender (6 day + Holiday)-25 | Physical Progress [7120 h]; Electrical [636660 INR]; TATA Projects Ltd-25 | 636,660 |
| CC-WMI-1stF205 |  | Floor/Distribution Panel Installation | 20d | 2028-05-20 | 2028-06-13 | CC-WMI-1stF40 | CSD-LKO Calender (6 day + Holiday)-25 | Physical Progress [2370 h]; Electrical [1697759 INR]; TATA Projects Ltd-25 | 1,697,759 |
| CC-WMI-1stF210 |  | Equipment Earthing | 20d | 2028-06-13 | 2028-07-06 | CC-WMI-1stF205, CC-WMI-1stF395 | CSD-LKO Calender (6 day + Holiday)-25 | Physical Progress [4750 h]; Electrical [636660 INR]; TATA Projects Ltd-25 | 636,660 |
|  | 3 | **Plumbing** |  | 2027-12-01 | 2028-07-24 |  |  |  |  |
|  | 1 | **1st Fix** |  | 2027-12-01 | 2028-05-09 |  |  |  |  |
| CC-WMI-1stF95 |  | Fixing pipe supports and clamps | 35d | 2027-12-01 | 2028-01-13 | CC-WMI-1stF15, E-GFC-MEP-CC-190 | CSD-LKO Calender (6 day + Holiday)-25 | Physical Progress [4750 h]; Plumbing [682120 INR]; TATA Projects Ltd-25 | 682,120 |
| CC-WMI-1stF85 |  | Laying water supply pipes (hot & cold) | 35d | 2028-01-13 | 2028-02-24 | CC-WMI-1stF95, E-GFC-MEP-CC-190 | CSD-LKO Calender (6 day + Holiday)-25 | Physical Progress [7120 h]; Plumbing [1364241 INR]; TATA Projects Ltd-25 | 1,364,241 |
| CC-WMI-1stF90 |  | Laying drainage pipes (soil, waste, vent) | 35d | 2028-01-13 | 2028-02-24 | CC-WMI-1stF95, E-GFC-MEP-CC-190 | CSD-LKO Calender (6 day + Holiday)-25 | Physical Progress [7120 h]; Plumbing [1364241 INR]; TATA Projects Ltd-25 | 1,364,241 |
| CC-WMI-1stF115 |  | Installation of plumbing fixture base supports (WC frames, sink brackets) | 30d | 2028-02-24 | 2028-03-31 | CC-WMI-1stF90, E-GFC-MEP-CC-190 | CSD-LKO Calender (6 day + Holiday)-25 | Physical Progress [2850 h]; Plumbing [682120 INR]; TATA Projects Ltd-25 | 682,120 |
| CC-WMI-1stF100 |  | Pressure testing of water supply lines | 25d | 2028-03-31 | 2028-05-02 | CC-WMI-1stF85, CC-WMI-1stF90, CC-WMI-1stF115, E-GFC-MEP-CC-190 | CSD-LKO Calender (6 day + Holiday)-25 | Physical Progress [3320 h]; Plumbing [136424 INR]; TATA Projects Ltd-25 | 136,424 |
| CC-WMI-1stF400 |  | Installation of concealed parts of toilet fixtures | 30d | 2028-03-31 | 2028-05-09 | CC-WMI-1stF115, E-GFC-MEP-CC-190 | CSD-LKO Calender (6 day + Holiday)-25 | Physical Progress [4750 h]; Plumbing [682120 INR]; TATA Projects Ltd-25 | 682,120 |

| ID | WBS | Activity | Duration | Start | Finish | Predecessors | Calendar | Resources | Cost |
| --- | --- | --- | --- | --- | --- | --- | --- | --- | --- |
|  | 2 | **2nd FIx** |  | 2028-05-02 | 2028-07-24 |  |  |  |  |
| CC-WMI-1stF125 |  | Insulation of hot water pipes (if applicable) | 30d | 2028-05-02 | 2028-06-07 | CC-WMI-1stF100 | CSD-LKO Calender (6 day + Holiday)-25 | Physical Progress [2850 h]; Plumbing [682120 INR]; TATA Projects Ltd-25 | 682,120 |
| CC-WMI-1stF105 |  | Installation of vertical risers and main distribution lines | 35d | 2028-05-09 | 2028-06-19 | CC-WMI-1stF20, CC-WMI-1stF100, CC-WMI-1stF400 | CSD-LKO Calender (6 day + Holiday)-25 | Physical Progress [9490 h]; Plumbing [1364241 INR]; TATA Projects Ltd-25 | 1,364,241 |
| CC-WMI-1stF120 |  | Testing drainage lines for leakage/blockage | 30d | 2028-06-07 | 2028-07-12 | CC-WMI-1stF115, CC-WMI-1stF125 | CSD-LKO Calender (6 day + Holiday)-25 | Physical Progress [2850 h]; Plumbing [136424 INR]; TATA Projects Ltd-25 | 136,424 |
| CC-WMI-1stF110 |  | Fixing floor traps and gully traps | 30d | 2028-06-19 | 2028-07-24 | CC-WMI-1stF105 | CSD-LKO Calender (6 day + Holiday)-25 | Physical Progress [2850 h]; Plumbing [409272 INR]; TATA Projects Ltd-25 | 409,272 |
|  | 4 | **Firefighting** |  | 2027-12-01 | 2028-06-24 |  |  |  |  |
|  | 1 | **1st Fix** |  | 2027-12-01 | 2028-03-31 |  |  |  |  |
| CC-WMI-1stF135 |  | Fixing pipe supports and hangers | 35d | 2027-12-01 | 2028-01-13 | CC-WMI-1stF15, E-GFC-MEP-CC-190 | CSD-LKO Calender (6 day + Holiday)-25 | Physical Progress [4750 h]; Firefighting [497018 INR]; TATA Projects Ltd-25 | 497,018 |
| CC-WMI-1stF130 |  | Laying branch piping | 35d | 2028-01-13 | 2028-02-24 | CC-WMI-1stF135, E-GFC-MEP-CC-190 | CSD-LKO Calender (6 day + Holiday)-25 | Physical Progress [7120 h]; Firefighting [1065039 INR]; TATA Projects Ltd-25 | 1,065,039 |
| CC-WMI-1stF140 |  | Hydrostatic pressure testing of piping | 30d | 2028-02-24 | 2028-03-31 | CC-WMI-1stF130, E-GFC-MEP-CC-190 | CSD-LKO Calender (6 day + Holiday)-25 | Physical Progress [2850 h]; Firefighting [142005 INR]; TATA Projects Ltd-25 | 142,005 |
|  | 2 | **2nd Fix** |  | 2028-03-31 | 2028-06-24 |  |  |  |  |
| CC-WMI-1stF145 |  | Installation of vertical risers and distribution piping in shafts | 35d | 2028-03-31 | 2028-05-15 | CC-WMI-1stF20, CC-WMI-1stF140 | CSD-LKO Calender (6 day + Holiday)-25 | Physical Progress [11860 h]; Firefighting [1420052 INR]; TATA Projects Ltd-25 | 1,420,052 |
| CC-WMI-1stF155 |  | Painting/insulation of exposed fire pipes | 30d | 2028-03-31 | 2028-05-09 | CC-WMI-1stF140 | CSD-LKO Calender (6 day + Holiday)-25 | Physical Progress [4750 h]; Firefighting [71003 INR]; TATA Projects Ltd-25 | 71,003 |
| CC-WMI-1stF160 |  | Testing risers and branch lines for leakage | 30d | 2028-05-09 | 2028-06-13 | CC-WMI-1stF155 | CSD-LKO Calender (6 day + Holiday)-25 | Physical Progress [2850 h]; Firefighting [142005 INR]; TATA Projects Ltd-25 | 142,005 |
| CC-WMI-1stF150 |  | Installation of sprinkler branch lines in ceilings | 35d | 2028-05-15 | 2028-06-24 | CC-WMI-1stF145 | CSD-LKO Calender (6 day + Holiday)-25 | Physical Progress [11860 h]; Firefighting [1065039 INR]; TATA Projects Ltd-25 | 1,065,039 |
|  | 5 | **ELV** |  | 2027-10-26 | 2028-08-24 |  |  |  |  |
|  | 1 | **1st Fix** |  | 2027-10-26 | 2028-01-13 |  |  |  |  |
| CC-WMI-1stF385 |  | Slab Conduiting | 35d | 2027-10-26 | 2027-12-07 | CC-WMI-1stF10, E-GFC-MEP-CC-190 | CSD-LKO Calender (6 day + Holiday)-25 | Physical Progress [11860 h]; ELV [398847 INR]; TATA Projects Ltd-25 | 398,847 |
| CC-WMI-1stF165 |  | Wall Conduiting | 30d | 2027-12-01 | 2028-01-07 | CC-WMI-1stF15, E-GFC-MEP-CC-190 | CSD-LKO Calender (6 day + Holiday)-25 | Physical Progress [4750 h]; ELV [170935 INR]; TATA Projects Ltd-25 | 170,935 |
| CC-WMI-1stF185 |  | Installing back boxes for switches, sockets | 5d | 2028-01-07 | 2028-01-13 | CC-WMI-1stF165, CC-WMI-1stF385, E-GFC-MEP-CC-190 | CSD-LKO Calender (6 day + Holiday)-25 | Physical Progress [2370 h]; ELV [284891 INR]; TATA Projects Ltd-25 | 284,891 |
|  | 2 | **2nd Fix** |  | 2028-02-01 | 2028-08-24 |  |  |  |  |
| CC-WMI-1stF170 |  | Cable tray installation | 35d | 2028-02-01 | 2028-03-14 | CC-WMI-1stF20 | CSD-LKO Calender (6 day + Holiday)-25 | Physical Progress [11860 h]; ELV [284891 INR]; TATA Projects Ltd-25 | 284,891 |
| CC-WMI-1stF175 |  | Cabeling of ELV cable - IT/Fire Alarm/Public Address | 45d | 2028-03-14 | 2028-05-09 | CC-WMI-1stF170 | CSD-LKO Calender (6 day + Holiday)-25 | Physical Progress [21350 h]; ELV [683738 INR]; TATA Projects Ltd-25 | 683,738 |
| CC-WMI-1stF215 |  | ELV Rack Installation | 30d | 2028-05-09 | 2028-06-13 | CC-WMI-1stF175 | CSD-LKO Calender (6 day + Holiday)-25 | Physical Progress [4750 h]; ELV [284891 INR]; TATA Projects Ltd-25 | 284,891 |
| CC-WMI-1stF180 |  | Termination of cables at junction boxes, patch panels, and control panels | 35d | 2028-06-13 | 2028-07-24 | CC-WMI-1stF215 | CSD-LKO Calender (6 day + Holiday)-25 | Physical Progress [14240 h]; ELV [284891 INR]; TATA Projects Ltd-25 | 284,891 |
| CC-WMI-1stF190 |  | Fixing devices like CCTV camera bases, card reader bases, smoke detector bases, PA Bases, Wifi Bases | 25d | 2028-07-24 | 2028-08-24 | CC-WMI-1stF180 | CSD-LKO Calender (6 day + Holiday)-25 | Physical Progress [1900 h]; ELV [569782 INR]; TATA Projects Ltd-25 | 569,782 |

| ID | WBS | Activity | Duration | Start | Finish | Predecessors | Calendar | Resources | Cost |
| --- | --- | --- | --- | --- | --- | --- | --- | --- | --- |
|  | 2 | **Dry Finishes/ID Works** |  | 2028-07-24 | 2029-03-20 |  |  |  |  |
| CC-WMI-1stF380 |  | Running of Wild Air | 1d | 2028-07-24 | 2028-07-25 | CC-F-(1stM-3rdM)55, CC-WMI-1stF65, CC-WMI-1stF70, CC-WMI-1stF75, CC-WMI-1stF195, CC-WMI-1stF80 | CSD-LKO Calender (6 day + Holiday)-25 | Physical Progress [470 h]; TATA Projects Ltd-25 |  |
| CC-WMI-1stF325 |  | Wall finish ID Works | 35d | 2028-08-24 | 2028-10-06 | CC-WMI-1stF380, CC-WMI-1stF30, CC-WMI-1stF35, CC-WMI-1stF40, CC-WMI-1stF395, CC-WMI-1stF205, CC-WMI-1stF210, CC-WMI-1stF125, CC-WMI-1stF105, CC-WMI-1stF120, CC-WMI-1stF110, CC-WMI-1stF145, CC-WMI-1stF155, CC-WMI-1stF160, CC-WMI-1stF150, CC-WMI-1stF170, CC-WMI-1stF175, CC-WMI-1stF215, CC-WMI-1stF180, CC-WMI-1stF190 | CSD-LKO Calender (6 day + Holiday)-25 | ID Work [9755265 INR]; Physical Progress [4750 h]; TATA Projects Ltd-25 | 9,755,265 |
| CC-WMI-1stF320 |  | False Ceiling Installation | 30d | 2028-10-06 | 2028-11-11 | CC-WMI-1stF325 | CSD-LKO Calender (6 day + Holiday)-25 | ID Work [11706318 INR]; Physical Progress [9490 h]; TATA Projects Ltd-25 | 11,706,318 |
| CC-WMI-1stF365 |  | Flooring | 20d | 2028-11-11 | 2028-12-05 | CC-WMI-1stF320 | CSD-LKO Calender (6 day + Holiday)-25 | ID Work [9755265 INR]; Physical Progress [9490 h]; TATA Projects Ltd-25 | 9,755,265 |
| CC-WMI-1stF375 |  | Flooring of toilets/kitchen/Balcony | 10d | 2028-11-11 | 2028-11-23 | CC-WMI-1stF320, CC-WMI-1stF220 | CSD-LKO Calender (6 day + Holiday)-25 | ID Work [7804212 INR]; Physical Progress [4750 h]; TATA Projects Ltd-25 | 7,804,212 |
| CC-WMI-1stF330 |  | Doors & Windows/Fire Doors/Shaft Doors | 35d | 2028-11-23 | 2029-01-05 | CC-WMI-1stF325, CC-WMI-1stF375 | CSD-LKO Calender (6 day + Holiday)-25 | ID Work [9755265 INR]; Physical Progress [4750 h]; TATA Projects Ltd-25 | 9,755,265 |
| CC-WMI-1stF350 |  | Putty & First Coat of Paint | 10d | 2028-11-23 | 2028-12-05 | CC-WMI-1stF325, CC-WMI-1stF375 | CSD-LKO Calender (6 day + Holiday)-25 | Painting [4536 Sq m]; Painter [4540 h]; Helper [4540 h]; Physical Progress [4750 h]; TATA Projects Ltd-25 | 1,037,020.32 |
| CC-WMI-1stF340 |  | Fixed Furniture | 8d | 2028-12-05 | 2028-12-14 | CC-WMI-1stF365 | CSD-LKO Calender (6 day + Holiday)-25 | ID Work [8779739 INR]; Physical Progress [3800 h]; TATA Projects Ltd-25 | 8,779,739 |
| CC-WMI-1stF370 |  | Railing for staircase | 35d | 2028-12-05 | 2029-01-17 | CC-WMI-1stF325, CC-WMI-1stF350 | CSD-LKO Calender (6 day + Holiday)-25 | ID Work [2926580 INR]; Physical Progress [7120 h]; TATA Projects Ltd-25 | 2,926,580 |
| CC-WMI-1stF360 |  | False ceiling final finishes | 10d | 2029-01-23 | 2029-02-05 | CC-WMI-1stF235 | CSD-LKO Calender (6 day + Holiday)-25 | ID Work [2926580 INR]; Physical Progress [4750 h]; TATA Projects Ltd-25 | 2,926,580 |
| CC-WMI-1stF355 |  | Final coat of paint | 10d | 2029-02-17 | 2029-03-02 | CC-WMI-1stF360, CC-WMI-1stF370, CC-WMI-1stF340, CC-WMI-1stF225, CC-WMI-1stF255, CC-WMI-1stF260, CC-WMI-1stF275, CC-WMI-1stF300, CC-WMI-1stF315, CC-WMI-1stF310, CC-WMI-1stF305, CC-WMI-1stF285, CC-WMI-1stF280, CC-WMI-1stF330, CC-WMI-1stF265 | CSD-LKO Calender (6 day + Holiday)-25 | Painting [4536 Sq m]; Painter [4540 h]; Helper [4540 h]; Physical Progress [4750 h]; TATA Projects Ltd-25 | 1,037,020.32 |
| CC-WMI-1stF335 |  | Soft Furnishing & Signage | 15d | 2029-03-02 | 2029-03-20 | CC-WMI-1stF355 | CSD-LKO Calender (6 day + Holiday)-25 | ID Work [14632898 INR]; Physical Progress [1420 h]; TATA Projects Ltd-25 | 14,632,898 |
| CC-WMI-1stF345 |  | Loose Furniture | 15d | 2029-03-02 | 2029-03-20 | CC-WMI-1stF355 | CSD-LKO Calender (6 day + Holiday)-25 | ID Work [19510530 INR]; Physical Progress [1420 h]; TATA Projects Ltd-25 | 19,510,530 |
|  | 3 | **MEP Final Fix** |  | 2028-11-11 | 2029-02-17 |  |  |  |  |
|  | 3 | **HVAC** |  | 2028-11-11 | 2029-01-23 |  |  |  |  |
| CC-WMI-1stF240 |  | Installing grills, diffusers, dampers | 30d | 2028-11-11 | 2028-12-16 | CC-WMI-1stF320 | CSD-LKO Calender (6 day + Holiday)-25 | Physical Progress [2850 h]; HVAC [1895813 INR]; TATA Projects Ltd-25 | 1,895,813 |
| CC-WMI-1stF235 |  | Installation of thermostats and control panels | 30d | 2028-12-16 | 2029-01-23 | CC-WMI-1stF240, CC-WMI-1stF350, CC-WMI-1stF80 | CSD-LKO Calender (6 day + Holiday)-25 | Physical Progress [2850 h]; HVAC [947906 INR]; TATA Projects Ltd-25 | 947,906 |
|  | 1 | **Electrical** |  | 2028-12-05 | 2029-02-17 |  |  |  |  |
| CC-WMI-1stF230 |  | Switches & Socket | 30d | 2028-12-05 | 2029-01-11 | CC-WMI-1stF350 | CSD-LKO Calender (6 day + Holiday)-25 | Physical Progress [9490 h]; Electrical [2122199 INR]; TATA Projects Ltd-25 | 2,122,199 |
| CC-WMI-1stF225 |  | Light Fixtures | 30d | 2029-01-11 | 2029-02-17 | CC-WMI-1stF230, CC-WMI-1stF210 | CSD-LKO Calender (6 day + Holiday)-25 | Physical Progress [7120 h]; Electrical [3183299 INR]; TATA Projects Ltd-25 | 3,183,299 |
|  | 2 | **Plumbing** |  | 2028-12-05 | 2029-01-30 |  |  |  |  |
| CC-WMI-1stF245 |  | Installation of sanitary fixtures (WC, washbasins, urinals, sinks) | 10d | 2028-12-05 | 2028-12-16 | CC-WMI-1stF350, CC-WMI-1stF120, CC-WMI-1stF110 | CSD-LKO Calender (6 day + Holiday)-25 | Physical Progress [4750 h]; Plumbing [2728481 INR]; TATA Projects Ltd-25 | 2,728,481 |
| CC-WMI-1stF250 |  | Installation of CP fittings (taps, mixers, showers, health faucets) | 10d | 2028-12-16 | 2028-12-29 | CC-WMI-1stF245, CC-WMI-1stF350 | CSD-LKO Calender (6 day + Holiday)-25 | Physical Progress [4750 h]; Plumbing [1364241 INR]; TATA Projects Ltd-25 | 1,364,241 |
| CC-WMI-1stF255 |  | Connection of appliances | 25d | 2028-12-29 | 2029-01-30 | CC-WMI-1stF250 | CSD-LKO Calender (6 day + Holiday)-25 | Physical Progress [3320 h]; Plumbing [682120 INR]; TATA Projects Ltd-25 | 682,120 |

| ID | WBS | Activity | Duration | Start | Finish | Predecessors | Calendar | Resources | Cost |
| --- | --- | --- | --- | --- | --- | --- | --- | --- | --- |
|  | 4 | **Firefighting** |  | 2028-12-05 | 2029-01-30 |  |  |  |  |
| CC-WMI-1stF260 |  | Installation of sprinkler heads, nozzles, and final alignment | 35d | 2028-12-05 | 2029-01-17 | CC-WMI-1stF350, CC-WMI-1stF365, CC-WMI-1stF160, CC-WMI-1stF150 | CSD-LKO Calender (6 day + Holiday)-25 | Physical Progress [18980 h]; Firefighting [1065039 INR]; TATA Projects Ltd-25 | 1,065,039 |
| CC-WMI-1stF265 |  | Installation of hydrant accessories (valves, hose reels, cabinets) | 25d | 2028-12-05 | 2029-01-05 | CC-WMI-1stF350 | CSD-LKO Calender (6 day + Holiday)-25 | Physical Progress [4750 h]; Firefighting [710026 INR]; TATA Projects Ltd-25 | 710,026 |
| CC-WMI-1stF270 |  | Installation of portable fire extinguishers | 30d | 2028-12-05 | 2029-01-11 | CC-WMI-1stF350 | CSD-LKO Calender (6 day + Holiday)-25 | Physical Progress [2850 h]; Firefighting [71003 INR]; TATA Projects Ltd-25 | 71,003 |
| CC-WMI-1stF275 |  | Integration with fire alarm system | 15d | 2029-01-11 | 2029-01-30 | CC-WMI-1stF270 | CSD-LKO Calender (6 day + Holiday)-25 | Physical Progress [7120 h]; Firefighting [355013 INR]; TATA Projects Ltd-25 | 355,013 |
|  | 5 | **ELV** |  | 2028-12-05 | 2029-01-23 |  |  |  |  |
| CC-WMI-1stF280 |  | Installation of data and Voice Faceplate | 25d | 2028-12-05 | 2029-01-05 | CC-WMI-1stF350, CC-WMI-1stF190 | CSD-LKO Calender (6 day + Holiday)-25 | Physical Progress [4750 h]; ELV [284891 INR]; TATA Projects Ltd-25 | 284,891 |
| CC-WMI-1stF285 |  | Installation of Camera & Wifi | 30d | 2028-12-05 | 2029-01-11 | CC-WMI-1stF365 | CSD-LKO Calender (6 day + Holiday)-25 | Physical Progress [4750 h]; ELV [284891 INR]; TATA Projects Ltd-25 | 284,891 |
| CC-WMI-1stF290 |  | Installation of fire alarm devices + Public Address | 10d | 2028-12-05 | 2028-12-16 | CC-WMI-1stF350 | CSD-LKO Calender (6 day + Holiday)-25 | Physical Progress [4750 h]; ELV [341869 INR]; TATA Projects Ltd-25 | 341,869 |
| CC-WMI-1stF295 |  | Installation of Active System | 15d | 2028-12-16 | 2029-01-05 | CC-WMI-1stF290 | CSD-LKO Calender (6 day + Holiday)-25 | Physical Progress [7120 h]; ELV [569782 INR]; TATA Projects Ltd-25 | 569,782 |
| CC-WMI-1stF305 |  | Fire Panel Intallation & Integration | 25d | 2028-12-16 | 2029-01-17 | CC-WMI-1stF290 | CSD-LKO Calender (6 day + Holiday)-25 | Physical Progress [11860 h]; ELV [284891 INR]; TATA Projects Ltd-25 | 284,891 |
| CC-WMI-1stF310 |  | Installation & Integration of Audio Visual System | 25d | 2028-12-16 | 2029-01-17 | CC-WMI-1stF290 | CSD-LKO Calender (6 day + Holiday)-25 | Physical Progress [11860 h]; ELV [284891 INR]; TATA Projects Ltd-25 | 284,891 |
| CC-WMI-1stF315 |  | Installation & Integration of Access Control | 25d | 2028-12-16 | 2029-01-17 | CC-WMI-1stF290 | CSD-LKO Calender (6 day + Holiday)-25 | Physical Progress [11860 h]; ELV [284891 INR]; TATA Projects Ltd-25 | 284,891 |
| CC-WMI-1stF300 |  | Integration of Active components | 15d | 2029-01-05 | 2029-01-23 | CC-WMI-1stF295 | CSD-LKO Calender (6 day + Holiday)-25 | Physical Progress [7120 h]; ELV [113956 INR]; TATA Projects Ltd-25 | 113,956 |
|  | 5 | **Third Mezzanine** |  | 2027-11-29 | 2029-04-02 |  |  |  |  |
|  | 1 | **Wet Finishes** |  | 2027-11-29 | 2028-03-09 |  |  |  |  |
| CC-WMI-3rdM10 |  | Deshuttering | 4d | 2027-11-29 | 2027-12-03 | CC-SS-2ndF.165 | CSD-LKO Calender (6 day + Holiday)-25 | Physical Progress [1900 h]; TATA Projects Ltd-25 |  |
| CC-WMI-3rdM15 |  | Brickwork/Blockwork | 30d | 2027-12-03 | 2028-01-10 | CC-WMI-3rdM10, E-GFC-AR-CC-160 | CSD-LKO Calender (6 day + Holiday)-25 | Masonry [761 CuM]; Mason [5080 h]; Helper [2540 h]; Physical Progress [14240 h]; TATA Projects Ltd-25 | 7,256,408.96 |
| CC-WMI-3rdM220 |  | Waterproofing of Toilets, Balcony & Kitchen | 15d | 2028-01-10 | 2028-01-28 | CC-WMI-3rdM15 | CSD-LKO Calender (6 day + Holiday)-25 | Waterproofing [8564838 INR]; Waterprrofing Mason [8160 h]; Helper [4080 h]; Physical Progress [7120 h]; TATA Projects Ltd-25 | 8,564,838 |
| CC-WMI-3rdM20 |  | Plaster | 15d | 2028-02-21 | 2028-03-09 | CC-WMI-3rdM25, CC-WMI-3rdM45, CC-WMI-3rdM185, CC-WMI-3rdM220 | CSD-LKO Calender (6 day + Holiday)-25 | Plaster [14779 Sqr Mtr]; Mason [9860 h]; Helper [4930 h]; Physical Progress [7120 h]; TATA Projects Ltd-25 | 8,186,235.89 |
|  | 5 | **MEP 1st Fix, 2nd Fix** |  | 2027-12-03 | 2028-10-03 |  |  |  |  |
|  | 2 | **HVAC** |  | 2028-01-10 | 2028-09-01 |  |  |  |  |
|  | 1 | **1st Fix** |  | 2028-01-10 | 2028-05-05 |  |  |  |  |
| CC-WMI-3rdM200 |  | Duct Support Fabrication | 35d | 2028-01-10 | 2028-02-21 | CC-WMI-3rdM15, E-GFC-MEP-CC-205 | CSD-LKO Calender (6 day + Holiday)-25 | Physical Progress [7120 h]; HVAC [379163 INR]; TATA Projects Ltd-25 | 379,163 |
| CC-WMI-3rdM50 |  | Installing duct hangers and supports | 30d | 2028-02-21 | 2028-03-28 | CC-WMI-3rdM200, E-GFC-MEP-CC-205 | CSD-LKO Calender (6 day + Holiday)-25 | Physical Progress [4750 h]; HVAC [758325 INR]; TATA Projects Ltd-25 | 758,325 |
| CC-WMI-3rdM55 |  | Laying concealed/exposed refrigerant piping | 30d | 2028-03-28 | 2028-05-05 | CC-WMI-3rdM50, E-GFC-MEP-CC-205 | CSD-LKO Calender (6 day + Holiday)-25 | Physical Progress [7120 h]; HVAC [189581 INR]; TATA Projects Ltd-25 | 189,581 |
| CC-WMI-3rdM60 |  | Laying concealed/exposed drain piping | 30d | 2028-03-28 | 2028-05-05 | CC-WMI-3rdM50, E-GFC-MEP-CC-205 | CSD-LKO Calender (6 day + Holiday)-25 | Physical Progress [4750 h]; HVAC [1137488 INR]; TATA Projects Ltd-25 | 1,137,488 |

| ID | WBS | Activity | Duration | Start | Finish | Predecessors | Calendar | Resources | Cost |
| --- | --- | --- | --- | --- | --- | --- | --- | --- | --- |
|  | 2 | **2nd Fix** |  | 2028-03-28 | 2028-09-01 |  |  |  |  |
| CC-WMI-3rdM65 |  | Duct installation | 35d | 2028-03-28 | 2028-05-11 | CC-WMI-3rdM50 | CSD-LKO Calender (6 day + Holiday)-25 | Physical Progress [7120 h]; HVAC [2843719 INR]; TATA Projects Ltd-25 | 2,843,719 |
| CC-WMI-3rdM70 |  | Insulation of ducts (thermal/acoustic) | 10d | 2028-05-11 | 2028-05-23 | CC-WMI-3rdM65 | CSD-LKO Calender (6 day + Holiday)-25 | Physical Progress [2850 h]; HVAC [1706231 INR]; TATA Projects Ltd-25 | 1,706,231 |
| CC-WMI-3rdM75 |  | Installation of chilled water piping / VRF piping | 20d | 2028-05-23 | 2028-06-15 | CC-WMI-3rdM70 | CSD-LKO Calender (6 day + Holiday)-25 | Physical Progress [2850 h]; HVAC [3791626 INR]; TATA Projects Ltd-25 | 3,791,626 |
| CC-WMI-3rdM195 |  | Installation of indoor units including AHU, FCU | 45d | 2028-06-15 | 2028-08-07 | CC-WMI-3rdM75, CC-WMI-3rdM55, CC-WMI-3rdM60 | CSD-LKO Calender (6 day + Holiday)-25 | Physical Progress [21350 h]; HVAC [3412463 INR]; TATA Projects Ltd-25 | 3,412,463 |
| CC-WMI-3rdM80 |  | Connecting refrigerant and drain piping to indoor units | 20d | 2028-08-07 | 2028-09-01 | CC-WMI-3rdM195 | CSD-LKO Calender (6 day + Holiday)-25 | Physical Progress [2850 h]; HVAC [947906 INR]; TATA Projects Ltd-25 | 947,906 |
|  | 1 | **Electrical** |  | 2027-12-03 | 2028-08-12 |  |  |  |  |
|  | 1 | **1st Fix** |  | 2027-12-03 | 2028-02-21 |  |  |  |  |
| CC-WMI-3rdM385 |  | Slab Conduiting | 35d | 2027-12-03 | 2028-01-15 | CC-WMI-3rdM10, E-GFC-MEP-CC-205 | CSD-LKO Calender (6 day + Holiday)-25 | Physical Progress [11860 h]; Electrical [2122199 INR]; TATA Projects Ltd-25 | 2,122,199 |
| CC-WMI-3rdM25 |  | Wall Conduiting | 30d | 2028-01-10 | 2028-02-15 | CC-WMI-3rdM15, E-GFC-MEP-CC-205 | CSD-LKO Calender (6 day + Holiday)-25 | Physical Progress [4750 h]; Electrical [1061100 INR]; TATA Projects Ltd-25 | 1,061,100 |
| CC-WMI-3rdM45 |  | Installing back boxes for switches, sockets | 5d | 2028-02-15 | 2028-02-21 | CC-WMI-3rdM25, CC-WMI-3rdM385, E-GFC-MEP-CC-205 | CSD-LKO Calender (6 day + Holiday)-25 | Physical Progress [2370 h]; Electrical [636660 INR]; TATA Projects Ltd-25 | 636,660 |
|  | 2 | **2nd Fix** |  | 2028-03-09 | 2028-08-12 |  |  |  |  |
| CC-WMI-3rdM30 |  | Cable tray laying | 25d | 2028-03-09 | 2028-04-08 | CC-WMI-3rdM20 | CSD-LKO Calender (6 day + Holiday)-25 | Physical Progress [11860 h]; Electrical [848880 INR]; TATA Projects Ltd-25 | 848,880 |
| CC-WMI-3rdM35 |  | Cabling & Wire Pulling | 45d | 2028-04-08 | 2028-06-03 | CC-WMI-3rdM30 | CSD-LKO Calender (6 day + Holiday)-25 | Physical Progress [21350 h]; Electrical [4244398 INR]; TATA Projects Ltd-25 | 4,244,398 |
| CC-WMI-3rdM395 |  | Floor Rising Main Installation | 20d | 2028-06-03 | 2028-06-27 | CC-WMI-3rdM35 | CSD-LKO Calender (6 day + Holiday)-25 | Physical Progress [2370 h]; Electrical [2971079 INR]; TATA Projects Ltd-25 | 2,971,079 |
| CC-WMI-3rdM40 |  | DB fixing and connecting | 20d | 2028-06-03 | 2028-06-27 | CC-WMI-3rdM35 | CSD-LKO Calender (6 day + Holiday)-25 | Physical Progress [7120 h]; Electrical [636660 INR]; TATA Projects Ltd-25 | 636,660 |
| CC-WMI-3rdM205 |  | Floor/Distribution Panel Installation | 20d | 2028-06-27 | 2028-07-20 | CC-WMI-3rdM40 | CSD-LKO Calender (6 day + Holiday)-25 | Physical Progress [2370 h]; Electrical [1697759 INR]; TATA Projects Ltd-25 | 1,697,759 |
| CC-WMI-3rdM210 |  | Equipment Earthing | 20d | 2028-07-20 | 2028-08-12 | CC-WMI-3rdM205, CC-WMI-3rdM395 | CSD-LKO Calender (6 day + Holiday)-25 | Physical Progress [4750 h]; Electrical [636660 INR]; TATA Projects Ltd-25 | 636,660 |
|  | 3 | **Plumbing** |  | 2028-01-10 | 2028-09-01 |  |  |  |  |
|  | 1 | **1st Fix** |  | 2028-01-10 | 2028-06-15 |  |  |  |  |
| CC-WMI-3rdM95 |  | Fixing pipe supports and clamps | 35d | 2028-01-10 | 2028-02-21 | CC-WMI-3rdM15, E-GFC-MEP-CC-205 | CSD-LKO Calender (6 day + Holiday)-25 | Physical Progress [4750 h]; Plumbing [682120 INR]; TATA Projects Ltd-25 | 682,120 |
| CC-WMI-3rdM85 |  | Laying water supply pipes (hot & cold) | 35d | 2028-02-21 | 2028-04-03 | CC-WMI-3rdM95, E-GFC-MEP-CC-205 | CSD-LKO Calender (6 day + Holiday)-25 | Physical Progress [7120 h]; Plumbing [1364241 INR]; TATA Projects Ltd-25 | 1,364,241 |
| CC-WMI-3rdM90 |  | Laying drainage pipes (soil, waste, vent) | 35d | 2028-02-21 | 2028-04-03 | CC-WMI-3rdM95, E-GFC-MEP-CC-205 | CSD-LKO Calender (6 day + Holiday)-25 | Physical Progress [7120 h]; Plumbing [1364241 INR]; TATA Projects Ltd-25 | 1,364,241 |
| CC-WMI-3rdM115 |  | Installation of plumbing fixture base supports (WC frames, sink brackets) | 30d | 2028-04-03 | 2028-05-11 | CC-WMI-3rdM90, E-GFC-MEP-CC-205 | CSD-LKO Calender (6 day + Holiday)-25 | Physical Progress [2850 h]; Plumbing [682120 INR]; TATA Projects Ltd-25 | 682,120 |
| CC-WMI-3rdM100 |  | Pressure testing of water supply lines | 25d | 2028-05-11 | 2028-06-09 | CC-WMI-3rdM85, CC-WMI-3rdM90, CC-WMI-3rdM115, E-GFC-MEP-CC-205 | CSD-LKO Calender (6 day + Holiday)-25 | Physical Progress [3320 h]; Plumbing [136424 INR]; TATA Projects Ltd-25 | 136,424 |
| CC-WMI-3rdM400 |  | Installation of concealed parts of toilet fixtures | 30d | 2028-05-11 | 2028-06-15 | CC-WMI-3rdM115, E-GFC-MEP-CC-205 | CSD-LKO Calender (6 day + Holiday)-25 | Physical Progress [4750 h]; Plumbing [682120 INR]; TATA Projects Ltd-25 | 682,120 |

| ID | WBS | Activity | Duration | Start | Finish | Predecessors | Calendar | Resources | Cost |
| --- | --- | --- | --- | --- | --- | --- | --- | --- | --- |
|  | 2 | **2nd FIx** |  | 2028-06-09 | 2028-09-01 |  |  |  |  |
| CC-WMI-3rdM125 |  | Insulation of hot water pipes (if applicable) | 30d | 2028-06-09 | 2028-07-14 | CC-WMI-3rdM100 | CSD-LKO Calender (6 day + Holiday)-25 | Physical Progress [2850 h]; Plumbing [682120 INR]; TATA Projects Ltd-25 | 682,120 |
| CC-WMI-3rdM105 |  | Installation of vertical risers and main distribution lines | 35d | 2028-06-15 | 2028-07-26 | CC-WMI-3rdM20, CC-WMI-3rdM100, CC-WMI-3rdM400 | CSD-LKO Calender (6 day + Holiday)-25 | Physical Progress [9490 h]; Plumbing [1364241 INR]; TATA Projects Ltd-25 | 1,364,241 |
| CC-WMI-3rdM120 |  | Testing drainage lines for leakage/blockage | 30d | 2028-07-14 | 2028-08-19 | CC-WMI-3rdM115, CC-WMI-3rdM125 | CSD-LKO Calender (6 day + Holiday)-25 | Physical Progress [2850 h]; Plumbing [136424 INR]; TATA Projects Ltd-25 | 136,424 |
| CC-WMI-3rdM110 |  | Fixing floor traps and gully traps | 30d | 2028-07-26 | 2028-09-01 | CC-WMI-3rdM105 | CSD-LKO Calender (6 day + Holiday)-25 | Physical Progress [2850 h]; Plumbing [409272 INR]; TATA Projects Ltd-25 | 409,272 |
|  | 4 | **Firefighting** |  | 2028-01-10 | 2028-08-01 |  |  |  |  |
|  | 1 | **1st Fix** |  | 2028-01-10 | 2028-05-11 |  |  |  |  |
| CC-WMI-3rdM135 |  | Fixing pipe supports and hangers | 35d | 2028-01-10 | 2028-02-21 | CC-WMI-3rdM15, E-GFC-MEP-CC-205 | CSD-LKO Calender (6 day + Holiday)-25 | Physical Progress [4750 h]; Firefighting [497018 INR]; TATA Projects Ltd-25 | 497,018 |
| CC-WMI-3rdM130 |  | Laying branch piping | 35d | 2028-02-21 | 2028-04-03 | CC-WMI-3rdM135, E-GFC-MEP-CC-205 | CSD-LKO Calender (6 day + Holiday)-25 | Physical Progress [7120 h]; Firefighting [1065039 INR]; TATA Projects Ltd-25 | 1,065,039 |
| CC-WMI-3rdM140 |  | Hydrostatic pressure testing of piping | 30d | 2028-04-03 | 2028-05-11 | CC-WMI-3rdM130, E-GFC-MEP-CC-205 | CSD-LKO Calender (6 day + Holiday)-25 | Physical Progress [2850 h]; Firefighting [142005 INR]; TATA Projects Ltd-25 | 142,005 |
|  | 2 | **2nd Fix** |  | 2028-05-11 | 2028-08-01 |  |  |  |  |
| CC-WMI-3rdM145 |  | Installation of vertical risers and distribution piping in shafts | 35d | 2028-05-11 | 2028-06-21 | CC-WMI-3rdM20, CC-WMI-3rdM140 | CSD-LKO Calender (6 day + Holiday)-25 | Physical Progress [11860 h]; Firefighting [1420052 INR]; TATA Projects Ltd-25 | 1,420,052 |
| CC-WMI-3rdM155 |  | Painting/insulation of exposed fire pipes | 30d | 2028-05-11 | 2028-06-15 | CC-WMI-3rdM140 | CSD-LKO Calender (6 day + Holiday)-25 | Physical Progress [4750 h]; Firefighting [71003 INR]; TATA Projects Ltd-25 | 71,003 |
| CC-WMI-3rdM160 |  | Testing risers and branch lines for leakage | 30d | 2028-06-15 | 2028-07-20 | CC-WMI-3rdM155 | CSD-LKO Calender (6 day + Holiday)-25 | Physical Progress [2850 h]; Firefighting [142005 INR]; TATA Projects Ltd-25 | 142,005 |
| CC-WMI-3rdM150 |  | Installation of sprinkler branch lines in ceilings | 35d | 2028-06-21 | 2028-08-01 | CC-WMI-3rdM145 | CSD-LKO Calender (6 day + Holiday)-25 | Physical Progress [11860 h]; Firefighting [1065039 INR]; TATA Projects Ltd-25 | 1,065,039 |
|  | 5 | **ELV** |  | 2027-12-03 | 2028-10-03 |  |  |  |  |
|  | 1 | **1st Fix** |  | 2027-12-03 | 2028-02-21 |  |  |  |  |
| CC-WMI-3rdM390 |  | Slab Conduiting | 35d | 2027-12-03 | 2028-01-15 | CC-WMI-3rdM10, E-GFC-MEP-CC-205 | CSD-LKO Calender (6 day + Holiday)-25 | Physical Progress [11860 h]; ELV [398847 INR]; TATA Projects Ltd-25 | 398,847 |
| CC-WMI-3rdM165 |  | Wall Conduiting | 30d | 2028-01-10 | 2028-02-15 | CC-WMI-3rdM15, E-GFC-MEP-CC-205 | CSD-LKO Calender (6 day + Holiday)-25 | Physical Progress [4750 h]; ELV [170935 INR]; TATA Projects Ltd-25 | 170,935 |
| CC-WMI-3rdM185 |  | Installing back boxes for switches, sockets | 5d | 2028-02-15 | 2028-02-21 | CC-WMI-3rdM165, CC-WMI-3rdM390, E-GFC-MEP-CC-205 | CSD-LKO Calender (6 day + Holiday)-25 | Physical Progress [2370 h]; ELV [284891 INR]; TATA Projects Ltd-25 | 284,891 |
|  | 2 | **2nd Fix** |  | 2028-03-09 | 2028-10-03 |  |  |  |  |
| CC-WMI-3rdM170 |  | Cable tray installation | 35d | 2028-03-09 | 2028-04-21 | CC-WMI-3rdM20 | CSD-LKO Calender (6 day + Holiday)-25 | Physical Progress [11860 h]; ELV [284891 INR]; TATA Projects Ltd-25 | 284,891 |
| CC-WMI-3rdM175 |  | Cabeling of ELV cable - IT/Fire Alarm/Public Address | 45d | 2028-04-21 | 2028-06-15 | CC-WMI-3rdM170 | CSD-LKO Calender (6 day + Holiday)-25 | Physical Progress [21350 h]; ELV [683738 INR]; TATA Projects Ltd-25 | 683,738 |
| CC-WMI-3rdM215 |  | ELV Rack Installation | 30d | 2028-06-15 | 2028-07-20 | CC-WMI-3rdM175 | CSD-LKO Calender (6 day + Holiday)-25 | Physical Progress [4750 h]; ELV [284891 INR]; TATA Projects Ltd-25 | 284,891 |
| CC-WMI-3rdM180 |  | Termination of cables at junction boxes, patch panels, and control panels | 35d | 2028-07-20 | 2028-09-01 | CC-WMI-3rdM215 | CSD-LKO Calender (6 day + Holiday)-25 | Physical Progress [14240 h]; ELV [284891 INR]; TATA Projects Ltd-25 | 284,891 |
| CC-WMI-3rdM190 |  | Fixing devices like CCTV camera bases, card reader bases, smoke detector bases, PA Bases, Wifi Bases | 25d | 2028-09-01 | 2028-10-03 | CC-WMI-3rdM180 | CSD-LKO Calender (6 day + Holiday)-25 | Physical Progress [1900 h]; ELV [569782 INR]; TATA Projects Ltd-25 | 569,782 |

| ID | WBS | Activity | Duration | Start | Finish | Predecessors | Calendar | Resources | Cost |
| --- | --- | --- | --- | --- | --- | --- | --- | --- | --- |
|  | 2 | **Dry Finishes/ID Works** |  | 2028-10-13 | 2029-04-02 |  |  |  |  |
| CC-WMI-3rdM380 |  | Running of Wild Air | 1d | 2028-10-13 | 2028-10-14 | CC-F-(3rdM-Terrace)55, CC-WMI-3rdM65, CC-WMI-3rdM70, CC-WMI-3rdM75, CC-WMI-3rdM195, CC-WMI-3rdM80 | CSD-LKO Calender (6 day + Holiday)-25 | Physical Progress [470 h]; TATA Projects Ltd-25 |  |
| CC-WMI-3rdM325 |  | Wall finish ID Works | 35d | 2028-10-14 | 2028-11-25 | CC-WMI-3rdM380, CC-WMI-3rdM30, CC-WMI-3rdM35, CC-WMI-3rdM40, CC-WMI-3rdM395, CC-WMI-3rdM205, CC-WMI-3rdM210, CC-WMI-3rdM125, CC-WMI-3rdM105, CC-WMI-3rdM120, CC-WMI-3rdM110, CC-WMI-3rdM145, CC-WMI-3rdM155, CC-WMI-3rdM160, CC-WMI-3rdM150, CC-WMI-3rdM170, CC-WMI-3rdM175, CC-WMI-3rdM215, CC-WMI-3rdM180, CC-WMI-3rdM190 | CSD-LKO Calender (6 day + Holiday)-25 | ID Work [9755265 INR]; Physical Progress [4750 h]; TATA Projects Ltd-25 | 9,755,265 |
| CC-WMI-3rdM320 |  | False Ceiling Installation | 30d | 2028-11-25 | 2029-01-02 | CC-WMI-3rdM325 | CSD-LKO Calender (6 day + Holiday)-25 | ID Work [11706318 INR]; Physical Progress [7120 h]; TATA Projects Ltd-25 | 11,706,318 |
| CC-WMI-3rdM365 |  | Flooring | 20d | 2029-01-02 | 2029-01-25 | CC-WMI-3rdM320 | CSD-LKO Calender (6 day + Holiday)-25 | ID Work [9755265 INR]; Physical Progress [9490 h]; TATA Projects Ltd-25 | 9,755,265 |
| CC-WMI-3rdM375 |  | Flooring of toilets/kitchen/Balcony | 10d | 2029-01-02 | 2029-01-13 | CC-WMI-3rdM320, CC-WMI-3rdM220 | CSD-LKO Calender (6 day + Holiday)-25 | ID Work [7804212 INR]; Physical Progress [4750 h]; TATA Projects Ltd-25 | 7,804,212 |
| CC-WMI-3rdM330 |  | Doors & Windows/Fire Doors/Shaft Doors | 35d | 2029-01-13 | 2029-02-26 | CC-WMI-3rdM325, CC-WMI-3rdM375 | CSD-LKO Calender (6 day + Holiday)-25 | ID Work [9755265 INR]; Physical Progress [4750 h]; TATA Projects Ltd-25 | 9,755,265 |
| CC-WMI-3rdM350 |  | Putty & First Coat of Paint | 10d | 2029-01-13 | 2029-01-25 | CC-WMI-3rdM325, CC-WMI-3rdM375 | CSD-LKO Calender (6 day + Holiday)-25 | Painting [4536 Sq m]; Painter [4540 h]; Helper [4540 h]; Physical Progress [4750 h]; TATA Projects Ltd-25 | 1,037,020.32 |
| CC-WMI-3rdM340 |  | Fixed Furniture | 8d | 2029-01-25 | 2029-02-05 | CC-WMI-3rdM365 | CSD-LKO Calender (6 day + Holiday)-25 | ID Work [8779739 INR]; Physical Progress [3800 h]; TATA Projects Ltd-25 | 8,779,739 |
| CC-WMI-3rdM370 |  | Railing for staircase | 35d | 2029-01-25 | 2029-03-10 | CC-WMI-3rdM325, CC-WMI-3rdM350 | CSD-LKO Calender (6 day + Holiday)-25 | ID Work [2926580 INR]; Physical Progress [7120 h]; TATA Projects Ltd-25 | 2,926,580 |
| CC-WMI-3rdM360 |  | False ceiling final finishes | 10d | 2029-03-05 | 2029-03-16 | CC-WMI-3rdM235 | CSD-LKO Calender (6 day + Holiday)-25 | ID Work [2926580 INR]; Physical Progress [4750 h]; TATA Projects Ltd-25 | 2,926,580 |
| CC-WMI-3rdM355 |  | Final coat of paint | 10d | 2029-03-16 | 2029-03-28 | CC-WMI-3rdM360, CC-WMI-3rdM370, CC-WMI-3rdM340, CC-WMI-3rdM225, CC-WMI-3rdM255, CC-WMI-3rdM260, CC-WMI-3rdM275, CC-WMI-3rdM300, CC-WMI-3rdM315, CC-WMI-3rdM310, CC-WMI-3rdM305, CC-WMI-3rdM285, CC-WMI-3rdM280, CC-WMI-3rdM330, CC-WMI-3rdM265 | CSD-LKO Calender (6 day + Holiday)-25 | Painting [4536 Sq m]; Painter [4540 h]; Helper [4540 h]; Physical Progress [4750 h]; TATA Projects Ltd-25 | 1,037,020.32 |
| CC-WMI-3rdM335 |  | Soft Furnishing & Signage | 3d | 2029-03-28 | 2029-04-02 | CC-WMI-3rdM355 | CSD-LKO Calender (6 day + Holiday)-25 | ID Work [14632898 INR]; Physical Progress [1420 h]; TATA Projects Ltd-25 | 14,632,898 |
| CC-WMI-3rdM345 |  | Loose Furniture | 3d | 2029-03-28 | 2029-04-02 | CC-WMI-3rdM355 | CSD-LKO Calender (6 day + Holiday)-25 | ID Work [19510530 INR]; Physical Progress [1420 h]; TATA Projects Ltd-25 | 19,510,530 |
|  | 3 | **MEP Final Fix** |  | 2029-01-02 | 2029-03-08 |  |  |  |  |
|  | 3 | **HVAC** |  | 2029-01-02 | 2029-03-05 |  |  |  |  |
| CC-WMI-3rdM240 |  | Installing grills, diffusers, dampers | 25d | 2029-01-02 | 2029-02-01 | CC-WMI-3rdM320 | CSD-LKO Calender (6 day + Holiday)-25 | Physical Progress [2850 h]; HVAC [1895813 INR]; TATA Projects Ltd-25 | 1,895,813 |
| CC-WMI-3rdM235 |  | Installation of thermostats and control panels | 25d | 2029-02-01 | 2029-03-05 | CC-WMI-3rdM240, CC-WMI-3rdM350, CC-WMI-3rdM80 | CSD-LKO Calender (6 day + Holiday)-25 | Physical Progress [2850 h]; HVAC [947906 INR]; TATA Projects Ltd-25 | 947,906 |
|  | 1 | **Electrical** |  | 2029-01-25 | 2029-03-08 |  |  |  |  |
| CC-WMI-3rdM230 |  | Switches & Socket | 15d | 2029-01-25 | 2029-02-13 | CC-WMI-3rdM350 | CSD-LKO Calender (6 day + Holiday)-25 | Physical Progress [9490 h]; Electrical [2122199 INR]; TATA Projects Ltd-25 | 2,122,199 |
| CC-WMI-3rdM225 |  | Light Fixtures | 18d | 2029-02-13 | 2029-03-08 | CC-WMI-3rdM230, CC-WMI-3rdM210 | CSD-LKO Calender (6 day + Holiday)-25 | Physical Progress [7120 h]; Electrical [3183299 INR]; TATA Projects Ltd-25 | 3,183,299 |
|  | 2 | **Plumbing** |  | 2029-01-25 | 2029-03-08 |  |  |  |  |
| CC-WMI-3rdM245 |  | Installation of sanitary fixtures (WC, washbasins, urinals, sinks) | 10d | 2029-01-25 | 2029-02-07 | CC-WMI-3rdM350, CC-WMI-3rdM120, CC-WMI-3rdM110 | CSD-LKO Calender (6 day + Holiday)-25 | Physical Progress [4750 h]; Plumbing [2728481 INR]; TATA Projects Ltd-25 | 2,728,481 |
| CC-WMI-3rdM250 |  | Installation of CP fittings (taps, mixers, showers, health faucets) | 10d | 2029-02-07 | 2029-02-20 | CC-WMI-3rdM245, CC-WMI-3rdM350 | CSD-LKO Calender (6 day + Holiday)-25 | Physical Progress [4750 h]; Plumbing [1364241 INR]; TATA Projects Ltd-25 | 1,364,241 |
| CC-WMI-3rdM255 |  | Connection of appliances | 13d | 2029-02-20 | 2029-03-08 | CC-WMI-3rdM250 | CSD-LKO Calender (6 day + Holiday)-25 | Physical Progress [3320 h]; Plumbing [682120 INR]; TATA Projects Ltd-25 | 682,120 |

| ID | WBS | Activity | Duration | Start | Finish | Predecessors | Calendar | Resources | Cost |
| --- | --- | --- | --- | --- | --- | --- | --- | --- | --- |
|  | 4 | **Firefighting** |  | 2029-01-25 | 2029-03-08 |  |  |  |  |
| CC-WMI-3rdM260 |  | Installation of sprinkler heads, nozzles, and final alignment | 30d | 2029-01-25 | 2029-03-05 | CC-WMI-3rdM350, CC-WMI-3rdM365, CC-WMI-3rdM160, CC-WMI-3rdM150 | CSD-LKO Calender (6 day + Holiday)-25 | Physical Progress [18980 h]; Firefighting [1065039 INR]; TATA Projects Ltd-25 | 1,065,039 |
| CC-WMI-3rdM265 |  | Installation of hydrant accessories (valves, hose reels, cabinets) | 20d | 2029-01-25 | 2029-02-20 | CC-WMI-3rdM350 | CSD-LKO Calender (6 day + Holiday)-25 | Physical Progress [4750 h]; Firefighting [710026 INR]; TATA Projects Ltd-25 | 710,026 |
| CC-WMI-3rdM270 |  | Installation of portable fire extinguishers | 18d | 2029-01-25 | 2029-02-17 | CC-WMI-3rdM350 | CSD-LKO Calender (6 day + Holiday)-25 | Physical Progress [2850 h]; Firefighting [71003 INR]; TATA Projects Ltd-25 | 71,003 |
| CC-WMI-3rdM275 |  | Integration with fire alarm system | 15d | 2029-02-17 | 2029-03-08 | CC-WMI-3rdM270 | CSD-LKO Calender (6 day + Holiday)-25 | Physical Progress [7120 h]; Firefighting [355013 INR]; TATA Projects Ltd-25 | 355,013 |
|  | 5 | **ELV** |  | 2029-01-25 | 2029-03-05 |  |  |  |  |
| CC-WMI-3rdM280 |  | Installation of data and Voice Faceplate | 25d | 2029-01-25 | 2029-02-26 | CC-WMI-3rdM350 | CSD-LKO Calender (6 day + Holiday)-25 | Physical Progress [4750 h]; ELV [284891 INR]; TATA Projects Ltd-25 | 284,891 |
| CC-WMI-3rdM285 |  | Installation of Camera & Wifi | 30d | 2029-01-25 | 2029-03-05 | CC-WMI-3rdM350 | CSD-LKO Calender (6 day + Holiday)-25 | Physical Progress [4750 h]; ELV [284891 INR]; TATA Projects Ltd-25 | 284,891 |
| CC-WMI-3rdM290 |  | Installation of fire alarm devices + Public Address | 10d | 2029-01-25 | 2029-02-07 | CC-WMI-3rdM350 | CSD-LKO Calender (6 day + Holiday)-25 | Physical Progress [4750 h]; ELV [341869 INR]; TATA Projects Ltd-25 | 341,869 |
| CC-WMI-3rdM295 |  | Installation of Active System | 10d | 2029-02-07 | 2029-02-20 | CC-WMI-3rdM290 | CSD-LKO Calender (6 day + Holiday)-25 | Physical Progress [4750 h]; ELV [569782 INR]; TATA Projects Ltd-25 | 569,782 |
| CC-WMI-3rdM305 |  | Fire Panel Intallation & Integration | 15d | 2029-02-07 | 2029-02-26 | CC-WMI-3rdM290 | CSD-LKO Calender (6 day + Holiday)-25 | Physical Progress [7120 h]; ELV [284891 INR]; TATA Projects Ltd-25 | 284,891 |
| CC-WMI-3rdM310 |  | Installation & Integration of Audio Visual System | 15d | 2029-02-07 | 2029-02-26 | CC-WMI-3rdM290 | CSD-LKO Calender (6 day + Holiday)-25 | Physical Progress [7120 h]; ELV [284891 INR]; TATA Projects Ltd-25 | 284,891 |
| CC-WMI-3rdM315 |  | Installation & Integration of Access Control | 15d | 2029-02-07 | 2029-02-26 | CC-WMI-3rdM290 | CSD-LKO Calender (6 day + Holiday)-25 | Physical Progress [7120 h]; ELV [284891 INR]; TATA Projects Ltd-25 | 284,891 |
| CC-WMI-3rdM300 |  | Integration of Active components | 10d | 2029-02-20 | 2029-03-05 | CC-WMI-3rdM295 | CSD-LKO Calender (6 day + Holiday)-25 | Physical Progress [4750 h]; ELV [113956 INR]; TATA Projects Ltd-25 | 113,956 |
|  | 6 | **Second Floor** |  | 2028-01-13 | 2029-05-11 |  |  |  |  |
|  | 1 | **Wet Finishes** |  | 2028-01-13 | 2028-04-28 |  |  |  |  |
| CC-WMI-2ndF10 |  | Deshuttering | 4d | 2028-01-13 | 2028-01-18 | CC-SS-Roof35 | CSD-LKO Calender (6 day + Holiday)-25 | Physical Progress [1900 h]; TATA Projects Ltd-25 |  |
| CC-WMI-2ndF15 |  | Brickwork/Blockwork | 15d | 2028-03-10 | 2028-03-29 | CC-WMI-2ndF10, E-GFC-AR-CC-210, CC-SS-2ndF.675 FF+10d | CSD-LKO Calender (6 day + Holiday)-25 | Masonry [761 CuM]; Mason [5080 h]; Helper [2540 h]; Physical Progress [14240 h]; TATA Projects Ltd-25 | 7,256,408.96 |
| CC-WMI-2ndF220 |  | Waterproofing of Toilets, Balcony & Kitchen | 15d | 2028-03-29 | 2028-04-17 | CC-WMI-2ndF15 | CSD-LKO Calender (6 day + Holiday)-25 | Waterproofing [8564838 INR]; Waterprrofing Mason [8160 h]; Helper [4080 h]; Physical Progress [7120 h]; TATA Projects Ltd-25 | 8,564,838 |
| CC-WMI-2ndF20 |  | Plaster | 10d | 2028-04-17 | 2028-04-28 | CC-WMI-2ndF25, CC-WMI-2ndF45, CC-WMI-2ndF185, CC-WMI-2ndF220 | CSD-LKO Calender (6 day + Holiday)-25 | Plaster [14779 Sqr Mtr]; Mason [9860 h]; Helper [4930 h]; Physical Progress [7120 h]; TATA Projects Ltd-25 | 8,186,235.89 |
|  | 5 | **MEP 1st Fix, 2nd Fix** |  | 2028-01-18 | 2028-11-21 |  |  |  |  |
|  | 2 | **HVAC** |  | 2028-03-29 | 2028-11-21 |  |  |  |  |
|  | 1 | **1st Fix** |  | 2028-03-29 | 2028-07-21 |  |  |  |  |
| CC-WMI-2ndF200 |  | Duct Support Fabrication | 35d | 2028-03-29 | 2028-05-12 | CC-WMI-2ndF15, E-GFC-MEP-CC-200 | CSD-LKO Calender (6 day + Holiday)-25 | Physical Progress [7120 h]; HVAC [379163 INR]; TATA Projects Ltd-25 | 379,163 |
| CC-WMI-2ndF50 |  | Installing duct hangers and supports | 30d | 2028-05-12 | 2028-06-16 | CC-WMI-2ndF200, E-GFC-MEP-CC-200 | CSD-LKO Calender (6 day + Holiday)-25 | Physical Progress [4750 h]; HVAC [758325 INR]; TATA Projects Ltd-25 | 758,325 |
| CC-WMI-2ndF55 |  | Laying concealed/exposed refrigerant piping | 30d | 2028-06-16 | 2028-07-21 | CC-WMI-2ndF50, E-GFC-MEP-CC-200 | CSD-LKO Calender (6 day + Holiday)-25 | Physical Progress [7120 h]; HVAC [189581 INR]; TATA Projects Ltd-25 | 189,581 |
| CC-WMI-2ndF60 |  | Laying concealed/exposed drain piping | 30d | 2028-06-16 | 2028-07-21 | CC-WMI-2ndF50, E-GFC-MEP-CC-200 | CSD-LKO Calender (6 day + Holiday)-25 | Physical Progress [4750 h]; HVAC [1137488 INR]; TATA Projects Ltd-25 | 1,137,488 |

| ID | WBS | Activity | Duration | Start | Finish | Predecessors | Calendar | Resources | Cost |
| --- | --- | --- | --- | --- | --- | --- | --- | --- | --- |
|  | 2 | **2nd Fix** |  | 2028-06-16 | 2028-11-21 |  |  |  |  |
| CC-WMI-2ndF65 |  | Duct installation | 35d | 2028-06-16 | 2028-07-27 | CC-WMI-2ndF50 | CSD-LKO Calender (6 day + Holiday)-25 | Physical Progress [7120 h]; HVAC [2843719 INR]; TATA Projects Ltd-25 | 2,843,719 |
| CC-WMI-2ndF70 |  | Insulation of ducts (thermal/acoustic) | 10d | 2028-07-27 | 2028-08-08 | CC-WMI-2ndF65 | CSD-LKO Calender (6 day + Holiday)-25 | Physical Progress [2850 h]; HVAC [1706231 INR]; TATA Projects Ltd-25 | 1,706,231 |
| CC-WMI-2ndF75 |  | Installation of chilled water piping / VRF piping | 20d | 2028-08-08 | 2028-09-02 | CC-WMI-2ndF70 | CSD-LKO Calender (6 day + Holiday)-25 | Physical Progress [2850 h]; HVAC [3791626 INR]; TATA Projects Ltd-25 | 3,791,626 |
| CC-WMI-2ndF195 |  | Installation of indoor units including AHU, FCU | 45d | 2028-09-02 | 2028-10-28 | CC-WMI-2ndF75, CC-WMI-2ndF55, CC-WMI-2ndF60 | CSD-LKO Calender (6 day + Holiday)-25 | Physical Progress [21350 h]; HVAC [3412463 INR]; TATA Projects Ltd-25 | 3,412,463 |
| CC-WMI-2ndF80 |  | Connecting refrigerant and drain piping to indoor units | 20d | 2028-10-28 | 2028-11-21 | CC-WMI-2ndF195 | CSD-LKO Calender (6 day + Holiday)-25 | Physical Progress [2850 h]; HVAC [947906 INR]; TATA Projects Ltd-25 | 947,906 |
|  | 1 | **Electrical** |  | 2028-01-18 | 2028-09-26 |  |  |  |  |
|  | 1 | **1st Fix** |  | 2028-01-18 | 2028-04-17 |  |  |  |  |
| CC-WMI-2ndF390 |  | Slab Conduiting | 35d | 2028-01-18 | 2028-02-29 | CC-WMI-2ndF10, E-GFC-MEP-CC-200 | CSD-LKO Calender (6 day + Holiday)-25 | Physical Progress [11860 h]; Electrical [2122199 INR]; TATA Projects Ltd-25 | 2,122,199 |
| CC-WMI-2ndF25 |  | Wall Conduiting | 10d | 2028-03-29 | 2028-04-10 | CC-WMI-2ndF15, E-GFC-MEP-CC-200 | CSD-LKO Calender (6 day + Holiday)-25 | Physical Progress [4750 h]; Electrical [1061100 INR]; TATA Projects Ltd-25 | 1,061,100 |
| CC-WMI-2ndF45 |  | Installing back boxes for switches, sockets | 5d | 2028-04-10 | 2028-04-17 | CC-WMI-2ndF25, CC-WMI-2ndF390, E-GFC-MEP-CC-200 | CSD-LKO Calender (6 day + Holiday)-25 | Physical Progress [2370 h]; Electrical [636660 INR]; TATA Projects Ltd-25 | 636,660 |
|  | 2 | **2nd Fix** |  | 2028-04-28 | 2028-09-26 |  |  |  |  |
| CC-WMI-2ndF30 |  | Cable tray laying | 25d | 2028-04-28 | 2028-05-30 | CC-WMI-2ndF20 | CSD-LKO Calender (6 day + Holiday)-25 | Physical Progress [11860 h]; Electrical [848880 INR]; TATA Projects Ltd-25 | 848,880 |
| CC-WMI-2ndF35 |  | Cabling & Wire Pulling | 45d | 2028-05-30 | 2028-07-21 | CC-WMI-2ndF30 | CSD-LKO Calender (6 day + Holiday)-25 | Physical Progress [21350 h]; Electrical [4244398 INR]; TATA Projects Ltd-25 | 4,244,398 |
| CC-WMI-2ndF395 |  | Floor Rising Main Installation | 20d | 2028-07-21 | 2028-08-14 | CC-WMI-2ndF35 | CSD-LKO Calender (6 day + Holiday)-25 | Physical Progress [2370 h]; Electrical [2971079 INR]; TATA Projects Ltd-25 | 2,971,079 |
| CC-WMI-2ndF40 |  | DB fixing and connecting | 20d | 2028-07-21 | 2028-08-14 | CC-WMI-2ndF35 | CSD-LKO Calender (6 day + Holiday)-25 | Physical Progress [7120 h]; Electrical [636660 INR]; TATA Projects Ltd-25 | 636,660 |
| CC-WMI-2ndF205 |  | Floor/Distribution Panel Installation | 20d | 2028-08-14 | 2028-09-08 | CC-WMI-2ndF40 | CSD-LKO Calender (6 day + Holiday)-25 | Physical Progress [2370 h]; Electrical [1697759 INR]; TATA Projects Ltd-25 | 1,697,759 |
| CC-WMI-2ndF210 |  | Equipment Earthing | 15d | 2028-09-08 | 2028-09-26 | CC-WMI-2ndF205, CC-WMI-2ndF395 | CSD-LKO Calender (6 day + Holiday)-25 | Physical Progress [4750 h]; Electrical [636660 INR]; TATA Projects Ltd-25 | 636,660 |
|  | 3 | **Plumbing** |  | 2028-03-29 | 2028-11-21 |  |  |  |  |
|  | 1 | **1st Fix** |  | 2028-03-29 | 2028-09-02 |  |  |  |  |
| CC-WMI-2ndF95 |  | Fixing pipe supports and clamps | 35d | 2028-03-29 | 2028-05-12 | CC-WMI-2ndF15, E-GFC-MEP-CC-200 | CSD-LKO Calender (6 day + Holiday)-25 | Physical Progress [4750 h]; Plumbing [682120 INR]; TATA Projects Ltd-25 | 682,120 |
| CC-WMI-2ndF85 |  | Laying water supply pipes (hot & cold) | 35d | 2028-05-12 | 2028-06-22 | CC-WMI-2ndF95, E-GFC-MEP-CC-200 | CSD-LKO Calender (6 day + Holiday)-25 | Physical Progress [7120 h]; Plumbing [1364241 INR]; TATA Projects Ltd-25 | 1,364,241 |
| CC-WMI-2ndF90 |  | Laying drainage pipes (soil, waste, vent) | 35d | 2028-05-12 | 2028-06-22 | CC-WMI-2ndF95, E-GFC-MEP-CC-200 | CSD-LKO Calender (6 day + Holiday)-25 | Physical Progress [7120 h]; Plumbing [1364241 INR]; TATA Projects Ltd-25 | 1,364,241 |
| CC-WMI-2ndF115 |  | Installation of plumbing fixture base supports (WC frames, sink brackets) | 30d | 2028-06-22 | 2028-07-27 | CC-WMI-2ndF90, E-GFC-MEP-CC-200 | CSD-LKO Calender (6 day + Holiday)-25 | Physical Progress [2850 h]; Plumbing [682120 INR]; TATA Projects Ltd-25 | 682,120 |
| CC-WMI-2ndF100 |  | Pressure testing of water supply lines | 25d | 2028-07-27 | 2028-08-28 | CC-WMI-2ndF85, CC-WMI-2ndF90, CC-WMI-2ndF115, E-GFC-MEP-CC-200 | CSD-LKO Calender (6 day + Holiday)-25 | Physical Progress [3320 h]; Plumbing [136424 INR]; TATA Projects Ltd-25 | 136,424 |
| CC-WMI-2ndF400 |  | Installation of concealed parts of toilet fixtures | 30d | 2028-07-27 | 2028-09-02 | CC-WMI-2ndF115, E-GFC-MEP-CC-200 | CSD-LKO Calender (6 day + Holiday)-25 | Physical Progress [4750 h]; Plumbing [682120 INR]; TATA Projects Ltd-25 | 682,120 |

| ID | WBS | Activity | Duration | Start | Finish | Predecessors | Calendar | Resources | Cost |
| --- | --- | --- | --- | --- | --- | --- | --- | --- | --- |
|  | 2 | **2nd FIx** |  | 2028-08-28 | 2028-11-21 |  |  |  |  |
| CC-WMI-2ndF125 |  | Insulation of hot water pipes (if applicable) | 30d | 2028-08-28 | 2028-10-04 | CC-WMI-2ndF100 | CSD-LKO Calender (6 day + Holiday)-25 | Physical Progress [2850 h]; Plumbing [682120 INR]; TATA Projects Ltd-25 | 682,120 |
| CC-WMI-2ndF105 |  | Installation of vertical risers and main distribution lines | 35d | 2028-09-02 | 2028-10-16 | CC-WMI-2ndF20, CC-WMI-2ndF100, CC-WMI-2ndF400 | CSD-LKO Calender (6 day + Holiday)-25 | Physical Progress [9490 h]; Plumbing [1364241 INR]; TATA Projects Ltd-25 | 1,364,241 |
| CC-WMI-2ndF120 |  | Testing drainage lines for leakage/blockage | 30d | 2028-10-04 | 2028-11-09 | CC-WMI-2ndF115, CC-WMI-2ndF125 | CSD-LKO Calender (6 day + Holiday)-25 | Physical Progress [2850 h]; Plumbing [136424 INR]; TATA Projects Ltd-25 | 136,424 |
| CC-WMI-2ndF110 |  | Fixing floor traps and gully traps | 30d | 2028-10-16 | 2028-11-21 | CC-WMI-2ndF105 | CSD-LKO Calender (6 day + Holiday)-25 | Physical Progress [2850 h]; Plumbing [409272 INR]; TATA Projects Ltd-25 | 409,272 |
|  | 4 | **Firefighting** |  | 2028-03-29 | 2028-10-23 |  |  |  |  |
|  | 1 | **1st Fix** |  | 2028-03-29 | 2028-07-27 |  |  |  |  |
| CC-WMI-2ndF135 |  | Fixing pipe supports and hangers | 35d | 2028-03-29 | 2028-05-12 | CC-WMI-2ndF15, E-GFC-MEP-CC-200 | CSD-LKO Calender (6 day + Holiday)-25 | Physical Progress [4750 h]; Firefighting [497018 INR]; TATA Projects Ltd-25 | 497,018 |
| CC-WMI-2ndF130 |  | Laying branch piping | 35d | 2028-05-12 | 2028-06-22 | CC-WMI-2ndF135, E-GFC-MEP-CC-200 | CSD-LKO Calender (6 day + Holiday)-25 | Physical Progress [7120 h]; Firefighting [1065039 INR]; TATA Projects Ltd-25 | 1,065,039 |
| CC-WMI-2ndF140 |  | Hydrostatic pressure testing of piping | 30d | 2028-06-22 | 2028-07-27 | CC-WMI-2ndF130, E-GFC-MEP-CC-200 | CSD-LKO Calender (6 day + Holiday)-25 | Physical Progress [2850 h]; Firefighting [142005 INR]; TATA Projects Ltd-25 | 142,005 |
|  | 2 | **2nd Fix** |  | 2028-07-27 | 2028-10-23 |  |  |  |  |
| CC-WMI-2ndF145 |  | Installation of vertical risers and distribution piping in shafts | 35d | 2028-07-27 | 2028-09-08 | CC-WMI-2ndF20, CC-WMI-2ndF140 | CSD-LKO Calender (6 day + Holiday)-25 | Physical Progress [11860 h]; Firefighting [1420052 INR]; TATA Projects Ltd-25 | 1,420,052 |
| CC-WMI-2ndF155 |  | Painting/insulation of exposed fire pipes | 30d | 2028-07-27 | 2028-09-02 | CC-WMI-2ndF140 | CSD-LKO Calender (6 day + Holiday)-25 | Physical Progress [4750 h]; Firefighting [71003 INR]; TATA Projects Ltd-25 | 71,003 |
| CC-WMI-2ndF160 |  | Testing risers and branch lines for leakage | 30d | 2028-09-02 | 2028-10-10 | CC-WMI-2ndF155 | CSD-LKO Calender (6 day + Holiday)-25 | Physical Progress [2850 h]; Firefighting [142005 INR]; TATA Projects Ltd-25 | 142,005 |
| CC-WMI-2ndF150 |  | Installation of sprinkler branch lines in ceilings | 35d | 2028-09-08 | 2028-10-23 | CC-WMI-2ndF145 | CSD-LKO Calender (6 day + Holiday)-25 | Physical Progress [11860 h]; Firefighting [1065039 INR]; TATA Projects Ltd-25 | 1,065,039 |
|  | 5 | **ELV** |  | 2028-01-18 | 2028-11-21 |  |  |  |  |
|  | 1 | **1st Fix** |  | 2028-01-18 | 2028-04-17 |  |  |  |  |
| CC-WMI-2ndF385 |  | Slab Conduiting | 35d | 2028-01-18 | 2028-02-29 | CC-WMI-2ndF10, E-GFC-MEP-CC-200 | CSD-LKO Calender (6 day + Holiday)-25 | Physical Progress [11860 h]; ELV [398847 INR]; TATA Projects Ltd-25 | 398,847 |
| CC-WMI-2ndF165 |  | Wall Conduiting | 10d | 2028-03-29 | 2028-04-10 | CC-WMI-2ndF15, E-GFC-MEP-CC-200 | CSD-LKO Calender (6 day + Holiday)-25 | Physical Progress [4750 h]; ELV [170935 INR]; TATA Projects Ltd-25 | 170,935 |
| CC-WMI-2ndF185 |  | Installing back boxes for switches, sockets | 5d | 2028-04-10 | 2028-04-17 | CC-WMI-2ndF165, CC-WMI-2ndF385, E-GFC-MEP-CC-200 | CSD-LKO Calender (6 day + Holiday)-25 | Physical Progress [2370 h]; ELV [284891 INR]; TATA Projects Ltd-25 | 284,891 |
|  | 2 | **2nd Fix** |  | 2028-04-28 | 2028-11-21 |  |  |  |  |
| CC-WMI-2ndF170 |  | Cable tray installation | 35d | 2028-04-28 | 2028-06-10 | CC-WMI-2ndF20 | CSD-LKO Calender (6 day + Holiday)-25 | Physical Progress [11860 h]; ELV [284891 INR]; TATA Projects Ltd-25 | 284,891 |
| CC-WMI-2ndF175 |  | Cabeling of ELV cable - IT/Fire Alarm/Public Address | 45d | 2028-06-10 | 2028-08-02 | CC-WMI-2ndF170 | CSD-LKO Calender (6 day + Holiday)-25 | Physical Progress [21350 h]; ELV [683738 INR]; TATA Projects Ltd-25 | 683,738 |
| CC-WMI-2ndF215 |  | ELV Rack Installation | 30d | 2028-08-02 | 2028-09-08 | CC-WMI-2ndF175 | CSD-LKO Calender (6 day + Holiday)-25 | Physical Progress [4750 h]; ELV [284891 INR]; TATA Projects Ltd-25 | 284,891 |
| CC-WMI-2ndF180 |  | Termination of cables at junction boxes, patch panels, and control panels | 35d | 2028-09-08 | 2028-10-23 | CC-WMI-2ndF215 | CSD-LKO Calender (6 day + Holiday)-25 | Physical Progress [14240 h]; ELV [284891 INR]; TATA Projects Ltd-25 | 284,891 |
| CC-WMI-2ndF190 |  | Fixing devices like CCTV camera bases, card reader bases, smoke detector bases, PA Bases, Wifi Bases | 25d | 2028-10-23 | 2028-11-21 | CC-WMI-2ndF180 | CSD-LKO Calender (6 day + Holiday)-25 | Physical Progress [1900 h]; ELV [569782 INR]; TATA Projects Ltd-25 | 569,782 |

| ID | WBS | Activity | Duration | Start | Finish | Predecessors | Calendar | Resources | Cost |
| --- | --- | --- | --- | --- | --- | --- | --- | --- | --- |
|  | 2 | **Dry Finishes/ID Works** |  | 2028-11-21 | 2029-05-11 |  |  |  |  |
| CC-WMI-2ndF380 |  | Running of Wild Air | 1d | 2028-11-21 | 2028-11-22 | CC-F-(3rdM-Terrace)55, CC-WMI-2ndF65, CC-WMI-2ndF70, CC-WMI-2ndF75, CC-WMI-2ndF195, CC-WMI-2ndF80 | CSD-LKO Calender (6 day + Holiday)-25 | Physical Progress [470 h]; TATA Projects Ltd-25 |  |
| CC-WMI-2ndF325 |  | Wall finish ID Works | 35d | 2028-11-22 | 2029-01-04 | CC-WMI-2ndF380, CC-WMI-2ndF30, CC-WMI-2ndF35, CC-WMI-2ndF40, CC-WMI-2ndF395, CC-WMI-2ndF205, CC-WMI-2ndF210, CC-WMI-2ndF125, CC-WMI-2ndF105, CC-WMI-2ndF120, CC-WMI-2ndF110, CC-WMI-2ndF145, CC-WMI-2ndF155, CC-WMI-2ndF160, CC-WMI-2ndF150, CC-WMI-2ndF170, CC-WMI-2ndF175, CC-WMI-2ndF215, CC-WMI-2ndF180, CC-WMI-2ndF190 | CSD-LKO Calender (6 day + Holiday)-25 | ID Work [9755265 INR]; Physical Progress [4750 h]; TATA Projects Ltd-25 | 9,755,265 |
| CC-WMI-2ndF320 |  | False Ceiling Installation | 30d | 2029-01-04 | 2029-02-09 | CC-WMI-2ndF325 | CSD-LKO Calender (6 day + Holiday)-25 | ID Work [11706318 INR]; Physical Progress [7120 h]; TATA Projects Ltd-25 | 11,706,318 |
| CC-WMI-2ndF365 |  | Flooring | 20d | 2029-02-09 | 2029-03-07 | CC-WMI-2ndF320 | CSD-LKO Calender (6 day + Holiday)-25 | ID Work [9755265 INR]; Physical Progress [9490 h]; TATA Projects Ltd-25 | 9,755,265 |
| CC-WMI-2ndF375 |  | Flooring of toilets/kitchen/Balcony | 10d | 2029-02-09 | 2029-02-22 | CC-WMI-2ndF320, CC-WMI-2ndF220 | CSD-LKO Calender (6 day + Holiday)-25 | ID Work [7804212 INR]; Physical Progress [4750 h]; TATA Projects Ltd-25 | 7,804,212 |
| CC-WMI-2ndF330 |  | Doors & Windows/Fire Doors/Shaft Doors | 35d | 2029-02-22 | 2029-04-06 | CC-WMI-2ndF325, CC-WMI-2ndF375 | CSD-LKO Calender (6 day + Holiday)-25 | ID Work [9755265 INR]; Physical Progress [4750 h]; TATA Projects Ltd-25 | 9,755,265 |
| CC-WMI-2ndF350 |  | Putty & First Coat of Paint | 10d | 2029-02-22 | 2029-03-07 | CC-WMI-2ndF325, CC-WMI-2ndF375 | CSD-LKO Calender (6 day + Holiday)-25 | Painting [4536 Sq m]; Painter [4540 h]; Helper [4540 h]; Physical Progress [4750 h]; TATA Projects Ltd-25 | 1,037,020.32 |
| CC-WMI-2ndF340 |  | Fixed Furniture | 8d | 2029-03-07 | 2029-03-16 | CC-WMI-2ndF365 | CSD-LKO Calender (6 day + Holiday)-25 | ID Work [8779739 INR]; Physical Progress [3800 h]; TATA Projects Ltd-25 | 8,779,739 |
| CC-WMI-2ndF370 |  | Railing for staircase | 35d | 2029-03-07 | 2029-04-18 | CC-WMI-2ndF325, CC-WMI-2ndF350 | CSD-LKO Calender (6 day + Holiday)-25 | ID Work [2926580 INR]; Physical Progress [7120 h]; TATA Projects Ltd-25 | 2,926,580 |
| CC-WMI-2ndF360 |  | False ceiling final finishes | 10d | 2029-04-12 | 2029-04-25 | CC-WMI-2ndF235 | CSD-LKO Calender (6 day + Holiday)-25 | ID Work [2926580 INR]; Physical Progress [4750 h]; TATA Projects Ltd-25 | 2,926,580 |
| CC-WMI-2ndF355 |  | Final coat of paint | 10d | 2029-04-25 | 2029-05-08 | CC-WMI-2ndF360, CC-WMI-2ndF370, CC-WMI-2ndF340, CC-WMI-2ndF225, CC-WMI-2ndF255, CC-WMI-2ndF260, CC-WMI-2ndF275, CC-WMI-2ndF300, CC-WMI-2ndF315, CC-WMI-2ndF310, CC-WMI-2ndF305, CC-WMI-2ndF285, CC-WMI-2ndF280, CC-WMI-2ndF330, CC-WMI-2ndF265 | CSD-LKO Calender (6 day + Holiday)-25 | Painting [4536 Sq m]; Painter [4540 h]; Helper [4540 h]; Physical Progress [4750 h]; TATA Projects Ltd-25 | 1,037,020.32 |
| CC-WMI-2ndF335 |  | Soft Furnishing & Signage | 3d | 2029-05-08 | 2029-05-11 | CC-WMI-2ndF355 | CSD-LKO Calender (6 day + Holiday)-25 | ID Work [14632898 INR]; Physical Progress [1420 h]; TATA Projects Ltd-25 | 14,632,898 |
| CC-WMI-2ndF345 |  | Loose Furniture | 3d | 2029-05-08 | 2029-05-11 | CC-WMI-2ndF355 | CSD-LKO Calender (6 day + Holiday)-25 | ID Work [19510530 INR]; Physical Progress [1420 h]; TATA Projects Ltd-25 | 19,510,530 |
|  | 3 | **MEP Final Fix** |  | 2029-02-09 | 2029-04-16 |  |  |  |  |
|  | 3 | **HVAC** |  | 2029-02-09 | 2029-04-12 |  |  |  |  |
| CC-WMI-2ndF240 |  | Installing grills, diffusers, dampers | 25d | 2029-02-09 | 2029-03-13 | CC-WMI-2ndF320 | CSD-LKO Calender (6 day + Holiday)-25 | Physical Progress [2850 h]; HVAC [1895813 INR]; TATA Projects Ltd-25 | 1,895,813 |
| CC-WMI-2ndF235 |  | Installation of thermostats and control panels | 25d | 2029-03-13 | 2029-04-12 | CC-WMI-2ndF240, CC-WMI-2ndF350, CC-WMI-2ndF80 | CSD-LKO Calender (6 day + Holiday)-25 | Physical Progress [2850 h]; HVAC [947906 INR]; TATA Projects Ltd-25 | 947,906 |
|  | 1 | **Electrical** |  | 2029-03-07 | 2029-04-09 |  |  |  |  |
| CC-WMI-2ndF230 |  | Switches & Socket | 12d | 2029-03-07 | 2029-03-21 | CC-WMI-2ndF350 | CSD-LKO Calender (6 day + Holiday)-25 | Physical Progress [9490 h]; Electrical [2122199 INR]; TATA Projects Ltd-25 | 2,122,199 |
| CC-WMI-2ndF225 |  | Light Fixtures | 15d | 2029-03-21 | 2029-04-09 | CC-WMI-2ndF230, CC-WMI-2ndF210 | CSD-LKO Calender (6 day + Holiday)-25 | Physical Progress [7120 h]; Electrical [3183299 INR]; TATA Projects Ltd-25 | 3,183,299 |
|  | 2 | **Plumbing** |  | 2029-03-07 | 2029-04-16 |  |  |  |  |
| CC-WMI-2ndF245 |  | Installation of sanitary fixtures (WC, washbasins, urinals, sinks) | 10d | 2029-03-07 | 2029-03-19 | CC-WMI-2ndF350, CC-WMI-2ndF120, CC-WMI-2ndF110 | CSD-LKO Calender (6 day + Holiday)-25 | Physical Progress [4750 h]; Plumbing [2728481 INR]; TATA Projects Ltd-25 | 2,728,481 |
| CC-WMI-2ndF250 |  | Installation of CP fittings (taps, mixers, showers, health faucets) | 10d | 2029-03-19 | 2029-03-31 | CC-WMI-2ndF245, CC-WMI-2ndF350 | CSD-LKO Calender (6 day + Holiday)-25 | Physical Progress [4750 h]; Plumbing [1364241 INR]; TATA Projects Ltd-25 | 1,364,241 |
| CC-WMI-2ndF255 |  | Connection of appliances | 13d | 2029-03-31 | 2029-04-16 | CC-WMI-2ndF250 | CSD-LKO Calender (6 day + Holiday)-25 | Physical Progress [3320 h]; Plumbing [682120 INR]; TATA Projects Ltd-25 | 682,120 |

| ID | WBS | Activity | Duration | Start | Finish | Predecessors | Calendar | Resources | Cost |
| --- | --- | --- | --- | --- | --- | --- | --- | --- | --- |
|  | 4 | **Firefighting** |  | 2029-03-07 | 2029-04-16 |  |  |  |  |
| CC-WMI-2ndF260 |  | Installation of sprinkler heads, nozzles, and final alignment | 30d | 2029-03-07 | 2029-04-12 | CC-WMI-2ndF350, CC-WMI-2ndF365, CC-WMI-2ndF160, CC-WMI-2ndF150 | CSD-LKO Calender (6 day + Holiday)-25 | Physical Progress [18980 h]; Firefighting [1065039 INR]; TATA Projects Ltd-25 | 1,065,039 |
| CC-WMI-2ndF265 |  | Installation of hydrant accessories (valves, hose reels, cabinets) | 20d | 2029-03-07 | 2029-03-31 | CC-WMI-2ndF350 | CSD-LKO Calender (6 day + Holiday)-25 | Physical Progress [4750 h]; Firefighting [710026 INR]; TATA Projects Ltd-25 | 710,026 |
| CC-WMI-2ndF270 |  | Installation of portable fire extinguishers | 18d | 2029-03-07 | 2029-03-28 | CC-WMI-2ndF350, CC-WMI-2ndF365 | CSD-LKO Calender (6 day + Holiday)-25 | Physical Progress [2850 h]; Firefighting [71003 INR]; TATA Projects Ltd-25 | 71,003 |
| CC-WMI-2ndF275 |  | Integration with fire alarm system | 15d | 2029-03-28 | 2029-04-16 | CC-WMI-2ndF270 | CSD-LKO Calender (6 day + Holiday)-25 | Physical Progress [7120 h]; Firefighting [355013 INR]; TATA Projects Ltd-25 | 355,013 |
|  | 5 | **ELV** |  | 2029-03-07 | 2029-04-12 |  |  |  |  |
| CC-WMI-2ndF280 |  | Installation of data and Voice Faceplate | 25d | 2029-03-07 | 2029-04-06 | CC-WMI-2ndF350, CC-WMI-2ndF190 | CSD-LKO Calender (6 day + Holiday)-25 | Physical Progress [4750 h]; ELV [284891 INR]; TATA Projects Ltd-25 | 284,891 |
| CC-WMI-2ndF285 |  | Installation of Camera & Wifi | 30d | 2029-03-07 | 2029-04-12 | CC-WMI-2ndF350 | CSD-LKO Calender (6 day + Holiday)-25 | Physical Progress [4750 h]; ELV [284891 INR]; TATA Projects Ltd-25 | 284,891 |
| CC-WMI-2ndF290 |  | Installation of fire alarm devices + Public Address | 10d | 2029-03-07 | 2029-03-19 | CC-WMI-2ndF350 | CSD-LKO Calender (6 day + Holiday)-25 | Physical Progress [4750 h]; ELV [341869 INR]; TATA Projects Ltd-25 | 341,869 |
| CC-WMI-2ndF295 |  | Installation of Active System | 10d | 2029-03-19 | 2029-03-31 | CC-WMI-2ndF290 | CSD-LKO Calender (6 day + Holiday)-25 | Physical Progress [4750 h]; ELV [569782 INR]; TATA Projects Ltd-25 | 569,782 |
| CC-WMI-2ndF305 |  | Fire Panel Intallation & Integration | 15d | 2029-03-19 | 2029-04-06 | CC-WMI-2ndF290 | CSD-LKO Calender (6 day + Holiday)-25 | Physical Progress [7120 h]; ELV [284891 INR]; TATA Projects Ltd-25 | 284,891 |
| CC-WMI-2ndF310 |  | Installation & Integration of Audio Visual System | 15d | 2029-03-19 | 2029-04-06 | CC-WMI-2ndF290 | CSD-LKO Calender (6 day + Holiday)-25 | Physical Progress [7120 h]; ELV [284891 INR]; TATA Projects Ltd-25 | 284,891 |
| CC-WMI-2ndF315 |  | Installation & Integration of Access Control | 15d | 2029-03-19 | 2029-04-06 | CC-WMI-2ndF290 | CSD-LKO Calender (6 day + Holiday)-25 | Physical Progress [7120 h]; ELV [284891 INR]; TATA Projects Ltd-25 | 284,891 |
| CC-WMI-2ndF300 |  | Integration of Active components | 10d | 2029-03-31 | 2029-04-12 | CC-WMI-2ndF295 | CSD-LKO Calender (6 day + Holiday)-25 | Physical Progress [4750 h]; ELV [113956 INR]; TATA Projects Ltd-25 | 113,956 |
|  | 13 | **Structural Steel works for Facade** |  | 2027-11-24 | 2028-04-06 |  |  |  |  |
| CC-F-SS10 |  | GF to First Mezzanine | 35d | 2027-11-24 | 2028-01-06 | SSF15, CC-SS-2ndF.105 |  | Physical Progress [187500 h]; TATA Projects Ltd-25 |  |
| CC-F-SS15 |  | First Mezzanine to Third Mezzanine | 45d | 2028-01-06 | 2028-03-01 | CC-F-SS10 |  | Physical Progress [156250 h]; TATA Projects Ltd-25 |  |
| CC-F-SS20 |  | Third Mezzanine to Terrace | 30d | 2028-03-01 | 2028-04-06 | CC-F-SS15, CC-SS-Roof35 FF+14d, SSF20 FF+30d |  | Physical Progress [156250 h]; TATA Projects Ltd-25 |  |
|  | 5 | **Facade** |  | 2027-12-11 | 2028-11-24 |  |  |  |  |
|  | 1 | **GF to First Mezzanine** |  | 2027-12-11 | 2028-04-25 |  |  |  |  |
|  | 1 | **North Elevation** |  | 2027-12-11 | 2028-04-25 |  |  |  |  |
| CC-F-GF25 |  | Integration of Services Before Facade | 10d | 2027-12-11 | 2027-12-23 | CC-SS-2ndF.175, CC-SS-2ndF.115, CC-SS-2ndF.55 |  | Facade [385091 INR]; Physical Progress [14140 h]; TATA Projects Ltd-25 | 385,091 |
| CC-F-GF10 |  | Fixing of Facade Support | 30d | 2028-01-06 | 2028-02-11 | CC-F-GF25 SS+2d, SSF15, CC-F-SS10, P-F-Glass-15 |  | Facade [1925454 INR]; Physical Progress [56550 h]; TATA Projects Ltd-25 | 1,925,454 |
| CC-F-GF15 |  | Fixing of Facade | 30d | 2028-02-11 | 2028-03-20 | CC-F-GF10 |  | Facade [4621089 INR]; Physical Progress [42410 h]; TATA Projects Ltd-25 | 4,621,089 |
| CC-F-GF20 |  | Integration of Services After Facade | 30d | 2028-03-20 | 2028-04-25 | CC-F-GF15 |  | Facade [770182 INR]; Physical Progress [21200 h]; TATA Projects Ltd-25 | 770,182 |

| ID | WBS | Activity | Duration | Start | Finish | Predecessors | Resources | Cost |
| --- | --- | --- | --- | --- | --- | --- | --- | --- |
|  | 2 | **South Elevation** |  | 2027-12-23 | 2028-04-15 |  |  |  |
| CC-F-GF45 |  | Integration of Services Before Facade | 10d | 2027-12-23 | 2028-01-06 | CC-F-GF25 | Facade [385091 INR]; Physical Progress [14140 h]; TATA Projects Ltd-25 | 385,091 |
| CC-F-GF30 |  | Fixing of Facade Support | 30d | 2027-12-27 | 2028-02-02 | CC-F-GF45 SS+2d | Facade [1925454 INR]; Physical Progress [56550 h]; TATA Projects Ltd-25 | 1,925,454 |
| CC-F-GF35 |  | Fixing of Facade | 30d | 2028-02-02 | 2028-03-09 | CC-F-GF30 | Facade [4621089 INR]; Physical Progress [56550 h]; TATA Projects Ltd-25 | 4,621,089 |
| CC-F-GF40 |  | Integration of Services After Facade | 30d | 2028-03-09 | 2028-04-15 | CC-F-GF35 | Facade [770182 INR]; Physical Progress [21200 h]; TATA Projects Ltd-25 | 770,182 |
|  | 3 | **East & West Elevation** |  | 2028-01-06 | 2028-04-21 |  |  |  |
| CC-F-GF65 |  | Integration of Services Before Facade | 10d | 2028-01-06 | 2028-01-18 | CC-F-GF45 | Facade [246458 INR]; Physical Progress [14140 h]; TATA Projects Ltd-25 | 246,458 |
| CC-F-GF50 |  | Fixing of Facade Support | 25d | 2028-01-08 | 2028-02-08 | CC-F-GF65 SS+2d | Facade [1232290 INR]; Physical Progress [56550 h]; TATA Projects Ltd-25 | 1,232,290 |
| CC-F-GF55 |  | Fixing of Facade | 30d | 2028-02-08 | 2028-03-16 | CC-F-GF50 | Facade [2957497 INR]; Physical Progress [56550 h]; TATA Projects Ltd-25 | 2,957,497 |
| CC-F-GF60 |  | Integration of Services After Facade | 30d | 2028-03-16 | 2028-04-21 | CC-F-GF55 | Facade [492916 INR]; Physical Progress [21200 h]; TATA Projects Ltd-25 | 492,916 |
|  | 2 | **First Mezzanine to Third Mezzanine** |  | 2028-03-20 | 2028-08-14 |  |  |  |
|  | 1 | **North Elevation** |  | 2028-03-20 | 2028-07-31 |  |  |  |
| CC-F-(1stM-3rdM)25 |  | Integration of Services Before Facade | 10d | 2028-03-20 | 2028-03-31 | CC-F-GF15 | Facade [1377440 INR]; Physical Progress [14140 h]; TATA Projects Ltd-25 | 1,377,440 |
| CC-F-(1stM-3rdM)10 |  | Fixing of Facade Support | 35d | 2028-03-22 | 2028-05-05 | CC-F-(1stM-3rdM)25 SS+2d, CC-F-SS15 | Facade [6887200 INR]; Physical Progress [53720 h]; TATA Projects Ltd-25 | 6,887,200 |
| CC-F-(1stM-3rdM)15 |  | Fixing of Facade | 40d | 2028-05-05 | 2028-06-21 | CC-F-(1stM-3rdM)10 | Facade [16529281 INR]; Physical Progress [56550 h]; TATA Projects Ltd-25 | 16,529,281 |
| CC-F-(1stM-3rdM)20 |  | Integration of Services After Facade | 30d | 2028-06-21 | 2028-07-31 | CC-F-(1stM-3rdM)15 | Facade [2754880 INR]; Physical Progress [21200 h]; TATA Projects Ltd-25 | 2,754,880 |
|  | 2 | **South Elevation** |  | 2028-03-31 | 2028-08-14 |  |  |  |
| CC-F-(1stM-3rdM)45 |  | Integration of Services Before Facade | 10d | 2028-03-31 | 2028-04-12 | CC-F-(1stM-3rdM)25, CC-F-GF35 | Facade [1377440 INR]; Physical Progress [14140 h]; TATA Projects Ltd-25 | 1,377,440 |
| CC-F-(1stM-3rdM)30 |  | Fixing of Facade Support | 35d | 2028-04-03 | 2028-05-17 | CC-F-(1stM-3rdM)45 SS+2d | Facade [6887200 INR]; Physical Progress [53720 h]; TATA Projects Ltd-25 | 6,887,200 |
| CC-F-(1stM-3rdM)35 |  | Fixing of Facade | 40d | 2028-05-17 | 2028-07-03 | CC-F-(1stM-3rdM)30 | Facade [16529281 INR]; Physical Progress [56550 h]; TATA Projects Ltd-25 | 16,529,281 |
| CC-F-(1stM-3rdM)40 |  | Integration of Services After Facade | 30d | 2028-07-03 | 2028-08-14 | CC-F-(1stM-3rdM)35 | Facade [2754880 INR]; Physical Progress [21200 h]; TATA Projects Ltd-25 | 2,754,880 |
|  | 3 | **East & West Elevation** |  | 2028-04-12 | 2028-08-07 |  |  |  |
| CC-F-(1stM-3rdM)65 |  | Integration of Services Before Facade | 10d | 2028-04-12 | 2028-04-25 | CC-F-(1stM-3rdM)45, CC-F-GF55 | Facade [881562 INR]; Physical Progress [14140 h]; TATA Projects Ltd-25 | 881,562 |
| CC-F-(1stM-3rdM)50 |  | Fixing of Facade Support | 30d | 2028-04-15 | 2028-05-23 | CC-F-(1stM-3rdM)65 SS+2d | Facade [4407808 INR]; Physical Progress [42410 h]; TATA Projects Ltd-25 | 4,407,808 |
| CC-F-(1stM-3rdM)55 |  | Fixing of Facade | 30d | 2028-05-23 | 2028-06-27 | CC-F-(1stM-3rdM)50 | Facade [10578740 INR]; Physical Progress [42410 h]; TATA Projects Ltd-25 | 10,578,740 |
| CC-F-(1stM-3rdM)60 |  | Integration of Services After Facade | 30d | 2028-06-27 | 2028-08-07 | CC-F-(1stM-3rdM)55 | Facade [1763123 INR]; Physical Progress [21200 h]; TATA Projects Ltd-25 | 1,763,123 |

| ID | WBS | Activity | Duration | Start | Finish | Predecessors | Resources | Cost |
| --- | --- | --- | --- | --- | --- | --- | --- | --- |
|  | 3 | **Third Mezzanine - Terrace** |  | 2028-06-21 | 2028-11-24 |  |  |  |
|  | 1 | **North Elevation** |  | 2028-06-21 | 2028-11-13 |  |  |  |
| CC-F-(3rdM-Terrace)25 |  | Integration of Services Before Facade | 10d | 2028-06-21 | 2028-07-03 | CC-F-(1stM-3rdM)15 | Facade [1574923 INR]; Physical Progress [14140 h]; TATA Projects Ltd-25 | 1,574,923 |
| CC-F-(3rdM-Terrace)10 |  | Fixing of Facade Support | 35d | 2028-06-23 | 2028-08-10 | CC-F-(3rdM-Terrace)25 SS+2d, CC-F-SS20 | Facade [7874613 INR]; Physical Progress [49480 h]; TATA Projects Ltd-25 | 7,874,613 |
| CC-F-(3rdM-Terrace)15 |  | Fixing of Facade | 40d | 2028-08-10 | 2028-10-07 | CC-F-(3rdM-Terrace)10 | Facade [18899070 INR]; Physical Progress [56550 h]; TATA Projects Ltd-25 | 18,899,070 |
| CC-F-(3rdM-Terrace)20 |  | Integration of Services After Facade | 30d | 2028-10-07 | 2028-11-13 | CC-F-(3rdM-Terrace)15 | Facade [3149845 INR]; Physical Progress [21200 h]; TATA Projects Ltd-25 | 3,149,845 |
|  | 2 | **South Elevation** |  | 2028-07-03 | 2028-11-24 |  |  |  |
| CC-F-(3rdM-Terrace)45 |  | Integration of Services Before Facade | 10d | 2028-07-03 | 2028-07-17 | CC-F-(3rdM-Terrace)25, CC-F-(1stM-3rdM)35 | Facade [1574923 INR]; Physical Progress [14140 h]; TATA Projects Ltd-25 | 1,574,923 |
| CC-F-(3rdM-Terrace)30 |  | Fixing of Facade Support | 35d | 2028-07-06 | 2028-08-25 | CC-F-(3rdM-Terrace)45 SS+2d | Facade [7874613 INR]; Physical Progress [49480 h]; TATA Projects Ltd-25 | 7,874,613 |
| CC-F-(3rdM-Terrace)35 |  | Fixing of Facade | 40d | 2028-08-25 | 2028-10-20 | CC-F-(3rdM-Terrace)30 | Facade [18899070 INR]; Physical Progress [56550 h]; TATA Projects Ltd-25 | 18,899,070 |
| CC-F-(3rdM-Terrace)40 |  | Integration of Services After Facade | 30d | 2028-10-20 | 2028-11-24 | CC-F-(3rdM-Terrace)35 | Facade [3149845 INR]; Physical Progress [21200 h]; TATA Projects Ltd-25 | 3,149,845 |
|  | 3 | **East & West Elevation** |  | 2028-07-17 | 2028-11-18 |  |  |  |
| CC-F-(3rdM-Terrace)65 |  | Integration of Services Before Facade | 10d | 2028-07-17 | 2028-07-31 | CC-F-(3rdM-Terrace)45, CC-F-(1stM-3rdM)55 | Facade [1007950 INR]; Physical Progress [14140 h]; TATA Projects Ltd-25 | 1,007,950 |
| CC-F-(3rdM-Terrace)50 |  | Fixing of Facade Support | 30d | 2028-07-20 | 2028-09-01 | CC-F-(3rdM-Terrace)65 SS+2d | Facade [5039752 INR]; Physical Progress [42410 h]; TATA Projects Ltd-25 | 5,039,752 |
| CC-F-(3rdM-Terrace)55 |  | Fixing of Facade | 30d | 2028-09-01 | 2028-10-13 | CC-F-(3rdM-Terrace)50 | Facade [12095405 INR]; Physical Progress [42410 h]; TATA Projects Ltd-25 | 12,095,405 |
| CC-F-(3rdM-Terrace)60 |  | Integration of Services After Facade | 30d | 2028-10-13 | 2028-11-18 | CC-F-(3rdM-Terrace)55 | Facade [2015901 INR]; Physical Progress [21200 h]; TATA Projects Ltd-25 | 2,015,901 |
|  | 4 | **Rooftop** |  | 2028-05-18 | 2028-11-08 |  |  |  |
| CC-F-Terrace25 |  | Integration of Services Before Facade | 15d | 2028-05-18 | 2028-06-05 | CC-Terrace15, CC-F-GF55 | Facade [3701848 INR]; Physical Progress [21200 h]; TATA Projects Ltd-25 | 3,701,848 |
| CC-F-Terrace10 |  | Fixing of Facade Support | 60d | 2028-05-20 | 2028-08-04 | CC-F-Terrace25 SS+2d, P-F-FRP-15, SSF20 | Facade [18509240 INR]; Physical Progress [106030 h]; TATA Projects Ltd-25 | 18,509,240 |
| CC-F-Terrace15 |  | Fixing of FRP Facade with aluminium bars and louvers | 60d | 2028-08-04 | 2028-10-27 | CC-F-Terrace10 | Facade [44422175 INR]; Physical Progress [106030 h]; TATA Projects Ltd-25 | 44,422,175 |
| CC-F-Terrace20 |  | Integration of Services After Facade | 10d | 2028-10-27 | 2028-11-08 | CC-F-Terrace15 | Facade [7403696 INR]; Physical Progress [21200 h]; TATA Projects Ltd-25 | 7,403,696 |
|  | 3 | **Terrace Works** |  | 2028-03-17 | 2028-12-01 |  |  |  |
| CC-Terrace10 |  | Waterproofing | 25d | 2028-03-17 | 2028-04-17 | CC-SS-2ndF.675 | Waterproofing [8564838 INR]; Physical Progress [71430 h]; TATA Projects Ltd-25 | 8,564,838 |
| CC-Terrace15 |  | Flooring | 25d | 2028-04-17 | 2028-05-18 | CC-Terrace10, E-GFC-AR-CC-215 | ID Work [2210466 INR]; Physical Progress [71430 h]; TATA Projects Ltd-25 | 2,210,466 |
| CC-Terrace20 |  | Installation of Fans, Solar and other MEP Equipments | 20d | 2028-11-08 | 2028-12-01 | CC-Terrace15, CC-F-Terrace20, E-GFC-MEP-CC-210 | Physical Progress [57140 h]; MEP Equipments on Terrace [3000000 INR]; TATA Projects Ltd-25 | 3,000,000 |

| ID | WBS | Activity | Duration | Start | Finish | Predecessors | Calendar | Resources | Cost |
| --- | --- | --- | --- | --- | --- | --- | --- | --- | --- |
|  | 10 | **Vertical Transport** |  | 2028-01-13 | 2028-09-06 |  |  |  |  |
| CC-VT10 |  | Wait for Strength Gain | 21d | 2028-01-13 | 2028-02-08 | CC-SS-Roof35 |  | Physical Progress [53570 h]; TATA Projects Ltd-25 |  |
| CC-VT30 |  | Deshuttering | 5d | 2028-02-08 | 2028-02-14 | CC-VT10 | CSD-LKO Calender (6 day + Holiday)-25 | Physical Progress [12760 h]; TATA Projects Ltd-25 |  |
| CC-VT25 |  | Plaster | 20d | 2028-02-14 | 2028-03-08 | CC-VT30 | CSD-LKO Calender (6 day + Holiday)-25 | Plaster [1000 Sqr Mtr]; Mason [670 h]; Helper [340 h]; Physical Progress [51020 h]; TATA Projects Ltd-25 | 553,910 |
| CC-VT15 |  | Installation of Lift/Escalator | 120d | 2028-03-08 | 2028-07-31 | P-MEP-VT-20, CC-VT25 | CSD-LKO Calender (6 day + Holiday)-25 | Physical Progress [306120 h]; Lift [69300000 INR]; TATA Projects Ltd-25 | 69,300,000 |
| CC-VT20 |  | Testing & Commissioning | 30d | 2028-07-31 | 2028-09-06 | CC-VT15 | CSD-LKO Calender (6 day + Holiday)-25 | Physical Progress [76530 h]; Testing & Commissioing [7700000 INR]; TATA Projects Ltd-25 | 7,700,000 |
|  | 2 | **Testing, Commissioning, HO** |  | 2028-12-01 | 2029-05-18 |  |  |  |  |
|  | 1 | **Ground Floor** |  | 2028-12-15 | 2029-03-19 |  |  |  |  |
| CC-T&C-GF10 |  | Testing & Commissioning | 40d | 2028-12-15 | 2029-02-02 | CC-WMI-GF410 FF, CC-WMI-GF260, CC-WMI-GF245, CC-WMI-GF255, CC-WMI-GF290, CC-WMI-GF300, CC-WMI-GF305, CC-WMI-GF310, CC-WMI-GF295, CC-WMI-GF205, CC-WMI-GF210, CC-WMI-GF200, CC-WMI-GF215, CC-WMI-GF150, CC-WMI-GF155, CC-WMI-GF160, CC-WMI-GF50, CC-WMI-GF40, CC-WMI-GF100, CC-WMI-GF95 | CSD-LKO Calender (6 day + Holiday)-25 | Physical Progress [38760 h]; Testing & Commissioing [4155156 INR]; TATA Projects Ltd-25 | 4,155,156 |
| CC-T&C-GF20 |  | Snagging & Desnagging | 35d | 2029-02-03 | 2029-03-17 | CC-T&C-GF10 | CSD-LKO Calender (6 day + Holiday)-25 | Physical Progress [38760 h]; TATA Projects Ltd-25 |  |
| CC-T&C-GF15 |  | Handing Over | 1d | 2029-03-19 | 2029-03-19 | CC-T&C-GF20 | CSD-LKO Calender (6 day + Holiday)-25 | Physical Progress [1290 h]; TATA Projects Ltd-25 |  |
|  | 2 | **First Mezzanine** |  | 2028-12-20 | 2029-03-19 |  |  |  |  |
| CC-T&C-1stM10 |  | Testing & Commissioning | 35d | 2028-12-20 | 2029-02-02 | CC-WMI-1stM100, CC-WMI-1stM95, CC-WMI-1stM50, CC-WMI-1stM40, CC-WMI-1stM150, CC-WMI-1stM155, CC-WMI-1stM160, CC-WMI-1stM205, CC-WMI-1stM210, CC-WMI-1stM200, CC-WMI-1stM215, CC-WMI-1stM260, CC-WMI-1stM245, CC-WMI-1stM255, CC-WMI-1stM290, CC-WMI-1stM300, CC-WMI-1stM305, CC-WMI-1stM310, CC-WMI-1stM295 | CSD-LKO Calender (6 day + Holiday)-25 | Physical Progress [38760 h]; Testing & Commissioing [4155156 INR]; TATA Projects Ltd-25 | 4,155,156 |
| CC-T&C-1stM20 |  | Snagging & Desnagging | 35d | 2029-02-02 | 2029-03-17 | CC-T&C-1stM10 | CSD-LKO Calender (6 day + Holiday)-25 | Physical Progress [38760 h]; TATA Projects Ltd-25 |  |
| CC-T&C-1stM15 |  | Handing Over | 1d | 2029-03-17 | 2029-03-19 | CC-T&C-1stM20 | CSD-LKO Calender (6 day + Holiday)-25 | Physical Progress [1290 h]; TATA Projects Ltd-25 |  |
|  | 5 | **Second Mezzanine** |  | 2028-12-30 | 2029-03-28 |  |  |  |  |
| CC-T&C-2ndM10 |  | Testing & Commissioning | 35d | 2028-12-30 | 2029-02-12 | CC-WMI-2ndM100, CC-WMI-2ndM95, CC-WMI-2ndM50, CC-WMI-2ndM40, CC-WMI-2ndM150, CC-WMI-2ndM155, CC-WMI-2ndM160, CC-WMI-2ndM205, CC-WMI-2ndM210, CC-WMI-2ndM200, CC-WMI-2ndM215, CC-WMI-2ndM260, CC-WMI-2ndM245, CC-WMI-2ndM290, CC-WMI-2ndM255, CC-WMI-2ndM300, CC-WMI-2ndM305, CC-WMI-2ndM310, CC-WMI-2ndM295 | CSD-LKO Calender (6 day + Holiday)-25 | Physical Progress [38760 h]; Testing & Commissioing [4155156 INR]; TATA Projects Ltd-25 | 4,155,156 |
| CC-T&C-2ndM20 |  | Snagging & Desnagging | 35d | 2029-02-12 | 2029-03-27 | CC-T&C-2ndM10 | CSD-LKO Calender (6 day + Holiday)-25 | Physical Progress [38760 h]; TATA Projects Ltd-25 |  |
| CC-T&C-2ndM15 |  | Handing Over | 1d | 2029-03-27 | 2029-03-28 | CC-T&C-2ndM20 | CSD-LKO Calender (6 day + Holiday)-25 | Physical Progress [1290 h]; TATA Projects Ltd-25 |  |
|  | 4 | **First Floor** |  | 2029-02-17 | 2029-05-16 |  |  |  |  |
| CC-T&C-1stF10 |  | Testing & Commissioning | 35d | 2029-02-17 | 2029-04-02 | CC-F-Terrace20, CC-WMI-1stF240, CC-WMI-1stF235, CC-WMI-1stF230, CC-WMI-1stF225, CC-WMI-1stF245, CC-WMI-1stF250, CC-WMI-1stF255, CC-WMI-1stF265, CC-WMI-1stF270, CC-WMI-1stF260, CC-WMI-1stF275, CC-WMI-1stF290, CC-WMI-1stF280, CC-WMI-1stF295, CC-WMI-1stF285, CC-WMI-1stF305, CC-WMI-1stF310, CC-WMI-1stF315, CC-WMI-1stF300 | CSD-LKO Calender (6 day + Holiday)-25 | Physical Progress [38760 h]; Testing & Commissioing [4155156 INR]; TATA Projects Ltd-25 | 4,155,156 |
| CC-T&C-1stF20 |  | Snagging & Desnagging | 35d | 2029-04-02 | 2029-05-15 | CC-T&C-1stF10 | CSD-LKO Calender (6 day + Holiday)-25 | Physical Progress [38760 h]; TATA Projects Ltd-25 |  |
| CC-T&C-1stF15 |  | Handing Over | 1d | 2029-05-15 | 2029-05-16 | CC-T&C-1stF20 | CSD-LKO Calender (6 day + Holiday)-25 | Physical Progress [1290 h]; TATA Projects Ltd-25 |  |
|  | 6 | **Third Mezzanine** |  | 2029-03-08 | 2029-05-04 |  |  |  |  |
| CC-T&C-3rdM10 |  | Testing & Commissioning | 25d | 2029-03-08 | 2029-04-07 | CC-F-Terrace20, CC-WMI-3rdM240, CC-WMI-3rdM235, CC-WMI-3rdM230, CC-WMI-3rdM225, CC-WMI-3rdM245, CC-WMI-3rdM250, CC-WMI-3rdM255, CC-WMI-3rdM265, CC-WMI-3rdM270, CC-WMI-3rdM260, CC-WMI-3rdM275, CC-WMI-3rdM290, CC-WMI-3rdM295, CC-WMI-3rdM280, CC-WMI-3rdM305, CC-WMI-3rdM310, CC-WMI-3rdM315, CC-WMI-3rdM285, CC-WMI-3rdM300 | CSD-LKO Calender (6 day + Holiday)-25 | Physical Progress [25840 h]; Testing & Commissioing [4155156 INR]; TATA Projects Ltd-25 | 4,155,156 |
| CC-T&C-3rdM20 |  | Snagging & Desnagging | 20d | 2029-04-07 | 2029-05-03 | CC-T&C-3rdM10 | CSD-LKO Calender (6 day + Holiday)-25 | Physical Progress [25840 h]; TATA Projects Ltd-25 |  |
| CC-T&C-3rdM15 |  | Handing Over | 1d | 2029-05-03 | 2029-05-04 | CC-T&C-3rdM20 | CSD-LKO Calender (6 day + Holiday)-25 | Physical Progress [1290 h]; TATA Projects Ltd-25 |  |

| ID | WBS | Activity | Duration | Start | Finish | Predecessors | Calendar | Resources | Cost |
| --- | --- | --- | --- | --- | --- | --- | --- | --- | --- |
|  | 3 | **Second Floor** |  | 2029-04-16 | 2029-05-18 |  |  |  |  |
| CC-T&C-2ndF10 |  | Testing & Commissioning | 13d | 2029-04-16 | 2029-05-03 | CC-F-Terrace20, CC-WMI-2ndF240, CC-WMI-2ndF235, CC-WMI-2ndF230, CC-WMI-2ndF225, CC-WMI-2ndF245, CC-WMI-2ndF250, CC-WMI-2ndF255, CC-WMI-2ndF265, CC-WMI-2ndF270, CC-WMI-2ndF260, CC-WMI-2ndF275, CC-WMI-2ndF290, CC-WMI-2ndF295, CC-WMI-2ndF280, CC-WMI-2ndF305, CC-WMI-2ndF310, CC-WMI-2ndF315, CC-WMI-2ndF285, CC-WMI-2ndF300 | CSD-LKO Calender (6 day + Holiday)-25 | Physical Progress [25840 h]; Testing & Commissioing [4155156 INR]; TATA Projects Ltd-25 | 4,155,156 |
| CC-T&C-2ndF20 |  | Snagging & Desnagging | 12d | 2029-05-03 | 2029-05-17 | CC-T&C-2ndF10 | CSD-LKO Calender (6 day + Holiday)-25 | Physical Progress [25840 h]; TATA Projects Ltd-25 |  |
| CC-T&C-2ndF15 |  | Handing Over | 1d | 2029-05-17 | 2029-05-18 | CC-T&C-2ndF20 | CSD-LKO Calender (6 day + Holiday)-25 | Physical Progress [1290 h]; TATA Projects Ltd-25 |  |
|  | 9 | **Terrace Floor** |  | 2028-12-01 | 2029-03-23 |  |  |  |  |
| CC-T&C-Terrace10 |  | Testing & Commissioning | 45d | 2028-12-01 | 2029-01-25 | CC-Terrace20, CC-F-Terrace20, CC-VT20 |  | Physical Progress [38760 h]; Testing & Commissioing [1000000 INR]; TATA Projects Ltd-25 | 1,000,000 |
| CC-T&C-Terrace20 |  | Snagging & Desnagging | 45d | 2029-01-25 | 2029-03-22 | CC-T&C-Terrace10 |  | Physical Progress [38760 h]; TATA Projects Ltd-25 |  |
| CC-T&C-Terrace15 |  | Handing Over | 1d | 2029-03-22 | 2029-03-23 | CC-T&C-Terrace20 |  | Physical Progress [1290 h]; TATA Projects Ltd-25 |  |
|  | 10 | **Bridge Between RB1 & RB2** |  | 2027-06-17 | 2028-11-27 |  |  |  |  |
|  | 13 | **Ground Floor** |  | 2027-06-17 | 2027-08-30 |  |  |  |  |
|  | 2 | **Slab** |  | 2027-06-17 | 2027-08-30 |  |  |  |  |
| Bridge-SS-GF.475 |  | Erection of Structural Steel Beams | 25d | 2027-06-17 | 2027-07-23 | SSF10 SS+20d, RB1-SS-GF.540, RB2-SS-GF.520 |  | Str. Steel Fitter [3150 h]; Rigger [6300 h]; Welder [6300 h]; Khalasi Helper [6300 h]; Physical Progress [35300 h]; Structural Steel [469 MT1]; Vermiculite Paint [335 Sq m]; Intumescent Paint [293 Sq m]; TATA Projects Ltd-25 | 83,267,478 |
| Bridge-SS-GF.555 |  | Metal Deck Sheet | 10d | 2027-07-23 | 2027-08-09 | Bridge-SS-GF.475 |  | Physical Progress [14120 h]; Composite Slab Metal Deck [5 MT1]; TATA Projects Ltd-25 | 1,024,920 |
| Bridge-SS-GF.560 |  | Shear Studs | 6d | 2027-08-09 | 2027-08-20 | Bridge-SS-GF.555 |  | Physical Progress [8470 h]; Shear Studs [2 MT1]; TATA Projects Ltd-25 | 470,000 |
| Bridge-SS-GF.565 |  | Reinforcement | 4d | 2027-08-20 | 2027-08-27 | Bridge-SS-GF.560 |  | Barbender [400 h]; Helper [200 h]; Physical Progress [9880 h]; Reinforcement Steel [6 MT1]; TATA Projects Ltd-25 | 579,075 |
| Bridge-SS-GF.570 |  | MEP Coordination | 1d | 2027-08-27 | 2027-08-28 | Bridge-SS-GF.555, Bridge-SS-GF.565 |  | Physical Progress [1420 h]; TATA Projects Ltd-25 |  |
| Bridge-SS-GF.575 |  | Concrete of Slab | 1d | 2027-08-28 | 2027-08-30 | Bridge-SS-GF.570 |  | Mason [50 h]; Helper [50 h]; Physical Progress [1420 h]; Concrete M40 [344 m3]; TATA Projects Ltd-25 | 3,394,248 |
|  | 1 | **First Floor** |  | 2027-08-30 | 2027-11-03 |  |  |  |  |
|  | 2 | **Slab** |  | 2027-08-30 | 2027-11-03 |  |  |  |  |
| Bridge-SS-1st.550 |  | Erection of Structural Steel Beams | 25d | 2027-08-30 | 2027-10-06 | Bridge-SS-GF.575, RB2-SS-1st.520, RB1-SS-1st.515 |  | Str. Steel Fitter [3140 h]; Rigger [6280 h]; Welder [6280 h]; Khalasi Helper [6280 h]; Physical Progress [28240 h]; Structural Steel [469 MT1]; Vermiculite Paint [335 Sq m]; Intumescent Paint [293 Sq m]; TATA Projects Ltd-25 | 83,267,478 |
| Bridge-SS-1st.555 |  | Metal Deck Sheet | 10d | 2027-10-06 | 2027-10-19 | Bridge-SS-1st.550 |  | Physical Progress [14120 h]; Composite Slab Metal Deck [5 MT1]; TATA Projects Ltd-25 | 1,024,920 |
| Bridge-SS-1st.560 |  | Shear Studs | 6d | 2027-10-19 | 2027-10-26 | Bridge-SS-1st.555 |  | Physical Progress [8470 h]; Shear Studs [2 MT1]; TATA Projects Ltd-25 | 470,000 |
| Bridge-SS-1st.565 |  | Reinforcement | 4d | 2027-10-26 | 2027-11-01 | Bridge-SS-1st.560 |  | Barbender [200 h]; Helper [100 h]; Physical Progress [5650 h]; Reinforcement Steel [3 MT1]; TATA Projects Ltd-25 | 289,537.5 |
| Bridge-SS-1st.570 |  | MEP Coordination | 1d | 2027-11-01 | 2027-11-02 | Bridge-SS-1st.555, Bridge-SS-1st.565 |  | Physical Progress [1420 h]; TATA Projects Ltd-25 |  |
| Bridge-SS-1st.575 |  | Concrete of Slab | 1d | 2027-11-02 | 2027-11-03 | Bridge-SS-1st.570 |  | Mason [50 h]; Helper [50 h]; Physical Progress [1420 h]; Concrete M40 [84 m3]; TATA Projects Ltd-25 | 828,828 |

| ID | WBS | Activity | Duration | Start | Finish | Predecessors | Resources | Cost |
| --- | --- | --- | --- | --- | --- | --- | --- | --- |
|  | 2 | **Second Floor** |  | 2027-11-03 | 2027-12-29 |  |  |  |
|  | 2 | **Slab** |  | 2027-11-03 | 2027-12-29 |  |  |  |
| Bridge-SS-2nd.550 |  | Erection of Structural Steel Beams | 25d | 2027-11-03 | 2027-12-02 | RB2-SS-2nd.525, Bridge-SS-1st.575, RB1-SS-2nd.515 | Str. Steel Fitter [3150 h]; Rigger [6300 h]; Welder [6300 h]; Khalasi Helper [6300 h]; Physical Progress [35300 h]; Structural Steel [469 MT1]; Vermiculite Paint [335 Sq m]; Intumescent Paint [293 Sq m]; TATA Projects Ltd-25 | 83,267,478 |
| Bridge-SS-2nd.555 |  | Metal Deck Sheet | 10d | 2027-12-02 | 2027-12-14 | Bridge-SS-2nd.550 | Physical Progress [14120 h]; Composite Slab Metal Deck [5 MT1]; TATA Projects Ltd-25 | 1,024,920 |
| Bridge-SS-2nd.560 |  | Shear Studs | 6d | 2027-12-14 | 2027-12-21 | Bridge-SS-2nd.555 | Physical Progress [8470 h]; Shear Studs [2 MT1]; TATA Projects Ltd-25 | 470,000 |
| Bridge-SS-2nd.565 |  | Reinforcement | 4d | 2027-12-21 | 2027-12-27 | Bridge-SS-2nd.560 | Barbender [200 h]; Helper [100 h]; Physical Progress [9880 h]; Reinforcement Steel [3 MT1]; TATA Projects Ltd-25 | 289,537.5 |
| Bridge-SS-2nd.570 |  | MEP Coordination | 1d | 2027-12-27 | 2027-12-28 | Bridge-SS-2nd.555, Bridge-SS-2nd.565 | Physical Progress [1420 h]; TATA Projects Ltd-25 |  |
| Bridge-SS-2nd.575 |  | Concrete of Slab | 1d | 2027-12-28 | 2027-12-29 | Bridge-SS-2nd.570 | Mason [50 h]; Helper [50 h]; Physical Progress [1420 h]; Concrete M40 [82 m3]; TATA Projects Ltd-25 | 809,094 |
|  | 3 | **Third Floor** |  | 2027-12-29 | 2028-02-24 |  |  |  |
|  | 2 | **Slab** |  | 2027-12-29 | 2028-02-24 |  |  |  |
| Bridge-SS-3rd.550 |  | Erection of Structural Steel Beams | 25d | 2027-12-29 | 2028-01-29 | RB2-SS-3rd.535, Bridge-SS-2nd.575, RB1-SS-3rd.515 | Str. Steel Fitter [3150 h]; Rigger [6300 h]; Welder [6300 h]; Khalasi Helper [6300 h]; Physical Progress [35300 h]; Structural Steel [469 MT1]; Vermiculite Paint [335 Sq m]; Intumescent Paint [293 Sq m]; TATA Projects Ltd-25 | 83,267,478 |
| Bridge-SS-3rd.555 |  | Metal Deck Sheet | 10d | 2028-01-29 | 2028-02-10 | Bridge-SS-3rd.550 | Physical Progress [14120 h]; Composite Slab Metal Deck [5 MT1]; TATA Projects Ltd-25 | 1,024,920 |
| Bridge-SS-3rd.560 |  | Shear Studs | 6d | 2028-02-10 | 2028-02-17 | Bridge-SS-3rd.555 | Physical Progress [8470 h]; Shear Studs [2 MT1]; TATA Projects Ltd-25 | 470,000 |
| Bridge-SS-3rd.565 |  | Reinforcement | 4d | 2028-02-17 | 2028-02-22 | Bridge-SS-3rd.560 | Barbender [270 h]; Helper [140 h]; Physical Progress [4240 h]; Reinforcement Steel [4 MT1]; TATA Projects Ltd-25 | 386,050 |
| Bridge-SS-3rd.570 |  | MEP Coordination | 1d | 2028-02-22 | 2028-02-23 | Bridge-SS-3rd.555, Bridge-SS-3rd.565 | Physical Progress [1410 h]; TATA Projects Ltd-25 |  |
| Bridge-SS-3rd.575 |  | Concrete of Slab | 1d | 2028-02-23 | 2028-02-24 | Bridge-SS-3rd.570 | Mason [50 h]; Helper [50 h]; Physical Progress [1410 h]; Concrete M40 [103 m3]; TATA Projects Ltd-25 | 1,016,301 |
|  | 4 | **Fourth Floor** |  | 2028-02-24 | 2028-04-13 |  |  |  |
|  | 2 | **Slab** |  | 2028-02-24 | 2028-04-13 |  |  |  |
| Bridge-SS-4th.550 |  | Erection of Structural Steel Beams | 20d | 2028-02-24 | 2028-03-21 | RB2-SS-4th.525, Bridge-SS-3rd.575, RB1-SS-4th.525 | Physical Progress [28240 h]; TATA Projects Ltd-25 |  |
| Bridge-SS-4th.555 |  | Metal Deck Sheet | 8d | 2028-03-21 | 2028-03-30 | Bridge-SS-4th.550 | Physical Progress [11300 h]; TATA Projects Ltd-25 |  |
| Bridge-SS-4th.560 |  | Shear Studs | 6d | 2028-03-30 | 2028-04-06 | Bridge-SS-4th.555 | Physical Progress [8470 h]; TATA Projects Ltd-25 |  |
| Bridge-SS-4th.565 |  | Reinforcement | 4d | 2028-04-06 | 2028-04-11 | Bridge-SS-4th.560 | Barbender [340 h]; Helper [170 h]; Physical Progress [9880 h]; Reinforcement Steel [5 MT1]; TATA Projects Ltd-25 | 482,562.5 |
| Bridge-SS-4th.570 |  | MEP Coordination | 1d | 2028-04-11 | 2028-04-12 | Bridge-SS-4th.555, Bridge-SS-4th.565 | Physical Progress [1410 h]; TATA Projects Ltd-25 |  |
| Bridge-SS-4th.575 |  | Concrete of Slab | 1d | 2028-04-12 | 2028-04-13 | Bridge-SS-4th.570 | Mason [50 h]; Helper [50 h]; Physical Progress [1410 h]; Concrete M40 [88 m3]; TATA Projects Ltd-25 | 868,296 |

| ID | WBS | Activity | Duration | Start | Finish | Predecessors | Calendar | Resources | Cost |
| --- | --- | --- | --- | --- | --- | --- | --- | --- | --- |
|  | 5 | **Facade** |  | 2028-04-13 | 2028-11-27 |  |  |  |  |
| Bridge-Facade-5 |  | Ground Floor | 35d | 2028-04-13 | 2028-05-27 | Bridge-SS-4th.575 |  | Physical Progress [28240 h]; TATA Projects Ltd-25 |  |
| Bridge-Facade-15 |  | First Floor | 35d | 2028-05-27 | 2028-07-08 | Bridge-Facade-5 |  | Physical Progress [28240 h]; TATA Projects Ltd-25 |  |
| Bridge-Facade-25 |  | Second Floor | 35d | 2028-07-08 | 2028-08-28 | Bridge-Facade-15, RB2-F-(GF-2nd)50 FF, RB1-F-(GF-2nd)50 FF |  | Physical Progress [28240 h]; TATA Projects Ltd-25 |  |
| Bridge-Facade-35 |  | Third Floor | 35d | 2028-08-28 | 2028-10-16 | Bridge-Facade-25 |  | Physical Progress [28240 h]; TATA Projects Ltd-25 |  |
| Bridge-Facade-45 |  | Fourth Floor | 35d | 2028-10-16 | 2028-11-27 | Bridge-Facade-35, RB2-F-(2nd-5th)50 FF, RB1-F-(GF-Terrace)50 FF |  | Physical Progress [28240 h]; TATA Projects Ltd-25 |  |
|  | 6 | **Common Basements MEP & Finishes** |  | 2027-03-19 | 2028-12-11 |  |  |  |  |
|  | 5 | **Basement 03** |  | 2027-03-20 | 2028-07-26 |  |  |  |  |
|  | 4 | **Hotel 4 Star** |  | 2027-03-20 | 2028-05-22 |  |  |  |  |
|  | 1 | **Wet Finishes** |  | 2027-03-20 | 2028-01-13 |  |  |  |  |
| CB-B03-4S-WMI-25 |  | Waiting for curing & Deshuttering | 7d | 2027-03-20 | 2027-03-31 | 4S-SS-GS125, 4S-SS-GS40, 4S-SS-GS70, 4S-SS-GS110 | CSD-LKO Calender (6 day + Holiday)-25 | Physical Progress [1550 h]; TATA Projects Ltd-25 |  |
| CB-B03-4S-WMI-100 |  | Structural Misc Works | 50d | 2027-03-31 | 2027-05-29 | CB-B03-4S-WMI-25 | CSD-LKO Calender (6 day + Holiday)-25 | Structural Misc Works [818513 INR]; Physical Progress [11160 h]; TATA Projects Ltd-25 | 818,513 |
| CB-B03-4S-WMI-30 |  | Brickwork/Blockwork | 25d | 2027-03-31 | 2027-04-29 | E-GFC-AR-CB-85, CB-B03-4S-WMI-25 | CSD-LKO Calender (6 day + Holiday)-25 | Masonry [366 CuM]; Mason [2440 h]; Helper [1220 h]; Physical Progress [10040 h]; TATA Projects Ltd-25 | 3,489,941.76 |
| CB-B03-4S-WMI-40 |  | Plaster | 30d | 2027-06-10 | 2027-07-15 | CB-B03-4S-WMI-100, CB-B03-4S-WMI-45, CB-B03-4S-WMI-115, CB-B03-4S-WMI-305 | CSD-LKO Calender (6 day + Holiday)-25 | Plaster [12176 Sqr Mtr]; Mason [8120 h]; Helper [4060 h]; Physical Progress [6700 h]; TATA Projects Ltd-25 | 6,744,408.16 |
| CB-B03-4S-WMI-35 |  | Flooring | 25d | 2027-12-13 | 2028-01-13 | CB-B03-4S-WMI-100, CB-B03-4S-WMI-135, CB-B03-4S-WMI-140, CB-B03-4S-WMI-145, CB-B03-4S-WMI-360, CB-B03-4S-WMI-150 FF, CB-B03-4S-WMI-50, CB-B03-4S-WMI-55, CB-B03-4S-WMI-65, CB-B03-4S-WMI-365, CB-B03-4S-WMI-110, CB-B03-4S-WMI-370, CB-B03-4S-WMI-190, CB-B03-4S-WMI-210, CB-B03-4S-WMI-205 FF, CB-B03-4S-WMI-195, CB-B03-4S-WMI-80, CB-B03-4S-WMI-245, CB-B03-4S-WMI-255, CB-B03-4S-WMI-260 FF, CB-B03-4S-WMI-250, CB-B03-4S-WMI-290, CB-B03-4S-WMI-295, CB-B03-4S-WMI-375, CB-B03-4S-WMI-300, CB-B03-4S-WMI-315 FF, CB-B03-4S-WMI-30, CB-B03-4S-WMI-150, CB-B03-4S-WMI-205, CB-B03-4S-WMI-260, CB-B03-4S-WMI-315, CB-B03-HS-MEP45, CB-B03-HS-MEP45 FF | CSD-LKO Calender (6 day + Holiday)-25 | Flooring [18764991 INR]; Flooring Mason [9400 h]; Helper [9400 h]; Physical Progress [11160 h]; TATA Projects Ltd-25 | 18,764,991 |
|  | 3 | **ETP** |  | 2027-04-29 | 2027-08-13 |  |  |  |  |
| CB-B03-4S-WMI-20 |  | Installation of Rungs | 35d | 2027-04-29 | 2027-06-10 | CB-B03-4S-WMI-30 | CSD-LKO Calender (6 day + Holiday)-25 | Rungs [364811 INR]; Physical Progress [2230 h]; TATA Projects Ltd-25 | 364,811 |
| CB-B03-4S-WMI-10 |  | Waterproofing | 30d | 2027-06-10 | 2027-07-15 | CB-B03-4S-WMI-20 | CSD-LKO Calender (6 day + Holiday)-25 | Waterproofing [8564838 INR]; Waterprrofing Mason [8160 h]; Helper [4080 h]; Physical Progress [6700 h]; TATA Projects Ltd-25 | 8,564,838 |
| CB-B03-4S-WMI-15 |  | Flooring | 25d | 2027-07-15 | 2027-08-13 | CB-B03-4S-WMI-10 | CSD-LKO Calender (6 day + Holiday)-25 | Flooring [5864060 INR]; Flooring Mason [2940 h]; Helper [2940 h]; Physical Progress [6700 h]; TATA Projects Ltd-25 | 5,864,060 |
|  | 5 | **Low Side MEP** |  | 2027-03-31 | 2028-04-19 |  |  |  |  |
|  | 2 | **HVAC** |  | 2027-04-29 | 2028-04-19 |  |  |  |  |
|  | 1 | **1st Fix** |  | 2027-04-29 | 2027-08-19 |  |  |  |  |
| CB-B03-4S-WMI-165 |  | Duct Support Fabrication | 35d | 2027-04-29 | 2027-06-10 | E-GFC-MEP-CB-45, CB-B03-4S-WMI-30 | CSD-LKO Calender (6 day + Holiday)-25 | Physical Progress [3350 h]; HVAC [210890 INR]; TATA Projects Ltd-25 | 210,890 |
| CB-B03-4S-WMI-120 |  | Installing duct hangers and supports | 30d | 2027-06-10 | 2027-07-15 | CB-B03-4S-WMI-335, CB-B03-4S-WMI-165 | CSD-LKO Calender (6 day + Holiday)-25 | Physical Progress [2230 h]; HVAC [421779 INR]; TATA Projects Ltd-25 | 421,779 |
| CB-B03-4S-WMI-125 |  | Laying concealed/exposed refrigerant piping | 30d | 2027-07-15 | 2027-08-19 | CB-B03-4S-WMI-120 | CSD-LKO Calender (6 day + Holiday)-25 | Physical Progress [3350 h]; HVAC [105445 INR]; TATA Projects Ltd-25 | 105,445 |
| CB-B03-4S-WMI-130 |  | Laying concealed/exposed drain piping | 30d | 2027-07-15 | 2027-08-19 | CB-B03-4S-WMI-120 | CSD-LKO Calender (6 day + Holiday)-25 | Physical Progress [2230 h]; HVAC [632669 INR]; TATA Projects Ltd-25 | 632,669 |

| ID | WBS | Activity | Duration | Start | Finish | Predecessors | Calendar | Resources | Cost |
| --- | --- | --- | --- | --- | --- | --- | --- | --- | --- |
|  | 2 | **2nd Fix** |  | 2027-07-15 | 2027-12-01 |  |  |  |  |
| CB-B03-4S-WMI-135 |  | Duct installation | 20d | 2027-07-15 | 2027-08-07 | CB-B03-4S-WMI-120 | CSD-LKO Calender (6 day + Holiday)-25 | Physical Progress [3350 h]; HVAC [1581672 INR]; TATA Projects Ltd-25 | 1,581,672 |
| CB-B03-4S-WMI-140 |  | Insulation of ducts (thermal/acoustic) | 15d | 2027-08-07 | 2027-08-25 | CB-B03-4S-WMI-135 | CSD-LKO Calender (6 day + Holiday)-25 | Physical Progress [1340 h]; HVAC [949003 INR]; TATA Projects Ltd-25 | 949,003 |
| CB-B03-4S-WMI-145 |  | Installation of chilled water piping / VRF piping | 15d | 2027-08-25 | 2027-09-13 | CB-B03-4S-WMI-140 | CSD-LKO Calender (6 day + Holiday)-25 | Physical Progress [1340 h]; HVAC [2108896 INR]; TATA Projects Ltd-25 | 2,108,896 |
| CB-B03-4S-WMI-360 |  | Installation of indoor units including AHU, FCU | 45d | 2027-09-13 | 2027-11-08 | CB-B03-4S-WMI-145, CB-B03-4S-WMI-125, CB-B03-4S-WMI-130 | CSD-LKO Calender (6 day + Holiday)-25 | Physical Progress [10040 h]; HVAC [1898006 INR]; TATA Projects Ltd-25 | 1,898,006 |
| CB-B03-4S-WMI-150 |  | Connecting refrigerant and drain piping to indoor units | 20d | 2027-11-08 | 2027-12-01 | CB-B03-4S-WMI-360 | CSD-LKO Calender (6 day + Holiday)-25 | Physical Progress [1340 h]; HVAC [527224 INR]; TATA Projects Ltd-25 | 527,224 |
|  | 3 | **Final Fix** |  | 2028-02-07 | 2028-04-19 |  |  |  |  |
| CB-B03-4S-WMI-160 |  | Installing grills, diffusers, dampers | 30d | 2028-02-07 | 2028-03-14 | CB-B03-4S-WMI-340 | CSD-LKO Calender (6 day + Holiday)-25 | Physical Progress [1340 h]; HVAC [1054448 INR]; TATA Projects Ltd-25 | 1,054,448 |
| CB-B03-4S-WMI-155 |  | Installation of thermostats and control panels | 30d | 2028-03-14 | 2028-04-19 | CB-B03-4S-WMI-160 | CSD-LKO Calender (6 day + Holiday)-25 | Physical Progress [1340 h]; HVAC [527224 INR]; TATA Projects Ltd-25 | 527,224 |
|  | 1 | **Electrical** |  | 2027-03-31 | 2028-03-25 |  |  |  |  |
|  | 1 | **1st Fix** |  | 2027-03-31 | 2027-06-10 |  |  |  |  |
| CB-B03-4S-WMI-90 |  | Slab Conduiting | 25d | 2027-03-31 | 2027-04-29 | CB-B03-4S-WMI-25 | CSD-LKO Calender (6 day + Holiday)-25 | Physical Progress [5580 h]; Electrical [926153 INR]; TATA Projects Ltd-25 | 926,153 |
| CB-B03-4S-WMI-45 |  | Wall Conduiting | 30d | 2027-04-29 | 2027-06-04 | CB-B03-4S-WMI-30 | CSD-LKO Calender (6 day + Holiday)-25 | Physical Progress [2230 h]; Electrical [463076 INR]; TATA Projects Ltd-25 | 463,076 |
| CB-B03-4S-WMI-115 |  | Installing back boxes for switches, sockets | 5d | 2027-06-04 | 2027-06-10 | CB-B03-4S-WMI-90, CB-B03-4S-WMI-45 | CSD-LKO Calender (6 day + Holiday)-25 | Physical Progress [1110 h]; Electrical [277846 INR]; TATA Projects Ltd-25 | 277,846 |
|  | 2 | **2nd Fix** |  | 2027-07-15 | 2027-12-13 |  |  |  |  |
| CB-B03-4S-WMI-50 |  | Cable tray laying | 15d | 2027-07-15 | 2027-08-02 | CB-B03-4S-WMI-40, CB-B03-4S-WMI-335 | CSD-LKO Calender (6 day + Holiday)-25 | Physical Progress [5580 h]; Electrical [370461 INR]; TATA Projects Ltd-25 | 370,461 |
| CB-B03-4S-WMI-55 |  | Cabling & Wire Pulling | 45d | 2027-08-02 | 2027-09-24 | P-MEP-HT/LT Cables - 20, CB-B03-4S-WMI-50 | CSD-LKO Calender (6 day + Holiday)-25 | Physical Progress [10040 h]; Electrical [1852305 INR]; TATA Projects Ltd-25 | 1,852,305 |
| CB-B03-4S-WMI-65 |  | DB fixing and connecting | 20d | 2027-09-24 | 2027-10-20 | CB-B03-4S-WMI-55 | CSD-LKO Calender (6 day + Holiday)-25 | Physical Progress [3350 h]; Electrical [277846 INR]; TATA Projects Ltd-25 | 277,846 |
| CB-B03-4S-WMI-365 |  | Floor/Distribution Panel Installation | 15d | 2027-10-20 | 2027-11-08 | P-MEP-HT/LT Panel-20, P-MEP-Bus Duct -20, CB-B03-4S-WMI-65 | CSD-LKO Calender (6 day + Holiday)-25 | Physical Progress [1110 h]; Electrical [740922 INR]; TATA Projects Ltd-25 | 740,922 |
| CB-B03-4S-WMI-110 |  | Floor Rising Main Installation | 15d | 2027-11-08 | 2027-11-25 | CB-B03-4S-WMI-365 | CSD-LKO Calender (6 day + Holiday)-25 | Physical Progress [2230 h]; Electrical [1296614 INR]; TATA Projects Ltd-25 | 1,296,614 |
| CB-B03-4S-WMI-370 |  | Equipment Earthing | 15d | 2027-11-25 | 2027-12-13 | CB-B03-4S-WMI-110, CB-B03-4S-WMI-365 | CSD-LKO Calender (6 day + Holiday)-25 | Physical Progress [2230 h]; Electrical [277846 INR]; TATA Projects Ltd-25 | 277,846 |
|  | 3 | **Final Fix** |  | 2028-02-07 | 2028-03-25 |  |  |  |  |
| CB-B03-4S-WMI-70 |  | Switches & Socket | 20d | 2028-02-07 | 2028-03-01 | CB-B03-4S-WMI-340 | CSD-LKO Calender (6 day + Holiday)-25 | Physical Progress [4460 h]; Electrical [926153 INR]; TATA Projects Ltd-25 | 926,153 |
| CB-B03-4S-WMI-60 |  | Light Fixtures | 20d | 2028-03-01 | 2028-03-25 | CB-B03-4S-WMI-370, CB-B03-4S-WMI-70 | CSD-LKO Calender (6 day + Holiday)-25 | Physical Progress [3350 h]; Electrical [1389229 INR]; TATA Projects Ltd-25 | 1,389,229 |

| ID | WBS | Activity | Duration | Start | Finish | Predecessors | Calendar | Resources | Cost |
| --- | --- | --- | --- | --- | --- | --- | --- | --- | --- |
|  | 3 | **Plumbing** |  | 2027-04-29 | 2028-03-31 |  |  |  |  |
|  | 1 | **1st Fix** |  | 2027-04-29 | 2027-09-30 |  |  |  |  |
| CB-B03-4S-WMI-180 |  | Fixing pipe supports and clamps | 35d | 2027-04-29 | 2027-06-10 | CB-B03-4S-WMI-30 | CSD-LKO Calender (6 day + Holiday)-25 | Physical Progress [2230 h]; Plumbing [521800 INR]; TATA Projects Ltd-25 | 521,800 |
| CB-B03-4S-WMI-170 |  | Laying water supply pipes (hot & cold) | 35d | 2027-06-10 | 2027-07-21 | CB-B03-4S-WMI-180 | CSD-LKO Calender (6 day + Holiday)-25 | Physical Progress [3350 h]; Plumbing [1043599 INR]; TATA Projects Ltd-25 | 1,043,599 |
| CB-B03-4S-WMI-175 |  | Laying drainage pipes (soil, waste, vent) | 35d | 2027-06-10 | 2027-07-21 | CB-B03-4S-WMI-180 | CSD-LKO Calender (6 day + Holiday)-25 | Physical Progress [3350 h]; Plumbing [1043599 INR]; TATA Projects Ltd-25 | 1,043,599 |
| CB-B03-4S-WMI-200 |  | Installation of plumbing fixture base supports (WC frames, sink brackets) | 30d | 2027-07-21 | 2027-08-25 | CB-B03-4S-WMI-175 | CSD-LKO Calender (6 day + Holiday)-25 | Physical Progress [1340 h]; Plumbing [521800 INR]; TATA Projects Ltd-25 | 521,800 |
| CB-B03-4S-WMI-185 |  | Pressure testing of water supply lines | 25d | 2027-08-25 | 2027-09-24 | CB-B03-4S-WMI-170, CB-B03-4S-WMI-175, CB-B03-4S-WMI-200 | CSD-LKO Calender (6 day + Holiday)-25 | Physical Progress [1550 h]; Plumbing [104360 INR]; TATA Projects Ltd-25 | 104,360 |
| CB-B03-4S-WMI-75 |  | Installation of concealed parts of toilet fixtures | 30d | 2027-08-25 | 2027-09-30 | CB-B03-4S-WMI-200 | CSD-LKO Calender (6 day + Holiday)-25 | Physical Progress [2230 h]; Plumbing [521800 INR]; TATA Projects Ltd-25 | 521,800 |
|  | 2 | **2nd FIx** |  | 2027-09-24 | 2027-12-01 |  |  |  |  |
| CB-B03-4S-WMI-190 |  | Installation of vertical risers and main distribution lines | 35d | 2027-09-24 | 2027-11-08 | CB-B03-4S-WMI-40, CB-B03-4S-WMI-335, CB-B03-4S-WMI-185 | CSD-LKO Calender (6 day + Holiday)-25 | Physical Progress [4460 h]; Plumbing [1043599 INR]; TATA Projects Ltd-25 | 1,043,599 |
| CB-B03-4S-WMI-210 |  | Insulation of hot water pipes (if applicable) | 15d | 2027-09-24 | 2027-10-14 | CB-B03-4S-WMI-185 | CSD-LKO Calender (6 day + Holiday)-25 | Physical Progress [1340 h]; Plumbing [521800 INR]; TATA Projects Ltd-25 | 521,800 |
| CB-B03-4S-WMI-205 |  | Testing drainage lines for leakage/blockage | 15d | 2027-10-14 | 2027-11-02 | CB-B03-4S-WMI-200, CB-B03-4S-WMI-210 | CSD-LKO Calender (6 day + Holiday)-25 | Physical Progress [1340 h]; Plumbing [104360 INR]; TATA Projects Ltd-25 | 104,360 |
| CB-B03-4S-WMI-80 |  | Laying of ACO Drains | 20d | 2027-11-02 | 2027-11-25 | CB-B03-4S-WMI-205, CB-B03-4S-WMI-75, P-MEP-ACO-20 | CSD-LKO Calender (6 day + Holiday)-25 | ACO Drain [4080997 INR]; Physical Progress [4460 h]; TATA Projects Ltd-25 | 4,080,997 |
| CB-B03-4S-WMI-195 |  | Fixing floor traps and gully traps | 20d | 2027-11-08 | 2027-12-01 | CB-B03-4S-WMI-190 | CSD-LKO Calender (6 day + Holiday)-25 | Physical Progress [1340 h]; Plumbing [313080 INR]; TATA Projects Ltd-25 | 313,080 |
|  | 3 | **Final FIx** |  | 2027-11-25 | 2028-03-31 |  |  |  |  |
| CB-B03-4S-WMI-85 |  | Installation of ACO Drain Grating | 7d | 2027-11-25 | 2027-12-03 | CB-B03-4S-WMI-80 | CSD-LKO Calender (6 day + Holiday)-25 | Grating of Drain [2489760 INR]; Physical Progress [1550 h]; TATA Projects Ltd-25 | 2,489,760 |
| CB-B03-4S-WMI-215 |  | Installation of sanitary fixtures (WC, washbasins, urinals, sinks) | 10d | 2028-02-07 | 2028-02-18 | CB-B03-4S-WMI-195, CB-B03-4S-WMI-340 | CSD-LKO Calender (6 day + Holiday)-25 | Physical Progress [2230 h]; Plumbing [2087198 INR]; TATA Projects Ltd-25 | 2,087,198 |
| CB-B03-4S-WMI-220 |  | Installation of CP fittings (taps, mixers, showers, health faucets) | 10d | 2028-02-18 | 2028-03-01 | CB-B03-4S-WMI-215, CB-B03-4S-WMI-340 | CSD-LKO Calender (6 day + Holiday)-25 | Physical Progress [2230 h]; Plumbing [1043599 INR]; TATA Projects Ltd-25 | 1,043,599 |
| CB-B03-4S-WMI-225 |  | Connection of appliances | 25d | 2028-03-01 | 2028-03-31 | CB-B03-4S-WMI-220 | CSD-LKO Calender (6 day + Holiday)-25 | Physical Progress [1550 h]; Plumbing [521800 INR]; TATA Projects Ltd-25 | 521,800 |
|  | 4 | **Firefighting** |  | 2027-04-29 | 2028-04-06 |  |  |  |  |
|  | 1 | **1st Fix** |  | 2027-04-29 | 2027-08-25 |  |  |  |  |
| CB-B03-4S-WMI-235 |  | Fixing pipe supports and hangers | 35d | 2027-04-29 | 2027-06-10 | CB-B03-4S-WMI-30 | CSD-LKO Calender (6 day + Holiday)-25 | Physical Progress [2230 h]; Firefighting [431557 INR]; TATA Projects Ltd-25 | 431,557 |
| CB-B03-4S-WMI-230 |  | Laying branch piping | 35d | 2027-06-10 | 2027-07-21 | CB-B03-4S-WMI-235 | CSD-LKO Calender (6 day + Holiday)-25 | Physical Progress [3350 h]; Firefighting [924764 INR]; TATA Projects Ltd-25 | 924,764 |
| CB-B03-4S-WMI-240 |  | Hydrostatic pressure testing of piping | 30d | 2027-07-21 | 2027-08-25 | CB-B03-4S-WMI-230 | CSD-LKO Calender (6 day + Holiday)-25 | Physical Progress [1340 h]; Firefighting [123302 INR]; TATA Projects Ltd-25 | 123,302 |

| ID | WBS | Activity | Duration | Start | Finish | Predecessors | Calendar | Resources | Cost |
| --- | --- | --- | --- | --- | --- | --- | --- | --- | --- |
|  | 2 | **2nd Fix** |  | 2027-08-25 | 2027-11-19 |  |  |  |  |
| CB-B03-4S-WMI-245 |  | Installation of vertical risers and distribution piping in shafts | 35d | 2027-08-25 | 2027-10-07 | CB-B03-4S-WMI-40, CB-B03-4S-WMI-240 | CSD-LKO Calender (6 day + Holiday)-25 | Physical Progress [5580 h]; Firefighting [1233019 INR]; TATA Projects Ltd-25 | 1,233,019 |
| CB-B03-4S-WMI-255 |  | Painting/insulation of exposed fire pipes | 30d | 2027-08-25 | 2027-09-30 | CB-B03-4S-WMI-240 | CSD-LKO Calender (6 day + Holiday)-25 | Physical Progress [2230 h]; Firefighting [61651 INR]; TATA Projects Ltd-25 | 61,651 |
| CB-B03-4S-WMI-260 |  | Testing risers and branch lines for leakage | 30d | 2027-09-30 | 2027-11-08 | CB-B03-4S-WMI-255 | CSD-LKO Calender (6 day + Holiday)-25 | Physical Progress [1340 h]; Firefighting [123302 INR]; TATA Projects Ltd-25 | 123,302 |
| CB-B03-4S-WMI-250 |  | Installation of sprinkler branch lines in ceilings | 35d | 2027-10-07 | 2027-11-19 | CB-B03-4S-WMI-245, CB-B03-4S-WMI-335 | CSD-LKO Calender (6 day + Holiday)-25 | Physical Progress [5580 h]; Firefighting [924764 INR]; TATA Projects Ltd-25 | 924,764 |
|  | 3 | **Final FIx** |  | 2028-02-07 | 2028-04-06 |  |  |  |  |
| CB-B03-4S-WMI-265 |  | Installation of sprinkler heads, nozzles, and final alignment | 35d | 2028-02-07 | 2028-03-20 | CB-B03-4S-WMI-250, CB-B03-4S-WMI-340 | CSD-LKO Calender (6 day + Holiday)-25 | Physical Progress [10040 h]; Firefighting [924764 INR]; TATA Projects Ltd-25 | 924,764 |
| CB-B03-4S-WMI-270 |  | Installation of hydrant accessories (valves, hose reels, cabinets) | 25d | 2028-02-07 | 2028-03-07 | CB-B03-4S-WMI-340 | CSD-LKO Calender (6 day + Holiday)-25 | Physical Progress [2230 h]; Firefighting [616510 INR]; TATA Projects Ltd-25 | 616,510 |
| CB-B03-4S-WMI-275 |  | Installation of portable fire extinguishers | 30d | 2028-02-07 | 2028-03-14 | CB-B03-4S-WMI-340 | CSD-LKO Calender (6 day + Holiday)-25 | Physical Progress [1340 h]; Firefighting [61651 INR]; TATA Projects Ltd-25 | 61,651 |
| CB-B03-4S-WMI-280 |  | Integration with fire alarm system | 20d | 2028-03-14 | 2028-04-06 | CB-B03-4S-WMI-275 | CSD-LKO Calender (6 day + Holiday)-25 | Physical Progress [4460 h]; Firefighting [308255 INR]; TATA Projects Ltd-25 | 308,255 |
|  | 5 | **ELV** |  | 2027-03-31 | 2028-03-31 |  |  |  |  |
|  | 1 | **1st Fix** |  | 2027-03-31 | 2027-06-10 |  |  |  |  |
| CB-B03-4S-WMI-95 |  | Slab Conduiting | 25d | 2027-03-31 | 2027-04-29 | CB-B03-4S-WMI-25 | CSD-LKO Calender (6 day + Holiday)-25 | Physical Progress [5580 h]; ELV [726016 INR]; TATA Projects Ltd-25 | 726,016 |
| CB-B03-4S-WMI-285 |  | Wall Conduiting | 30d | 2027-04-29 | 2027-06-04 | CB-B03-4S-WMI-30 | CSD-LKO Calender (6 day + Holiday)-25 | Physical Progress [2230 h]; ELV [311150 INR]; TATA Projects Ltd-25 | 311,150 |
| CB-B03-4S-WMI-305 |  | Installing back boxes for switches, sockets | 5d | 2027-06-04 | 2027-06-10 | CB-B03-4S-WMI-95, CB-B03-4S-WMI-285 | CSD-LKO Calender (6 day + Holiday)-25 | Physical Progress [1110 h]; ELV [518583 INR]; TATA Projects Ltd-25 | 518,583 |
|  | 2 | **2nd Fix** |  | 2027-07-15 | 2027-11-13 |  |  |  |  |
| CB-B03-4S-WMI-290 |  | Cable tray installation | 15d | 2027-07-15 | 2027-08-02 | CB-B03-4S-WMI-40, CB-B03-4S-WMI-335 | CSD-LKO Calender (6 day + Holiday)-25 | Physical Progress [5580 h]; ELV [518583 INR]; TATA Projects Ltd-25 | 518,583 |
| CB-B03-4S-WMI-295 |  | Cabeling of ELV cable - IT/Fire Alarm/Public Address | 30d | 2027-08-02 | 2027-09-07 | CB-B03-4S-WMI-290 | CSD-LKO Calender (6 day + Holiday)-25 | Physical Progress [10040 h]; ELV [1244599 INR]; TATA Projects Ltd-25 | 1,244,599 |
| CB-B03-4S-WMI-375 |  | ELV Rack Installation | 15d | 2027-09-07 | 2027-09-24 | CB-B03-4S-WMI-295 | CSD-LKO Calender (6 day + Holiday)-25 | Physical Progress [2230 h]; ELV [518583 INR]; TATA Projects Ltd-25 | 518,583 |
| CB-B03-4S-WMI-300 |  | Termination of cables at junction boxes, patch panels, and control panels | 15d | 2027-09-24 | 2027-10-14 | CB-B03-4S-WMI-375 | CSD-LKO Calender (6 day + Holiday)-25 | Physical Progress [6700 h]; ELV [518583 INR]; TATA Projects Ltd-25 | 518,583 |
| CB-B03-4S-WMI-315 |  | Fixing devices like CCTV camera bases, card reader bases, smoke detector bases, PA Bases, Wifi Bases | 25d | 2027-10-14 | 2027-11-13 | CB-B03-4S-WMI-300 | CSD-LKO Calender (6 day + Holiday)-25 | Physical Progress [890 h]; ELV [1037166 INR]; TATA Projects Ltd-25 | 1,037,166 |
|  | 3 | **3rd Fix** |  | 2028-02-07 | 2028-03-31 |  |  |  |  |
| CB-B03-4S-WMI-310 |  | Installation of data and Voice Faceplate | 25d | 2028-02-07 | 2028-03-07 | CB-B03-4S-WMI-340 | CSD-LKO Calender (6 day + Holiday)-25 | Physical Progress [3350 h]; ELV [518583 INR]; TATA Projects Ltd-25 | 518,583 |
| CB-B03-4S-WMI-320 |  | Installation of Camera & Wifi | 30d | 2028-02-07 | 2028-03-14 | CB-B03-4S-WMI-340 | CSD-LKO Calender (6 day + Holiday)-25 | Physical Progress [3350 h]; ELV [518583 INR]; TATA Projects Ltd-25 | 518,583 |
| CB-B03-4S-WMI-325 |  | Installation of fire alarm devices + Public Address | 15d | 2028-02-07 | 2028-02-24 | CB-B03-4S-WMI-340 | CSD-LKO Calender (6 day + Holiday)-25 | Physical Progress [3350 h]; ELV [622299 INR]; TATA Projects Ltd-25 | 622,299 |
| CB-B03-4S-WMI-380 |  | Installation of Active System | 15d | 2028-02-24 | 2028-03-14 | CB-B03-4S-WMI-325 | CSD-LKO Calender (6 day + Holiday)-25 | Physical Progress [3350 h]; ELV [1037166 INR]; TATA Projects Ltd-25 | 1,037,166 |
| CB-B03-4S-WMI-390 |  | Fire Panel Intallation & Integration | 25d | 2028-02-24 | 2028-03-25 | CB-B03-4S-WMI-325 | CSD-LKO Calender (6 day + Holiday)-25 | Physical Progress [5580 h]; ELV [518583 INR]; TATA Projects Ltd-25 | 518,583 |
| CB-B03-4S-WMI-395 |  | Installation & Integration of Audio Visual System | 25d | 2028-02-24 | 2028-03-25 | CB-B03-4S-WMI-325 | CSD-LKO Calender (6 day + Holiday)-25 | Physical Progress [5580 h]; ELV [518583 INR]; TATA Projects Ltd-25 | 518,583 |
| CB-B03-4S-WMI-400 |  | Installation & Integration of Access Control | 25d | 2028-02-24 | 2028-03-25 | CB-B03-4S-WMI-325 | CSD-LKO Calender (6 day + Holiday)-25 | Physical Progress [5580 h]; ELV [518583 INR]; TATA Projects Ltd-25 | 518,583 |
| CB-B03-4S-WMI-385 |  | Integration of Active components | 15d | 2028-03-14 | 2028-03-31 | CB-B03-4S-WMI-380 | CSD-LKO Calender (6 day + Holiday)-25 | Physical Progress [3350 h]; ELV [207433 INR]; TATA Projects Ltd-25 | 207,433 |

| ID | WBS | Activity | Duration | Start | Finish | Predecessors | Calendar | Resources | Cost |
| --- | --- | --- | --- | --- | --- | --- | --- | --- | --- |
|  | 6 | **Drainage System** |  |  |  |  |  |  |  |
|  | 2 | **Dry Finishes** |  | 2027-04-29 | 2028-05-22 |  |  |  |  |
| CB-B03-4S-WMI-335 |  | Painting on Ceiling (Ceiling Finish) | 15d | 2027-04-29 | 2027-05-18 | CB-B03-4S-WMI-30 | CSD-LKO Calender (6 day + Holiday)-25 | Painting [7254 Sq m]; Painter [7260 h]; Helper [7260 h]; Physical Progress [3350 h]; TATA Projects Ltd-25 | 1,658,409.48 |
| CB-B03-4S-WMI-105 |  | Civil Misc Works | 30d | 2028-01-13 | 2028-02-18 | CB-B03-4S-WMI-35 | CSD-LKO Calender (6 day + Holiday)-25 | Civil Misc Works [1689710 INR]; Physical Progress [6700 h]; TATA Projects Ltd-25 | 1,689,710 |
| CB-B03-4S-WMI-330 |  | Installation of Gypsum Board | 10d | 2028-01-13 | 2028-01-25 | CB-B03-4S-WMI-35 | CSD-LKO Calender (6 day + Holiday)-25 | ID Work [442093 INR]; Physical Progress [2230 h]; TATA Projects Ltd-25 | 442,093 |
| CB-B03-4S-WMI-340 |  | Wall Painting first coat including putty | 10d | 2028-01-25 | 2028-02-07 | CB-B03-4S-WMI-330 | CSD-LKO Calender (6 day + Holiday)-25 | Painting [7254 Sq m]; Painter [7260 h]; Helper [7260 h]; Physical Progress [2230 h]; TATA Projects Ltd-25 | 1,658,409.48 |
| CB-B03-4S-WMI-355 |  | Wheel stoppers | 8d | 2028-02-07 | 2028-02-16 | CB-B03-4S-WMI-340 | CSD-LKO Calender (6 day + Holiday)-25 | Wheel Stopper [8624 INR]; Physical Progress [1790 h]; TATA Projects Ltd-25 | 8,624 |
| CB-B03-4S-WMI-405 |  | Door & Window | 10d | 2028-02-07 | 2028-02-18 | CB-B03-4S-WMI-340 | CSD-LKO Calender (6 day + Holiday)-25 | ID Work [442093 INR]; Physical Progress [2230 h]; TATA Projects Ltd-25 | 442,093 |
| CB-B03-4S-WMI-350 |  | Line marking for parking bays, arrows, pedestrian paths | 8d | 2028-02-16 | 2028-02-25 | CB-B03-4S-WMI-355 | CSD-LKO Calender (6 day + Holiday)-25 | Line / Arrow Marking [608888 INR]; Physical Progress [1790 h]; TATA Projects Ltd-25 | 608,888 |
| CB-B03-4S-WMI-345 |  | Wall painting final coat | 6d | 2028-05-15 | 2028-05-22 | CB-B03-4S-WMI-85, CB-B03-4S-WMI-395, CB-B03-4S-WMI-400, CB-B03-4S-WMI-385, CB-B03-4S-WMI-105, CB-B03-HS-MEP30, CB-B03-HS-MEP20, CB-B03-HS-MEP25, CB-B03-HS-MEP40, CB-B03-HS-MEP35, CB-B03-HS-MEP10, CB-B03-HS-MEP15, CB-B03-4S-WMI-350, CB-B03-4S-WMI-310, CB-B03-4S-WMI-320, CB-B03-4S-WMI-280, CB-B03-4S-WMI-265, CB-B03-4S-WMI-270, CB-B03-4S-WMI-275, CB-B03-4S-WMI-225, CB-B03-4S-WMI-60, CB-B03-4S-WMI-155, CB-B03-4S-WMI-390, CB-B03-4S-WMI-405 | CSD-LKO Calender (6 day + Holiday)-25 | Painting [7254 Sq m]; Painter [7250 h]; Helper [7250 h]; Physical Progress [1340 h]; TATA Projects Ltd-25 | 1,658,409.48 |
|  | 1 | **Hotel 3 Star** |  | 2027-03-25 | 2028-05-22 |  |  |  |  |
|  | 1 | **Wet Finishes** |  | 2027-03-25 | 2028-01-17 |  |  |  |  |
| CB-B03-3S-WMI-10 |  | Waiting for curing & Deshuttering | 7d | 2027-03-25 | 2027-04-03 | 3S-SS-GS65, 3S-SS-GS35 | CSD-LKO Calender (6 day + Holiday)-25 | Physical Progress [1550 h]; TATA Projects Ltd-25 |  |
| CB-B03-3S-WMI-15 |  | Brickwork/Blockwork | 25d | 2027-04-03 | 2027-05-04 | CB-B03-3S-WMI-10 | CSD-LKO Calender (6 day + Holiday)-25 | Masonry [366 CuM]; Mason [2440 h]; Helper [1220 h]; Physical Progress [10040 h]; TATA Projects Ltd-25 | 3,489,941.76 |
| CB-B03-3S-WMI-395 |  | Structural Misc Works | 50d | 2027-04-03 | 2027-06-02 | CB-B03-3S-WMI-10 | CSD-LKO Calender (6 day + Holiday)-25 | Structural Misc Works [818513 INR]; Physical Progress [11160 h]; TATA Projects Ltd-25 | 818,513 |
| CB-B03-3S-WMI-25 |  | Plaster | 30d | 2027-06-14 | 2027-07-19 | CB-B03-3S-WMI-30, CB-B03-3S-WMI-60, CB-B03-3S-WMI-245, CB-B03-3S-WMI-395 | CSD-LKO Calender (6 day + Holiday)-25 | Plaster [12176 Sqr Mtr]; Mason [8120 h]; Helper [4060 h]; Physical Progress [6700 h]; TATA Projects Ltd-25 | 6,744,408.16 |
| CB-B03-3S-WMI-20 |  | Flooring | 25d | 2027-12-16 | 2028-01-17 | CB-B03-3S-WMI-15, CB-B03-3S-WMI-95, CB-B03-3S-WMI-145, CB-B03-3S-WMI-200, CB-B03-3S-WMI-255, CB-B03-3S-WMI-395, CB-B03-3S-WMI-80, CB-B03-3S-WMI-85, CB-B03-3S-WMI-90, CB-B03-3S-WMI-300, CB-B03-3S-WMI-95 FF, CB-B03-3S-WMI-35, CB-B03-3S-WMI-40, CB-B03-3S-WMI-50, CB-B03-3S-WMI-310, CB-B03-3S-WMI-405, CB-B03-3S-WMI-315, CB-B03-3S-WMI-150, CB-B03-3S-WMI-130, CB-B03-3S-WMI-145 FF, CB-B03-3S-WMI-135, CB-B03-3S-WMI-375, CB-B03-3S-WMI-185, CB-B03-3S-WMI-195, CB-B03-3S-WMI-200 FF, CB-B03-3S-WMI-190, CB-B03-3S-WMI-230, CB-B03-3S-WMI-235, CB-B03-3S-WMI-320, CB-B03-3S-WMI-240, CB-B03-3S-WMI-255 FF | CSD-LKO Calender (6 day + Holiday)-25 | Flooring [18764991 INR]; Flooring Mason [9400 h]; Helper [9400 h]; Physical Progress [11160 h]; TATA Projects Ltd-25 | 18,764,991 |
|  | 3 | **STP/ETP** |  | 2027-05-04 | 2027-07-19 |  |  |  |  |
| CB-B03-3S-WMI-365 |  | Installation of Rungs | 10d | 2027-05-04 | 2027-05-15 | CB-B03-3S-WMI-15 | CSD-LKO Calender (6 day + Holiday)-25 | Rungs [364811 INR]; Physical Progress [2230 h]; TATA Projects Ltd-25 | 364,811 |
| CB-B03-3S-WMI-355 |  | Waterproofing | 30d | 2027-05-15 | 2027-06-19 | CB-B03-3S-WMI-365 | CSD-LKO Calender (6 day + Holiday)-25 | Waterproofing [8564838 INR]; Waterprrofing Mason [8160 h]; Helper [4080 h]; Physical Progress [6700 h]; TATA Projects Ltd-25 | 8,564,838 |
| CB-B03-3S-WMI-360 |  | Flooring | 25d | 2027-06-19 | 2027-07-19 | CB-B03-3S-WMI-355 | CSD-LKO Calender (6 day + Holiday)-25 | Flooring [5864060 INR]; Flooring Mason [2940 h]; Helper [2940 h]; Physical Progress [6700 h]; TATA Projects Ltd-25 | 5,864,060 |
|  | 5 | **Low Side MEP** |  | 2027-04-03 | 2028-04-22 |  |  |  |  |
|  | 2 | **HVAC** |  | 2027-05-04 | 2028-04-22 |  |  |  |  |
|  | 1 | **1st Fix** |  | 2027-05-04 | 2027-08-23 |  |  |  |  |
| CB-B03-3S-WMI-305 |  | Duct Support Fabrication | 35d | 2027-05-04 | 2027-06-14 | CB-B03-3S-WMI-15 | CSD-LKO Calender (6 day + Holiday)-25 | Physical Progress [3350 h]; HVAC [210890 INR]; TATA Projects Ltd-25 | 210,890 |
| CB-B03-3S-WMI-65 |  | Installing duct hangers and supports | 30d | 2027-06-14 | 2027-07-19 | CB-B03-3S-WMI-275, CB-B03-3S-WMI-305 | CSD-LKO Calender (6 day + Holiday)-25 | Physical Progress [2230 h]; HVAC [421779 INR]; TATA Projects Ltd-25 | 421,779 |
| CB-B03-3S-WMI-70 |  | Laying concealed/exposed refrigerant piping | 30d | 2027-07-19 | 2027-08-23 | CB-B03-3S-WMI-65 | CSD-LKO Calender (6 day + Holiday)-25 | Physical Progress [3350 h]; HVAC [105445 INR]; TATA Projects Ltd-25 | 105,445 |
| CB-B03-3S-WMI-75 |  | Laying concealed/exposed drain piping | 30d | 2027-07-19 | 2027-08-23 | CB-B03-3S-WMI-65 | CSD-LKO Calender (6 day + Holiday)-25 | Physical Progress [2230 h]; HVAC [632669 INR]; TATA Projects Ltd-25 | 632,669 |

| ID | WBS | Activity | Duration | Start | Finish | Predecessors | Calendar | Resources | Cost |
| --- | --- | --- | --- | --- | --- | --- | --- | --- | --- |
|  | 2 | **2nd Fix** |  | 2027-07-19 | 2027-12-04 |  |  |  |  |
| CB-B03-3S-WMI-80 |  | Duct installation | 20d | 2027-07-19 | 2027-08-11 | CB-B03-3S-WMI-65 | CSD-LKO Calender (6 day + Holiday)-25 | Physical Progress [3350 h]; HVAC [1581672 INR]; TATA Projects Ltd-25 | 1,581,672 |
| CB-B03-3S-WMI-85 |  | Insulation of ducts (thermal/acoustic) | 15d | 2027-08-11 | 2027-08-28 | CB-B03-3S-WMI-80 | CSD-LKO Calender (6 day + Holiday)-25 | Physical Progress [1340 h]; HVAC [949003 INR]; TATA Projects Ltd-25 | 949,003 |
| CB-B03-3S-WMI-90 |  | Installation of chilled water piping / VRF piping | 15d | 2027-08-28 | 2027-09-16 | CB-B03-3S-WMI-85 | CSD-LKO Calender (6 day + Holiday)-25 | Physical Progress [1340 h]; HVAC [2108896 INR]; TATA Projects Ltd-25 | 2,108,896 |
| CB-B03-3S-WMI-300 |  | Installation of indoor units including AHU, FCU | 45d | 2027-09-16 | 2027-11-11 | CB-B03-3S-WMI-90, CB-B03-3S-WMI-70, CB-B03-3S-WMI-75 | CSD-LKO Calender (6 day + Holiday)-25 | Physical Progress [10040 h]; HVAC [1898006 INR]; TATA Projects Ltd-25 | 1,898,006 |
| CB-B03-3S-WMI-95 |  | Connecting refrigerant and drain piping to indoor units | 20d | 2027-11-11 | 2027-12-04 | CB-B03-3S-WMI-300 | CSD-LKO Calender (6 day + Holiday)-25 | Physical Progress [1340 h]; HVAC [527224 INR]; TATA Projects Ltd-25 | 527,224 |
|  | 3 | **Final Fix** |  | 2028-02-10 | 2028-04-22 |  |  |  |  |
| CB-B03-3S-WMI-105 |  | Installing grills, diffusers, dampers | 30d | 2028-02-10 | 2028-03-17 | CB-B03-3S-WMI-280 | CSD-LKO Calender (6 day + Holiday)-25 | Physical Progress [1340 h]; HVAC [1054448 INR]; TATA Projects Ltd-25 | 1,054,448 |
| CB-B03-3S-WMI-100 |  | Installation of thermostats and control panels | 30d | 2028-03-17 | 2028-04-22 | CB-B03-3S-WMI-105 | CSD-LKO Calender (6 day + Holiday)-25 | Physical Progress [1340 h]; HVAC [527224 INR]; TATA Projects Ltd-25 | 527,224 |
|  | 1 | **Electrical** |  | 2027-04-03 | 2028-03-29 |  |  |  |  |
|  | 1 | **1st Fix** |  | 2027-04-03 | 2027-06-14 |  |  |  |  |
| CB-B03-3S-WMI-385 |  | Slab Conduiting | 25d | 2027-04-03 | 2027-05-04 | CB-B03-3S-WMI-10 | CSD-LKO Calender (6 day + Holiday)-25 | Physical Progress [5580 h]; Electrical [926153 INR]; TATA Projects Ltd-25 | 926,153 |
| CB-B03-3S-WMI-30 |  | Wall Conduiting | 30d | 2027-05-04 | 2027-06-08 | CB-B03-3S-WMI-15 | CSD-LKO Calender (6 day + Holiday)-25 | Physical Progress [2230 h]; Electrical [463076 INR]; TATA Projects Ltd-25 | 463,076 |
| CB-B03-3S-WMI-60 |  | Installing back boxes for switches, sockets | 5d | 2027-06-08 | 2027-06-14 | CB-B03-3S-WMI-30, CB-B03-3S-WMI-385 | CSD-LKO Calender (6 day + Holiday)-25 | Physical Progress [1110 h]; Electrical [277846 INR]; TATA Projects Ltd-25 | 277,846 |
|  | 2 | **2nd Fix** |  | 2027-07-19 | 2027-12-16 |  |  |  |  |
| CB-B03-3S-WMI-35 |  | Cable tray laying | 15d | 2027-07-19 | 2027-08-05 | CB-B03-3S-WMI-25, CB-B03-3S-WMI-275 | CSD-LKO Calender (6 day + Holiday)-25 | Physical Progress [5580 h]; Electrical [370461 INR]; TATA Projects Ltd-25 | 370,461 |
| CB-B03-3S-WMI-40 |  | Cabling & Wire Pulling | 45d | 2027-08-05 | 2027-09-28 | CB-B03-3S-WMI-35 | CSD-LKO Calender (6 day + Holiday)-25 | Physical Progress [10040 h]; Electrical [1852305 INR]; TATA Projects Ltd-25 | 1,852,305 |
| CB-B03-3S-WMI-50 |  | DB fixing and connecting | 20d | 2027-09-28 | 2027-10-23 | CB-B03-3S-WMI-40 | CSD-LKO Calender (6 day + Holiday)-25 | Physical Progress [3350 h]; Electrical [277846 INR]; TATA Projects Ltd-25 | 277,846 |
| CB-B03-3S-WMI-310 |  | Floor/Distribution Panel Installation | 15d | 2027-10-23 | 2027-11-11 | CB-B03-3S-WMI-50 | CSD-LKO Calender (6 day + Holiday)-25 | Physical Progress [1110 h]; Electrical [740922 INR]; TATA Projects Ltd-25 | 740,922 |
| CB-B03-3S-WMI-405 |  | Floor Rising Main Installation | 15d | 2027-11-11 | 2027-11-29 | CB-B03-3S-WMI-310 | CSD-LKO Calender (6 day + Holiday)-25 | Physical Progress [2230 h]; Electrical [1296614 INR]; TATA Projects Ltd-25 | 1,296,614 |
| CB-B03-3S-WMI-315 |  | Equipment Earthing | 15d | 2027-11-29 | 2027-12-16 | CB-B03-3S-WMI-310, CB-B03-3S-WMI-405 | CSD-LKO Calender (6 day + Holiday)-25 | Physical Progress [2230 h]; Electrical [277846 INR]; TATA Projects Ltd-25 | 277,846 |
|  | 3 | **Final Fix** |  | 2028-02-10 | 2028-03-29 |  |  |  |  |
| CB-B03-3S-WMI-55 |  | Switches & Socket | 20d | 2028-02-10 | 2028-03-04 | CB-B03-3S-WMI-280 | CSD-LKO Calender (6 day + Holiday)-25 | Physical Progress [4460 h]; Electrical [926153 INR]; TATA Projects Ltd-25 | 926,153 |
| CB-B03-3S-WMI-45 |  | Light Fixtures | 20d | 2028-03-04 | 2028-03-29 | CB-B03-3S-WMI-55, CB-B03-3S-WMI-315 | CSD-LKO Calender (6 day + Holiday)-25 | Physical Progress [3350 h]; Electrical [1389229 INR]; TATA Projects Ltd-25 | 1,389,229 |

| ID | WBS | Activity | Duration | Start | Finish | Predecessors | Calendar | Resources | Cost |
| --- | --- | --- | --- | --- | --- | --- | --- | --- | --- |
|  | 3 | **Plumbing** |  | 2027-05-04 | 2028-04-04 |  |  |  |  |
|  | 1 | **1st Fix** |  | 2027-05-04 | 2027-10-05 |  |  |  |  |
| CB-B03-3S-WMI-120 |  | Fixing pipe supports and clamps | 35d | 2027-05-04 | 2027-06-14 | CB-B03-3S-WMI-15 | CSD-LKO Calender (6 day + Holiday)-25 | Physical Progress [2230 h]; Plumbing [521800 INR]; TATA Projects Ltd-25 | 521,800 |
| CB-B03-3S-WMI-110 |  | Laying water supply pipes (hot & cold) | 35d | 2027-06-14 | 2027-07-24 | CB-B03-3S-WMI-120 | CSD-LKO Calender (6 day + Holiday)-25 | Physical Progress [3350 h]; Plumbing [1043599 INR]; TATA Projects Ltd-25 | 1,043,599 |
| CB-B03-3S-WMI-115 |  | Laying drainage pipes (soil, waste, vent) | 35d | 2027-06-14 | 2027-07-24 | CB-B03-3S-WMI-120 | CSD-LKO Calender (6 day + Holiday)-25 | Physical Progress [3350 h]; Plumbing [1043599 INR]; TATA Projects Ltd-25 | 1,043,599 |
| CB-B03-3S-WMI-140 |  | Installation of plumbing fixture base supports (WC frames, sink brackets) | 30d | 2027-07-24 | 2027-08-28 | CB-B03-3S-WMI-115 | CSD-LKO Calender (6 day + Holiday)-25 | Physical Progress [1340 h]; Plumbing [521800 INR]; TATA Projects Ltd-25 | 521,800 |
| CB-B03-3S-WMI-125 |  | Pressure testing of water supply lines | 25d | 2027-08-28 | 2027-09-28 | CB-B03-3S-WMI-110, CB-B03-3S-WMI-115, CB-B03-3S-WMI-140 | CSD-LKO Calender (6 day + Holiday)-25 | Physical Progress [1550 h]; Plumbing [104360 INR]; TATA Projects Ltd-25 | 104,360 |
| CB-B03-3S-WMI-370 |  | Installation of concealed parts of toilet fixtures | 30d | 2027-08-28 | 2027-10-05 | CB-B03-3S-WMI-140 | CSD-LKO Calender (6 day + Holiday)-25 | Physical Progress [2230 h]; Plumbing [521800 INR]; TATA Projects Ltd-25 | 521,800 |
|  | 2 | **2nd FIx** |  | 2027-09-28 | 2027-12-10 |  |  |  |  |
| CB-B03-3S-WMI-150 |  | Insulation of hot water pipes (if applicable) | 15d | 2027-09-28 | 2027-10-18 | CB-B03-3S-WMI-125 | CSD-LKO Calender (6 day + Holiday)-25 | Physical Progress [1340 h]; Plumbing [521800 INR]; TATA Projects Ltd-25 | 521,800 |
| CB-B03-3S-WMI-130 |  | Installation of vertical risers and main distribution lines | 35d | 2027-10-05 | 2027-11-17 | CB-B03-3S-WMI-25, CB-B03-3S-WMI-275, CB-B03-3S-WMI-125, CB-B03-3S-WMI-370 | CSD-LKO Calender (6 day + Holiday)-25 | Physical Progress [4460 h]; Plumbing [1043599 INR]; TATA Projects Ltd-25 | 1,043,599 |
| CB-B03-3S-WMI-145 |  | Testing drainage lines for leakage/blockage | 15d | 2027-10-18 | 2027-11-05 | CB-B03-3S-WMI-140, CB-B03-3S-WMI-150 | CSD-LKO Calender (6 day + Holiday)-25 | Physical Progress [1340 h]; Plumbing [104360 INR]; TATA Projects Ltd-25 | 104,360 |
| CB-B03-3S-WMI-375 |  | Laying of ACO Drains | 20d | 2027-11-05 | 2027-11-29 | CB-B03-3S-WMI-145 | CSD-LKO Calender (6 day + Holiday)-25 | ACO Drain [4080997 INR]; Physical Progress [4460 h]; TATA Projects Ltd-25 | 4,080,997 |
| CB-B03-3S-WMI-135 |  | Fixing floor traps and gully traps | 20d | 2027-11-17 | 2027-12-10 | CB-B03-3S-WMI-130 | CSD-LKO Calender (6 day + Holiday)-25 | Physical Progress [1340 h]; Plumbing [313080 INR]; TATA Projects Ltd-25 | 313,080 |
|  | 3 | **Final FIx** |  | 2027-11-29 | 2028-04-04 |  |  |  |  |
| CB-B03-3S-WMI-380 |  | Installation of ACO Drain Grating | 7d | 2027-11-29 | 2027-12-07 | CB-B03-3S-WMI-375 | CSD-LKO Calender (6 day + Holiday)-25 | Grating of Drain [2489760 INR]; Physical Progress [1560 h]; TATA Projects Ltd-25 | 2,489,760 |
| CB-B03-3S-WMI-155 |  | Installation of sanitary fixtures (WC, washbasins, urinals, sinks) | 10d | 2028-02-10 | 2028-02-22 | CB-B03-3S-WMI-280 | CSD-LKO Calender (6 day + Holiday)-25 | Physical Progress [2230 h]; Plumbing [2087198 INR]; TATA Projects Ltd-25 | 2,087,198 |
| CB-B03-3S-WMI-160 |  | Installation of CP fittings (taps, mixers, showers, health faucets) | 10d | 2028-02-22 | 2028-03-04 | CB-B03-3S-WMI-155, CB-B03-3S-WMI-280, CB-B03-3S-WMI-135 | CSD-LKO Calender (6 day + Holiday)-25 | Physical Progress [2230 h]; Plumbing [1043599 INR]; TATA Projects Ltd-25 | 1,043,599 |
| CB-B03-3S-WMI-165 |  | Connection of appliances | 25d | 2028-03-04 | 2028-04-04 | CB-B03-3S-WMI-160 | CSD-LKO Calender (6 day + Holiday)-25 | Physical Progress [1550 h]; Plumbing [521800 INR]; TATA Projects Ltd-25 | 521,800 |
|  | 4 | **Firefighting** |  | 2027-05-04 | 2028-04-10 |  |  |  |  |
|  | 1 | **1st Fix** |  | 2027-05-04 | 2027-08-28 |  |  |  |  |
| CB-B03-3S-WMI-175 |  | Fixing pipe supports and hangers | 35d | 2027-05-04 | 2027-06-14 | CB-B03-3S-WMI-15 | CSD-LKO Calender (6 day + Holiday)-25 | Physical Progress [2230 h]; Firefighting [431557 INR]; TATA Projects Ltd-25 | 431,557 |
| CB-B03-3S-WMI-170 |  | Laying branch piping | 35d | 2027-06-14 | 2027-07-24 | CB-B03-3S-WMI-175 | CSD-LKO Calender (6 day + Holiday)-25 | Physical Progress [3350 h]; Firefighting [924764 INR]; TATA Projects Ltd-25 | 924,764 |
| CB-B03-3S-WMI-180 |  | Hydrostatic pressure testing of piping | 30d | 2027-07-24 | 2027-08-28 | CB-B03-3S-WMI-170 | CSD-LKO Calender (6 day + Holiday)-25 | Physical Progress [1340 h]; Firefighting [123302 INR]; TATA Projects Ltd-25 | 123,302 |

| ID | WBS | Activity | Duration | Start | Finish | Predecessors | Calendar | Resources | Cost |
| --- | --- | --- | --- | --- | --- | --- | --- | --- | --- |
|  | 2 | **2nd Fix** |  | 2027-08-28 | 2027-11-23 |  |  |  |  |
| CB-B03-3S-WMI-185 |  | Installation of vertical risers and distribution piping in shafts | 35d | 2027-08-28 | 2027-10-12 | CB-B03-3S-WMI-25, CB-B03-3S-WMI-180 | CSD-LKO Calender (6 day + Holiday)-25 | Physical Progress [5580 h]; Firefighting [1233019 INR]; TATA Projects Ltd-25 | 1,233,019 |
| CB-B03-3S-WMI-195 |  | Painting/insulation of exposed fire pipes | 30d | 2027-08-28 | 2027-10-05 | CB-B03-3S-WMI-180 | CSD-LKO Calender (6 day + Holiday)-25 | Physical Progress [2230 h]; Firefighting [61651 INR]; TATA Projects Ltd-25 | 61,651 |
| CB-B03-3S-WMI-200 |  | Testing risers and branch lines for leakage | 30d | 2027-10-05 | 2027-11-11 | CB-B03-3S-WMI-195 | CSD-LKO Calender (6 day + Holiday)-25 | Physical Progress [1340 h]; Firefighting [123302 INR]; TATA Projects Ltd-25 | 123,302 |
| CB-B03-3S-WMI-190 |  | Installation of sprinkler branch lines in ceilings | 35d | 2027-10-12 | 2027-11-23 | CB-B03-3S-WMI-185, CB-B03-3S-WMI-275 | CSD-LKO Calender (6 day + Holiday)-25 | Physical Progress [5580 h]; Firefighting [924764 INR]; TATA Projects Ltd-25 | 924,764 |
|  | 3 | **Final FIx** |  | 2028-02-10 | 2028-04-10 |  |  |  |  |
| CB-B03-3S-WMI-205 |  | Installation of sprinkler heads, nozzles, and final alignment | 35d | 2028-02-10 | 2028-03-23 | CB-B03-3S-WMI-280, CB-B03-3S-WMI-190 | CSD-LKO Calender (6 day + Holiday)-25 | Physical Progress [10040 h]; Firefighting [924764 INR]; TATA Projects Ltd-25 | 924,764 |
| CB-B03-3S-WMI-210 |  | Installation of hydrant accessories (valves, hose reels, cabinets) | 25d | 2028-02-10 | 2028-03-10 | CB-B03-3S-WMI-280 | CSD-LKO Calender (6 day + Holiday)-25 | Physical Progress [2230 h]; Firefighting [616510 INR]; TATA Projects Ltd-25 | 616,510 |
| CB-B03-3S-WMI-215 |  | Installation of portable fire extinguishers | 30d | 2028-02-10 | 2028-03-17 | CB-B03-3S-WMI-280 | CSD-LKO Calender (6 day + Holiday)-25 | Physical Progress [1340 h]; Firefighting [61651 INR]; TATA Projects Ltd-25 | 61,651 |
| CB-B03-3S-WMI-220 |  | Integration with fire alarm system | 20d | 2028-03-17 | 2028-04-10 | CB-B03-3S-WMI-215 | CSD-LKO Calender (6 day + Holiday)-25 | Physical Progress [4460 h]; Firefighting [308255 INR]; TATA Projects Ltd-25 | 308,255 |
|  | 5 | **ELV** |  | 2027-04-03 | 2028-04-04 |  |  |  |  |
|  | 1 | **1st Fix** |  | 2027-04-03 | 2027-06-14 |  |  |  |  |
| CB-B03-3S-WMI-390 |  | Slab Conduiting | 25d | 2027-04-03 | 2027-05-04 | CB-B03-3S-WMI-10 | CSD-LKO Calender (6 day + Holiday)-25 | Physical Progress [5580 h]; ELV [726016 INR]; TATA Projects Ltd-25 | 726,016 |
| CB-B03-3S-WMI-225 |  | Wall Conduiting | 30d | 2027-05-04 | 2027-06-08 | CB-B03-3S-WMI-15 | CSD-LKO Calender (6 day + Holiday)-25 | Physical Progress [2230 h]; ELV [311150 INR]; TATA Projects Ltd-25 | 311,150 |
| CB-B03-3S-WMI-245 |  | Installing back boxes for switches, sockets | 5d | 2027-06-08 | 2027-06-14 | CB-B03-3S-WMI-225, CB-B03-3S-WMI-390 | CSD-LKO Calender (6 day + Holiday)-25 | Physical Progress [1110 h]; ELV [518583 INR]; TATA Projects Ltd-25 | 518,583 |
|  | 2 | **2nd Fix** |  | 2027-07-19 | 2027-11-17 |  |  |  |  |
| CB-B03-3S-WMI-230 |  | Cable tray installation | 15d | 2027-07-19 | 2027-08-05 | CB-B03-3S-WMI-25, CB-B03-3S-WMI-275 | CSD-LKO Calender (6 day + Holiday)-25 | Physical Progress [5580 h]; ELV [518583 INR]; TATA Projects Ltd-25 | 518,583 |
| CB-B03-3S-WMI-235 |  | Cabeling of ELV cable - IT/Fire Alarm/Public Address | 30d | 2027-08-05 | 2027-09-10 | CB-B03-3S-WMI-230 | CSD-LKO Calender (6 day + Holiday)-25 | Physical Progress [10040 h]; ELV [1244599 INR]; TATA Projects Ltd-25 | 1,244,599 |
| CB-B03-3S-WMI-320 |  | ELV Rack Installation | 15d | 2027-09-10 | 2027-09-28 | CB-B03-3S-WMI-235 | CSD-LKO Calender (6 day + Holiday)-25 | Physical Progress [2230 h]; ELV [518583 INR]; TATA Projects Ltd-25 | 518,583 |
| CB-B03-3S-WMI-240 |  | Termination of cables at junction boxes, patch panels, and control panels | 15d | 2027-09-28 | 2027-10-18 | CB-B03-3S-WMI-320 | CSD-LKO Calender (6 day + Holiday)-25 | Physical Progress [6700 h]; ELV [518583 INR]; TATA Projects Ltd-25 | 518,583 |
| CB-B03-3S-WMI-255 |  | Fixing devices like CCTV camera bases, card reader bases, smoke detector bases, PA Bases, Wifi Bases | 25d | 2027-10-18 | 2027-11-17 | CB-B03-3S-WMI-240 | CSD-LKO Calender (6 day + Holiday)-25 | Physical Progress [890 h]; ELV [1037166 INR]; TATA Projects Ltd-25 | 1,037,166 |
|  | 3 | **3rd Fix** |  | 2028-02-10 | 2028-04-04 |  |  |  |  |
| CB-B03-3S-WMI-250 |  | Installation of data and Voice Faceplate | 25d | 2028-02-10 | 2028-03-10 | CB-B03-3S-WMI-280 | CSD-LKO Calender (6 day + Holiday)-25 | Physical Progress [3350 h]; ELV [518583 INR]; TATA Projects Ltd-25 | 518,583 |
| CB-B03-3S-WMI-260 |  | Installation of Camera & Wifi | 30d | 2028-02-10 | 2028-03-17 | CB-B03-3S-WMI-280 | CSD-LKO Calender (6 day + Holiday)-25 | Physical Progress [3350 h]; ELV [518583 INR]; TATA Projects Ltd-25 | 518,583 |
| CB-B03-3S-WMI-265 |  | Installation of fire alarm devices + Public Address | 15d | 2028-02-10 | 2028-02-28 | CB-B03-3S-WMI-280 | CSD-LKO Calender (6 day + Holiday)-25 | Physical Progress [3350 h]; ELV [622299 INR]; TATA Projects Ltd-25 | 622,299 |
| CB-B03-3S-WMI-325 |  | Installation of Active System | 15d | 2028-02-28 | 2028-03-17 | CB-B03-3S-WMI-265 | CSD-LKO Calender (6 day + Holiday)-25 | Physical Progress [3350 h]; ELV [1037166 INR]; TATA Projects Ltd-25 | 1,037,166 |
| CB-B03-3S-WMI-335 |  | Fire Panel Intallation & Integration | 25d | 2028-02-28 | 2028-03-29 | CB-B03-3S-WMI-265 | CSD-LKO Calender (6 day + Holiday)-25 | Physical Progress [5580 h]; ELV [518583 INR]; TATA Projects Ltd-25 | 518,583 |
| CB-B03-3S-WMI-340 |  | Installation & Integration of Audio Visual System | 25d | 2028-02-28 | 2028-03-29 | CB-B03-3S-WMI-265 | CSD-LKO Calender (6 day + Holiday)-25 | Physical Progress [5580 h]; ELV [518583 INR]; TATA Projects Ltd-25 | 518,583 |
| CB-B03-3S-WMI-345 |  | Installation & Integration of Access Control | 25d | 2028-02-28 | 2028-03-29 | CB-B03-3S-WMI-265 | CSD-LKO Calender (6 day + Holiday)-25 | Physical Progress [5580 h]; ELV [518583 INR]; TATA Projects Ltd-25 | 518,583 |
| CB-B03-3S-WMI-330 |  | Integration of Active components | 15d | 2028-03-17 | 2028-04-04 | CB-B03-3S-WMI-325 | CSD-LKO Calender (6 day + Holiday)-25 | Physical Progress [3350 h]; ELV [207433 INR]; TATA Projects Ltd-25 | 207,433 |

| ID | WBS | Activity | Duration | Start | Finish | Predecessors | Calendar | Resources | Cost |
| --- | --- | --- | --- | --- | --- | --- | --- | --- | --- |
|  | 2 | **Dry Finishes** |  | 2027-05-04 | 2028-05-22 |  |  |  |  |
| CB-B03-3S-WMI-275 |  | Painting on Ceiling (Ceiling Finish) | 15d | 2027-05-04 | 2027-05-21 | CB-B03-3S-WMI-15 | CSD-LKO Calender (6 day + Holiday)-25 | Painting [7254 Sq m]; Painter [7260 h]; Helper [7260 h]; Physical Progress [3350 h]; TATA Projects Ltd-25 | 1,658,409.48 |
| CB-B03-3S-WMI-270 |  | Installation of Gypsum Board | 10d | 2028-01-17 | 2028-01-29 | CB-B03-3S-WMI-20 | CSD-LKO Calender (6 day + Holiday)-25 | ID Work [442093 INR]; Physical Progress [2230 h]; TATA Projects Ltd-25 | 442,093 |
| CB-B03-3S-WMI-400 |  | Civil Misc Works | 30d | 2028-01-17 | 2028-02-22 | CB-B03-3S-WMI-20 | CSD-LKO Calender (6 day + Holiday)-25 | Civil Misc Works [1689710 INR]; Physical Progress [6700 h]; TATA Projects Ltd-25 | 1,689,710 |
| CB-B03-3S-WMI-280 |  | Wall Painting first coat including putty | 10d | 2028-01-29 | 2028-02-10 | CB-B03-3S-WMI-270 | CSD-LKO Calender (6 day + Holiday)-25 | Painting [7254 Sq m]; Painter [7260 h]; Helper [7260 h]; Physical Progress [2230 h]; TATA Projects Ltd-25 | 1,658,409.48 |
| CB-B03-3S-WMI-295 |  | Wheel stoppers | 8d | 2028-02-10 | 2028-02-19 | CB-B03-3S-WMI-280 | CSD-LKO Calender (6 day + Holiday)-25 | Wheel Stopper [8624 INR]; Physical Progress [1790 h]; TATA Projects Ltd-25 | 8,624 |
| CB-B03-3S-WMI-350 |  | Door & Window | 10d | 2028-02-10 | 2028-02-22 | CB-B03-3S-WMI-280 | CSD-LKO Calender (6 day + Holiday)-25 | ID Work [442093 INR]; Physical Progress [2230 h]; TATA Projects Ltd-25 | 442,093 |
| CB-B03-3S-WMI-290 |  | Line marking for parking bays, arrows, pedestrian paths | 8d | 2028-02-19 | 2028-02-29 | CB-B03-3S-WMI-295 | CSD-LKO Calender (6 day + Holiday)-25 | Line / Arrow Marking [608888 INR]; Physical Progress [1790 h]; TATA Projects Ltd-25 | 608,888 |
| CB-B03-3S-WMI-285 |  | Wall painting final coat | 6d | 2028-05-15 | 2028-05-22 | CB-B03-3S-WMI-290, CB-B03-3S-WMI-250, CB-B03-3S-WMI-260, CB-B03-3S-WMI-220, CB-B03-3S-WMI-205, CB-B03-3S-WMI-210, CB-B03-3S-WMI-215, CB-B03-3S-WMI-165, CB-B03-3S-WMI-45, CB-B03-3S-WMI-100, CB-B03-3S-WMI-335, CB-B03-3S-WMI-350, CB-B03-3S-WMI-380, CB-B03-3S-WMI-340, CB-B03-3S-WMI-330, CB-B03-3S-WMI-345, CB-B03-3S-WMI-400, CB-B03-HS-MEP30, CB-B03-HS-MEP20, CB-B03-HS-MEP25, CB-B03-HS-MEP40, CB-B03-HS-MEP35, CB-B03-HS-MEP10, CB-B03-HS-MEP15 | CSD-LKO Calender (6 day + Holiday)-25 | Painting [7254 Sq m]; Painter [7250 h]; Helper [7250 h]; Physical Progress [1340 h]; TATA Projects Ltd-25 | 1,658,409.48 |
|  | 2 | **Retail Block 2** |  | 2027-06-09 | 2028-07-14 |  |  |  |  |
|  | 1 | **Wet Finishes** |  | 2027-06-09 | 2028-04-01 |  |  |  |  |
| CB-B03-RB2-WMI-10 |  | Waiting for curing & Deshuttering | 7d | 2027-06-09 | 2027-06-17 | RB2-SS-GS150, RB2-SS-GS35, RB2-SS-GS65, RB2-SS-GS100, RB2-SS-GS170, RB2-SS-GS185 | CSD-LKO Calender (6 day + Holiday)-25 | Physical Progress [1550 h]; TATA Projects Ltd-25 |  |
| CB-B03-RB2-WMI-15 |  | Brickwork/Blockwork | 25d | 2027-06-17 | 2027-07-16 | CB-B03-RB2-WMI-10 | CSD-LKO Calender (6 day + Holiday)-25 | Masonry [366 CuM]; Mason [2440 h]; Helper [1220 h]; Physical Progress [10040 h]; TATA Projects Ltd-25 | 3,489,941.76 |
| CB-B03-RB2-WMI-395 |  | Structural Misc Works | 50d | 2027-06-17 | 2027-08-14 | CB-B03-RB2-WMI-10 | CSD-LKO Calender (6 day + Holiday)-25 | Structural Misc Works [818513 INR]; Physical Progress [11160 h]; TATA Projects Ltd-25 | 818,513 |
| CB-B03-RB2-WMI-25 |  | Plaster | 30d | 2027-08-26 | 2027-10-01 | CB-B03-RB2-WMI-30, CB-B03-RB2-WMI-60, CB-B03-RB2-WMI-245, CB-B03-RB2-WMI-395 | CSD-LKO Calender (6 day + Holiday)-25 | Plaster [12176 Sqr Mtr]; Mason [8120 h]; Helper [4060 h]; Physical Progress [6700 h]; TATA Projects Ltd-25 | 6,744,408.16 |
| CB-B03-RB2-WMI-20 |  | Flooring | 25d | 2028-03-02 | 2028-04-01 | CB-B03-RB2-WMI-15, CB-B03-RB2-WMI-95, CB-B03-RB2-WMI-145, CB-B03-RB2-WMI-200, CB-B03-RB2-WMI-255, CB-B03-RB2-WMI-395, CB-B03-RB2-WMI-80, CB-B03-RB2-WMI-85, CB-B03-RB2-WMI-90, CB-B03-RB2-WMI-300, CB-B03-RB2-WMI-35, CB-B03-RB2-WMI-40, CB-B03-RB2-WMI-50, CB-B03-RB2-WMI-310, CB-B03-RB2-WMI-405, CB-B03-RB2-WMI-315, CB-B03-RB2-WMI-150, CB-B03-RB2-WMI-130, CB-B03-RB2-WMI-145 FF, CB-B03-RB2-WMI-135, CB-B03-RB2-WMI-375, CB-B03-RB2-WMI-185, CB-B03-RB2-WMI-195, CB-B03-RB2-WMI-200 FF, CB-B03-RB2-WMI-190, CB-B03-RB2-WMI-230, CB-B03-RB2-WMI-235, CB-B03-RB2-WMI-320, CB-B03-RB2-WMI-240, CB-B03-RB2-WMI-255 FF | CSD-LKO Calender (6 day + Holiday)-25 | Flooring [18764991 INR]; Flooring Mason [9400 h]; Helper [9400 h]; Physical Progress [11160 h]; TATA Projects Ltd-25 | 18,764,991 |
|  | 3 | **Water Tanks** |  | 2027-06-17 | 2027-09-01 |  |  |  |  |
| CB-B03-RB2-WMI-365 |  | Installation of Rungs | 10d | 2027-06-17 | 2027-06-29 | CB-B03-RB2-WMI-10 | CSD-LKO Calender (6 day + Holiday)-25 | Rungs [364811 INR]; Physical Progress [2230 h]; TATA Projects Ltd-25 | 364,811 |
| CB-B03-RB2-WMI-355 |  | Waterproofing | 30d | 2027-06-29 | 2027-08-03 | CB-B03-RB2-WMI-365 | CSD-LKO Calender (6 day + Holiday)-25 | Waterproofing [8564838 INR]; Waterprrofing Mason [8160 h]; Helper [4080 h]; Physical Progress [6700 h]; TATA Projects Ltd-25 | 8,564,838 |
| CB-B03-RB2-WMI-360 |  | Flooring | 25d | 2027-08-03 | 2027-09-01 | CB-B03-RB2-WMI-355 | CSD-LKO Calender (6 day + Holiday)-25 | Flooring [5864060 INR]; Flooring Mason [2940 h]; Helper [2940 h]; Physical Progress [6700 h]; TATA Projects Ltd-25 | 5,864,060 |
|  | 5 | **Low Side MEP** |  | 2027-06-17 | 2028-07-07 |  |  |  |  |
|  | 2 | **HVAC** |  | 2027-07-16 | 2028-07-07 |  |  |  |  |
|  | 1 | **1st Fix** |  | 2027-07-16 | 2027-11-09 |  |  |  |  |
| CB-B03-RB2-WMI-305 |  | Duct Support Fabrication | 35d | 2027-07-16 | 2027-08-26 | CB-B03-RB2-WMI-15 | CSD-LKO Calender (6 day + Holiday)-25 | Physical Progress [3350 h]; HVAC [210890 INR]; TATA Projects Ltd-25 | 210,890 |
| CB-B03-RB2-WMI-65 |  | Installing duct hangers and supports | 30d | 2027-08-26 | 2027-10-01 | CB-B03-RB2-WMI-275, CB-B03-RB2-WMI-305 | CSD-LKO Calender (6 day + Holiday)-25 | Physical Progress [2230 h]; HVAC [421779 INR]; TATA Projects Ltd-25 | 421,779 |
| CB-B03-RB2-WMI-70 |  | Laying concealed/exposed refrigerant piping | 30d | 2027-10-01 | 2027-11-09 | CB-B03-RB2-WMI-65 | CSD-LKO Calender (6 day + Holiday)-25 | Physical Progress [3350 h]; HVAC [105445 INR]; TATA Projects Ltd-25 | 105,445 |
| CB-B03-RB2-WMI-75 |  | Laying concealed/exposed drain piping | 30d | 2027-10-01 | 2027-11-09 | CB-B03-RB2-WMI-65 | CSD-LKO Calender (6 day + Holiday)-25 | Physical Progress [2230 h]; HVAC [632669 INR]; TATA Projects Ltd-25 | 632,669 |

| ID | WBS | Activity | Duration | Start | Finish | Predecessors | Calendar | Resources | Cost |
| --- | --- | --- | --- | --- | --- | --- | --- | --- | --- |
|  | 2 | **2nd Fix** |  | 2027-10-01 | 2028-02-19 |  |  |  |  |
| CB-B03-RB2-WMI-80 |  | Duct installation | 20d | 2027-10-01 | 2027-10-27 | CB-B03-RB2-WMI-65 | CSD-LKO Calender (6 day + Holiday)-25 | Physical Progress [3350 h]; HVAC [1581672 INR]; TATA Projects Ltd-25 | 1,581,672 |
| CB-B03-RB2-WMI-85 |  | Insulation of ducts (thermal/acoustic) | 15d | 2027-10-27 | 2027-11-15 | CB-B03-RB2-WMI-80 | CSD-LKO Calender (6 day + Holiday)-25 | Physical Progress [1340 h]; HVAC [949003 INR]; TATA Projects Ltd-25 | 949,003 |
| CB-B03-RB2-WMI-90 |  | Installation of chilled water piping / VRF piping | 15d | 2027-11-15 | 2027-12-02 | CB-B03-RB2-WMI-85 | CSD-LKO Calender (6 day + Holiday)-25 | Physical Progress [1340 h]; HVAC [2108896 INR]; TATA Projects Ltd-25 | 2,108,896 |
| CB-B03-RB2-WMI-300 |  | Installation of indoor units including AHU, FCU | 45d | 2027-12-02 | 2028-01-27 | CB-B03-RB2-WMI-90, CB-B03-RB2-WMI-70, CB-B03-RB2-WMI-75 | CSD-LKO Calender (6 day + Holiday)-25 | Physical Progress [10040 h]; HVAC [1898006 INR]; TATA Projects Ltd-25 | 1,898,006 |
| CB-B03-RB2-WMI-95 |  | Connecting refrigerant and drain piping to indoor units | 20d | 2028-01-27 | 2028-02-19 | CB-B03-RB2-WMI-300 | CSD-LKO Calender (6 day + Holiday)-25 | Physical Progress [1340 h]; HVAC [527224 INR]; TATA Projects Ltd-25 | 527,224 |
|  | 3 | **Final Fix** |  | 2028-04-26 | 2028-07-07 |  |  |  |  |
| CB-B03-RB2-WMI-105 |  | Installing grills, diffusers, dampers | 30d | 2028-04-26 | 2028-06-02 | CB-B03-RB2-WMI-280 | CSD-LKO Calender (6 day + Holiday)-25 | Physical Progress [1340 h]; HVAC [1054448 INR]; TATA Projects Ltd-25 | 1,054,448 |
| CB-B03-RB2-WMI-100 |  | Installation of thermostats and control panels | 30d | 2028-06-02 | 2028-07-07 | CB-B03-RB2-WMI-105 | CSD-LKO Calender (6 day + Holiday)-25 | Physical Progress [1340 h]; HVAC [527224 INR]; TATA Projects Ltd-25 | 527,224 |
|  | 1 | **Electrical** |  | 2027-06-17 | 2028-06-14 |  |  |  |  |
|  | 1 | **1st Fix** |  | 2027-06-17 | 2027-08-26 |  |  |  |  |
| CB-B03-RB2-WMI-385 |  | Slab Conduiting | 25d | 2027-06-17 | 2027-07-16 | CB-B03-RB2-WMI-10 | CSD-LKO Calender (6 day + Holiday)-25 | Physical Progress [5580 h]; Electrical [926153 INR]; TATA Projects Ltd-25 | 926,153 |
| CB-B03-RB2-WMI-30 |  | Wall Conduiting | 30d | 2027-07-16 | 2027-08-20 | CB-B03-RB2-WMI-15 | CSD-LKO Calender (6 day + Holiday)-25 | Physical Progress [2230 h]; Electrical [463076 INR]; TATA Projects Ltd-25 | 463,076 |
| CB-B03-RB2-WMI-60 |  | Installing back boxes for switches, sockets | 5d | 2027-08-20 | 2027-08-26 | CB-B03-RB2-WMI-30, CB-B03-RB2-WMI-385 | CSD-LKO Calender (6 day + Holiday)-25 | Physical Progress [1110 h]; Electrical [277846 INR]; TATA Projects Ltd-25 | 277,846 |
|  | 2 | **2nd Fix** |  | 2027-10-01 | 2028-03-02 |  |  |  |  |
| CB-B03-RB2-WMI-35 |  | Cable tray laying | 15d | 2027-10-01 | 2027-10-21 | CB-B03-RB2-WMI-25, CB-B03-RB2-WMI-275 | CSD-LKO Calender (6 day + Holiday)-25 | Physical Progress [5580 h]; Electrical [370461 INR]; TATA Projects Ltd-25 | 370,461 |
| CB-B03-RB2-WMI-40 |  | Cabling & Wire Pulling | 45d | 2027-10-21 | 2027-12-14 | CB-B03-RB2-WMI-35 | CSD-LKO Calender (6 day + Holiday)-25 | Physical Progress [10040 h]; Electrical [1852305 INR]; TATA Projects Ltd-25 | 1,852,305 |
| CB-B03-RB2-WMI-50 |  | DB fixing and connecting | 20d | 2027-12-14 | 2028-01-08 | CB-B03-RB2-WMI-40 | CSD-LKO Calender (6 day + Holiday)-25 | Physical Progress [3350 h]; Electrical [277846 INR]; TATA Projects Ltd-25 | 277,846 |
| CB-B03-RB2-WMI-310 |  | Floor/Distribution Panel Installation | 15d | 2028-01-08 | 2028-01-27 | CB-B03-RB2-WMI-50 | CSD-LKO Calender (6 day + Holiday)-25 | Physical Progress [1110 h]; Electrical [740922 INR]; TATA Projects Ltd-25 | 740,922 |
| CB-B03-RB2-WMI-405 |  | Floor Rising Main Installation | 15d | 2028-01-27 | 2028-02-14 | CB-B03-RB2-WMI-310 | CSD-LKO Calender (6 day + Holiday)-25 | Physical Progress [2230 h]; Electrical [1296614 INR]; TATA Projects Ltd-25 | 1,296,614 |
| CB-B03-RB2-WMI-315 |  | Equipment Earthing | 15d | 2028-02-14 | 2028-03-02 | CB-B03-RB2-WMI-310, CB-B03-RB2-WMI-405 | CSD-LKO Calender (6 day + Holiday)-25 | Physical Progress [2230 h]; Electrical [277846 INR]; TATA Projects Ltd-25 | 277,846 |
|  | 3 | **Final Fix** |  | 2028-04-26 | 2028-06-14 |  |  |  |  |
| CB-B03-RB2-WMI-55 |  | Switches & Socket | 20d | 2028-04-26 | 2028-05-22 | CB-B03-RB2-WMI-280 | CSD-LKO Calender (6 day + Holiday)-25 | Physical Progress [4460 h]; Electrical [926153 INR]; TATA Projects Ltd-25 | 926,153 |
| CB-B03-RB2-WMI-45 |  | Light Fixtures | 20d | 2028-05-22 | 2028-06-14 | CB-B03-RB2-WMI-55, CB-B03-RB2-WMI-315 | CSD-LKO Calender (6 day + Holiday)-25 | Physical Progress [3350 h]; Electrical [1389229 INR]; TATA Projects Ltd-25 | 1,389,229 |

| ID | WBS | Activity | Duration | Start | Finish | Predecessors | Calendar | Resources | Cost |
| --- | --- | --- | --- | --- | --- | --- | --- | --- | --- |
|  | 3 | **Plumbing** |  | 2027-07-16 | 2028-06-20 |  |  |  |  |
|  | 1 | **1st Fix** |  | 2027-07-16 | 2027-12-20 |  |  |  |  |
| CB-B03-RB2-WMI-120 |  | Fixing pipe supports and clamps | 35d | 2027-07-16 | 2027-08-26 | CB-B03-RB2-WMI-15 | CSD-LKO Calender (6 day + Holiday)-25 | Physical Progress [2230 h]; Plumbing [521800 INR]; TATA Projects Ltd-25 | 521,800 |
| CB-B03-RB2-WMI-110 |  | Laying water supply pipes (hot & cold) | 35d | 2027-08-26 | 2027-10-08 | CB-B03-RB2-WMI-120 | CSD-LKO Calender (6 day + Holiday)-25 | Physical Progress [3350 h]; Plumbing [1043599 INR]; TATA Projects Ltd-25 | 1,043,599 |
| CB-B03-RB2-WMI-115 |  | Laying drainage pipes (soil, waste, vent) | 35d | 2027-08-26 | 2027-10-08 | CB-B03-RB2-WMI-120 | CSD-LKO Calender (6 day + Holiday)-25 | Physical Progress [3350 h]; Plumbing [1043599 INR]; TATA Projects Ltd-25 | 1,043,599 |
| CB-B03-RB2-WMI-140 |  | Installation of plumbing fixture base supports (WC frames, sink brackets) | 30d | 2027-10-08 | 2027-11-15 | CB-B03-RB2-WMI-115 | CSD-LKO Calender (6 day + Holiday)-25 | Physical Progress [1340 h]; Plumbing [521800 INR]; TATA Projects Ltd-25 | 521,800 |
| CB-B03-RB2-WMI-125 |  | Pressure testing of water supply lines | 25d | 2027-11-15 | 2027-12-14 | CB-B03-RB2-WMI-110, CB-B03-RB2-WMI-115, CB-B03-RB2-WMI-140 | CSD-LKO Calender (6 day + Holiday)-25 | Physical Progress [1550 h]; Plumbing [104360 INR]; TATA Projects Ltd-25 | 104,360 |
| CB-B03-RB2-WMI-370 |  | Installation of concealed parts of toilet fixtures | 30d | 2027-11-15 | 2027-12-20 | CB-B03-RB2-WMI-140 | CSD-LKO Calender (6 day + Holiday)-25 | Physical Progress [2230 h]; Plumbing [521800 INR]; TATA Projects Ltd-25 | 521,800 |
|  | 2 | **2nd FIx** |  | 2027-12-14 | 2028-02-25 |  |  |  |  |
| CB-B03-RB2-WMI-150 |  | Insulation of hot water pipes (if applicable) | 15d | 2027-12-14 | 2028-01-03 | CB-B03-RB2-WMI-125 | CSD-LKO Calender (6 day + Holiday)-25 | Physical Progress [1340 h]; Plumbing [521800 INR]; TATA Projects Ltd-25 | 521,800 |
| CB-B03-RB2-WMI-130 |  | Installation of vertical risers and main distribution lines | 35d | 2027-12-20 | 2028-02-02 | CB-B03-RB2-WMI-25, CB-B03-RB2-WMI-275, CB-B03-RB2-WMI-125, CB-B03-RB2-WMI-370 | CSD-LKO Calender (6 day + Holiday)-25 | Physical Progress [4460 h]; Plumbing [1043599 INR]; TATA Projects Ltd-25 | 1,043,599 |
| CB-B03-RB2-WMI-145 |  | Testing drainage lines for leakage/blockage | 15d | 2028-01-03 | 2028-01-20 | CB-B03-RB2-WMI-140, CB-B03-RB2-WMI-150 | CSD-LKO Calender (6 day + Holiday)-25 | Physical Progress [1340 h]; Plumbing [104360 INR]; TATA Projects Ltd-25 | 104,360 |
| CB-B03-RB2-WMI-375 |  | Laying of ACO Drains | 20d | 2028-01-20 | 2028-02-14 | CB-B03-RB2-WMI-145 | CSD-LKO Calender (6 day + Holiday)-25 | ACO Drain [4080997 INR]; Physical Progress [4460 h]; TATA Projects Ltd-25 | 4,080,997 |
| CB-B03-RB2-WMI-135 |  | Fixing floor traps and gully traps | 20d | 2028-02-02 | 2028-02-25 | CB-B03-RB2-WMI-130 | CSD-LKO Calender (6 day + Holiday)-25 | Physical Progress [1340 h]; Plumbing [313080 INR]; TATA Projects Ltd-25 | 313,080 |
|  | 3 | **Final FIx** |  | 2028-02-14 | 2028-06-20 |  |  |  |  |
| CB-B03-RB2-WMI-380 |  | Installation of ACO Drain Grating | 7d | 2028-02-14 | 2028-02-22 | CB-B03-RB2-WMI-375 | CSD-LKO Calender (6 day + Holiday)-25 | Grating of Drain [2489760 INR]; Physical Progress [1560 h]; TATA Projects Ltd-25 | 2,489,760 |
| CB-B03-RB2-WMI-155 |  | Installation of sanitary fixtures (WC, washbasins, urinals, sinks) | 10d | 2028-04-26 | 2028-05-10 | CB-B03-RB2-WMI-280, CB-B03-RB2-WMI-135 | CSD-LKO Calender (6 day + Holiday)-25 | Physical Progress [2230 h]; Plumbing [2087198 INR]; TATA Projects Ltd-25 | 2,087,198 |
| CB-B03-RB2-WMI-160 |  | Installation of CP fittings (taps, mixers, showers, health faucets) | 10d | 2028-05-10 | 2028-05-22 | CB-B03-RB2-WMI-155, CB-B03-RB2-WMI-280 | CSD-LKO Calender (6 day + Holiday)-25 | Physical Progress [2230 h]; Plumbing [1043599 INR]; TATA Projects Ltd-25 | 1,043,599 |
| CB-B03-RB2-WMI-165 |  | Connection of appliances | 25d | 2028-05-22 | 2028-06-20 | CB-B03-RB2-WMI-160 | CSD-LKO Calender (6 day + Holiday)-25 | Physical Progress [1550 h]; Plumbing [521800 INR]; TATA Projects Ltd-25 | 521,800 |
|  | 4 | **Firefighting** |  | 2027-07-16 | 2028-06-26 |  |  |  |  |
|  | 1 | **1st Fix** |  | 2027-07-16 | 2027-11-15 |  |  |  |  |
| CB-B03-RB2-WMI-175 |  | Fixing pipe supports and hangers | 35d | 2027-07-16 | 2027-08-26 | CB-B03-RB2-WMI-15 | CSD-LKO Calender (6 day + Holiday)-25 | Physical Progress [2230 h]; Firefighting [431557 INR]; TATA Projects Ltd-25 | 431,557 |
| CB-B03-RB2-WMI-170 |  | Laying branch piping | 35d | 2027-08-26 | 2027-10-08 | CB-B03-RB2-WMI-175 | CSD-LKO Calender (6 day + Holiday)-25 | Physical Progress [3350 h]; Firefighting [924764 INR]; TATA Projects Ltd-25 | 924,764 |
| CB-B03-RB2-WMI-180 |  | Hydrostatic pressure testing of piping | 30d | 2027-10-08 | 2027-11-15 | CB-B03-RB2-WMI-170 | CSD-LKO Calender (6 day + Holiday)-25 | Physical Progress [1340 h]; Firefighting [123302 INR]; TATA Projects Ltd-25 | 123,302 |

| ID | WBS | Activity | Duration | Start | Finish | Predecessors | Calendar | Resources | Cost |
| --- | --- | --- | --- | --- | --- | --- | --- | --- | --- |
|  | 2 | **2nd Fix** |  | 2027-11-15 | 2028-02-08 |  |  |  |  |
| CB-B03-RB2-WMI-185 |  | Installation of vertical risers and distribution piping in shafts | 35d | 2027-11-15 | 2027-12-27 | CB-B03-RB2-WMI-25, CB-B03-RB2-WMI-180 | CSD-LKO Calender (6 day + Holiday)-25 | Physical Progress [5580 h]; Firefighting [1233019 INR]; TATA Projects Ltd-25 | 1,233,019 |
| CB-B03-RB2-WMI-195 |  | Painting/insulation of exposed fire pipes | 30d | 2027-11-15 | 2027-12-20 | CB-B03-RB2-WMI-180 | CSD-LKO Calender (6 day + Holiday)-25 | Physical Progress [2230 h]; Firefighting [61651 INR]; TATA Projects Ltd-25 | 61,651 |
| CB-B03-RB2-WMI-200 |  | Testing risers and branch lines for leakage | 30d | 2027-12-20 | 2028-01-27 | CB-B03-RB2-WMI-195 | CSD-LKO Calender (6 day + Holiday)-25 | Physical Progress [1340 h]; Firefighting [123302 INR]; TATA Projects Ltd-25 | 123,302 |
| CB-B03-RB2-WMI-190 |  | Installation of sprinkler branch lines in ceilings | 35d | 2027-12-27 | 2028-02-08 | CB-B03-RB2-WMI-185, CB-B03-RB2-WMI-275 | CSD-LKO Calender (6 day + Holiday)-25 | Physical Progress [5580 h]; Firefighting [924764 INR]; TATA Projects Ltd-25 | 924,764 |
|  | 3 | **Final FIx** |  | 2028-04-26 | 2028-06-26 |  |  |  |  |
| CB-B03-RB2-WMI-205 |  | Installation of sprinkler heads, nozzles, and final alignment | 35d | 2028-04-26 | 2028-06-08 | CB-B03-RB2-WMI-280, CB-B03-RB2-WMI-190 | CSD-LKO Calender (6 day + Holiday)-25 | Physical Progress [10040 h]; Firefighting [924764 INR]; TATA Projects Ltd-25 | 924,764 |
| CB-B03-RB2-WMI-210 |  | Installation of hydrant accessories (valves, hose reels, cabinets) | 25d | 2028-04-26 | 2028-05-27 | CB-B03-RB2-WMI-280 | CSD-LKO Calender (6 day + Holiday)-25 | Physical Progress [2230 h]; Firefighting [616510 INR]; TATA Projects Ltd-25 | 616,510 |
| CB-B03-RB2-WMI-215 |  | Installation of portable fire extinguishers | 30d | 2028-04-26 | 2028-06-02 | CB-B03-RB2-WMI-280 | CSD-LKO Calender (6 day + Holiday)-25 | Physical Progress [1340 h]; Firefighting [61651 INR]; TATA Projects Ltd-25 | 61,651 |
| CB-B03-RB2-WMI-220 |  | Integration with fire alarm system | 20d | 2028-06-02 | 2028-06-26 | CB-B03-RB2-WMI-215 | CSD-LKO Calender (6 day + Holiday)-25 | Physical Progress [4460 h]; Firefighting [308255 INR]; TATA Projects Ltd-25 | 308,255 |
|  | 5 | **ELV** |  | 2027-06-17 | 2028-06-20 |  |  |  |  |
|  | 1 | **1st Fix** |  | 2027-06-17 | 2027-08-26 |  |  |  |  |
| CB-B03-RB2-WMI-390 |  | Slab Conduiting | 25d | 2027-06-17 | 2027-07-16 | CB-B03-RB2-WMI-10 | CSD-LKO Calender (6 day + Holiday)-25 | Physical Progress [5580 h]; ELV [726016 INR]; TATA Projects Ltd-25 | 726,016 |
| CB-B03-RB2-WMI-225 |  | Wall Conduiting | 30d | 2027-07-16 | 2027-08-20 | CB-B03-RB2-WMI-15 | CSD-LKO Calender (6 day + Holiday)-25 | Physical Progress [2230 h]; ELV [311150 INR]; TATA Projects Ltd-25 | 311,150 |
| CB-B03-RB2-WMI-245 |  | Installing back boxes for switches, sockets | 5d | 2027-08-20 | 2027-08-26 | CB-B03-RB2-WMI-225, CB-B03-RB2-WMI-390 | CSD-LKO Calender (6 day + Holiday)-25 | Physical Progress [1110 h]; ELV [518583 INR]; TATA Projects Ltd-25 | 518,583 |
|  | 2 | **2nd Fix** |  | 2027-10-01 | 2028-02-02 |  |  |  |  |
| CB-B03-RB2-WMI-230 |  | Cable tray installation | 15d | 2027-10-01 | 2027-10-21 | CB-B03-RB2-WMI-25, CB-B03-RB2-WMI-275 | CSD-LKO Calender (6 day + Holiday)-25 | Physical Progress [5580 h]; ELV [518583 INR]; TATA Projects Ltd-25 | 518,583 |
| CB-B03-RB2-WMI-235 |  | Cabeling of ELV cable - IT/Fire Alarm/Public Address | 30d | 2027-10-21 | 2027-11-26 | CB-B03-RB2-WMI-230 | CSD-LKO Calender (6 day + Holiday)-25 | Physical Progress [10040 h]; ELV [1244599 INR]; TATA Projects Ltd-25 | 1,244,599 |
| CB-B03-RB2-WMI-320 |  | ELV Rack Installation | 15d | 2027-11-26 | 2027-12-14 | CB-B03-RB2-WMI-235 | CSD-LKO Calender (6 day + Holiday)-25 | Physical Progress [2230 h]; ELV [518583 INR]; TATA Projects Ltd-25 | 518,583 |
| CB-B03-RB2-WMI-240 |  | Termination of cables at junction boxes, patch panels, and control panels | 15d | 2027-12-14 | 2028-01-03 | CB-B03-RB2-WMI-320 | CSD-LKO Calender (6 day + Holiday)-25 | Physical Progress [6700 h]; ELV [518583 INR]; TATA Projects Ltd-25 | 518,583 |
| CB-B03-RB2-WMI-255 |  | Fixing devices like CCTV camera bases, card reader bases, smoke detector bases, PA Bases, Wifi Bases | 25d | 2028-01-03 | 2028-02-02 | CB-B03-RB2-WMI-240 | CSD-LKO Calender (6 day + Holiday)-25 | Physical Progress [890 h]; ELV [1037166 INR]; TATA Projects Ltd-25 | 1,037,166 |
|  | 3 | **3rd Fix** |  | 2028-04-26 | 2028-06-20 |  |  |  |  |
| CB-B03-RB2-WMI-250 |  | Installation of data and Voice Faceplate | 25d | 2028-04-26 | 2028-05-27 | CB-B03-RB2-WMI-280 | CSD-LKO Calender (6 day + Holiday)-25 | Physical Progress [3350 h]; ELV [518583 INR]; TATA Projects Ltd-25 | 518,583 |
| CB-B03-RB2-WMI-260 |  | Installation of Camera & Wifi | 30d | 2028-04-26 | 2028-06-02 | CB-B03-RB2-WMI-280 | CSD-LKO Calender (6 day + Holiday)-25 | Physical Progress [3350 h]; ELV [518583 INR]; TATA Projects Ltd-25 | 518,583 |
| CB-B03-RB2-WMI-265 |  | Installation of fire alarm devices + Public Address | 15d | 2028-04-26 | 2028-05-16 | CB-B03-RB2-WMI-280 | CSD-LKO Calender (6 day + Holiday)-25 | Physical Progress [3350 h]; ELV [622299 INR]; TATA Projects Ltd-25 | 622,299 |
| CB-B03-RB2-WMI-325 |  | Installation of Active System | 15d | 2028-05-16 | 2028-06-02 | CB-B03-RB2-WMI-265 | CSD-LKO Calender (6 day + Holiday)-25 | Physical Progress [3350 h]; ELV [1037166 INR]; TATA Projects Ltd-25 | 1,037,166 |
| CB-B03-RB2-WMI-335 |  | Fire Panel Intallation & Integration | 25d | 2028-05-16 | 2028-06-14 | CB-B03-RB2-WMI-265 | CSD-LKO Calender (6 day + Holiday)-25 | Physical Progress [5580 h]; ELV [518583 INR]; TATA Projects Ltd-25 | 518,583 |
| CB-B03-RB2-WMI-340 |  | Installation & Integration of Audio Visual System | 25d | 2028-05-16 | 2028-06-14 | CB-B03-RB2-WMI-265 | CSD-LKO Calender (6 day + Holiday)-25 | Physical Progress [5580 h]; ELV [518583 INR]; TATA Projects Ltd-25 | 518,583 |
| CB-B03-RB2-WMI-345 |  | Installation & Integration of Access Control | 25d | 2028-05-16 | 2028-06-14 | CB-B03-RB2-WMI-265 | CSD-LKO Calender (6 day + Holiday)-25 | Physical Progress [5580 h]; ELV [518583 INR]; TATA Projects Ltd-25 | 518,583 |
| CB-B03-RB2-WMI-330 |  | Integration of Active components | 15d | 2028-06-02 | 2028-06-20 | CB-B03-RB2-WMI-325 | CSD-LKO Calender (6 day + Holiday)-25 | Physical Progress [3350 h]; ELV [207433 INR]; TATA Projects Ltd-25 | 207,433 |

| ID | WBS | Activity | Duration | Start | Finish | Predecessors | Calendar | Resources | Cost |
| --- | --- | --- | --- | --- | --- | --- | --- | --- | --- |
|  | 2 | **Dry Finishes** |  | 2027-07-16 | 2028-07-14 |  |  |  |  |
| CB-B03-RB2-WMI-275 |  | Painting on Ceiling (Ceiling Finish) | 15d | 2027-07-16 | 2027-08-03 | CB-B03-RB2-WMI-15 | CSD-LKO Calender (6 day + Holiday)-25 | Painting [7254 Sq m]; Painter [7260 h]; Helper [7260 h]; Physical Progress [3350 h]; TATA Projects Ltd-25 | 1,658,409.48 |
| CB-B03-RB2-WMI-270 |  | Installation of Gypsum Board | 10d | 2028-04-01 | 2028-04-13 | CB-B03-RB2-WMI-20 | CSD-LKO Calender (6 day + Holiday)-25 | ID Work [442093 INR]; Physical Progress [2230 h]; TATA Projects Ltd-25 | 442,093 |
| CB-B03-RB2-WMI-400 |  | Civil Misc Works | 30d | 2028-04-01 | 2028-05-10 | CB-B03-RB2-WMI-20 | CSD-LKO Calender (6 day + Holiday)-25 | Civil Misc Works [1689710 INR]; Physical Progress [6700 h]; TATA Projects Ltd-25 | 1,689,710 |
| CB-B03-RB2-WMI-280 |  | Wall Painting first coat including putty | 10d | 2028-04-13 | 2028-04-26 | CB-B03-RB2-WMI-270 | CSD-LKO Calender (6 day + Holiday)-25 | Painting [7254 Sq m]; Painter [7260 h]; Helper [7260 h]; Physical Progress [2230 h]; TATA Projects Ltd-25 | 1,658,409.48 |
| CB-B03-RB2-WMI-295 |  | Wheel stoppers | 8d | 2028-04-26 | 2028-05-08 | CB-B03-RB2-WMI-280 | CSD-LKO Calender (6 day + Holiday)-25 | Wheel Stopper [8624 INR]; Physical Progress [1790 h]; TATA Projects Ltd-25 | 8,624 |
| CB-B03-RB2-WMI-350 |  | Door & Window | 10d | 2028-04-26 | 2028-05-10 | CB-B03-RB2-WMI-280 | CSD-LKO Calender (6 day + Holiday)-25 | ID Work [442093 INR]; Physical Progress [2230 h]; TATA Projects Ltd-25 | 442,093 |
| CB-B03-RB2-WMI-290 |  | Line marking for parking bays, arrows, pedestrian paths | 8d | 2028-05-08 | 2028-05-17 | CB-B03-RB2-WMI-295 | CSD-LKO Calender (6 day + Holiday)-25 | Line / Arrow Marking [608888 INR]; Physical Progress [1790 h]; TATA Projects Ltd-25 | 608,888 |
| CB-B03-RB2-WMI-285 |  | Wall painting final coat | 6d | 2028-07-07 | 2028-07-14 | CB-B03-RB2-WMI-290, CB-B03-RB2-WMI-250, CB-B03-RB2-WMI-260, CB-B03-RB2-WMI-220, CB-B03-RB2-WMI-205, CB-B03-RB2-WMI-210, CB-B03-RB2-WMI-215, CB-B03-RB2-WMI-165, CB-B03-RB2-WMI-45, CB-B03-RB2-WMI-100, CB-B03-RB2-WMI-335, CB-B03-RB2-WMI-350, CB-B03-RB2-WMI-380, CB-B03-RB2-WMI-340, CB-B03-RB2-WMI-345, CB-B03-RB2-WMI-330, CB-B03-RB2-WMI-400, CB-B03-HS-MEP30, CB-B03-HS-MEP20, CB-B03-HS-MEP25, CB-B03-HS-MEP40, CB-B03-HS-MEP35, CB-B03-HS-MEP10, CB-B03-HS-MEP15 | CSD-LKO Calender (6 day + Holiday)-25 | Painting [7254 Sq m]; Painter [7250 h]; Helper [7250 h]; Physical Progress [1340 h]; TATA Projects Ltd-25 | 1,658,409.48 |
|  | 5 | **Retail Block 1** |  | 2027-06-22 | 2028-07-26 |  |  |  |  |
|  | 1 | **Wet Finishes** |  | 2027-06-22 | 2028-04-13 |  |  |  |  |
| CB-B03-RB1-WMI-10 |  | Waiting for curing & Deshuttering | 7d | 2027-06-22 | 2027-06-29 | RB1-SS-GS215, RB1-SS-GS45, RB1-SS-GS80, RB1-SS-GS105, RB1-SS-GS140, RB1-SS-GS175, RB1-SS-GS200 | CSD-LKO Calender (6 day + Holiday)-25 | Physical Progress [1550 h]; TATA Projects Ltd-25 |  |
| CB-B03-RB1-WMI-15 |  | Brickwork/Blockwork | 25d | 2027-06-30 | 2027-07-28 | CB-B03-RB1-WMI-10 | CSD-LKO Calender (6 day + Holiday)-25 | Masonry [366 CuM]; Mason [2440 h]; Helper [1220 h]; Physical Progress [10040 h]; TATA Projects Ltd-25 | 3,489,941.76 |
| CB-B03-RB1-WMI-380 |  | Structural Misc Works | 50d | 2027-06-30 | 2027-08-26 | CB-B03-RB1-WMI-10 | CSD-LKO Calender (6 day + Holiday)-25 | Structural Misc Works [818513 INR]; Physical Progress [11160 h]; TATA Projects Ltd-25 | 818,513 |
| CB-B03-RB1-WMI-25 |  | Plaster | 30d | 2027-09-09 | 2027-10-15 | CB-B03-RB1-WMI-30, CB-B03-RB1-WMI-60, CB-B03-RB1-WMI-245, CB-B03-RB1-WMI-380 | CSD-LKO Calender (6 day + Holiday)-25 | Plaster [12176 Sqr Mtr]; Mason [8120 h]; Helper [4060 h]; Physical Progress [6700 h]; TATA Projects Ltd-25 | 6,744,408.16 |
| CB-B03-RB1-WMI-20 |  | Flooring | 25d | 2028-03-16 | 2028-04-13 | CB-B03-RB1-WMI-15, CB-B03-RB1-WMI-380, CB-B03-RB1-WMI-80, CB-B03-RB1-WMI-85, CB-B03-RB1-WMI-90, CB-B03-RB1-WMI-300, CB-B03-RB1-WMI-95, CB-B03-RB1-WMI-35, CB-B03-RB1-WMI-40, CB-B03-RB1-WMI-50, CB-B03-RB1-WMI-310, CB-B03-RB1-WMI-390, CB-B03-RB1-WMI-315, CB-B03-RB1-WMI-150, CB-B03-RB1-WMI-130, CB-B03-RB1-WMI-145, CB-B03-RB1-WMI-135, CB-B03-RB1-WMI-360, CB-B03-RB1-WMI-185, CB-B03-RB1-WMI-195, CB-B03-RB1-WMI-200, CB-B03-RB1-WMI-190, CB-B03-RB1-WMI-230, CB-B03-RB1-WMI-235, CB-B03-RB1-WMI-320, CB-B03-RB1-WMI-240, CB-B03-RB1-WMI-255 | CSD-LKO Calender (6 day + Holiday)-25 | Flooring [18764991 INR]; Flooring Mason [9400 h]; Helper [9400 h]; Physical Progress [11160 h]; TATA Projects Ltd-25 | 18,764,991 |
|  | 5 | **Low Side MEP** |  | 2027-06-30 | 2028-07-19 |  |  |  |  |
|  | 2 | **HVAC** |  | 2027-07-29 | 2028-07-19 |  |  |  |  |
|  | 1 | **1st Fix** |  | 2027-07-29 | 2027-11-20 |  |  |  |  |
| CB-B03-RB1-WMI-305 |  | Duct Support Fabrication | 35d | 2027-07-29 | 2027-09-08 | CB-B03-RB1-WMI-15 | CSD-LKO Calender (6 day + Holiday)-25 | Physical Progress [3350 h]; HVAC [210890 INR]; TATA Projects Ltd-25 | 210,890 |
| CB-B03-RB1-WMI-65 |  | Installing duct hangers and supports | 30d | 2027-09-09 | 2027-10-15 | CB-B03-RB1-WMI-275, CB-B03-RB1-WMI-305 | CSD-LKO Calender (6 day + Holiday)-25 | Physical Progress [2230 h]; HVAC [421779 INR]; TATA Projects Ltd-25 | 421,779 |
| CB-B03-RB1-WMI-70 |  | Laying concealed/exposed refrigerant piping | 30d | 2027-10-16 | 2027-11-20 | CB-B03-RB1-WMI-65 | CSD-LKO Calender (6 day + Holiday)-25 | Physical Progress [3350 h]; HVAC [105445 INR]; TATA Projects Ltd-25 | 105,445 |
| CB-B03-RB1-WMI-75 |  | Laying concealed/exposed drain piping | 30d | 2027-10-16 | 2027-11-20 | CB-B03-RB1-WMI-65 | CSD-LKO Calender (6 day + Holiday)-25 | Physical Progress [2230 h]; HVAC [632669 INR]; TATA Projects Ltd-25 | 632,669 |
|  | 2 | **2nd Fix** |  | 2027-10-16 | 2028-03-02 |  |  |  |  |
| CB-B03-RB1-WMI-80 |  | Duct installation | 20d | 2027-10-16 | 2027-11-09 | CB-B03-RB1-WMI-65 | CSD-LKO Calender (6 day + Holiday)-25 | Physical Progress [3350 h]; HVAC [1581672 INR]; TATA Projects Ltd-25 | 1,581,672 |
| CB-B03-RB1-WMI-85 |  | Insulation of ducts (thermal/acoustic) | 15d | 2027-11-10 | 2027-11-26 | CB-B03-RB1-WMI-80 | CSD-LKO Calender (6 day + Holiday)-25 | Physical Progress [1340 h]; HVAC [949003 INR]; TATA Projects Ltd-25 | 949,003 |
| CB-B03-RB1-WMI-90 |  | Installation of chilled water piping / VRF piping | 15d | 2027-11-27 | 2027-12-14 | CB-B03-RB1-WMI-85 | CSD-LKO Calender (6 day + Holiday)-25 | Physical Progress [1340 h]; HVAC [2108896 INR]; TATA Projects Ltd-25 | 2,108,896 |
| CB-B03-RB1-WMI-300 |  | Installation of indoor units including AHU, FCU | 45d | 2027-12-15 | 2028-02-08 | CB-B03-RB1-WMI-90, CB-B03-RB1-WMI-70, CB-B03-RB1-WMI-75 | CSD-LKO Calender (6 day + Holiday)-25 | Physical Progress [10040 h]; HVAC [1898006 INR]; TATA Projects Ltd-25 | 1,898,006 |
| CB-B03-RB1-WMI-95 |  | Connecting refrigerant and drain piping to indoor units | 20d | 2028-02-09 | 2028-03-02 | CB-B03-RB1-WMI-300 | CSD-LKO Calender (6 day + Holiday)-25 | Physical Progress [1340 h]; HVAC [527224 INR]; TATA Projects Ltd-25 | 527,224 |

| ID | WBS | Activity | Duration | Start | Finish | Predecessors | Calendar | Resources | Cost |
| --- | --- | --- | --- | --- | --- | --- | --- | --- | --- |
|  | 3 | **Final Fix** |  | 2028-05-11 | 2028-07-19 |  |  |  |  |
| CB-B03-RB1-WMI-105 |  | Installing grills, diffusers, dampers | 30d | 2028-05-11 | 2028-06-14 | CB-B03-RB1-WMI-280 | CSD-LKO Calender (6 day + Holiday)-25 | Physical Progress [1340 h]; HVAC [1054448 INR]; TATA Projects Ltd-25 | 1,054,448 |
| CB-B03-RB1-WMI-100 |  | Installation of thermostats and control panels | 30d | 2028-06-15 | 2028-07-19 | CB-B03-RB1-WMI-105 | CSD-LKO Calender (6 day + Holiday)-25 | Physical Progress [1340 h]; HVAC [527224 INR]; TATA Projects Ltd-25 | 527,224 |
|  | 1 | **Electrical** |  | 2027-06-30 | 2028-06-26 |  |  |  |  |
|  | 1 | **1st Fix** |  | 2027-06-30 | 2027-09-08 |  |  |  |  |
| CB-B03-RB1-WMI-375 |  | Slab Conduiting | 25d | 2027-06-30 | 2027-07-28 | CB-B03-RB1-WMI-10 | CSD-LKO Calender (6 day + Holiday)-25 | Physical Progress [5580 h]; Electrical [926153 INR]; TATA Projects Ltd-25 | 926,153 |
| CB-B03-RB1-WMI-30 |  | Wall Conduiting | 30d | 2027-07-29 | 2027-09-01 | CB-B03-RB1-WMI-15 | CSD-LKO Calender (6 day + Holiday)-25 | Physical Progress [2230 h]; Electrical [463076 INR]; TATA Projects Ltd-25 | 463,076 |
| CB-B03-RB1-WMI-60 |  | Installing back boxes for switches, sockets | 5d | 2027-09-02 | 2027-09-08 | CB-B03-RB1-WMI-30, CB-B03-RB1-WMI-375 | CSD-LKO Calender (6 day + Holiday)-25 | Physical Progress [1110 h]; Electrical [277846 INR]; TATA Projects Ltd-25 | 277,846 |
|  | 2 | **2nd Fix** |  | 2027-10-16 | 2028-03-15 |  |  |  |  |
| CB-B03-RB1-WMI-35 |  | Cable tray laying | 15d | 2027-10-16 | 2027-11-03 | CB-B03-RB1-WMI-25, CB-B03-RB1-WMI-275 | CSD-LKO Calender (6 day + Holiday)-25 | Physical Progress [5580 h]; Electrical [370461 INR]; TATA Projects Ltd-25 | 370,461 |
| CB-B03-RB1-WMI-40 |  | Cabling & Wire Pulling | 45d | 2027-11-04 | 2027-12-27 | CB-B03-RB1-WMI-35 | CSD-LKO Calender (6 day + Holiday)-25 | Physical Progress [10040 h]; Electrical [1852305 INR]; TATA Projects Ltd-25 | 1,852,305 |
| CB-B03-RB1-WMI-50 |  | DB fixing and connecting | 20d | 2027-12-28 | 2028-01-20 | CB-B03-RB1-WMI-40 | CSD-LKO Calender (6 day + Holiday)-25 | Physical Progress [3350 h]; Electrical [277846 INR]; TATA Projects Ltd-25 | 277,846 |
| CB-B03-RB1-WMI-310 |  | Floor/Distribution Panel Installation | 15d | 2028-01-21 | 2028-02-08 | CB-B03-RB1-WMI-50 | CSD-LKO Calender (6 day + Holiday)-25 | Physical Progress [1110 h]; Electrical [740922 INR]; TATA Projects Ltd-25 | 740,922 |
| CB-B03-RB1-WMI-390 |  | Floor Rising Main Installation | 15d | 2028-02-09 | 2028-02-25 | CB-B03-RB1-WMI-310 | CSD-LKO Calender (6 day + Holiday)-25 | Physical Progress [2230 h]; Electrical [1296614 INR]; TATA Projects Ltd-25 | 1,296,614 |
| CB-B03-RB1-WMI-315 |  | Equipment Earthing | 15d | 2028-02-26 | 2028-03-15 | CB-B03-RB1-WMI-310, CB-B03-RB1-WMI-390 | CSD-LKO Calender (6 day + Holiday)-25 | Physical Progress [2230 h]; Electrical [277846 INR]; TATA Projects Ltd-25 | 277,846 |
|  | 3 | **Final Fix** |  | 2028-05-11 | 2028-06-26 |  |  |  |  |
| CB-B03-RB1-WMI-55 |  | Switches & Socket | 20d | 2028-05-11 | 2028-06-02 | CB-B03-RB1-WMI-280 | CSD-LKO Calender (6 day + Holiday)-25 | Physical Progress [4460 h]; Electrical [926153 INR]; TATA Projects Ltd-25 | 926,153 |
| CB-B03-RB1-WMI-45 |  | Light Fixtures | 20d | 2028-06-03 | 2028-06-26 | CB-B03-RB1-WMI-55, CB-B03-RB1-WMI-315 | CSD-LKO Calender (6 day + Holiday)-25 | Physical Progress [3350 h]; Electrical [1389229 INR]; TATA Projects Ltd-25 | 1,389,229 |
|  | 3 | **Plumbing** |  | 2027-07-29 | 2028-07-01 |  |  |  |  |
|  | 1 | **1st Fix** |  | 2027-07-29 | 2028-01-03 |  |  |  |  |
| CB-B03-RB1-WMI-120 |  | Fixing pipe supports and clamps | 35d | 2027-07-29 | 2027-09-08 | CB-B03-RB1-WMI-15 | CSD-LKO Calender (6 day + Holiday)-25 | Physical Progress [2230 h]; Plumbing [521800 INR]; TATA Projects Ltd-25 | 521,800 |
| CB-B03-RB1-WMI-110 |  | Laying water supply pipes (hot & cold) | 35d | 2027-09-09 | 2027-10-21 | CB-B03-RB1-WMI-120 | CSD-LKO Calender (6 day + Holiday)-25 | Physical Progress [3350 h]; Plumbing [1043599 INR]; TATA Projects Ltd-25 | 1,043,599 |
| CB-B03-RB1-WMI-115 |  | Laying drainage pipes (soil, waste, vent) | 35d | 2027-09-09 | 2027-10-21 | CB-B03-RB1-WMI-120 | CSD-LKO Calender (6 day + Holiday)-25 | Physical Progress [3350 h]; Plumbing [1043599 INR]; TATA Projects Ltd-25 | 1,043,599 |
| CB-B03-RB1-WMI-140 |  | Installation of plumbing fixture base supports (WC frames, sink brackets) | 30d | 2027-10-22 | 2027-11-26 | CB-B03-RB1-WMI-115 | CSD-LKO Calender (6 day + Holiday)-25 | Physical Progress [1340 h]; Plumbing [521800 INR]; TATA Projects Ltd-25 | 521,800 |
| CB-B03-RB1-WMI-125 |  | Pressure testing of water supply lines | 25d | 2027-11-27 | 2027-12-27 | CB-B03-RB1-WMI-110, CB-B03-RB1-WMI-115, CB-B03-RB1-WMI-140 | CSD-LKO Calender (6 day + Holiday)-25 | Physical Progress [1550 h]; Plumbing [104360 INR]; TATA Projects Ltd-25 | 104,360 |
| CB-B03-RB1-WMI-355 |  | Installation of concealed parts of toilet fixtures | 30d | 2027-11-27 | 2028-01-03 | CB-B03-RB1-WMI-140 | CSD-LKO Calender (6 day + Holiday)-25 | Physical Progress [2230 h]; Plumbing [521800 INR]; TATA Projects Ltd-25 | 521,800 |

| ID | WBS | Activity | Duration | Start | Finish | Predecessors | Calendar | Resources | Cost |
| --- | --- | --- | --- | --- | --- | --- | --- | --- | --- |
|  | 2 | **2nd FIx** |  | 2027-12-28 | 2028-03-08 |  |  |  |  |
| CB-B03-RB1-WMI-150 |  | Insulation of hot water pipes (if applicable) | 15d | 2027-12-28 | 2028-01-14 | CB-B03-RB1-WMI-125 | CSD-LKO Calender (6 day + Holiday)-25 | Physical Progress [1340 h]; Plumbing [521800 INR]; TATA Projects Ltd-25 | 521,800 |
| CB-B03-RB1-WMI-130 |  | Installation of vertical risers and main distribution lines | 35d | 2028-01-04 | 2028-02-14 | CB-B03-RB1-WMI-25, CB-B03-RB1-WMI-275, CB-B03-RB1-WMI-125, CB-B03-RB1-WMI-355 | CSD-LKO Calender (6 day + Holiday)-25 | Physical Progress [4460 h]; Plumbing [1043599 INR]; TATA Projects Ltd-25 | 1,043,599 |
| CB-B03-RB1-WMI-145 |  | Testing drainage lines for leakage/blockage | 15d | 2028-01-15 | 2028-02-02 | CB-B03-RB1-WMI-140, CB-B03-RB1-WMI-150 | CSD-LKO Calender (6 day + Holiday)-25 | Physical Progress [1340 h]; Plumbing [104360 INR]; TATA Projects Ltd-25 | 104,360 |
| CB-B03-RB1-WMI-360 |  | Laying of ACO Drains | 20d | 2028-02-03 | 2028-02-25 | CB-B03-RB1-WMI-145 | CSD-LKO Calender (6 day + Holiday)-25 | ACO Drain [4080997 INR]; Physical Progress [4460 h]; TATA Projects Ltd-25 | 4,080,997 |
| CB-B03-RB1-WMI-135 |  | Fixing floor traps and gully traps | 20d | 2028-02-15 | 2028-03-08 | CB-B03-RB1-WMI-130 | CSD-LKO Calender (6 day + Holiday)-25 | Physical Progress [1340 h]; Plumbing [313080 INR]; TATA Projects Ltd-25 | 313,080 |
|  | 3 | **Final FIx** |  | 2028-02-26 | 2028-07-01 |  |  |  |  |
| CB-B03-RB1-WMI-365 |  | Installation of ACO Drain Grating | 7d | 2028-02-26 | 2028-03-04 | CB-B03-RB1-WMI-360 | CSD-LKO Calender (6 day + Holiday)-25 | Grating of Drain [2489760 INR]; Physical Progress [1560 h]; TATA Projects Ltd-25 | 2,489,760 |
| CB-B03-RB1-WMI-155 |  | Installation of sanitary fixtures (WC, washbasins, urinals, sinks) | 10d | 2028-05-11 | 2028-05-22 | CB-B03-RB1-WMI-280, CB-B03-RB1-WMI-135 | CSD-LKO Calender (6 day + Holiday)-25 | Physical Progress [2230 h]; Plumbing [2087198 INR]; TATA Projects Ltd-25 | 2,087,198 |
| CB-B03-RB1-WMI-160 |  | Installation of CP fittings (taps, mixers, showers, health faucets) | 10d | 2028-05-23 | 2028-06-02 | CB-B03-RB1-WMI-155, CB-B03-RB1-WMI-280 | CSD-LKO Calender (6 day + Holiday)-25 | Physical Progress [2230 h]; Plumbing [1043599 INR]; TATA Projects Ltd-25 | 1,043,599 |
| CB-B03-RB1-WMI-165 |  | Connection of appliances | 25d | 2028-06-03 | 2028-07-01 | CB-B03-RB1-WMI-160 | CSD-LKO Calender (6 day + Holiday)-25 | Physical Progress [1550 h]; Plumbing [521800 INR]; TATA Projects Ltd-25 | 521,800 |
|  | 4 | **Firefighting** |  | 2027-07-29 | 2028-07-07 |  |  |  |  |
|  | 1 | **1st Fix** |  | 2027-07-29 | 2027-11-26 |  |  |  |  |
| CB-B03-RB1-WMI-175 |  | Fixing pipe supports and hangers | 35d | 2027-07-29 | 2027-09-08 | CB-B03-RB1-WMI-15 | CSD-LKO Calender (6 day + Holiday)-25 | Physical Progress [2230 h]; Firefighting [431557 INR]; TATA Projects Ltd-25 | 431,557 |
| CB-B03-RB1-WMI-170 |  | Laying branch piping | 35d | 2027-09-09 | 2027-10-21 | CB-B03-RB1-WMI-175 | CSD-LKO Calender (6 day + Holiday)-25 | Physical Progress [3350 h]; Firefighting [924764 INR]; TATA Projects Ltd-25 | 924,764 |
| CB-B03-RB1-WMI-180 |  | Hydrostatic pressure testing of piping | 30d | 2027-10-22 | 2027-11-26 | CB-B03-RB1-WMI-170 | CSD-LKO Calender (6 day + Holiday)-25 | Physical Progress [1340 h]; Firefighting [123302 INR]; TATA Projects Ltd-25 | 123,302 |
|  | 2 | **2nd Fix** |  | 2027-11-27 | 2028-02-19 |  |  |  |  |
| CB-B03-RB1-WMI-185 |  | Installation of vertical risers and distribution piping in shafts | 35d | 2027-11-27 | 2028-01-08 | CB-B03-RB1-WMI-25, CB-B03-RB1-WMI-180 | CSD-LKO Calender (6 day + Holiday)-25 | Physical Progress [5580 h]; Firefighting [1233019 INR]; TATA Projects Ltd-25 | 1,233,019 |
| CB-B03-RB1-WMI-195 |  | Painting/insulation of exposed fire pipes | 30d | 2027-11-27 | 2028-01-03 | CB-B03-RB1-WMI-180 | CSD-LKO Calender (6 day + Holiday)-25 | Physical Progress [2230 h]; Firefighting [61651 INR]; TATA Projects Ltd-25 | 61,651 |
| CB-B03-RB1-WMI-200 |  | Testing risers and branch lines for leakage | 30d | 2028-01-04 | 2028-02-08 | CB-B03-RB1-WMI-195 | CSD-LKO Calender (6 day + Holiday)-25 | Physical Progress [1340 h]; Firefighting [123302 INR]; TATA Projects Ltd-25 | 123,302 |
| CB-B03-RB1-WMI-190 |  | Installation of sprinkler branch lines in ceilings | 35d | 2028-01-10 | 2028-02-19 | CB-B03-RB1-WMI-185, CB-B03-RB1-WMI-275 | CSD-LKO Calender (6 day + Holiday)-25 | Physical Progress [5580 h]; Firefighting [924764 INR]; TATA Projects Ltd-25 | 924,764 |
|  | 3 | **Final FIx** |  | 2028-05-11 | 2028-07-07 |  |  |  |  |
| CB-B03-RB1-WMI-205 |  | Installation of sprinkler heads, nozzles, and final alignment | 35d | 2028-05-11 | 2028-06-20 | CB-B03-RB1-WMI-280, CB-B03-RB1-WMI-190 | CSD-LKO Calender (6 day + Holiday)-25 | Physical Progress [10040 h]; Firefighting [924764 INR]; TATA Projects Ltd-25 | 924,764 |
| CB-B03-RB1-WMI-210 |  | Installation of hydrant accessories (valves, hose reels, cabinets) | 25d | 2028-05-11 | 2028-06-08 | CB-B03-RB1-WMI-280 | CSD-LKO Calender (6 day + Holiday)-25 | Physical Progress [2230 h]; Firefighting [616510 INR]; TATA Projects Ltd-25 | 616,510 |
| CB-B03-RB1-WMI-215 |  | Installation of portable fire extinguishers | 30d | 2028-05-11 | 2028-06-14 | CB-B03-RB1-WMI-280 | CSD-LKO Calender (6 day + Holiday)-25 | Physical Progress [1340 h]; Firefighting [61651 INR]; TATA Projects Ltd-25 | 61,651 |
| CB-B03-RB1-WMI-220 |  | Integration with fire alarm system | 20d | 2028-06-15 | 2028-07-07 | CB-B03-RB1-WMI-215 | CSD-LKO Calender (6 day + Holiday)-25 | Physical Progress [4460 h]; Firefighting [308255 INR]; TATA Projects Ltd-25 | 308,255 |

| ID | WBS | Activity | Duration | Start | Finish | Predecessors | Calendar | Resources | Cost |
| --- | --- | --- | --- | --- | --- | --- | --- | --- | --- |
|  | 5 | **ELV** |  | 2027-06-30 | 2028-07-01 |  |  |  |  |
|  | 1 | **1st Fix** |  | 2027-06-30 | 2027-09-08 |  |  |  |  |
| CB-B03-RB1-WMI-370 |  | Slab Conduiting | 25d | 2027-06-30 | 2027-07-28 | CB-B03-RB1-WMI-10 | CSD-LKO Calender (6 day + Holiday)-25 | Physical Progress [5580 h]; ELV [726016 INR]; TATA Projects Ltd-25 | 726,016 |
| CB-B03-RB1-WMI-225 |  | Wall Conduiting | 30d | 2027-07-29 | 2027-09-01 | CB-B03-RB1-WMI-15 | CSD-LKO Calender (6 day + Holiday)-25 | Physical Progress [2230 h]; ELV [311150 INR]; TATA Projects Ltd-25 | 311,150 |
| CB-B03-RB1-WMI-245 |  | Installing back boxes for switches, sockets | 5d | 2027-09-02 | 2027-09-08 | CB-B03-RB1-WMI-225, CB-B03-RB1-WMI-370 | CSD-LKO Calender (6 day + Holiday)-25 | Physical Progress [1110 h]; ELV [518583 INR]; TATA Projects Ltd-25 | 518,583 |
|  | 2 | **2nd Fix** |  | 2027-10-16 | 2028-02-14 |  |  |  |  |
| CB-B03-RB1-WMI-230 |  | Cable tray installation | 15d | 2027-10-16 | 2027-11-03 | CB-B03-RB1-WMI-25, CB-B03-RB1-WMI-275 | CSD-LKO Calender (6 day + Holiday)-25 | Physical Progress [5580 h]; ELV [518583 INR]; TATA Projects Ltd-25 | 518,583 |
| CB-B03-RB1-WMI-235 |  | Cabeling of ELV cable - IT/Fire Alarm/Public Address | 30d | 2027-11-04 | 2027-12-08 | CB-B03-RB1-WMI-230 | CSD-LKO Calender (6 day + Holiday)-25 | Physical Progress [10040 h]; ELV [1244599 INR]; TATA Projects Ltd-25 | 1,244,599 |
| CB-B03-RB1-WMI-320 |  | ELV Rack Installation | 15d | 2027-12-09 | 2027-12-27 | CB-B03-RB1-WMI-235 | CSD-LKO Calender (6 day + Holiday)-25 | Physical Progress [2230 h]; ELV [518583 INR]; TATA Projects Ltd-25 | 518,583 |
| CB-B03-RB1-WMI-240 |  | Termination of cables at junction boxes, patch panels, and control panels | 15d | 2027-12-28 | 2028-01-14 | CB-B03-RB1-WMI-320 | CSD-LKO Calender (6 day + Holiday)-25 | Physical Progress [6700 h]; ELV [518583 INR]; TATA Projects Ltd-25 | 518,583 |
| CB-B03-RB1-WMI-255 |  | Fixing devices like CCTV camera bases, card reader bases, smoke detector bases, PA Bases, Wifi Bases | 25d | 2028-01-15 | 2028-02-14 | CB-B03-RB1-WMI-240 | CSD-LKO Calender (6 day + Holiday)-25 | Physical Progress [890 h]; ELV [1037166 INR]; TATA Projects Ltd-25 | 1,037,166 |
|  | 3 | **3rd Fix** |  | 2028-05-11 | 2028-07-01 |  |  |  |  |
| CB-B03-RB1-WMI-250 |  | Installation of data and Voice Faceplate | 25d | 2028-05-11 | 2028-06-08 | CB-B03-RB1-WMI-280 | CSD-LKO Calender (6 day + Holiday)-25 | Physical Progress [3350 h]; ELV [518583 INR]; TATA Projects Ltd-25 | 518,583 |
| CB-B03-RB1-WMI-260 |  | Installation of Camera & Wifi | 30d | 2028-05-11 | 2028-06-14 | CB-B03-RB1-WMI-280 | CSD-LKO Calender (6 day + Holiday)-25 | Physical Progress [3350 h]; ELV [518583 INR]; TATA Projects Ltd-25 | 518,583 |
| CB-B03-RB1-WMI-265 |  | Installation of fire alarm devices + Public Address | 15d | 2028-05-11 | 2028-05-27 | CB-B03-RB1-WMI-280 | CSD-LKO Calender (6 day + Holiday)-25 | Physical Progress [3350 h]; ELV [622299 INR]; TATA Projects Ltd-25 | 622,299 |
| CB-B03-RB1-WMI-325 |  | Installation of Active System | 15d | 2028-05-29 | 2028-06-14 | CB-B03-RB1-WMI-265 | CSD-LKO Calender (6 day + Holiday)-25 | Physical Progress [3350 h]; ELV [1037166 INR]; TATA Projects Ltd-25 | 1,037,166 |
| CB-B03-RB1-WMI-335 |  | Fire Panel Intallation & Integration | 25d | 2028-05-29 | 2028-06-26 | CB-B03-RB1-WMI-265 | CSD-LKO Calender (6 day + Holiday)-25 | Physical Progress [5580 h]; ELV [518583 INR]; TATA Projects Ltd-25 | 518,583 |
| CB-B03-RB1-WMI-340 |  | Installation & Integration of Audio Visual System | 25d | 2028-05-29 | 2028-06-26 | CB-B03-RB1-WMI-265 | CSD-LKO Calender (6 day + Holiday)-25 | Physical Progress [5580 h]; ELV [518583 INR]; TATA Projects Ltd-25 | 518,583 |
| CB-B03-RB1-WMI-345 |  | Installation & Integration of Access Control | 25d | 2028-05-29 | 2028-06-26 | CB-B03-RB1-WMI-265 | CSD-LKO Calender (6 day + Holiday)-25 | Physical Progress [5580 h]; ELV [518583 INR]; TATA Projects Ltd-25 | 518,583 |
| CB-B03-RB1-WMI-330 |  | Integration of Active components | 15d | 2028-06-15 | 2028-07-01 | CB-B03-RB1-WMI-325 | CSD-LKO Calender (6 day + Holiday)-25 | Physical Progress [3350 h]; ELV [207433 INR]; TATA Projects Ltd-25 | 207,433 |
|  | 2 | **Dry Finishes** |  | 2027-07-29 | 2028-07-26 |  |  |  |  |
| CB-B03-RB1-WMI-275 |  | Painting on Ceiling (Ceiling Finish) | 15d | 2027-07-29 | 2027-08-14 | CB-B03-RB1-WMI-15 | CSD-LKO Calender (6 day + Holiday)-25 | Painting [7254 Sq m]; Painter [7260 h]; Helper [7260 h]; Physical Progress [3350 h]; TATA Projects Ltd-25 | 1,658,409.48 |
| CB-B03-RB1-WMI-270 |  | Installation of Gypsum Board | 10d | 2028-04-15 | 2028-04-26 | CB-B03-RB1-WMI-20 | CSD-LKO Calender (6 day + Holiday)-25 | ID Work [442093 INR]; Physical Progress [2230 h]; TATA Projects Ltd-25 | 442,093 |
| CB-B03-RB1-WMI-385 |  | Civil Misc Works | 30d | 2028-04-15 | 2028-05-22 | CB-B03-RB1-WMI-20 | CSD-LKO Calender (6 day + Holiday)-25 | Civil Misc Works [1689710 INR]; Physical Progress [6700 h]; TATA Projects Ltd-25 | 1,689,710 |
| CB-B03-RB1-WMI-280 |  | Wall Painting first coat including putty | 10d | 2028-04-27 | 2028-05-10 | CB-B03-RB1-WMI-270 | CSD-LKO Calender (6 day + Holiday)-25 | Painting [7254 Sq m]; Painter [7260 h]; Helper [7260 h]; Physical Progress [2230 h]; TATA Projects Ltd-25 | 1,658,409.48 |
| CB-B03-RB1-WMI-295 |  | Wheel stoppers | 8d | 2028-05-11 | 2028-05-19 | CB-B03-RB1-WMI-280 | CSD-LKO Calender (6 day + Holiday)-25 | Wheel Stopper [8624 INR]; Physical Progress [1790 h]; TATA Projects Ltd-25 | 8,624 |
| CB-B03-RB1-WMI-350 |  | Door & Window | 10d | 2028-05-11 | 2028-05-22 | CB-B03-RB1-WMI-280 | CSD-LKO Calender (6 day + Holiday)-25 | ID Work [442093 INR]; Physical Progress [2230 h]; TATA Projects Ltd-25 | 442,093 |
| CB-B03-RB1-WMI-290 |  | Line marking for parking bays, arrows, pedestrian paths | 8d | 2028-05-20 | 2028-05-29 | CB-B03-RB1-WMI-295 | CSD-LKO Calender (6 day + Holiday)-25 | Line / Arrow Marking [608888 INR]; Physical Progress [1790 h]; TATA Projects Ltd-25 | 608,888 |
| CB-B03-RB1-WMI-285 |  | Wall painting final coat | 6d | 2028-07-20 | 2028-07-26 | CB-B03-RB1-WMI-290, CB-B03-RB1-WMI-250, CB-B03-RB1-WMI-260, CB-B03-RB1-WMI-220, CB-B03-RB1-WMI-205, CB-B03-RB1-WMI-210, CB-B03-RB1-WMI-215, CB-B03-RB1-WMI-165, CB-B03-RB1-WMI-45, CB-B03-RB1-WMI-100, CB-B03-RB1-WMI-335, CB-B03-RB1-WMI-350, CB-B03-RB1-WMI-365, CB-B03-RB1-WMI-340, CB-B03-RB1-WMI-345, CB-B03-RB1-WMI-330, CB-B03-RB1-WMI-385, CB-B03-HS-MEP30, CB-B03-HS-MEP20, CB-B03-HS-MEP25, CB-B03-HS-MEP40, CB-B03-HS-MEP35, CB-B03-HS-MEP10, CB-B03-HS-MEP15 | CSD-LKO Calender (6 day + Holiday)-25 | Painting [7254 Sq m]; Painter [7250 h]; Helper [7250 h]; Physical Progress [1340 h]; TATA Projects Ltd-25 | 1,658,409.48 |

| ID | WBS | Activity | Duration | Start | Finish | Predecessors | Calendar | Resources | Cost |
| --- | --- | --- | --- | --- | --- | --- | --- | --- | --- |
|  | 6 | **Convention Center** |  | 2027-05-11 | 2028-06-15 |  |  |  |  |
|  | 1 | **Wet Finishes** |  | 2027-05-11 | 2028-03-02 |  |  |  |  |
| CB-B03-CC-WMI-10 |  | Waiting for curing & Deshuttering | 7d | 2027-05-11 | 2027-05-19 | CC-SS-GS215, CC-SS-GS130, CC-SS-GS65, CC-SS-GS95, CC-SS-GS110, CC-SS-GS185, CC-SS-GS200 | CSD-LKO Calender (6 day + Holiday)-25 | Physical Progress [1550 h]; TATA Projects Ltd-25 |  |
| CB-B03-CC-WMI-15 |  | Brickwork/Blockwork | 25d | 2027-05-19 | 2027-06-17 | CB-B03-CC-WMI-10 | CSD-LKO Calender (6 day + Holiday)-25 | Masonry [366 CuM]; Mason [2440 h]; Helper [1220 h]; Physical Progress [10040 h]; TATA Projects Ltd-25 | 3,489,941.76 |
| CB-B03-CC-WMI-395 |  | Structural Misc Works | 50d | 2027-05-19 | 2027-07-16 | CB-B03-CC-WMI-10 | CSD-LKO Calender (6 day + Holiday)-25 | Structural Misc Works [818513 INR]; Physical Progress [11160 h]; TATA Projects Ltd-25 | 818,513 |
| CB-B03-CC-WMI-25 |  | Plaster | 30d | 2027-07-28 | 2027-09-01 | CB-B03-CC-WMI-30, CB-B03-CC-WMI-60, CB-B03-CC-WMI-245, CB-B03-CC-WMI-395 | CSD-LKO Calender (6 day + Holiday)-25 | Plaster [12176 Sqr Mtr]; Mason [8120 h]; Helper [4060 h]; Physical Progress [6700 h]; TATA Projects Ltd-25 | 6,744,408.16 |
| CB-B03-CC-WMI-20 |  | Flooring | 25d | 2028-02-02 | 2028-03-02 | CB-B03-CC-WMI-15, CB-B03-CC-WMI-395, CB-B03-CC-WMI-80, CB-B03-CC-WMI-85, CB-B03-CC-WMI-90, CB-B03-CC-WMI-300, CB-B03-CC-WMI-95, CB-B03-CC-WMI-35, CB-B03-CC-WMI-40, CB-B03-CC-WMI-50, CB-B03-CC-WMI-310, CB-B03-CC-WMI-405, CB-B03-CC-WMI-315, CB-B03-CC-WMI-150, CB-B03-CC-WMI-130, CB-B03-CC-WMI-145, CB-B03-CC-WMI-135, CB-B03-CC-WMI-375, CB-B03-CC-WMI-185, CB-B03-CC-WMI-195, CB-B03-CC-WMI-200, CB-B03-CC-WMI-190, CB-B03-CC-WMI-230, CB-B03-CC-WMI-235, CB-B03-CC-WMI-320, CB-B03-CC-WMI-240, CB-B03-CC-WMI-255 | CSD-LKO Calender (6 day + Holiday)-25 | Flooring [18764991 INR]; Flooring Mason [9400 h]; Helper [9400 h]; Physical Progress [11160 h]; TATA Projects Ltd-25 | 18,764,991 |
|  | 3 | **Water Tanks** |  | 2027-05-19 | 2027-08-03 |  |  |  |  |
| CB-B03-CC-WMI-365 |  | Installation of Rungs | 10d | 2027-05-19 | 2027-05-31 | CB-B03-CC-WMI-10 | CSD-LKO Calender (6 day + Holiday)-25 | Rungs [364811 INR]; Physical Progress [2230 h]; TATA Projects Ltd-25 | 364,811 |
| CB-B03-CC-WMI-355 |  | Waterproofing | 30d | 2027-05-31 | 2027-07-05 | CB-B03-CC-WMI-365 | CSD-LKO Calender (6 day + Holiday)-25 | Waterproofing [8564838 INR]; Waterprrofing Mason [8160 h]; Helper [4080 h]; Physical Progress [6700 h]; TATA Projects Ltd-25 | 8,564,838 |
| CB-B03-CC-WMI-360 |  | Flooring | 25d | 2027-07-05 | 2027-08-03 | CB-B03-CC-WMI-355 | CSD-LKO Calender (6 day + Holiday)-25 | Flooring [5864060 INR]; Flooring Mason [2940 h]; Helper [2940 h]; Physical Progress [6700 h]; TATA Projects Ltd-25 | 5,864,060 |
|  | 5 | **Low Side MEP** |  | 2027-05-19 | 2028-06-08 |  |  |  |  |
|  | 2 | **HVAC** |  | 2027-06-17 | 2028-06-08 |  |  |  |  |
|  | 1 | **1st Fix** |  | 2027-06-17 | 2027-10-08 |  |  |  |  |
| CB-B03-CC-WMI-305 |  | Duct Support Fabrication | 35d | 2027-06-17 | 2027-07-28 | CB-B03-CC-WMI-15 | CSD-LKO Calender (6 day + Holiday)-25 | Physical Progress [3350 h]; HVAC [210890 INR]; TATA Projects Ltd-25 | 210,890 |
| CB-B03-CC-WMI-65 |  | Installing duct hangers and supports | 30d | 2027-07-28 | 2027-09-01 | CB-B03-CC-WMI-275, CB-B03-CC-WMI-305 | CSD-LKO Calender (6 day + Holiday)-25 | Physical Progress [2230 h]; HVAC [421779 INR]; TATA Projects Ltd-25 | 421,779 |
| CB-B03-CC-WMI-70 |  | Laying concealed/exposed refrigerant piping | 30d | 2027-09-01 | 2027-10-08 | CB-B03-CC-WMI-65 | CSD-LKO Calender (6 day + Holiday)-25 | Physical Progress [3350 h]; HVAC [105445 INR]; TATA Projects Ltd-25 | 105,445 |
| CB-B03-CC-WMI-75 |  | Laying concealed/exposed drain piping | 30d | 2027-09-01 | 2027-10-08 | CB-B03-CC-WMI-65 | CSD-LKO Calender (6 day + Holiday)-25 | Physical Progress [2230 h]; HVAC [632669 INR]; TATA Projects Ltd-25 | 632,669 |
|  | 2 | **2nd Fix** |  | 2027-09-01 | 2028-01-20 |  |  |  |  |
| CB-B03-CC-WMI-80 |  | Duct installation | 20d | 2027-09-01 | 2027-09-25 | CB-B03-CC-WMI-65 | CSD-LKO Calender (6 day + Holiday)-25 | Physical Progress [3350 h]; HVAC [1581672 INR]; TATA Projects Ltd-25 | 1,581,672 |
| CB-B03-CC-WMI-85 |  | Insulation of ducts (thermal/acoustic) | 15d | 2027-09-25 | 2027-10-15 | CB-B03-CC-WMI-80 | CSD-LKO Calender (6 day + Holiday)-25 | Physical Progress [1340 h]; HVAC [949003 INR]; TATA Projects Ltd-25 | 949,003 |
| CB-B03-CC-WMI-90 |  | Installation of chilled water piping / VRF piping | 15d | 2027-10-15 | 2027-11-03 | CB-B03-CC-WMI-85 | CSD-LKO Calender (6 day + Holiday)-25 | Physical Progress [1340 h]; HVAC [2108896 INR]; TATA Projects Ltd-25 | 2,108,896 |
| CB-B03-CC-WMI-300 |  | Installation of indoor units including AHU, FCU | 45d | 2027-11-03 | 2027-12-27 | CB-B03-CC-WMI-90, CB-B03-CC-WMI-70, CB-B03-CC-WMI-75 | CSD-LKO Calender (6 day + Holiday)-25 | Physical Progress [10040 h]; HVAC [1898006 INR]; TATA Projects Ltd-25 | 1,898,006 |
| CB-B03-CC-WMI-95 |  | Connecting refrigerant and drain piping to indoor units | 20d | 2027-12-27 | 2028-01-20 | CB-B03-CC-WMI-300 | CSD-LKO Calender (6 day + Holiday)-25 | Physical Progress [1340 h]; HVAC [527224 INR]; TATA Projects Ltd-25 | 527,224 |

| ID | WBS | Activity | Duration | Start | Finish | Predecessors | Calendar | Resources | Cost |
| --- | --- | --- | --- | --- | --- | --- | --- | --- | --- |
|  | 3 | **Final Fix** |  | 2028-03-27 | 2028-06-08 |  |  |  |  |
| CB-B03-CC-WMI-105 |  | Installing grills, diffusers, dampers | 30d | 2028-03-27 | 2028-05-03 | CB-B03-CC-WMI-280 | CSD-LKO Calender (6 day + Holiday)-25 | Physical Progress [1340 h]; HVAC [1054448 INR]; TATA Projects Ltd-25 | 1,054,448 |
| CB-B03-CC-WMI-100 |  | Installation of thermostats and control panels | 30d | 2028-05-03 | 2028-06-08 | CB-B03-CC-WMI-105 | CSD-LKO Calender (6 day + Holiday)-25 | Physical Progress [1340 h]; HVAC [527224 INR]; TATA Projects Ltd-25 | 527,224 |
|  | 1 | **Electrical** |  | 2027-05-19 | 2028-05-16 |  |  |  |  |
|  | 1 | **1st Fix** |  | 2027-05-19 | 2027-07-28 |  |  |  |  |
| CB-B03-CC-WMI-385 |  | Slab Conduiting | 25d | 2027-05-19 | 2027-06-17 | CB-B03-CC-WMI-10 | CSD-LKO Calender (6 day + Holiday)-25 | Physical Progress [5580 h]; Electrical [926153 INR]; TATA Projects Ltd-25 | 926,153 |
| CB-B03-CC-WMI-30 |  | Wall Conduiting | 30d | 2027-06-17 | 2027-07-22 | CB-B03-CC-WMI-15 | CSD-LKO Calender (6 day + Holiday)-25 | Physical Progress [2230 h]; Electrical [463076 INR]; TATA Projects Ltd-25 | 463,076 |
| CB-B03-CC-WMI-60 |  | Installing back boxes for switches, sockets | 5d | 2027-07-22 | 2027-07-28 | CB-B03-CC-WMI-30, CB-B03-CC-WMI-385 | CSD-LKO Calender (6 day + Holiday)-25 | Physical Progress [1110 h]; Electrical [277846 INR]; TATA Projects Ltd-25 | 277,846 |
|  | 2 | **2nd Fix** |  | 2027-09-01 | 2028-02-02 |  |  |  |  |
| CB-B03-CC-WMI-35 |  | Cable tray laying | 15d | 2027-09-01 | 2027-09-20 | CB-B03-CC-WMI-25, CB-B03-CC-WMI-275 | CSD-LKO Calender (6 day + Holiday)-25 | Physical Progress [5580 h]; Electrical [370461 INR]; TATA Projects Ltd-25 | 370,461 |
| CB-B03-CC-WMI-40 |  | Cabling & Wire Pulling | 45d | 2027-09-20 | 2027-11-15 | CB-B03-CC-WMI-35 | CSD-LKO Calender (6 day + Holiday)-25 | Physical Progress [10040 h]; Electrical [1852305 INR]; TATA Projects Ltd-25 | 1,852,305 |
| CB-B03-CC-WMI-50 |  | DB fixing and connecting | 20d | 2027-11-15 | 2027-12-08 | CB-B03-CC-WMI-40 | CSD-LKO Calender (6 day + Holiday)-25 | Physical Progress [3350 h]; Electrical [277846 INR]; TATA Projects Ltd-25 | 277,846 |
| CB-B03-CC-WMI-310 |  | Floor/Distribution Panel Installation | 15d | 2027-12-08 | 2027-12-27 | CB-B03-CC-WMI-50 | CSD-LKO Calender (6 day + Holiday)-25 | Physical Progress [1110 h]; Electrical [740922 INR]; TATA Projects Ltd-25 | 740,922 |
| CB-B03-CC-WMI-405 |  | Floor Rising Main Installation | 15d | 2027-12-27 | 2028-01-14 | CB-B03-CC-WMI-310 | CSD-LKO Calender (6 day + Holiday)-25 | Physical Progress [2230 h]; Electrical [1296614 INR]; TATA Projects Ltd-25 | 1,296,614 |
| CB-B03-CC-WMI-315 |  | Equipment Earthing | 15d | 2028-01-14 | 2028-02-02 | CB-B03-CC-WMI-310, CB-B03-CC-WMI-405 | CSD-LKO Calender (6 day + Holiday)-25 | Physical Progress [2230 h]; Electrical [277846 INR]; TATA Projects Ltd-25 | 277,846 |
|  | 3 | **Final Fix** |  | 2028-03-27 | 2028-05-16 |  |  |  |  |
| CB-B03-CC-WMI-55 |  | Switches & Socket | 20d | 2028-03-27 | 2028-04-20 | CB-B03-CC-WMI-280 | CSD-LKO Calender (6 day + Holiday)-25 | Physical Progress [4460 h]; Electrical [926153 INR]; TATA Projects Ltd-25 | 926,153 |
| CB-B03-CC-WMI-45 |  | Light Fixtures | 20d | 2028-04-20 | 2028-05-16 | CB-B03-CC-WMI-55, CB-B03-CC-WMI-315 | CSD-LKO Calender (6 day + Holiday)-25 | Physical Progress [3350 h]; Electrical [1389229 INR]; TATA Projects Ltd-25 | 1,389,229 |
|  | 3 | **Plumbing** |  | 2027-06-17 | 2028-05-22 |  |  |  |  |
|  | 1 | **1st Fix** |  | 2027-06-17 | 2027-11-20 |  |  |  |  |
| CB-B03-CC-WMI-120 |  | Fixing pipe supports and clamps | 35d | 2027-06-17 | 2027-07-28 | CB-B03-CC-WMI-15 | CSD-LKO Calender (6 day + Holiday)-25 | Physical Progress [2230 h]; Plumbing [521800 INR]; TATA Projects Ltd-25 | 521,800 |
| CB-B03-CC-WMI-110 |  | Laying water supply pipes (hot & cold) | 35d | 2027-07-28 | 2027-09-08 | CB-B03-CC-WMI-120 | CSD-LKO Calender (6 day + Holiday)-25 | Physical Progress [3350 h]; Plumbing [1043599 INR]; TATA Projects Ltd-25 | 1,043,599 |
| CB-B03-CC-WMI-115 |  | Laying drainage pipes (soil, waste, vent) | 35d | 2027-07-28 | 2027-09-08 | CB-B03-CC-WMI-120 | CSD-LKO Calender (6 day + Holiday)-25 | Physical Progress [3350 h]; Plumbing [1043599 INR]; TATA Projects Ltd-25 | 1,043,599 |
| CB-B03-CC-WMI-140 |  | Installation of plumbing fixture base supports (WC frames, sink brackets) | 30d | 2027-09-08 | 2027-10-15 | CB-B03-CC-WMI-115 | CSD-LKO Calender (6 day + Holiday)-25 | Physical Progress [1340 h]; Plumbing [521800 INR]; TATA Projects Ltd-25 | 521,800 |
| CB-B03-CC-WMI-125 |  | Pressure testing of water supply lines | 25d | 2027-10-15 | 2027-11-15 | CB-B03-CC-WMI-110, CB-B03-CC-WMI-115, CB-B03-CC-WMI-140 | CSD-LKO Calender (6 day + Holiday)-25 | Physical Progress [1550 h]; Plumbing [104360 INR]; TATA Projects Ltd-25 | 104,360 |
| CB-B03-CC-WMI-370 |  | Installation of concealed parts of toilet fixtures | 30d | 2027-10-15 | 2027-11-20 | CB-B03-CC-WMI-140 | CSD-LKO Calender (6 day + Holiday)-25 | Physical Progress [2230 h]; Plumbing [521800 INR]; TATA Projects Ltd-25 | 521,800 |

| ID | WBS | Activity | Duration | Start | Finish | Predecessors | Calendar | Resources | Cost |
| --- | --- | --- | --- | --- | --- | --- | --- | --- | --- |
|  | 2 | **2nd FIx** |  | 2027-11-15 | 2028-01-27 |  |  |  |  |
| CB-B03-CC-WMI-150 |  | Insulation of hot water pipes (if applicable) | 15d | 2027-11-15 | 2027-12-02 | CB-B03-CC-WMI-125 | CSD-LKO Calender (6 day + Holiday)-25 | Physical Progress [1340 h]; Plumbing [521800 INR]; TATA Projects Ltd-25 | 521,800 |
| CB-B03-CC-WMI-130 |  | Installation of vertical risers and main distribution lines | 35d | 2027-11-20 | 2028-01-03 | CB-B03-CC-WMI-25, CB-B03-CC-WMI-275, CB-B03-CC-WMI-125, CB-B03-CC-WMI-370 | CSD-LKO Calender (6 day + Holiday)-25 | Physical Progress [4460 h]; Plumbing [1043599 INR]; TATA Projects Ltd-25 | 1,043,599 |
| CB-B03-CC-WMI-145 |  | Testing drainage lines for leakage/blockage | 15d | 2027-12-02 | 2027-12-20 | CB-B03-CC-WMI-140, CB-B03-CC-WMI-150 | CSD-LKO Calender (6 day + Holiday)-25 | Physical Progress [1340 h]; Plumbing [104360 INR]; TATA Projects Ltd-25 | 104,360 |
| CB-B03-CC-WMI-375 |  | Laying of ACO Drains | 20d | 2027-12-20 | 2028-01-14 | CB-B03-CC-WMI-145 | CSD-LKO Calender (6 day + Holiday)-25 | ACO Drain [4080997 INR]; Physical Progress [4460 h]; TATA Projects Ltd-25 | 4,080,997 |
| CB-B03-CC-WMI-135 |  | Fixing floor traps and gully traps | 20d | 2028-01-03 | 2028-01-27 | CB-B03-CC-WMI-130 | CSD-LKO Calender (6 day + Holiday)-25 | Physical Progress [1340 h]; Plumbing [313080 INR]; TATA Projects Ltd-25 | 313,080 |
|  | 3 | **Final FIx** |  | 2028-01-14 | 2028-05-22 |  |  |  |  |
| CB-B03-CC-WMI-380 |  | Installation of ACO Drain Grating | 7d | 2028-01-14 | 2028-01-22 | CB-B03-CC-WMI-375 | CSD-LKO Calender (6 day + Holiday)-25 | Grating of Drain [2489760 INR]; Physical Progress [1560 h]; TATA Projects Ltd-25 | 2,489,760 |
| CB-B03-CC-WMI-155 |  | Installation of sanitary fixtures (WC, washbasins, urinals, sinks) | 10d | 2028-03-27 | 2028-04-07 | CB-B03-CC-WMI-280, CB-B03-CC-WMI-135 | CSD-LKO Calender (6 day + Holiday)-25 | Physical Progress [2230 h]; Plumbing [2087198 INR]; TATA Projects Ltd-25 | 2,087,198 |
| CB-B03-CC-WMI-160 |  | Installation of CP fittings (taps, mixers, showers, health faucets) | 10d | 2028-04-07 | 2028-04-20 | CB-B03-CC-WMI-155, CB-B03-CC-WMI-280 | CSD-LKO Calender (6 day + Holiday)-25 | Physical Progress [2230 h]; Plumbing [1043599 INR]; TATA Projects Ltd-25 | 1,043,599 |
| CB-B03-CC-WMI-165 |  | Connection of appliances | 25d | 2028-04-20 | 2028-05-22 | CB-B03-CC-WMI-160 | CSD-LKO Calender (6 day + Holiday)-25 | Physical Progress [1550 h]; Plumbing [521800 INR]; TATA Projects Ltd-25 | 521,800 |
|  | 4 | **Firefighting** |  | 2027-06-17 | 2028-05-27 |  |  |  |  |
|  | 1 | **1st Fix** |  | 2027-06-17 | 2027-10-15 |  |  |  |  |
| CB-B03-CC-WMI-175 |  | Fixing pipe supports and hangers | 35d | 2027-06-17 | 2027-07-28 | CB-B03-CC-WMI-15 | CSD-LKO Calender (6 day + Holiday)-25 | Physical Progress [2230 h]; Firefighting [431557 INR]; TATA Projects Ltd-25 | 431,557 |
| CB-B03-CC-WMI-170 |  | Laying branch piping | 35d | 2027-07-28 | 2027-09-08 | CB-B03-CC-WMI-175 | CSD-LKO Calender (6 day + Holiday)-25 | Physical Progress [3350 h]; Firefighting [924764 INR]; TATA Projects Ltd-25 | 924,764 |
| CB-B03-CC-WMI-180 |  | Hydrostatic pressure testing of piping | 30d | 2027-09-08 | 2027-10-15 | CB-B03-CC-WMI-170 | CSD-LKO Calender (6 day + Holiday)-25 | Physical Progress [1340 h]; Firefighting [123302 INR]; TATA Projects Ltd-25 | 123,302 |
|  | 2 | **2nd Fix** |  | 2027-10-15 | 2028-01-08 |  |  |  |  |
| CB-B03-CC-WMI-185 |  | Installation of vertical risers and distribution piping in shafts | 35d | 2027-10-15 | 2027-11-26 | CB-B03-CC-WMI-25, CB-B03-CC-WMI-180 | CSD-LKO Calender (6 day + Holiday)-25 | Physical Progress [5580 h]; Firefighting [1233019 INR]; TATA Projects Ltd-25 | 1,233,019 |
| CB-B03-CC-WMI-195 |  | Painting/insulation of exposed fire pipes | 30d | 2027-10-15 | 2027-11-20 | CB-B03-CC-WMI-180 | CSD-LKO Calender (6 day + Holiday)-25 | Physical Progress [2230 h]; Firefighting [61651 INR]; TATA Projects Ltd-25 | 61,651 |
| CB-B03-CC-WMI-200 |  | Testing risers and branch lines for leakage | 30d | 2027-11-20 | 2027-12-27 | CB-B03-CC-WMI-195 | CSD-LKO Calender (6 day + Holiday)-25 | Physical Progress [1340 h]; Firefighting [123302 INR]; TATA Projects Ltd-25 | 123,302 |
| CB-B03-CC-WMI-190 |  | Installation of sprinkler branch lines in ceilings | 35d | 2027-11-26 | 2028-01-08 | CB-B03-CC-WMI-185, CB-B03-CC-WMI-275 | CSD-LKO Calender (6 day + Holiday)-25 | Physical Progress [5580 h]; Firefighting [924764 INR]; TATA Projects Ltd-25 | 924,764 |
|  | 3 | **Final FIx** |  | 2028-03-27 | 2028-05-27 |  |  |  |  |
| CB-B03-CC-WMI-205 |  | Installation of sprinkler heads, nozzles, and final alignment | 35d | 2028-03-27 | 2028-05-10 | CB-B03-CC-WMI-280, CB-B03-CC-WMI-190 | CSD-LKO Calender (6 day + Holiday)-25 | Physical Progress [10040 h]; Firefighting [924764 INR]; TATA Projects Ltd-25 | 924,764 |
| CB-B03-CC-WMI-210 |  | Installation of hydrant accessories (valves, hose reels, cabinets) | 25d | 2028-03-27 | 2028-04-26 | CB-B03-CC-WMI-280 | CSD-LKO Calender (6 day + Holiday)-25 | Physical Progress [2230 h]; Firefighting [616510 INR]; TATA Projects Ltd-25 | 616,510 |
| CB-B03-CC-WMI-215 |  | Installation of portable fire extinguishers | 30d | 2028-03-27 | 2028-05-03 | CB-B03-CC-WMI-280 | CSD-LKO Calender (6 day + Holiday)-25 | Physical Progress [1340 h]; Firefighting [61651 INR]; TATA Projects Ltd-25 | 61,651 |
| CB-B03-CC-WMI-220 |  | Integration with fire alarm system | 20d | 2028-05-03 | 2028-05-27 | CB-B03-CC-WMI-215 | CSD-LKO Calender (6 day + Holiday)-25 | Physical Progress [4460 h]; Firefighting [308255 INR]; TATA Projects Ltd-25 | 308,255 |

| ID | WBS | Activity | Duration | Start | Finish | Predecessors | Calendar | Resources | Cost |
| --- | --- | --- | --- | --- | --- | --- | --- | --- | --- |
|  | 5 | **ELV** |  | 2027-05-19 | 2028-05-22 |  |  |  |  |
|  | 1 | **1st Fix** |  | 2027-05-19 | 2027-07-28 |  |  |  |  |
| CB-B03-CC-WMI-390 |  | Slab Conduiting | 25d | 2027-05-19 | 2027-06-17 | CB-B03-CC-WMI-10 | CSD-LKO Calender (6 day + Holiday)-25 | Physical Progress [5580 h]; ELV [726016 INR]; TATA Projects Ltd-25 | 726,016 |
| CB-B03-CC-WMI-225 |  | Wall Conduiting | 30d | 2027-06-17 | 2027-07-22 | CB-B03-CC-WMI-15 | CSD-LKO Calender (6 day + Holiday)-25 | Physical Progress [2230 h]; ELV [311150 INR]; TATA Projects Ltd-25 | 311,150 |
| CB-B03-CC-WMI-245 |  | Installing back boxes for switches, sockets | 5d | 2027-07-22 | 2027-07-28 | CB-B03-CC-WMI-225, CB-B03-CC-WMI-390 | CSD-LKO Calender (6 day + Holiday)-25 | Physical Progress [1110 h]; ELV [518583 INR]; TATA Projects Ltd-25 | 518,583 |
|  | 2 | **2nd Fix** |  | 2027-09-01 | 2028-01-03 |  |  |  |  |
| CB-B03-CC-WMI-230 |  | Cable tray installation | 15d | 2027-09-01 | 2027-09-20 | CB-B03-CC-WMI-25, CB-B03-CC-WMI-275 | CSD-LKO Calender (6 day + Holiday)-25 | Physical Progress [5580 h]; ELV [518583 INR]; TATA Projects Ltd-25 | 518,583 |
| CB-B03-CC-WMI-235 |  | Cabeling of ELV cable - IT/Fire Alarm/Public Address | 30d | 2027-09-20 | 2027-10-27 | CB-B03-CC-WMI-230 | CSD-LKO Calender (6 day + Holiday)-25 | Physical Progress [10040 h]; ELV [1244599 INR]; TATA Projects Ltd-25 | 1,244,599 |
| CB-B03-CC-WMI-320 |  | ELV Rack Installation | 15d | 2027-10-27 | 2027-11-15 | CB-B03-CC-WMI-235 | CSD-LKO Calender (6 day + Holiday)-25 | Physical Progress [2230 h]; ELV [518583 INR]; TATA Projects Ltd-25 | 518,583 |
| CB-B03-CC-WMI-240 |  | Termination of cables at junction boxes, patch panels, and control panels | 15d | 2027-11-15 | 2027-12-02 | CB-B03-CC-WMI-320 | CSD-LKO Calender (6 day + Holiday)-25 | Physical Progress [6700 h]; ELV [518583 INR]; TATA Projects Ltd-25 | 518,583 |
| CB-B03-CC-WMI-255 |  | Fixing devices like CCTV camera bases, card reader bases, smoke detector bases, PA Bases, Wifi Bases | 25d | 2027-12-02 | 2028-01-03 | CB-B03-CC-WMI-240 | CSD-LKO Calender (6 day + Holiday)-25 | Physical Progress [890 h]; ELV [1037166 INR]; TATA Projects Ltd-25 | 1,037,166 |
|  | 3 | **3rd Fix** |  | 2028-03-27 | 2028-05-22 |  |  |  |  |
| CB-B03-CC-WMI-250 |  | Installation of data and Voice Faceplate | 25d | 2028-03-27 | 2028-04-26 | CB-B03-CC-WMI-280 | CSD-LKO Calender (6 day + Holiday)-25 | Physical Progress [3350 h]; ELV [518583 INR]; TATA Projects Ltd-25 | 518,583 |
| CB-B03-CC-WMI-260 |  | Installation of Camera & Wifi | 30d | 2028-03-27 | 2028-05-03 | CB-B03-CC-WMI-280 | CSD-LKO Calender (6 day + Holiday)-25 | Physical Progress [3350 h]; ELV [518583 INR]; TATA Projects Ltd-25 | 518,583 |
| CB-B03-CC-WMI-265 |  | Installation of fire alarm devices + Public Address | 15d | 2028-03-27 | 2028-04-13 | CB-B03-CC-WMI-280 | CSD-LKO Calender (6 day + Holiday)-25 | Physical Progress [3350 h]; ELV [622299 INR]; TATA Projects Ltd-25 | 622,299 |
| CB-B03-CC-WMI-325 |  | Installation of Active System | 15d | 2028-04-13 | 2028-05-03 | CB-B03-CC-WMI-265 | CSD-LKO Calender (6 day + Holiday)-25 | Physical Progress [3350 h]; ELV [1037166 INR]; TATA Projects Ltd-25 | 1,037,166 |
| CB-B03-CC-WMI-335 |  | Fire Panel Intallation & Integration | 25d | 2028-04-13 | 2028-05-16 | CB-B03-CC-WMI-265 | CSD-LKO Calender (6 day + Holiday)-25 | Physical Progress [5580 h]; ELV [518583 INR]; TATA Projects Ltd-25 | 518,583 |
| CB-B03-CC-WMI-340 |  | Installation & Integration of Audio Visual System | 25d | 2028-04-13 | 2028-05-16 | CB-B03-CC-WMI-265 | CSD-LKO Calender (6 day + Holiday)-25 | Physical Progress [5580 h]; ELV [518583 INR]; TATA Projects Ltd-25 | 518,583 |
| CB-B03-CC-WMI-345 |  | Installation & Integration of Access Control | 25d | 2028-04-13 | 2028-05-16 | CB-B03-CC-WMI-265 | CSD-LKO Calender (6 day + Holiday)-25 | Physical Progress [5580 h]; ELV [518583 INR]; TATA Projects Ltd-25 | 518,583 |
| CB-B03-CC-WMI-330 |  | Integration of Active components | 15d | 2028-05-03 | 2028-05-22 | CB-B03-CC-WMI-325 | CSD-LKO Calender (6 day + Holiday)-25 | Physical Progress [3350 h]; ELV [207433 INR]; TATA Projects Ltd-25 | 207,433 |
|  | 2 | **Dry Finishes** |  | 2027-06-17 | 2028-06-15 |  |  |  |  |
| CB-B03-CC-WMI-275 |  | Painting on Ceiling (Ceiling Finish) | 15d | 2027-06-17 | 2027-07-05 | CB-B03-CC-WMI-15 | CSD-LKO Calender (6 day + Holiday)-25 | Painting [7254 Sq m]; Painter [7260 h]; Helper [7260 h]; Physical Progress [3350 h]; TATA Projects Ltd-25 | 1,658,409.48 |
| CB-B03-CC-WMI-270 |  | Installation of Gypsum Board | 10d | 2028-03-02 | 2028-03-15 | CB-B03-CC-WMI-20 | CSD-LKO Calender (6 day + Holiday)-25 | ID Work [442093 INR]; Physical Progress [2230 h]; TATA Projects Ltd-25 | 442,093 |
| CB-B03-CC-WMI-400 |  | Civil Misc Works | 30d | 2028-03-02 | 2028-04-07 | CB-B03-CC-WMI-20 | CSD-LKO Calender (6 day + Holiday)-25 | Civil Misc Works [1689710 INR]; Physical Progress [6700 h]; TATA Projects Ltd-25 | 1,689,710 |
| CB-B03-CC-WMI-280 |  | Wall Painting first coat including putty | 10d | 2028-03-15 | 2028-03-27 | CB-B03-CC-WMI-270 | CSD-LKO Calender (6 day + Holiday)-25 | Painting [7254 Sq m]; Painter [7260 h]; Helper [7260 h]; Physical Progress [2230 h]; TATA Projects Ltd-25 | 1,658,409.48 |
| CB-B03-CC-WMI-295 |  | Wheel stoppers | 8d | 2028-03-27 | 2028-04-05 | CB-B03-CC-WMI-280 | CSD-LKO Calender (6 day + Holiday)-25 | Wheel Stopper [8624 INR]; Physical Progress [1790 h]; TATA Projects Ltd-25 | 8,624 |
| CB-B03-CC-WMI-350 |  | Door & Window | 10d | 2028-03-27 | 2028-04-07 | CB-B03-CC-WMI-280 | CSD-LKO Calender (6 day + Holiday)-25 | ID Work [442093 INR]; Physical Progress [2230 h]; TATA Projects Ltd-25 | 442,093 |
| CB-B03-CC-WMI-290 |  | Line marking for parking bays, arrows, pedestrian paths | 8d | 2028-04-05 | 2028-04-15 | CB-B03-CC-WMI-295 | CSD-LKO Calender (6 day + Holiday)-25 | Line / Arrow Marking [608888 INR]; Physical Progress [1790 h]; TATA Projects Ltd-25 | 608,888 |
| CB-B03-CC-WMI-285 |  | Wall painting final coat | 6d | 2028-06-08 | 2028-06-15 | CB-B03-CC-WMI-290, CB-B03-CC-WMI-250, CB-B03-CC-WMI-260, CB-B03-CC-WMI-220, CB-B03-CC-WMI-205, CB-B03-CC-WMI-210, CB-B03-CC-WMI-215, CB-B03-CC-WMI-165, CB-B03-CC-WMI-45, CB-B03-CC-WMI-100, CB-B03-CC-WMI-335, CB-B03-CC-WMI-350, CB-B03-CC-WMI-340, CB-B03-CC-WMI-345, CB-B03-CC-WMI-330, CB-B03-CC-WMI-380, CB-B03-CC-WMI-400, CB-B03-HS-MEP30, CB-B03-HS-MEP20, CB-B03-HS-MEP25, CB-B03-HS-MEP40, CB-B03-HS-MEP35, CB-B03-HS-MEP10, CB-B03-HS-MEP15 | CSD-LKO Calender (6 day + Holiday)-25 | Painting [7254 Sq m]; Painter [7250 h]; Helper [7250 h]; Physical Progress [1340 h]; TATA Projects Ltd-25 | 1,658,409.48 |

| ID | WBS | Activity | Duration | Start | Finish | Predecessors | Calendar | Resources | Cost |
| --- | --- | --- | --- | --- | --- | --- | --- | --- | --- |
|  | 3 | **High Side MEP** |  | 2027-09-01 | 2028-05-15 |  |  |  |  |
|  | 1 | **Civil Work** |  | 2027-09-01 | 2027-10-08 |  |  |  |  |
| CB-B03-HS-MEP45 |  | Construction of pedestals for the Equipments | 30d | 2027-09-01 | 2027-10-08 | CB-B03-CC-WMI-25 | CSD-LKO Calender (6 day + Holiday)-25 | Physical Progress [6700 h]; TATA Projects Ltd-25 |  |
|  | 2 | **Plumbing** |  | 2027-10-08 | 2028-05-15 |  |  |  |  |
| CB-B03-HS-MEP30 |  | Sump pumps installation | 7d | 2027-10-08 | 2027-10-18 | CB-B03-CC-WMI-360, CB-B03-HS-MEP45 | CSD-LKO Calender (6 day + Holiday)-25 | Physical Progress [1550 h]; Plumbing [12885911 INR]; TATA Projects Ltd-25 | 12,885,911 |
| CB-B03-HS-MEP25 |  | Effulent Treatment Plant (ETP) | 60d | 2028-01-17 | 2028-03-29 | CB-B03-3S-WMI-20, CB-B03-3S-WMI-360, P-MEP-STP-20, CB-B03-4S-WMI-15, CB-B03-HS-MEP45 | CSD-LKO Calender (6 day + Holiday)-25 | Physical Progress [13390 h]; Plumbing [12885911 INR]; TATA Projects Ltd-25 | 12,885,911 |
| CB-B03-HS-MEP40 |  | Sweage Treatment Plant (STP) | 60d | 2028-01-17 | 2028-03-29 | CB-B03-3S-WMI-20, CB-B03-3S-WMI-360, P-MEP-STP-20, CB-B03-HS-MEP45 | CSD-LKO Calender (6 day + Holiday)-25 | Physical Progress [13390 h]; Plumbing [17181215 INR]; TATA Projects Ltd-25 | 17,181,215 |
| CB-B03-HS-MEP20 |  | Pump installation | 7d | 2028-03-02 | 2028-03-10 | CB-B03-CC-WMI-20, CB-B03-CC-WMI-360, CB-B03-RB2-WMI-360, CB-B03-HS-MEP45 | CSD-LKO Calender (6 day + Holiday)-25 | Physical Progress [1550 h]; Plumbing [12885911 INR]; TATA Projects Ltd-25 | 12,885,911 |
| CB-B03-HS-MEP10 |  | Connection of Pumps and water tanks | 45d | 2028-03-10 | 2028-05-06 | CB-B03-HS-MEP20 | CSD-LKO Calender (6 day + Holiday)-25 | Physical Progress [10040 h]; Plumbing [8590608 INR]; TATA Projects Ltd-25 | 8,590,608 |
| CB-B03-HS-MEP35 |  | Hydro-pneumatic system installation | 20d | 2028-03-10 | 2028-04-04 | CB-B03-HS-MEP20, CB-B03-HS-MEP45 | CSD-LKO Calender (6 day + Holiday)-25 | Physical Progress [4460 h]; Plumbing [17181215 INR]; TATA Projects Ltd-25 | 17,181,215 |
| CB-B03-HS-MEP15 |  | Testing of Pumps, Connections | 7d | 2028-05-06 | 2028-05-15 | CB-B03-HS-MEP35, CB-B03-HS-MEP30, CB-B03-HS-MEP25, CB-B03-HS-MEP40, CB-B03-HS-MEP10 | CSD-LKO Calender (6 day + Holiday)-25 | Physical Progress [1550 h]; Plumbing [4295304 INR]; TATA Projects Ltd-25 | 4,295,304 |
|  | 1 | **Basement 02** |  | 2027-03-19 | 2028-08-31 |  |  |  |  |
|  | 4 | **Hotel 4 Star** |  | 2027-03-19 | 2028-06-02 |  |  |  |  |
|  | 1 | **Wet Finishes** |  | 2027-03-19 | 2028-01-12 |  |  |  |  |
| CB-B02-4S-WMI-10 |  | Deshuttering | 7d | 2027-03-19 | 2027-03-30 | 4S-SS-GF.745, 4S-SS-B-02.425 | CSD-LKO Calender (6 day + Holiday)-25 | Physical Progress [1080 h]; TATA Projects Ltd-25 |  |
| CB-B02-4S-WMI-15 |  | Brickwork/Blockwork | 25d | 2027-03-30 | 2027-04-28 | CB-B02-4S-WMI-10, E-GFC-AR-CB-90 | CSD-LKO Calender (6 day + Holiday)-25 | Masonry [366 CuM]; Mason [2440 h]; Helper [1220 h]; Physical Progress [6970 h]; TATA Projects Ltd-25 | 3,489,941.76 |
| CB-B02-4S-WMI-385 |  | Structural Misc Works | 50d | 2027-03-30 | 2027-05-28 | CB-B02-4S-WMI-10 | CSD-LKO Calender (6 day + Holiday)-25 | Structural Misc Works [818513 INR]; Physical Progress [7750 h]; TATA Projects Ltd-25 | 818,513 |
| CB-B02-4S-WMI-25 |  | Plaster | 30d | 2027-06-09 | 2027-07-14 | CB-B02-4S-WMI-30, CB-B02-4S-WMI-60, CB-B02-4S-WMI-245, CB-B02-4S-WMI-385 | CSD-LKO Calender (6 day + Holiday)-25 | Plaster [11985 Sqr Mtr]; Mason [7990 h]; Helper [4000 h]; Physical Progress [4650 h]; TATA Projects Ltd-25 | 6,638,611.35 |
| CB-B02-4S-WMI-20 |  | Flooring | 25d | 2027-12-11 | 2028-01-12 | CB-B02-4S-WMI-15, CB-B02-HS-MEP20, CB-B02-HS-MEP20 FF, CB-B02-4S-WMI-385, CB-B02-4S-WMI-80, CB-B02-4S-WMI-85, CB-B02-4S-WMI-90, CB-B02-4S-WMI-300, CB-B02-4S-WMI-95, CB-B02-4S-WMI-35, CB-B02-4S-WMI-40, CB-B02-4S-WMI-50, CB-B02-4S-WMI-310, CB-B02-4S-WMI-360, CB-B02-4S-WMI-315, CB-B02-4S-WMI-150, CB-B02-4S-WMI-130, CB-B02-4S-WMI-145, CB-B02-4S-WMI-135, CB-B02-4S-WMI-370, CB-B02-4S-WMI-185, CB-B02-4S-WMI-195, CB-B02-4S-WMI-200, CB-B02-4S-WMI-190, CB-B02-4S-WMI-230, CB-B02-4S-WMI-235, CB-B02-4S-WMI-320, CB-B02-4S-WMI-240, CB-B02-4S-WMI-255 | CSD-LKO Calender (6 day + Holiday)-25 | Flooring [17548054 INR]; Flooring Mason [8800 h]; Helper [8800 h]; Physical Progress [7750 h]; TATA Projects Ltd-25 | 17,548,054 |
|  | 5 | **Low Side MEP** |  | 2027-03-30 | 2028-04-18 |  |  |  |  |
|  | 2 | **HVAC** |  | 2027-04-28 | 2028-04-18 |  |  |  |  |
|  | 1 | **1st Fix** |  | 2027-04-28 | 2027-08-18 |  |  |  |  |
| CB-B02-4S-WMI-305 |  | Duct Support Fabrication | 35d | 2027-04-28 | 2027-06-09 | CB-B02-4S-WMI-15, E-GFC-MEP-CB-90 | CSD-LKO Calender (6 day + Holiday)-25 | Physical Progress [2320 h]; HVAC [210890 INR]; TATA Projects Ltd-25 | 210,890 |
| CB-B02-4S-WMI-65 |  | Installing duct hangers and supports | 30d | 2027-06-09 | 2027-07-14 | CB-B02-4S-WMI-275, CB-B02-4S-WMI-305 | CSD-LKO Calender (6 day + Holiday)-25 | Physical Progress [1550 h]; HVAC [421779 INR]; TATA Projects Ltd-25 | 421,779 |
| CB-B02-4S-WMI-70 |  | Laying concealed/exposed refrigerant piping | 30d | 2027-07-14 | 2027-08-18 | CB-B02-4S-WMI-65 | CSD-LKO Calender (6 day + Holiday)-25 | Physical Progress [2320 h]; HVAC [105445 INR]; TATA Projects Ltd-25 | 105,445 |
| CB-B02-4S-WMI-75 |  | Laying concealed/exposed drain piping | 30d | 2027-07-14 | 2027-08-18 | CB-B02-4S-WMI-65 | CSD-LKO Calender (6 day + Holiday)-25 | Physical Progress [1550 h]; HVAC [632669 INR]; TATA Projects Ltd-25 | 632,669 |

| ID | WBS | Activity | Duration | Start | Finish | Predecessors | Calendar | Resources | Cost |
| --- | --- | --- | --- | --- | --- | --- | --- | --- | --- |
|  | 2 | **2nd Fix** |  | 2027-07-14 | 2027-11-30 |  |  |  |  |
| CB-B02-4S-WMI-80 |  | Duct installation | 20d | 2027-07-14 | 2027-08-06 | CB-B02-4S-WMI-65 | CSD-LKO Calender (6 day + Holiday)-25 | Physical Progress [2320 h]; HVAC [1581672 INR]; TATA Projects Ltd-25 | 1,581,672 |
| CB-B02-4S-WMI-85 |  | Insulation of ducts (thermal/acoustic) | 15d | 2027-08-06 | 2027-08-24 | CB-B02-4S-WMI-80 | CSD-LKO Calender (6 day + Holiday)-25 | Physical Progress [930 h]; HVAC [949003 INR]; TATA Projects Ltd-25 | 949,003 |
| CB-B02-4S-WMI-90 |  | Installation of chilled water piping / VRF piping | 15d | 2027-08-24 | 2027-09-11 | CB-B02-4S-WMI-85 | CSD-LKO Calender (6 day + Holiday)-25 | Physical Progress [930 h]; HVAC [2108896 INR]; TATA Projects Ltd-25 | 2,108,896 |
| CB-B02-4S-WMI-300 |  | Installation of indoor units including AHU, FCU | 45d | 2027-09-11 | 2027-11-06 | CB-B02-4S-WMI-90, CB-B02-4S-WMI-70, CB-B02-4S-WMI-75 | CSD-LKO Calender (6 day + Holiday)-25 | Physical Progress [6970 h]; HVAC [1898006 INR]; TATA Projects Ltd-25 | 1,898,006 |
| CB-B02-4S-WMI-95 |  | Connecting refrigerant and drain piping to indoor units | 20d | 2027-11-06 | 2027-11-30 | CB-B02-4S-WMI-300 | CSD-LKO Calender (6 day + Holiday)-25 | Physical Progress [930 h]; HVAC [527224 INR]; TATA Projects Ltd-25 | 527,224 |
|  | 3 | **Final Fix** |  | 2028-02-05 | 2028-04-18 |  |  |  |  |
| CB-B02-4S-WMI-105 |  | Installing grills, diffusers, dampers | 30d | 2028-02-05 | 2028-03-13 | CB-B02-4S-WMI-280 | CSD-LKO Calender (6 day + Holiday)-25 | Physical Progress [930 h]; HVAC [1054448 INR]; TATA Projects Ltd-25 | 1,054,448 |
| CB-B02-4S-WMI-100 |  | Installation of thermostats and control panels | 30d | 2028-03-13 | 2028-04-18 | CB-B02-4S-WMI-105 | CSD-LKO Calender (6 day + Holiday)-25 | Physical Progress [930 h]; HVAC [527224 INR]; TATA Projects Ltd-25 | 527,224 |
|  | 1 | **Electrical** |  | 2027-03-30 | 2028-03-24 |  |  |  |  |
|  | 1 | **1st Fix** |  | 2027-03-30 | 2027-06-09 |  |  |  |  |
| CB-B02-4S-WMI-355 |  | Slab Conduiting | 25d | 2027-03-30 | 2027-04-28 | CB-B02-4S-WMI-10 | CSD-LKO Calender (6 day + Holiday)-25 | Physical Progress [3870 h]; Electrical [926153 INR]; TATA Projects Ltd-25 | 926,153 |
| CB-B02-4S-WMI-30 |  | Wall Conduiting | 30d | 2027-04-28 | 2027-06-03 | CB-B02-4S-WMI-15 | CSD-LKO Calender (6 day + Holiday)-25 | Physical Progress [1550 h]; Electrical [463076 INR]; TATA Projects Ltd-25 | 463,076 |
| CB-B02-4S-WMI-60 |  | Installing back boxes for switches, sockets | 5d | 2027-06-03 | 2027-06-09 | CB-B02-4S-WMI-30, CB-B02-4S-WMI-355 | CSD-LKO Calender (6 day + Holiday)-25 | Physical Progress [780 h]; Electrical [277846 INR]; TATA Projects Ltd-25 | 277,846 |
|  | 2 | **2nd Fix** |  | 2027-07-14 | 2027-12-11 |  |  |  |  |
| CB-B02-4S-WMI-35 |  | Cable tray laying | 15d | 2027-07-14 | 2027-07-31 | CB-B02-4S-WMI-25, CB-B02-4S-WMI-275 | CSD-LKO Calender (6 day + Holiday)-25 | Physical Progress [3870 h]; Electrical [370461 INR]; TATA Projects Ltd-25 | 370,461 |
| CB-B02-4S-WMI-40 |  | Cabling & Wire Pulling | 45d | 2027-07-31 | 2027-09-23 | CB-B02-4S-WMI-35 | CSD-LKO Calender (6 day + Holiday)-25 | Physical Progress [6970 h]; Electrical [1852305 INR]; TATA Projects Ltd-25 | 1,852,305 |
| CB-B02-4S-WMI-50 |  | DB fixing and connecting | 20d | 2027-09-23 | 2027-10-19 | CB-B02-4S-WMI-40 | CSD-LKO Calender (6 day + Holiday)-25 | Physical Progress [2320 h]; Electrical [277846 INR]; TATA Projects Ltd-25 | 277,846 |
| CB-B02-4S-WMI-310 |  | Floor/Distribution Panel Installation | 15d | 2027-10-19 | 2027-11-06 | CB-B02-4S-WMI-50 | CSD-LKO Calender (6 day + Holiday)-25 | Physical Progress [780 h]; Electrical [740922 INR]; TATA Projects Ltd-25 | 740,922 |
| CB-B02-4S-WMI-360 |  | Floor Rising Main Installation | 15d | 2027-11-06 | 2027-11-24 | CB-B02-4S-WMI-310 | CSD-LKO Calender (6 day + Holiday)-25 | Physical Progress [1550 h]; Electrical [1296614 INR]; TATA Projects Ltd-25 | 1,296,614 |
| CB-B02-4S-WMI-315 |  | Equipment Earthing | 15d | 2027-11-24 | 2027-12-11 | CB-B02-4S-WMI-310, CB-B02-4S-WMI-360 | CSD-LKO Calender (6 day + Holiday)-25 | Physical Progress [1550 h]; Electrical [277846 INR]; TATA Projects Ltd-25 | 277,846 |
|  | 3 | **Final Fix** |  | 2028-02-05 | 2028-03-24 |  |  |  |  |
| CB-B02-4S-WMI-55 |  | Switches & Socket | 20d | 2028-02-05 | 2028-02-29 | CB-B02-4S-WMI-280 | CSD-LKO Calender (6 day + Holiday)-25 | Physical Progress [3100 h]; Electrical [926153 INR]; TATA Projects Ltd-25 | 926,153 |
| CB-B02-4S-WMI-45 |  | Light Fixtures | 20d | 2028-02-29 | 2028-03-24 | CB-B02-4S-WMI-55, CB-B02-4S-WMI-315 | CSD-LKO Calender (6 day + Holiday)-25 | Physical Progress [2320 h]; Electrical [1389229 INR]; TATA Projects Ltd-25 | 1,389,229 |

| ID | WBS | Activity | Duration | Start | Finish | Predecessors | Calendar | Resources | Cost |
| --- | --- | --- | --- | --- | --- | --- | --- | --- | --- |
|  | 3 | **Plumbing** |  | 2027-04-28 | 2028-03-30 |  |  |  |  |
|  | 1 | **1st Fix** |  | 2027-04-28 | 2027-09-29 |  |  |  |  |
| CB-B02-4S-WMI-120 |  | Fixing pipe supports and clamps | 35d | 2027-04-28 | 2027-06-09 | CB-B02-4S-WMI-15 | CSD-LKO Calender (6 day + Holiday)-25 | Physical Progress [1550 h]; Plumbing [521800 INR]; TATA Projects Ltd-25 | 521,800 |
| CB-B02-4S-WMI-110 |  | Laying water supply pipes (hot & cold) | 35d | 2027-06-09 | 2027-07-20 | CB-B02-4S-WMI-120 | CSD-LKO Calender (6 day + Holiday)-25 | Physical Progress [2320 h]; Plumbing [1043599 INR]; TATA Projects Ltd-25 | 1,043,599 |
| CB-B02-4S-WMI-115 |  | Laying drainage pipes (soil, waste, vent) | 35d | 2027-06-09 | 2027-07-20 | CB-B02-4S-WMI-120 | CSD-LKO Calender (6 day + Holiday)-25 | Physical Progress [2320 h]; Plumbing [1043599 INR]; TATA Projects Ltd-25 | 1,043,599 |
| CB-B02-4S-WMI-140 |  | Installation of plumbing fixture base supports (WC frames, sink brackets) | 30d | 2027-07-20 | 2027-08-24 | CB-B02-4S-WMI-115 | CSD-LKO Calender (6 day + Holiday)-25 | Physical Progress [930 h]; Plumbing [521800 INR]; TATA Projects Ltd-25 | 521,800 |
| CB-B02-4S-WMI-125 |  | Pressure testing of water supply lines | 25d | 2027-08-24 | 2027-09-23 | CB-B02-4S-WMI-110, CB-B02-4S-WMI-115, CB-B02-4S-WMI-140 | CSD-LKO Calender (6 day + Holiday)-25 | Physical Progress [1080 h]; Plumbing [104360 INR]; TATA Projects Ltd-25 | 104,360 |
| CB-B02-4S-WMI-365 |  | Installation of concealed parts of toilet fixtures | 30d | 2027-08-24 | 2027-09-29 | CB-B02-4S-WMI-140 | CSD-LKO Calender (6 day + Holiday)-25 | Physical Progress [1550 h]; Plumbing [521800 INR]; TATA Projects Ltd-25 | 521,800 |
|  | 2 | **2nd FIx** |  | 2027-09-23 | 2027-12-06 |  |  |  |  |
| CB-B02-4S-WMI-150 |  | Insulation of hot water pipes (if applicable) | 15d | 2027-09-23 | 2027-10-13 | CB-B02-4S-WMI-125 | CSD-LKO Calender (6 day + Holiday)-25 | Physical Progress [930 h]; Plumbing [521800 INR]; TATA Projects Ltd-25 | 521,800 |
| CB-B02-4S-WMI-130 |  | Installation of vertical risers and main distribution lines | 35d | 2027-09-29 | 2027-11-12 | CB-B02-4S-WMI-25, CB-B02-4S-WMI-275, CB-B02-4S-WMI-125, CB-B02-4S-WMI-365 | CSD-LKO Calender (6 day + Holiday)-25 | Physical Progress [3100 h]; Plumbing [1043599 INR]; TATA Projects Ltd-25 | 1,043,599 |
| CB-B02-4S-WMI-145 |  | Testing drainage lines for leakage/blockage | 15d | 2027-10-13 | 2027-11-01 | CB-B02-4S-WMI-140, CB-B02-4S-WMI-150 | CSD-LKO Calender (6 day + Holiday)-25 | Physical Progress [930 h]; Plumbing [104360 INR]; TATA Projects Ltd-25 | 104,360 |
| CB-B02-4S-WMI-370 |  | Laying of ACO Drains | 20d | 2027-11-01 | 2027-11-24 | CB-B02-4S-WMI-145 | CSD-LKO Calender (6 day + Holiday)-25 | ACO Drain [4080997 INR]; Physical Progress [3100 h]; TATA Projects Ltd-25 | 4,080,997 |
| CB-B02-4S-WMI-135 |  | Fixing floor traps and gully traps | 20d | 2027-11-12 | 2027-12-06 | CB-B02-4S-WMI-130 | CSD-LKO Calender (6 day + Holiday)-25 | Physical Progress [930 h]; Plumbing [313080 INR]; TATA Projects Ltd-25 | 313,080 |
|  | 3 | **Final FIx** |  | 2027-11-24 | 2028-03-30 |  |  |  |  |
| CB-B02-4S-WMI-375 |  | Installation of ACO Drain Grating | 7d | 2027-11-24 | 2027-12-02 | CB-B02-4S-WMI-370 | CSD-LKO Calender (6 day + Holiday)-25 | Grating of Drain [2489760 INR]; Physical Progress [1080 h]; TATA Projects Ltd-25 | 2,489,760 |
| CB-B02-4S-WMI-155 |  | Installation of sanitary fixtures (WC, washbasins, urinals, sinks) | 10d | 2028-02-05 | 2028-02-17 | CB-B02-4S-WMI-280, CB-B02-4S-WMI-135 | CSD-LKO Calender (6 day + Holiday)-25 | Physical Progress [1550 h]; Plumbing [2087198 INR]; TATA Projects Ltd-25 | 2,087,198 |
| CB-B02-4S-WMI-160 |  | Installation of CP fittings (taps, mixers, showers, health faucets) | 10d | 2028-02-17 | 2028-02-29 | CB-B02-4S-WMI-155, CB-B02-4S-WMI-280 | CSD-LKO Calender (6 day + Holiday)-25 | Physical Progress [1550 h]; Plumbing [1043599 INR]; TATA Projects Ltd-25 | 1,043,599 |
| CB-B02-4S-WMI-165 |  | Connection of appliances | 25d | 2028-02-29 | 2028-03-30 | CB-B02-4S-WMI-160 | CSD-LKO Calender (6 day + Holiday)-25 | Physical Progress [1080 h]; Plumbing [521800 INR]; TATA Projects Ltd-25 | 521,800 |
|  | 4 | **Firefighting** |  | 2027-04-28 | 2028-04-05 |  |  |  |  |
|  | 1 | **1st Fix** |  | 2027-04-28 | 2027-08-24 |  |  |  |  |
| CB-B02-4S-WMI-175 |  | Fixing pipe supports and hangers | 35d | 2027-04-28 | 2027-06-09 | CB-B02-4S-WMI-15 | CSD-LKO Calender (6 day + Holiday)-25 | Physical Progress [1550 h]; Firefighting [431557 INR]; TATA Projects Ltd-25 | 431,557 |
| CB-B02-4S-WMI-170 |  | Laying branch piping | 35d | 2027-06-09 | 2027-07-20 | CB-B02-4S-WMI-175 | CSD-LKO Calender (6 day + Holiday)-25 | Physical Progress [2320 h]; Firefighting [924764 INR]; TATA Projects Ltd-25 | 924,764 |
| CB-B02-4S-WMI-180 |  | Hydrostatic pressure testing of piping | 30d | 2027-07-20 | 2027-08-24 | CB-B02-4S-WMI-170 | CSD-LKO Calender (6 day + Holiday)-25 | Physical Progress [930 h]; Firefighting [123302 INR]; TATA Projects Ltd-25 | 123,302 |

| ID | WBS | Activity | Duration | Start | Finish | Predecessors | Calendar | Resources | Cost |
| --- | --- | --- | --- | --- | --- | --- | --- | --- | --- |
|  | 2 | **2nd Fix** |  | 2027-08-24 | 2027-11-18 |  |  |  |  |
| CB-B02-4S-WMI-185 |  | Installation of vertical risers and distribution piping in shafts | 35d | 2027-08-24 | 2027-10-06 | CB-B02-4S-WMI-25, CB-B02-4S-WMI-180 | CSD-LKO Calender (6 day + Holiday)-25 | Physical Progress [3870 h]; Firefighting [1233019 INR]; TATA Projects Ltd-25 | 1,233,019 |
| CB-B02-4S-WMI-195 |  | Painting/insulation of exposed fire pipes | 30d | 2027-08-24 | 2027-09-29 | CB-B02-4S-WMI-180 | CSD-LKO Calender (6 day + Holiday)-25 | Physical Progress [1550 h]; Firefighting [61651 INR]; TATA Projects Ltd-25 | 61,651 |
| CB-B02-4S-WMI-200 |  | Testing risers and branch lines for leakage | 30d | 2027-09-29 | 2027-11-06 | CB-B02-4S-WMI-195 | CSD-LKO Calender (6 day + Holiday)-25 | Physical Progress [930 h]; Firefighting [123302 INR]; TATA Projects Ltd-25 | 123,302 |
| CB-B02-4S-WMI-190 |  | Installation of sprinkler branch lines in ceilings | 35d | 2027-10-06 | 2027-11-18 | CB-B02-4S-WMI-185, CB-B02-4S-WMI-275 | CSD-LKO Calender (6 day + Holiday)-25 | Physical Progress [3870 h]; Firefighting [924764 INR]; TATA Projects Ltd-25 | 924,764 |
|  | 3 | **Final FIx** |  | 2028-02-05 | 2028-04-05 |  |  |  |  |
| CB-B02-4S-WMI-205 |  | Installation of sprinkler heads, nozzles, and final alignment | 35d | 2028-02-05 | 2028-03-18 | CB-B02-4S-WMI-280, CB-B02-4S-WMI-190 | CSD-LKO Calender (6 day + Holiday)-25 | Physical Progress [6970 h]; Firefighting [924764 INR]; TATA Projects Ltd-25 | 924,764 |
| CB-B02-4S-WMI-210 |  | Installation of hydrant accessories (valves, hose reels, cabinets) | 25d | 2028-02-05 | 2028-03-06 | CB-B02-4S-WMI-280 | CSD-LKO Calender (6 day + Holiday)-25 | Physical Progress [1550 h]; Firefighting [616510 INR]; TATA Projects Ltd-25 | 616,510 |
| CB-B02-4S-WMI-215 |  | Installation of portable fire extinguishers | 30d | 2028-02-05 | 2028-03-13 | CB-B02-4S-WMI-280 | CSD-LKO Calender (6 day + Holiday)-25 | Physical Progress [930 h]; Firefighting [61651 INR]; TATA Projects Ltd-25 | 61,651 |
| CB-B02-4S-WMI-220 |  | Integration with fire alarm system | 20d | 2028-03-13 | 2028-04-05 | CB-B02-4S-WMI-215 | CSD-LKO Calender (6 day + Holiday)-25 | Physical Progress [3100 h]; Firefighting [308255 INR]; TATA Projects Ltd-25 | 308,255 |
|  | 5 | **ELV** |  | 2027-03-30 | 2028-03-30 |  |  |  |  |
|  | 1 | **1st Fix** |  | 2027-03-30 | 2027-06-09 |  |  |  |  |
| CB-B02-4S-WMI-380 |  | Slab Conduiting | 25d | 2027-03-30 | 2027-04-28 | CB-B02-4S-WMI-10 | CSD-LKO Calender (6 day + Holiday)-25 | Physical Progress [3870 h]; ELV [726016 INR]; TATA Projects Ltd-25 | 726,016 |
| CB-B02-4S-WMI-225 |  | Wall Conduiting | 30d | 2027-04-28 | 2027-06-03 | CB-B02-4S-WMI-15 | CSD-LKO Calender (6 day + Holiday)-25 | Physical Progress [1550 h]; ELV [311150 INR]; TATA Projects Ltd-25 | 311,150 |
| CB-B02-4S-WMI-245 |  | Installing back boxes for switches, sockets | 5d | 2027-06-03 | 2027-06-09 | CB-B02-4S-WMI-225, CB-B02-4S-WMI-380 | CSD-LKO Calender (6 day + Holiday)-25 | Physical Progress [780 h]; ELV [518583 INR]; TATA Projects Ltd-25 | 518,583 |
|  | 2 | **2nd Fix** |  | 2027-07-14 | 2027-11-12 |  |  |  |  |
| CB-B02-4S-WMI-230 |  | Cable tray installation | 15d | 2027-07-14 | 2027-07-31 | CB-B02-4S-WMI-25, CB-B02-4S-WMI-275 | CSD-LKO Calender (6 day + Holiday)-25 | Physical Progress [3870 h]; ELV [518583 INR]; TATA Projects Ltd-25 | 518,583 |
| CB-B02-4S-WMI-235 |  | Cabeling of ELV cable - IT/Fire Alarm/Public Address | 30d | 2027-07-31 | 2027-09-06 | CB-B02-4S-WMI-230 | CSD-LKO Calender (6 day + Holiday)-25 | Physical Progress [6970 h]; ELV [1244599 INR]; TATA Projects Ltd-25 | 1,244,599 |
| CB-B02-4S-WMI-320 |  | ELV Rack Installation | 15d | 2027-09-06 | 2027-09-23 | CB-B02-4S-WMI-235 | CSD-LKO Calender (6 day + Holiday)-25 | Physical Progress [1550 h]; ELV [518583 INR]; TATA Projects Ltd-25 | 518,583 |
| CB-B02-4S-WMI-240 |  | Termination of cables at junction boxes, patch panels, and control panels | 15d | 2027-09-23 | 2027-10-13 | CB-B02-4S-WMI-320 | CSD-LKO Calender (6 day + Holiday)-25 | Physical Progress [4650 h]; ELV [518583 INR]; TATA Projects Ltd-25 | 518,583 |
| CB-B02-4S-WMI-255 |  | Fixing devices like CCTV camera bases, card reader bases, smoke detector bases, PA Bases, Wifi Bases | 25d | 2027-10-13 | 2027-11-12 | CB-B02-4S-WMI-240 | CSD-LKO Calender (6 day + Holiday)-25 | Physical Progress [620 h]; ELV [1037166 INR]; TATA Projects Ltd-25 | 1,037,166 |
|  | 3 | **3rd Fix** |  | 2028-02-05 | 2028-03-30 |  |  |  |  |
| CB-B02-4S-WMI-250 |  | Installation of data and Voice Faceplate | 25d | 2028-02-05 | 2028-03-06 | CB-B02-4S-WMI-280 | CSD-LKO Calender (6 day + Holiday)-25 | Physical Progress [2320 h]; ELV [518583 INR]; TATA Projects Ltd-25 | 518,583 |
| CB-B02-4S-WMI-260 |  | Installation of Camera & Wifi | 30d | 2028-02-05 | 2028-03-13 | CB-B02-4S-WMI-280 | CSD-LKO Calender (6 day + Holiday)-25 | Physical Progress [2320 h]; ELV [518583 INR]; TATA Projects Ltd-25 | 518,583 |
| CB-B02-4S-WMI-265 |  | Installation of fire alarm devices + Public Address | 15d | 2028-02-05 | 2028-02-23 | CB-B02-4S-WMI-280 | CSD-LKO Calender (6 day + Holiday)-25 | Physical Progress [2320 h]; ELV [622299 INR]; TATA Projects Ltd-25 | 622,299 |
| CB-B02-4S-WMI-325 |  | Installation of Active System | 15d | 2028-02-23 | 2028-03-13 | CB-B02-4S-WMI-265 | CSD-LKO Calender (6 day + Holiday)-25 | Physical Progress [2320 h]; ELV [1037166 INR]; TATA Projects Ltd-25 | 1,037,166 |
| CB-B02-4S-WMI-335 |  | Fire Panel Intallation & Integration | 25d | 2028-02-23 | 2028-03-24 | CB-B02-4S-WMI-265 | CSD-LKO Calender (6 day + Holiday)-25 | Physical Progress [3870 h]; ELV [518583 INR]; TATA Projects Ltd-25 | 518,583 |
| CB-B02-4S-WMI-340 |  | Installation & Integration of Audio Visual System | 25d | 2028-02-23 | 2028-03-24 | CB-B02-4S-WMI-265 | CSD-LKO Calender (6 day + Holiday)-25 | Physical Progress [3870 h]; ELV [518583 INR]; TATA Projects Ltd-25 | 518,583 |
| CB-B02-4S-WMI-345 |  | Installation & Integration of Access Control | 25d | 2028-02-23 | 2028-03-24 | CB-B02-4S-WMI-265 | CSD-LKO Calender (6 day + Holiday)-25 | Physical Progress [3870 h]; ELV [518583 INR]; TATA Projects Ltd-25 | 518,583 |
| CB-B02-4S-WMI-330 |  | Integration of Active components | 15d | 2028-03-13 | 2028-03-30 | CB-B02-4S-WMI-325 | CSD-LKO Calender (6 day + Holiday)-25 | Physical Progress [2320 h]; ELV [207433 INR]; TATA Projects Ltd-25 | 207,433 |

| ID | WBS | Activity | Duration | Start | Finish | Predecessors | Calendar | Resources | Cost |
| --- | --- | --- | --- | --- | --- | --- | --- | --- | --- |
|  | 2 | **Dry Finishes** |  | 2027-04-28 | 2028-06-02 |  |  |  |  |
| CB-B02-4S-WMI-275 |  | Painting on Ceiling (Ceiling Finish) | 15d | 2027-04-28 | 2027-05-17 | CB-B02-4S-WMI-15 | CSD-LKO Calender (6 day + Holiday)-25 | Painting [6966 Sq m]; Painter [6980 h]; Helper [6980 h]; Physical Progress [2320 h]; TATA Projects Ltd-25 | 1,592,566.92 |
| CB-B02-4S-WMI-270 |  | Installation of Gypsum Board | 10d | 2028-01-12 | 2028-01-24 | CB-B02-4S-WMI-20 | CSD-LKO Calender (6 day + Holiday)-25 | ID Work [663140 INR]; Physical Progress [1550 h]; TATA Projects Ltd-25 | 663,140 |
| CB-B02-4S-WMI-390 |  | Civil Misc Works | 30d | 2028-01-12 | 2028-02-17 | CB-B02-4S-WMI-20 | CSD-LKO Calender (6 day + Holiday)-25 | Civil Misc Works [1689710 INR]; Physical Progress [4650 h]; TATA Projects Ltd-25 | 1,689,710 |
| CB-B02-4S-WMI-280 |  | Wall Painting first coat including putty | 10d | 2028-01-24 | 2028-02-05 | CB-B02-4S-WMI-270 | CSD-LKO Calender (6 day + Holiday)-25 | Painting [6966 Sq m]; Painter [6970 h]; Helper [6970 h]; Physical Progress [1550 h]; TATA Projects Ltd-25 | 1,592,566.92 |
| CB-B02-4S-WMI-295 |  | Wheel stoppers | 8d | 2028-02-05 | 2028-02-15 | CB-B02-4S-WMI-280 | CSD-LKO Calender (6 day + Holiday)-25 | Wheel Stopper [8624 INR]; Physical Progress [1240 h]; TATA Projects Ltd-25 | 8,624 |
| CB-B02-4S-WMI-350 |  | Door & Window | 10d | 2028-02-05 | 2028-02-17 | CB-B02-4S-WMI-280 | CSD-LKO Calender (6 day + Holiday)-25 | ID Work [663140 INR]; Physical Progress [1550 h]; TATA Projects Ltd-25 | 663,140 |
| CB-B02-4S-WMI-290 |  | Line marking for parking bays, arrows, pedestrian paths | 8d | 2028-02-15 | 2028-02-24 | CB-B02-4S-WMI-295 | CSD-LKO Calender (6 day + Holiday)-25 | Line / Arrow Marking [569181 INR]; Physical Progress [1240 h]; TATA Projects Ltd-25 | 569,181 |
| CB-B02-4S-WMI-285 |  | Wall painting final coat | 6d | 2028-05-26 | 2028-06-02 | CB-B02-4S-WMI-290, CB-B02-4S-WMI-250, CB-B02-4S-WMI-260, CB-B02-4S-WMI-220, CB-B02-4S-WMI-205, CB-B02-4S-WMI-210, CB-B02-4S-WMI-215, CB-B02-4S-WMI-165, CB-B02-4S-WMI-45, CB-B02-4S-WMI-100, CB-B02-4S-WMI-335, CB-B02-4S-WMI-350, CB-B02-4S-WMI-375, CB-B02-4S-WMI-340, CB-B02-4S-WMI-345, CB-B02-4S-WMI-330, CB-B02-4S-WMI-390, CB-B02-HS-MEP10, CB-B02-HS-MEP15, CB-B02-HS-MEP25, CB-B02-HS-MEP30 | CSD-LKO Calender (6 day + Holiday)-25 | Painting [6966 Sq m]; Painter [6970 h]; Helper [6970 h]; Physical Progress [930 h]; TATA Projects Ltd-25 | 1,592,566.92 |
|  | 1 | **Hotel 3 Star** |  | 2027-04-01 | 2028-06-02 |  |  |  |  |
|  | 1 | **Wet Finishes** |  | 2027-04-01 | 2028-01-22 |  |  |  |  |
| CB-B02-3S-WMI-10 |  | Deshuttering | 7d | 2027-04-01 | 2027-04-09 | 3S-SS-GF625 | CSD-LKO Calender (6 day + Holiday)-25 | Physical Progress [1080 h]; TATA Projects Ltd-25 |  |
| CB-B02-3S-WMI-15 |  | Brickwork/Blockwork | 25d | 2027-04-09 | 2027-05-10 | CB-B02-3S-WMI-10 | CSD-LKO Calender (6 day + Holiday)-25 | Masonry [366 CuM]; Mason [2440 h]; Helper [1220 h]; Physical Progress [6970 h]; TATA Projects Ltd-25 | 3,489,941.76 |
| CB-B02-3S-WMI-380 |  | Structural Misc Works | 50d | 2027-04-09 | 2027-06-08 | CB-B02-3S-WMI-10 | CSD-LKO Calender (6 day + Holiday)-25 | Structural Misc Works [818513 INR]; Physical Progress [7750 h]; TATA Projects Ltd-25 | 818,513 |
| CB-B02-3S-WMI-25 |  | Plaster | 30d | 2027-06-19 | 2027-07-24 | CB-B02-3S-WMI-30, CB-B02-3S-WMI-60, CB-B02-3S-WMI-245, CB-B02-3S-WMI-380 | CSD-LKO Calender (6 day + Holiday)-25 | Plaster [11985 Sqr Mtr]; Mason [7990 h]; Helper [4000 h]; Physical Progress [4650 h]; TATA Projects Ltd-25 | 6,638,611.35 |
| CB-B02-3S-WMI-20 |  | Flooring | 25d | 2027-12-22 | 2028-01-22 | CB-B02-3S-WMI-15, CB-B02-3S-WMI-380, CB-B02-3S-WMI-80, CB-B02-3S-WMI-85, CB-B02-3S-WMI-90, CB-B02-3S-WMI-300, CB-B02-3S-WMI-95, CB-B02-3S-WMI-35, CB-B02-3S-WMI-40, CB-B02-3S-WMI-50, CB-B02-3S-WMI-310, CB-B02-3S-WMI-390, CB-B02-3S-WMI-315, CB-B02-3S-WMI-150, CB-B02-3S-WMI-130, CB-B02-3S-WMI-145, CB-B02-3S-WMI-135, CB-B02-3S-WMI-360, CB-B02-3S-WMI-185, CB-B02-3S-WMI-195, CB-B02-3S-WMI-200, CB-B02-3S-WMI-190, CB-B02-3S-WMI-230, CB-B02-3S-WMI-235, CB-B02-3S-WMI-320, CB-B02-3S-WMI-240, CB-B02-3S-WMI-255 | CSD-LKO Calender (6 day + Holiday)-25 | Flooring [17548054 INR]; Flooring Mason [8800 h]; Helper [8800 h]; Physical Progress [7750 h]; TATA Projects Ltd-25 | 17,548,054 |
|  | 5 | **Low Side MEP** |  | 2027-04-09 | 2028-04-28 |  |  |  |  |
|  | 2 | **HVAC** |  | 2027-05-10 | 2028-04-28 |  |  |  |  |
|  | 1 | **1st Fix** |  | 2027-05-10 | 2027-08-28 |  |  |  |  |
| CB-B02-3S-WMI-305 |  | Duct Support Fabrication | 35d | 2027-05-10 | 2027-06-19 | CB-B02-3S-WMI-15 | CSD-LKO Calender (6 day + Holiday)-25 | Physical Progress [2320 h]; HVAC [210890 INR]; TATA Projects Ltd-25 | 210,890 |
| CB-B02-3S-WMI-65 |  | Installing duct hangers and supports | 30d | 2027-06-19 | 2027-07-24 | CB-B02-3S-WMI-275, CB-B02-3S-WMI-305 | CSD-LKO Calender (6 day + Holiday)-25 | Physical Progress [1550 h]; HVAC [421779 INR]; TATA Projects Ltd-25 | 421,779 |
| CB-B02-3S-WMI-70 |  | Laying concealed/exposed refrigerant piping | 30d | 2027-07-24 | 2027-08-28 | CB-B02-3S-WMI-65 | CSD-LKO Calender (6 day + Holiday)-25 | Physical Progress [2320 h]; HVAC [105445 INR]; TATA Projects Ltd-25 | 105,445 |
| CB-B02-3S-WMI-75 |  | Laying concealed/exposed drain piping | 30d | 2027-07-24 | 2027-08-28 | CB-B02-3S-WMI-65 | CSD-LKO Calender (6 day + Holiday)-25 | Physical Progress [1550 h]; HVAC [632669 INR]; TATA Projects Ltd-25 | 632,669 |
|  | 2 | **2nd Fix** |  | 2027-07-24 | 2027-12-10 |  |  |  |  |
| CB-B02-3S-WMI-80 |  | Duct installation | 20d | 2027-07-24 | 2027-08-17 | CB-B02-3S-WMI-65 | CSD-LKO Calender (6 day + Holiday)-25 | Physical Progress [2320 h]; HVAC [1581672 INR]; TATA Projects Ltd-25 | 1,581,672 |
| CB-B02-3S-WMI-85 |  | Insulation of ducts (thermal/acoustic) | 15d | 2027-08-17 | 2027-09-03 | CB-B02-3S-WMI-80 | CSD-LKO Calender (6 day + Holiday)-25 | Physical Progress [930 h]; HVAC [949003 INR]; TATA Projects Ltd-25 | 949,003 |
| CB-B02-3S-WMI-90 |  | Installation of chilled water piping / VRF piping | 15d | 2027-09-03 | 2027-09-22 | CB-B02-3S-WMI-85 | CSD-LKO Calender (6 day + Holiday)-25 | Physical Progress [930 h]; HVAC [2108896 INR]; TATA Projects Ltd-25 | 2,108,896 |
| CB-B02-3S-WMI-300 |  | Installation of indoor units including AHU, FCU | 45d | 2027-09-22 | 2027-11-17 | CB-B02-3S-WMI-90, CB-B02-3S-WMI-70, CB-B02-3S-WMI-75 | CSD-LKO Calender (6 day + Holiday)-25 | Physical Progress [6970 h]; HVAC [1898006 INR]; TATA Projects Ltd-25 | 1,898,006 |
| CB-B02-3S-WMI-95 |  | Connecting refrigerant and drain piping to indoor units | 20d | 2027-11-17 | 2027-12-10 | CB-B02-3S-WMI-300 | CSD-LKO Calender (6 day + Holiday)-25 | Physical Progress [930 h]; HVAC [527224 INR]; TATA Projects Ltd-25 | 527,224 |

| ID | WBS | Activity | Duration | Start | Finish | Predecessors | Calendar | Resources | Cost |
| --- | --- | --- | --- | --- | --- | --- | --- | --- | --- |
|  | 3 | **Final Fix** |  | 2028-02-16 | 2028-04-28 |  |  |  |  |
| CB-B02-3S-WMI-105 |  | Installing grills, diffusers, dampers | 30d | 2028-02-16 | 2028-03-23 | CB-B02-3S-WMI-280 | CSD-LKO Calender (6 day + Holiday)-25 | Physical Progress [930 h]; HVAC [1054448 INR]; TATA Projects Ltd-25 | 1,054,448 |
| CB-B02-3S-WMI-100 |  | Installation of thermostats and control panels | 30d | 2028-03-23 | 2028-04-28 | CB-B02-3S-WMI-105 | CSD-LKO Calender (6 day + Holiday)-25 | Physical Progress [930 h]; HVAC [527224 INR]; TATA Projects Ltd-25 | 527,224 |
|  | 1 | **Electrical** |  | 2027-04-09 | 2028-04-04 |  |  |  |  |
|  | 1 | **1st Fix** |  | 2027-04-09 | 2027-06-19 |  |  |  |  |
| CB-B02-3S-WMI-375 |  | Slab Conduiting | 25d | 2027-04-09 | 2027-05-10 | CB-B02-3S-WMI-10 | CSD-LKO Calender (6 day + Holiday)-25 | Physical Progress [3870 h]; Electrical [926153 INR]; TATA Projects Ltd-25 | 926,153 |
| CB-B02-3S-WMI-30 |  | Wall Conduiting | 30d | 2027-05-10 | 2027-06-14 | CB-B02-3S-WMI-15 | CSD-LKO Calender (6 day + Holiday)-25 | Physical Progress [1550 h]; Electrical [463076 INR]; TATA Projects Ltd-25 | 463,076 |
| CB-B02-3S-WMI-60 |  | Installing back boxes for switches, sockets | 5d | 2027-06-14 | 2027-06-19 | CB-B02-3S-WMI-30, CB-B02-3S-WMI-375 | CSD-LKO Calender (6 day + Holiday)-25 | Physical Progress [780 h]; Electrical [277846 INR]; TATA Projects Ltd-25 | 277,846 |
|  | 2 | **2nd Fix** |  | 2027-07-24 | 2027-12-22 |  |  |  |  |
| CB-B02-3S-WMI-35 |  | Cable tray laying | 15d | 2027-07-24 | 2027-08-11 | CB-B02-3S-WMI-25, CB-B02-3S-WMI-275 | CSD-LKO Calender (6 day + Holiday)-25 | Physical Progress [3870 h]; Electrical [370461 INR]; TATA Projects Ltd-25 | 370,461 |
| CB-B02-3S-WMI-40 |  | Cabling & Wire Pulling | 45d | 2027-08-11 | 2027-10-05 | CB-B02-3S-WMI-35 | CSD-LKO Calender (6 day + Holiday)-25 | Physical Progress [6970 h]; Electrical [1852305 INR]; TATA Projects Ltd-25 | 1,852,305 |
| CB-B02-3S-WMI-50 |  | DB fixing and connecting | 20d | 2027-10-05 | 2027-10-30 | CB-B02-3S-WMI-40 | CSD-LKO Calender (6 day + Holiday)-25 | Physical Progress [2320 h]; Electrical [277846 INR]; TATA Projects Ltd-25 | 277,846 |
| CB-B02-3S-WMI-310 |  | Floor/Distribution Panel Installation | 15d | 2027-10-30 | 2027-11-17 | CB-B02-3S-WMI-50 | CSD-LKO Calender (6 day + Holiday)-25 | Physical Progress [780 h]; Electrical [740922 INR]; TATA Projects Ltd-25 | 740,922 |
| CB-B02-3S-WMI-390 |  | Floor Rising Main Installation | 15d | 2027-11-17 | 2027-12-04 | CB-B02-3S-WMI-310 | CSD-LKO Calender (6 day + Holiday)-25 | Physical Progress [1550 h]; Electrical [1296614 INR]; TATA Projects Ltd-25 | 1,296,614 |
| CB-B02-3S-WMI-315 |  | Equipment Earthing | 15d | 2027-12-04 | 2027-12-22 | CB-B02-3S-WMI-310, CB-B02-3S-WMI-390 | CSD-LKO Calender (6 day + Holiday)-25 | Physical Progress [1550 h]; Electrical [277846 INR]; TATA Projects Ltd-25 | 277,846 |
|  | 3 | **Final Fix** |  | 2028-02-16 | 2028-04-04 |  |  |  |  |
| CB-B02-3S-WMI-55 |  | Switches & Socket | 20d | 2028-02-16 | 2028-03-10 | CB-B02-3S-WMI-280 | CSD-LKO Calender (6 day + Holiday)-25 | Physical Progress [3100 h]; Electrical [926153 INR]; TATA Projects Ltd-25 | 926,153 |
| CB-B02-3S-WMI-45 |  | Light Fixtures | 20d | 2028-03-10 | 2028-04-04 | CB-B02-3S-WMI-55, CB-B02-3S-WMI-315 | CSD-LKO Calender (6 day + Holiday)-25 | Physical Progress [2320 h]; Electrical [1389229 INR]; TATA Projects Ltd-25 | 1,389,229 |
|  | 3 | **Plumbing** |  | 2027-05-10 | 2028-04-10 |  |  |  |  |
|  | 1 | **1st Fix** |  | 2027-05-10 | 2027-10-12 |  |  |  |  |
| CB-B02-3S-WMI-120 |  | Fixing pipe supports and clamps | 35d | 2027-05-10 | 2027-06-19 | CB-B02-3S-WMI-15 | CSD-LKO Calender (6 day + Holiday)-25 | Physical Progress [1550 h]; Plumbing [521800 INR]; TATA Projects Ltd-25 | 521,800 |
| CB-B02-3S-WMI-110 |  | Laying water supply pipes (hot & cold) | 35d | 2027-06-19 | 2027-07-30 | CB-B02-3S-WMI-120 | CSD-LKO Calender (6 day + Holiday)-25 | Physical Progress [2320 h]; Plumbing [1043599 INR]; TATA Projects Ltd-25 | 1,043,599 |
| CB-B02-3S-WMI-115 |  | Laying drainage pipes (soil, waste, vent) | 35d | 2027-06-19 | 2027-07-30 | CB-B02-3S-WMI-120 | CSD-LKO Calender (6 day + Holiday)-25 | Physical Progress [2320 h]; Plumbing [1043599 INR]; TATA Projects Ltd-25 | 1,043,599 |
| CB-B02-3S-WMI-140 |  | Installation of plumbing fixture base supports (WC frames, sink brackets) | 30d | 2027-07-30 | 2027-09-03 | CB-B02-3S-WMI-115 | CSD-LKO Calender (6 day + Holiday)-25 | Physical Progress [930 h]; Plumbing [521800 INR]; TATA Projects Ltd-25 | 521,800 |
| CB-B02-3S-WMI-125 |  | Pressure testing of water supply lines | 25d | 2027-09-03 | 2027-10-05 | CB-B02-3S-WMI-110, CB-B02-3S-WMI-115, CB-B02-3S-WMI-140 | CSD-LKO Calender (6 day + Holiday)-25 | Physical Progress [1080 h]; Plumbing [104360 INR]; TATA Projects Ltd-25 | 104,360 |
| CB-B02-3S-WMI-355 |  | Installation of concealed parts of toilet fixtures | 30d | 2027-09-03 | 2027-10-12 | CB-B02-3S-WMI-140 | CSD-LKO Calender (6 day + Holiday)-25 | Physical Progress [1550 h]; Plumbing [521800 INR]; TATA Projects Ltd-25 | 521,800 |

| ID | WBS | Activity | Duration | Start | Finish | Predecessors | Calendar | Resources | Cost |
| --- | --- | --- | --- | --- | --- | --- | --- | --- | --- |
|  | 2 | **2nd FIx** |  | 2027-10-05 | 2027-12-16 |  |  |  |  |
| CB-B02-3S-WMI-150 |  | Insulation of hot water pipes (if applicable) | 15d | 2027-10-05 | 2027-10-23 | CB-B02-3S-WMI-125 | CSD-LKO Calender (6 day + Holiday)-25 | Physical Progress [930 h]; Plumbing [521800 INR]; TATA Projects Ltd-25 | 521,800 |
| CB-B02-3S-WMI-130 |  | Installation of vertical risers and main distribution lines | 35d | 2027-10-12 | 2027-11-23 | CB-B02-3S-WMI-25, CB-B02-3S-WMI-275, CB-B02-3S-WMI-125, CB-B02-3S-WMI-355 | CSD-LKO Calender (6 day + Holiday)-25 | Physical Progress [3100 h]; Plumbing [1043599 INR]; TATA Projects Ltd-25 | 1,043,599 |
| CB-B02-3S-WMI-145 |  | Testing drainage lines for leakage/blockage | 15d | 2027-10-23 | 2027-11-11 | CB-B02-3S-WMI-140, CB-B02-3S-WMI-150 | CSD-LKO Calender (6 day + Holiday)-25 | Physical Progress [930 h]; Plumbing [104360 INR]; TATA Projects Ltd-25 | 104,360 |
| CB-B02-3S-WMI-360 |  | Laying of ACO Drains | 20d | 2027-11-11 | 2027-12-04 | CB-B02-3S-WMI-145 | CSD-LKO Calender (6 day + Holiday)-25 | ACO Drain [4080997 INR]; Physical Progress [3100 h]; TATA Projects Ltd-25 | 4,080,997 |
| CB-B02-3S-WMI-135 |  | Fixing floor traps and gully traps | 20d | 2027-11-23 | 2027-12-16 | CB-B02-3S-WMI-130 | CSD-LKO Calender (6 day + Holiday)-25 | Physical Progress [930 h]; Plumbing [313080 INR]; TATA Projects Ltd-25 | 313,080 |
|  | 3 | **Final FIx** |  | 2027-12-04 | 2028-04-10 |  |  |  |  |
| CB-B02-3S-WMI-365 |  | Installation of ACO Drain Grating | 7d | 2027-12-04 | 2027-12-13 | CB-B02-3S-WMI-360 | CSD-LKO Calender (6 day + Holiday)-25 | Grating of Drain [2489760 INR]; Physical Progress [1080 h]; TATA Projects Ltd-25 | 2,489,760 |
| CB-B02-3S-WMI-155 |  | Installation of sanitary fixtures (WC, washbasins, urinals, sinks) | 10d | 2028-02-16 | 2028-02-28 | CB-B02-3S-WMI-280, CB-B02-3S-WMI-135 | CSD-LKO Calender (6 day + Holiday)-25 | Physical Progress [1550 h]; Plumbing [2087198 INR]; TATA Projects Ltd-25 | 2,087,198 |
| CB-B02-3S-WMI-160 |  | Installation of CP fittings (taps, mixers, showers, health faucets) | 10d | 2028-02-28 | 2028-03-10 | CB-B02-3S-WMI-155, CB-B02-3S-WMI-280 | CSD-LKO Calender (6 day + Holiday)-25 | Physical Progress [1550 h]; Plumbing [1043599 INR]; TATA Projects Ltd-25 | 1,043,599 |
| CB-B02-3S-WMI-165 |  | Connection of appliances | 25d | 2028-03-10 | 2028-04-10 | CB-B02-3S-WMI-160 | CSD-LKO Calender (6 day + Holiday)-25 | Physical Progress [1080 h]; Plumbing [521800 INR]; TATA Projects Ltd-25 | 521,800 |
|  | 4 | **Firefighting** |  | 2027-05-10 | 2028-04-17 |  |  |  |  |
|  | 1 | **1st Fix** |  | 2027-05-10 | 2027-09-03 |  |  |  |  |
| CB-B02-3S-WMI-175 |  | Fixing pipe supports and hangers | 35d | 2027-05-10 | 2027-06-19 | CB-B02-3S-WMI-15 | CSD-LKO Calender (6 day + Holiday)-25 | Physical Progress [1550 h]; Firefighting [431557 INR]; TATA Projects Ltd-25 | 431,557 |
| CB-B02-3S-WMI-170 |  | Laying branch piping | 35d | 2027-06-19 | 2027-07-30 | CB-B02-3S-WMI-175 | CSD-LKO Calender (6 day + Holiday)-25 | Physical Progress [2320 h]; Firefighting [924764 INR]; TATA Projects Ltd-25 | 924,764 |
| CB-B02-3S-WMI-180 |  | Hydrostatic pressure testing of piping | 30d | 2027-07-30 | 2027-09-03 | CB-B02-3S-WMI-170 | CSD-LKO Calender (6 day + Holiday)-25 | Physical Progress [930 h]; Firefighting [123302 INR]; TATA Projects Ltd-25 | 123,302 |
|  | 2 | **2nd Fix** |  | 2027-09-03 | 2027-11-29 |  |  |  |  |
| CB-B02-3S-WMI-185 |  | Installation of vertical risers and distribution piping in shafts | 35d | 2027-09-03 | 2027-10-18 | CB-B02-3S-WMI-25, CB-B02-3S-WMI-180 | CSD-LKO Calender (6 day + Holiday)-25 | Physical Progress [3870 h]; Firefighting [1233019 INR]; TATA Projects Ltd-25 | 1,233,019 |
| CB-B02-3S-WMI-195 |  | Painting/insulation of exposed fire pipes | 30d | 2027-09-03 | 2027-10-12 | CB-B02-3S-WMI-180 | CSD-LKO Calender (6 day + Holiday)-25 | Physical Progress [1550 h]; Firefighting [61651 INR]; TATA Projects Ltd-25 | 61,651 |
| CB-B02-3S-WMI-200 |  | Testing risers and branch lines for leakage | 30d | 2027-10-12 | 2027-11-17 | CB-B02-3S-WMI-195 | CSD-LKO Calender (6 day + Holiday)-25 | Physical Progress [930 h]; Firefighting [123302 INR]; TATA Projects Ltd-25 | 123,302 |
| CB-B02-3S-WMI-190 |  | Installation of sprinkler branch lines in ceilings | 35d | 2027-10-18 | 2027-11-29 | CB-B02-3S-WMI-185, CB-B02-3S-WMI-275 | CSD-LKO Calender (6 day + Holiday)-25 | Physical Progress [3870 h]; Firefighting [924764 INR]; TATA Projects Ltd-25 | 924,764 |
|  | 3 | **Final FIx** |  | 2028-02-16 | 2028-04-17 |  |  |  |  |
| CB-B02-3S-WMI-205 |  | Installation of sprinkler heads, nozzles, and final alignment | 35d | 2028-02-16 | 2028-03-29 | CB-B02-3S-WMI-280, CB-B02-3S-WMI-190 | CSD-LKO Calender (6 day + Holiday)-25 | Physical Progress [6970 h]; Firefighting [924764 INR]; TATA Projects Ltd-25 | 924,764 |
| CB-B02-3S-WMI-210 |  | Installation of hydrant accessories (valves, hose reels, cabinets) | 25d | 2028-02-16 | 2028-03-17 | CB-B02-3S-WMI-280 | CSD-LKO Calender (6 day + Holiday)-25 | Physical Progress [1550 h]; Firefighting [616510 INR]; TATA Projects Ltd-25 | 616,510 |
| CB-B02-3S-WMI-215 |  | Installation of portable fire extinguishers | 30d | 2028-02-16 | 2028-03-23 | CB-B02-3S-WMI-280 | CSD-LKO Calender (6 day + Holiday)-25 | Physical Progress [930 h]; Firefighting [61651 INR]; TATA Projects Ltd-25 | 61,651 |
| CB-B02-3S-WMI-220 |  | Integration with fire alarm system | 20d | 2028-03-23 | 2028-04-17 | CB-B02-3S-WMI-215 | CSD-LKO Calender (6 day + Holiday)-25 | Physical Progress [3100 h]; Firefighting [308255 INR]; TATA Projects Ltd-25 | 308,255 |

| ID | WBS | Activity | Duration | Start | Finish | Predecessors | Calendar | Resources | Cost |
| --- | --- | --- | --- | --- | --- | --- | --- | --- | --- |
|  | 5 | **ELV** |  | 2027-04-09 | 2028-04-10 |  |  |  |  |
|  | 1 | **1st Fix** |  | 2027-04-09 | 2027-06-19 |  |  |  |  |
| CB-B02-3S-WMI-370 |  | Slab Conduiting | 25d | 2027-04-09 | 2027-05-10 | CB-B02-3S-WMI-10 | CSD-LKO Calender (6 day + Holiday)-25 | Physical Progress [3870 h]; ELV [726016 INR]; TATA Projects Ltd-25 | 726,016 |
| CB-B02-3S-WMI-225 |  | Wall Conduiting | 30d | 2027-05-10 | 2027-06-14 | CB-B02-3S-WMI-15 | CSD-LKO Calender (6 day + Holiday)-25 | Physical Progress [1550 h]; ELV [311150 INR]; TATA Projects Ltd-25 | 311,150 |
| CB-B02-3S-WMI-245 |  | Installing back boxes for switches, sockets | 5d | 2027-06-14 | 2027-06-19 | CB-B02-3S-WMI-225, CB-B02-3S-WMI-370 | CSD-LKO Calender (6 day + Holiday)-25 | Physical Progress [780 h]; ELV [518583 INR]; TATA Projects Ltd-25 | 518,583 |
|  | 2 | **2nd Fix** |  | 2027-07-24 | 2027-11-23 |  |  |  |  |
| CB-B02-3S-WMI-230 |  | Cable tray installation | 15d | 2027-07-24 | 2027-08-11 | CB-B02-3S-WMI-25, CB-B02-3S-WMI-275 | CSD-LKO Calender (6 day + Holiday)-25 | Physical Progress [3870 h]; ELV [518583 INR]; TATA Projects Ltd-25 | 518,583 |
| CB-B02-3S-WMI-235 |  | Cabeling of ELV cable - IT/Fire Alarm/Public Address | 30d | 2027-08-11 | 2027-09-16 | CB-B02-3S-WMI-230 | CSD-LKO Calender (6 day + Holiday)-25 | Physical Progress [6970 h]; ELV [1244599 INR]; TATA Projects Ltd-25 | 1,244,599 |
| CB-B02-3S-WMI-320 |  | ELV Rack Installation | 15d | 2027-09-16 | 2027-10-05 | CB-B02-3S-WMI-235 | CSD-LKO Calender (6 day + Holiday)-25 | Physical Progress [1550 h]; ELV [518583 INR]; TATA Projects Ltd-25 | 518,583 |
| CB-B02-3S-WMI-240 |  | Termination of cables at junction boxes, patch panels, and control panels | 15d | 2027-10-05 | 2027-10-23 | CB-B02-3S-WMI-320 | CSD-LKO Calender (6 day + Holiday)-25 | Physical Progress [4650 h]; ELV [518583 INR]; TATA Projects Ltd-25 | 518,583 |
| CB-B02-3S-WMI-255 |  | Fixing devices like CCTV camera bases, card reader bases, smoke detector bases, PA Bases, Wifi Bases | 25d | 2027-10-23 | 2027-11-23 | CB-B02-3S-WMI-240 | CSD-LKO Calender (6 day + Holiday)-25 | Physical Progress [620 h]; ELV [1037166 INR]; TATA Projects Ltd-25 | 1,037,166 |
|  | 3 | **3rd Fix** |  | 2028-02-16 | 2028-04-10 |  |  |  |  |
| CB-B02-3S-WMI-250 |  | Installation of data and Voice Faceplate | 25d | 2028-02-16 | 2028-03-17 | CB-B02-3S-WMI-280 | CSD-LKO Calender (6 day + Holiday)-25 | Physical Progress [2320 h]; ELV [518583 INR]; TATA Projects Ltd-25 | 518,583 |
| CB-B02-3S-WMI-260 |  | Installation of Camera & Wifi | 30d | 2028-02-16 | 2028-03-23 | CB-B02-3S-WMI-280 | CSD-LKO Calender (6 day + Holiday)-25 | Physical Progress [2320 h]; ELV [518583 INR]; TATA Projects Ltd-25 | 518,583 |
| CB-B02-3S-WMI-265 |  | Installation of fire alarm devices + Public Address | 15d | 2028-02-16 | 2028-03-04 | CB-B02-3S-WMI-280 | CSD-LKO Calender (6 day + Holiday)-25 | Physical Progress [2320 h]; ELV [622299 INR]; TATA Projects Ltd-25 | 622,299 |
| CB-B02-3S-WMI-325 |  | Installation of Active System | 15d | 2028-03-04 | 2028-03-23 | CB-B02-3S-WMI-265 | CSD-LKO Calender (6 day + Holiday)-25 | Physical Progress [2320 h]; ELV [1037166 INR]; TATA Projects Ltd-25 | 1,037,166 |
| CB-B02-3S-WMI-335 |  | Fire Panel Intallation & Integration | 25d | 2028-03-04 | 2028-04-04 | CB-B02-3S-WMI-265 | CSD-LKO Calender (6 day + Holiday)-25 | Physical Progress [3870 h]; ELV [518583 INR]; TATA Projects Ltd-25 | 518,583 |
| CB-B02-3S-WMI-340 |  | Installation & Integration of Audio Visual System | 25d | 2028-03-04 | 2028-04-04 | CB-B02-3S-WMI-265 | CSD-LKO Calender (6 day + Holiday)-25 | Physical Progress [3870 h]; ELV [518583 INR]; TATA Projects Ltd-25 | 518,583 |
| CB-B02-3S-WMI-345 |  | Installation & Integration of Access Control | 25d | 2028-03-04 | 2028-04-04 | CB-B02-3S-WMI-265 | CSD-LKO Calender (6 day + Holiday)-25 | Physical Progress [3870 h]; ELV [518583 INR]; TATA Projects Ltd-25 | 518,583 |
| CB-B02-3S-WMI-330 |  | Integration of Active components | 15d | 2028-03-23 | 2028-04-10 | CB-B02-3S-WMI-325 | CSD-LKO Calender (6 day + Holiday)-25 | Physical Progress [2320 h]; ELV [207433 INR]; TATA Projects Ltd-25 | 207,433 |
|  | 2 | **Dry Finishes** |  | 2027-05-10 | 2028-06-02 |  |  |  |  |
| CB-B02-3S-WMI-275 |  | Painting on Ceiling (Ceiling Finish) | 15d | 2027-05-10 | 2027-05-27 | CB-B02-3S-WMI-15 | CSD-LKO Calender (6 day + Holiday)-25 | Painting [6966 Sq m]; Painter [6980 h]; Helper [6980 h]; Physical Progress [2320 h]; TATA Projects Ltd-25 | 1,592,566.92 |
| CB-B02-3S-WMI-270 |  | Installation of Gypsum Board | 10d | 2028-01-22 | 2028-02-04 | CB-B02-3S-WMI-20 | CSD-LKO Calender (6 day + Holiday)-25 | ID Work [663140 INR]; Physical Progress [1550 h]; TATA Projects Ltd-25 | 663,140 |
| CB-B02-3S-WMI-385 |  | Civil Misc Works | 30d | 2028-01-22 | 2028-02-28 | CB-B02-3S-WMI-20 | CSD-LKO Calender (6 day + Holiday)-25 | Civil Misc Works [1689710 INR]; Physical Progress [4650 h]; TATA Projects Ltd-25 | 1,689,710 |
| CB-B02-3S-WMI-280 |  | Wall Painting first coat including putty | 10d | 2028-02-04 | 2028-02-16 | CB-B02-3S-WMI-270 | CSD-LKO Calender (6 day + Holiday)-25 | Painting [6966 Sq m]; Painter [6970 h]; Helper [6970 h]; Physical Progress [1550 h]; TATA Projects Ltd-25 | 1,592,566.92 |
| CB-B02-3S-WMI-295 |  | Wheel stoppers | 8d | 2028-02-16 | 2028-02-25 | CB-B02-3S-WMI-280 | CSD-LKO Calender (6 day + Holiday)-25 | Wheel Stopper [8624 INR]; Physical Progress [1240 h]; TATA Projects Ltd-25 | 8,624 |
| CB-B02-3S-WMI-350 |  | Door & Window | 10d | 2028-02-16 | 2028-02-28 | CB-B02-3S-WMI-280 | CSD-LKO Calender (6 day + Holiday)-25 | ID Work [663140 INR]; Physical Progress [1550 h]; TATA Projects Ltd-25 | 663,140 |
| CB-B02-3S-WMI-290 |  | Line marking for parking bays, arrows, pedestrian paths | 8d | 2028-02-25 | 2028-03-06 | CB-B02-3S-WMI-295 | CSD-LKO Calender (6 day + Holiday)-25 | Line / Arrow Marking [569181 INR]; Physical Progress [1240 h]; TATA Projects Ltd-25 | 569,181 |
| CB-B02-3S-WMI-285 |  | Wall painting final coat | 6d | 2028-05-26 | 2028-06-02 | CB-B02-3S-WMI-290, CB-B02-3S-WMI-250, CB-B02-3S-WMI-260, CB-B02-3S-WMI-220, CB-B02-3S-WMI-205, CB-B02-3S-WMI-210, CB-B02-3S-WMI-215, CB-B02-3S-WMI-165, CB-B02-3S-WMI-45, CB-B02-3S-WMI-100, CB-B02-3S-WMI-335, CB-B02-3S-WMI-350, CB-B02-3S-WMI-365, CB-B02-3S-WMI-340, CB-B02-3S-WMI-345, CB-B02-3S-WMI-330, CB-B02-3S-WMI-385, CB-B02-HS-MEP10, CB-B02-HS-MEP15, CB-B02-HS-MEP25, CB-B02-HS-MEP30 | CSD-LKO Calender (6 day + Holiday)-25 | Painting [6966 Sq m]; Painter [6970 h]; Helper [6970 h]; Physical Progress [930 h]; TATA Projects Ltd-25 | 1,592,566.92 |

| ID | WBS | Activity | Duration | Start | Finish | Predecessors | Calendar | Resources | Cost |
| --- | --- | --- | --- | --- | --- | --- | --- | --- | --- |
|  | 2 | **Retail Block 2** |  | 2027-06-17 | 2028-07-22 |  |  |  |  |
|  | 1 | **Wet Finishes** |  | 2027-06-17 | 2028-04-10 |  |  |  |  |
| CB-B02-RB2-WMI-10 |  | Deshuttering | 7d | 2027-06-17 | 2027-06-25 | RB2-SS-GF.520, RB2-SS-B-02.605 | CSD-LKO Calender (6 day + Holiday)-25 | Physical Progress [1080 h]; TATA Projects Ltd-25 |  |
| CB-B02-RB2-WMI-15 |  | Brickwork/Blockwork | 25d | 2027-06-25 | 2027-07-24 | CB-B02-RB2-WMI-10 | CSD-LKO Calender (6 day + Holiday)-25 | Masonry [366 CuM]; Mason [2440 h]; Helper [1220 h]; Physical Progress [6970 h]; TATA Projects Ltd-25 | 3,489,941.76 |
| CB-B02-RB2-WMI-395 |  | Structural Misc Works | 50d | 2027-06-25 | 2027-08-23 | CB-B02-RB2-WMI-10 | CSD-LKO Calender (6 day + Holiday)-25 | Structural Misc Works [818513 INR]; Physical Progress [7750 h]; TATA Projects Ltd-25 | 818,513 |
| CB-B02-RB2-WMI-25 |  | Plaster | 30d | 2027-09-03 | 2027-10-12 | CB-B02-RB2-WMI-30, CB-B02-RB2-WMI-60, CB-B02-RB2-WMI-245, CB-B02-RB2-WMI-395 | CSD-LKO Calender (6 day + Holiday)-25 | Plaster [11985 Sqr Mtr]; Mason [7990 h]; Helper [4000 h]; Physical Progress [4650 h]; TATA Projects Ltd-25 | 6,638,611.35 |
| CB-B02-RB2-WMI-20 |  | Flooring | 25d | 2028-03-10 | 2028-04-10 | CB-B02-RB2-WMI-15, CB-B02-RB2-WMI-395, CB-B02-RB2-WMI-80, CB-B02-RB2-WMI-85, CB-B02-RB2-WMI-90, CB-B02-RB2-WMI-300, CB-B02-RB2-WMI-95, CB-B02-RB2-WMI-35, CB-B02-RB2-WMI-40, CB-B02-RB2-WMI-50, CB-B02-RB2-WMI-310, CB-B02-RB2-WMI-405, CB-B02-RB2-WMI-315, CB-B02-RB2-WMI-150, CB-B02-RB2-WMI-130, CB-B02-RB2-WMI-145, CB-B02-RB2-WMI-135, CB-B02-RB2-WMI-375, CB-B02-RB2-WMI-185, CB-B02-RB2-WMI-195, CB-B02-RB2-WMI-200, CB-B02-RB2-WMI-190, CB-B02-RB2-WMI-230, CB-B02-RB2-WMI-235, CB-B02-RB2-WMI-320, CB-B02-RB2-WMI-240, CB-B02-RB2-WMI-255 | CSD-LKO Calender (6 day + Holiday)-25 | Flooring [17548054 INR]; Flooring Mason [8800 h]; Helper [8800 h]; Physical Progress [7750 h]; TATA Projects Ltd-25 | 17,548,054 |
|  | 3 | **Water Tanks** |  | 2027-06-25 | 2027-09-10 |  |  |  |  |
| CB-B02-RB2-WMI-365 |  | Installation of Rungs | 10d | 2027-06-25 | 2027-07-07 | CB-B02-RB2-WMI-10 | CSD-LKO Calender (6 day + Holiday)-25 | Rungs [364811 INR]; Physical Progress [1550 h]; TATA Projects Ltd-25 | 364,811 |
| CB-B02-RB2-WMI-355 |  | Waterproofing | 30d | 2027-07-07 | 2027-08-11 | CB-B02-RB2-WMI-365 | CSD-LKO Calender (6 day + Holiday)-25 | Waterproofing [8564838 INR]; Waterprrofing Mason [8160 h]; Helper [4080 h]; Physical Progress [4650 h]; TATA Projects Ltd-25 | 8,564,838 |
| CB-B02-RB2-WMI-360 |  | Flooring | 25d | 2027-08-11 | 2027-09-10 | CB-B02-RB2-WMI-355 | CSD-LKO Calender (6 day + Holiday)-25 | Flooring [10967534 INR]; Flooring Mason [5490 h]; Helper [5490 h]; Physical Progress [4650 h]; TATA Projects Ltd-25 | 10,967,534 |
|  | 5 | **Low Side MEP** |  | 2027-06-25 | 2028-07-15 |  |  |  |  |
|  | 2 | **HVAC** |  | 2027-07-24 | 2028-07-15 |  |  |  |  |
|  | 1 | **1st Fix** |  | 2027-07-24 | 2027-11-17 |  |  |  |  |
| CB-B02-RB2-WMI-305 |  | Duct Support Fabrication | 35d | 2027-07-24 | 2027-09-03 | CB-B02-RB2-WMI-15 | CSD-LKO Calender (6 day + Holiday)-25 | Physical Progress [2320 h]; HVAC [210890 INR]; TATA Projects Ltd-25 | 210,890 |
| CB-B02-RB2-WMI-65 |  | Installing duct hangers and supports | 30d | 2027-09-03 | 2027-10-12 | CB-B02-RB2-WMI-275, CB-B02-RB2-WMI-305 | CSD-LKO Calender (6 day + Holiday)-25 | Physical Progress [1550 h]; HVAC [421779 INR]; TATA Projects Ltd-25 | 421,779 |
| CB-B02-RB2-WMI-70 |  | Laying concealed/exposed refrigerant piping | 30d | 2027-10-12 | 2027-11-17 | CB-B02-RB2-WMI-65 | CSD-LKO Calender (6 day + Holiday)-25 | Physical Progress [2320 h]; HVAC [105445 INR]; TATA Projects Ltd-25 | 105,445 |
| CB-B02-RB2-WMI-75 |  | Laying concealed/exposed drain piping | 30d | 2027-10-12 | 2027-11-17 | CB-B02-RB2-WMI-65 | CSD-LKO Calender (6 day + Holiday)-25 | Physical Progress [1550 h]; HVAC [632669 INR]; TATA Projects Ltd-25 | 632,669 |
|  | 2 | **2nd Fix** |  | 2027-10-12 | 2028-02-28 |  |  |  |  |
| CB-B02-RB2-WMI-80 |  | Duct installation | 20d | 2027-10-12 | 2027-11-05 | CB-B02-RB2-WMI-65 | CSD-LKO Calender (6 day + Holiday)-25 | Physical Progress [2320 h]; HVAC [1581672 INR]; TATA Projects Ltd-25 | 1,581,672 |
| CB-B02-RB2-WMI-85 |  | Insulation of ducts (thermal/acoustic) | 15d | 2027-11-05 | 2027-11-23 | CB-B02-RB2-WMI-80 | CSD-LKO Calender (6 day + Holiday)-25 | Physical Progress [930 h]; HVAC [949003 INR]; TATA Projects Ltd-25 | 949,003 |
| CB-B02-RB2-WMI-90 |  | Installation of chilled water piping / VRF piping | 15d | 2027-11-23 | 2027-12-10 | CB-B02-RB2-WMI-85 | CSD-LKO Calender (6 day + Holiday)-25 | Physical Progress [930 h]; HVAC [2108896 INR]; TATA Projects Ltd-25 | 2,108,896 |
| CB-B02-RB2-WMI-300 |  | Installation of indoor units including AHU, FCU | 45d | 2027-12-10 | 2028-02-04 | CB-B02-RB2-WMI-90, CB-B02-RB2-WMI-70, CB-B02-RB2-WMI-75 | CSD-LKO Calender (6 day + Holiday)-25 | Physical Progress [6970 h]; HVAC [1898006 INR]; TATA Projects Ltd-25 | 1,898,006 |
| CB-B02-RB2-WMI-95 |  | Connecting refrigerant and drain piping to indoor units | 20d | 2028-02-04 | 2028-02-28 | CB-B02-RB2-WMI-300 | CSD-LKO Calender (6 day + Holiday)-25 | Physical Progress [930 h]; HVAC [527224 INR]; TATA Projects Ltd-25 | 527,224 |

| ID | WBS | Activity | Duration | Start | Finish | Predecessors | Calendar | Resources | Cost |
| --- | --- | --- | --- | --- | --- | --- | --- | --- | --- |
|  | 3 | **Final Fix** |  | 2028-05-06 | 2028-07-15 |  |  |  |  |
| CB-B02-RB2-WMI-105 |  | Installing grills, diffusers, dampers | 30d | 2028-05-06 | 2028-06-10 | CB-B02-RB2-WMI-280 | CSD-LKO Calender (6 day + Holiday)-25 | Physical Progress [930 h]; HVAC [1054448 INR]; TATA Projects Ltd-25 | 1,054,448 |
| CB-B02-RB2-WMI-100 |  | Installation of thermostats and control panels | 30d | 2028-06-10 | 2028-07-15 | CB-B02-RB2-WMI-105 | CSD-LKO Calender (6 day + Holiday)-25 | Physical Progress [930 h]; HVAC [527224 INR]; TATA Projects Ltd-25 | 527,224 |
|  | 1 | **Electrical** |  | 2027-06-25 | 2028-06-22 |  |  |  |  |
|  | 1 | **1st Fix** |  | 2027-06-25 | 2027-09-03 |  |  |  |  |
| CB-B02-RB2-WMI-385 |  | Slab Conduiting | 25d | 2027-06-25 | 2027-07-24 | CB-B02-RB2-WMI-10 | CSD-LKO Calender (6 day + Holiday)-25 | Physical Progress [3870 h]; Electrical [926153 INR]; TATA Projects Ltd-25 | 926,153 |
| CB-B02-RB2-WMI-30 |  | Wall Conduiting | 30d | 2027-07-24 | 2027-08-28 | CB-B02-RB2-WMI-15 | CSD-LKO Calender (6 day + Holiday)-25 | Physical Progress [1550 h]; Electrical [463076 INR]; TATA Projects Ltd-25 | 463,076 |
| CB-B02-RB2-WMI-60 |  | Installing back boxes for switches, sockets | 5d | 2027-08-28 | 2027-09-03 | CB-B02-RB2-WMI-30, CB-B02-RB2-WMI-385 | CSD-LKO Calender (6 day + Holiday)-25 | Physical Progress [780 h]; Electrical [277846 INR]; TATA Projects Ltd-25 | 277,846 |
|  | 2 | **2nd Fix** |  | 2027-10-12 | 2028-03-10 |  |  |  |  |
| CB-B02-RB2-WMI-35 |  | Cable tray laying | 15d | 2027-10-12 | 2027-10-30 | CB-B02-RB2-WMI-25, CB-B02-RB2-WMI-275 | CSD-LKO Calender (6 day + Holiday)-25 | Physical Progress [3870 h]; Electrical [370461 INR]; TATA Projects Ltd-25 | 370,461 |
| CB-B02-RB2-WMI-40 |  | Cabling & Wire Pulling | 45d | 2027-10-30 | 2027-12-22 | CB-B02-RB2-WMI-35 | CSD-LKO Calender (6 day + Holiday)-25 | Physical Progress [6970 h]; Electrical [1852305 INR]; TATA Projects Ltd-25 | 1,852,305 |
| CB-B02-RB2-WMI-50 |  | DB fixing and connecting | 20d | 2027-12-22 | 2028-01-17 | CB-B02-RB2-WMI-40 | CSD-LKO Calender (6 day + Holiday)-25 | Physical Progress [2320 h]; Electrical [277846 INR]; TATA Projects Ltd-25 | 277,846 |
| CB-B02-RB2-WMI-310 |  | Floor/Distribution Panel Installation | 15d | 2028-01-17 | 2028-02-04 | CB-B02-RB2-WMI-50 | CSD-LKO Calender (6 day + Holiday)-25 | Physical Progress [780 h]; Electrical [740922 INR]; TATA Projects Ltd-25 | 740,922 |
| CB-B02-RB2-WMI-405 |  | Floor Rising Main Installation | 15d | 2028-02-04 | 2028-02-22 | CB-B02-RB2-WMI-310 | CSD-LKO Calender (6 day + Holiday)-25 | Physical Progress [1550 h]; Electrical [1296614 INR]; TATA Projects Ltd-25 | 1,296,614 |
| CB-B02-RB2-WMI-315 |  | Equipment Earthing | 15d | 2028-02-22 | 2028-03-10 | CB-B02-RB2-WMI-310, CB-B02-RB2-WMI-405 | CSD-LKO Calender (6 day + Holiday)-25 | Physical Progress [1550 h]; Electrical [277846 INR]; TATA Projects Ltd-25 | 277,846 |
|  | 3 | **Final Fix** |  | 2028-05-06 | 2028-06-22 |  |  |  |  |
| CB-B02-RB2-WMI-55 |  | Switches & Socket | 20d | 2028-05-06 | 2028-05-30 | CB-B02-RB2-WMI-280 | CSD-LKO Calender (6 day + Holiday)-25 | Physical Progress [3100 h]; Electrical [926153 INR]; TATA Projects Ltd-25 | 926,153 |
| CB-B02-RB2-WMI-45 |  | Light Fixtures | 20d | 2028-05-30 | 2028-06-22 | CB-B02-RB2-WMI-55, CB-B02-RB2-WMI-315 | CSD-LKO Calender (6 day + Holiday)-25 | Physical Progress [2320 h]; Electrical [1389229 INR]; TATA Projects Ltd-25 | 1,389,229 |
|  | 3 | **Plumbing** |  | 2027-07-24 | 2028-06-28 |  |  |  |  |
|  | 1 | **1st Fix** |  | 2027-07-24 | 2027-12-29 |  |  |  |  |
| CB-B02-RB2-WMI-120 |  | Fixing pipe supports and clamps | 35d | 2027-07-24 | 2027-09-03 | CB-B02-RB2-WMI-15 | CSD-LKO Calender (6 day + Holiday)-25 | Physical Progress [1550 h]; Plumbing [521800 INR]; TATA Projects Ltd-25 | 521,800 |
| CB-B02-RB2-WMI-110 |  | Laying water supply pipes (hot & cold) | 35d | 2027-09-03 | 2027-10-18 | CB-B02-RB2-WMI-120 | CSD-LKO Calender (6 day + Holiday)-25 | Physical Progress [2320 h]; Plumbing [1043599 INR]; TATA Projects Ltd-25 | 1,043,599 |
| CB-B02-RB2-WMI-115 |  | Laying drainage pipes (soil, waste, vent) | 35d | 2027-09-03 | 2027-10-18 | CB-B02-RB2-WMI-120 | CSD-LKO Calender (6 day + Holiday)-25 | Physical Progress [2320 h]; Plumbing [1043599 INR]; TATA Projects Ltd-25 | 1,043,599 |
| CB-B02-RB2-WMI-140 |  | Installation of plumbing fixture base supports (WC frames, sink brackets) | 30d | 2027-10-18 | 2027-11-23 | CB-B02-RB2-WMI-115 | CSD-LKO Calender (6 day + Holiday)-25 | Physical Progress [930 h]; Plumbing [521800 INR]; TATA Projects Ltd-25 | 521,800 |
| CB-B02-RB2-WMI-125 |  | Pressure testing of water supply lines | 25d | 2027-11-23 | 2027-12-22 | CB-B02-RB2-WMI-110, CB-B02-RB2-WMI-115, CB-B02-RB2-WMI-140 | CSD-LKO Calender (6 day + Holiday)-25 | Physical Progress [1080 h]; Plumbing [104360 INR]; TATA Projects Ltd-25 | 104,360 |
| CB-B02-RB2-WMI-370 |  | Installation of concealed parts of toilet fixtures | 30d | 2027-11-23 | 2027-12-29 | CB-B02-RB2-WMI-140 | CSD-LKO Calender (6 day + Holiday)-25 | Physical Progress [1550 h]; Plumbing [521800 INR]; TATA Projects Ltd-25 | 521,800 |

| ID | WBS | Activity | Duration | Start | Finish | Predecessors | Calendar | Resources | Cost |
| --- | --- | --- | --- | --- | --- | --- | --- | --- | --- |
|  | 2 | **2nd FIx** |  | 2027-12-22 | 2028-03-04 |  |  |  |  |
| CB-B02-RB2-WMI-150 |  | Insulation of hot water pipes (if applicable) | 15d | 2027-12-22 | 2028-01-11 | CB-B02-RB2-WMI-125 | CSD-LKO Calender (6 day + Holiday)-25 | Physical Progress [930 h]; Plumbing [521800 INR]; TATA Projects Ltd-25 | 521,800 |
| CB-B02-RB2-WMI-130 |  | Installation of vertical risers and main distribution lines | 35d | 2027-12-29 | 2028-02-10 | CB-B02-RB2-WMI-25, CB-B02-RB2-WMI-275, CB-B02-RB2-WMI-125, CB-B02-RB2-WMI-370 | CSD-LKO Calender (6 day + Holiday)-25 | Physical Progress [3100 h]; Plumbing [1043599 INR]; TATA Projects Ltd-25 | 1,043,599 |
| CB-B02-RB2-WMI-145 |  | Testing drainage lines for leakage/blockage | 15d | 2028-01-11 | 2028-01-29 | CB-B02-RB2-WMI-140, CB-B02-RB2-WMI-150 | CSD-LKO Calender (6 day + Holiday)-25 | Physical Progress [930 h]; Plumbing [104360 INR]; TATA Projects Ltd-25 | 104,360 |
| CB-B02-RB2-WMI-375 |  | Laying of ACO Drains | 20d | 2028-01-29 | 2028-02-22 | CB-B02-RB2-WMI-145 | CSD-LKO Calender (6 day + Holiday)-25 | ACO Drain [4080997 INR]; Physical Progress [3100 h]; TATA Projects Ltd-25 | 4,080,997 |
| CB-B02-RB2-WMI-135 |  | Fixing floor traps and gully traps | 20d | 2028-02-10 | 2028-03-04 | CB-B02-RB2-WMI-130 | CSD-LKO Calender (6 day + Holiday)-25 | Physical Progress [930 h]; Plumbing [313080 INR]; TATA Projects Ltd-25 | 313,080 |
|  | 3 | **Final FIx** |  | 2028-02-22 | 2028-06-28 |  |  |  |  |
| CB-B02-RB2-WMI-380 |  | Installation of ACO Drain Grating | 7d | 2028-02-22 | 2028-03-01 | CB-B02-RB2-WMI-375 | CSD-LKO Calender (6 day + Holiday)-25 | Grating of Drain [2489760 INR]; Physical Progress [1080 h]; TATA Projects Ltd-25 | 2,489,760 |
| CB-B02-RB2-WMI-155 |  | Installation of sanitary fixtures (WC, washbasins, urinals, sinks) | 10d | 2028-05-06 | 2028-05-18 | CB-B02-RB2-WMI-280, CB-B02-RB2-WMI-135 | CSD-LKO Calender (6 day + Holiday)-25 | Physical Progress [1550 h]; Plumbing [2087198 INR]; TATA Projects Ltd-25 | 2,087,198 |
| CB-B02-RB2-WMI-160 |  | Installation of CP fittings (taps, mixers, showers, health faucets) | 10d | 2028-05-18 | 2028-05-30 | CB-B02-RB2-WMI-155, CB-B02-RB2-WMI-280 | CSD-LKO Calender (6 day + Holiday)-25 | Physical Progress [1550 h]; Plumbing [1043599 INR]; TATA Projects Ltd-25 | 1,043,599 |
| CB-B02-RB2-WMI-165 |  | Connection of appliances | 25d | 2028-05-30 | 2028-06-28 | CB-B02-RB2-WMI-160 | CSD-LKO Calender (6 day + Holiday)-25 | Physical Progress [1080 h]; Plumbing [521800 INR]; TATA Projects Ltd-25 | 521,800 |
|  | 4 | **Firefighting** |  | 2027-07-24 | 2028-07-04 |  |  |  |  |
|  | 1 | **1st Fix** |  | 2027-07-24 | 2027-11-23 |  |  |  |  |
| CB-B02-RB2-WMI-175 |  | Fixing pipe supports and hangers | 35d | 2027-07-24 | 2027-09-03 | CB-B02-RB2-WMI-15 | CSD-LKO Calender (6 day + Holiday)-25 | Physical Progress [1550 h]; Firefighting [431557 INR]; TATA Projects Ltd-25 | 431,557 |
| CB-B02-RB2-WMI-170 |  | Laying branch piping | 35d | 2027-09-03 | 2027-10-18 | CB-B02-RB2-WMI-175 | CSD-LKO Calender (6 day + Holiday)-25 | Physical Progress [2320 h]; Firefighting [924764 INR]; TATA Projects Ltd-25 | 924,764 |
| CB-B02-RB2-WMI-180 |  | Hydrostatic pressure testing of piping | 30d | 2027-10-18 | 2027-11-23 | CB-B02-RB2-WMI-170 | CSD-LKO Calender (6 day + Holiday)-25 | Physical Progress [930 h]; Firefighting [123302 INR]; TATA Projects Ltd-25 | 123,302 |
|  | 2 | **2nd Fix** |  | 2027-11-23 | 2028-02-16 |  |  |  |  |
| CB-B02-RB2-WMI-185 |  | Installation of vertical risers and distribution piping in shafts | 35d | 2027-11-23 | 2028-01-05 | CB-B02-RB2-WMI-25, CB-B02-RB2-WMI-180 | CSD-LKO Calender (6 day + Holiday)-25 | Physical Progress [3870 h]; Firefighting [1233019 INR]; TATA Projects Ltd-25 | 1,233,019 |
| CB-B02-RB2-WMI-195 |  | Painting/insulation of exposed fire pipes | 30d | 2027-11-23 | 2027-12-29 | CB-B02-RB2-WMI-180 | CSD-LKO Calender (6 day + Holiday)-25 | Physical Progress [1550 h]; Firefighting [61651 INR]; TATA Projects Ltd-25 | 61,651 |
| CB-B02-RB2-WMI-200 |  | Testing risers and branch lines for leakage | 30d | 2027-12-29 | 2028-02-04 | CB-B02-RB2-WMI-195 | CSD-LKO Calender (6 day + Holiday)-25 | Physical Progress [930 h]; Firefighting [123302 INR]; TATA Projects Ltd-25 | 123,302 |
| CB-B02-RB2-WMI-190 |  | Installation of sprinkler branch lines in ceilings | 35d | 2028-01-05 | 2028-02-16 | CB-B02-RB2-WMI-185, CB-B02-RB2-WMI-275 | CSD-LKO Calender (6 day + Holiday)-25 | Physical Progress [3870 h]; Firefighting [924764 INR]; TATA Projects Ltd-25 | 924,764 |
|  | 3 | **Final FIx** |  | 2028-05-06 | 2028-07-04 |  |  |  |  |
| CB-B02-RB2-WMI-205 |  | Installation of sprinkler heads, nozzles, and final alignment | 35d | 2028-05-06 | 2028-06-16 | CB-B02-RB2-WMI-280, CB-B02-RB2-WMI-190 | CSD-LKO Calender (6 day + Holiday)-25 | Physical Progress [6970 h]; Firefighting [924764 INR]; TATA Projects Ltd-25 | 924,764 |
| CB-B02-RB2-WMI-210 |  | Installation of hydrant accessories (valves, hose reels, cabinets) | 25d | 2028-05-06 | 2028-06-05 | CB-B02-RB2-WMI-280 | CSD-LKO Calender (6 day + Holiday)-25 | Physical Progress [1550 h]; Firefighting [616510 INR]; TATA Projects Ltd-25 | 616,510 |
| CB-B02-RB2-WMI-215 |  | Installation of portable fire extinguishers | 30d | 2028-05-06 | 2028-06-10 | CB-B02-RB2-WMI-280 | CSD-LKO Calender (6 day + Holiday)-25 | Physical Progress [930 h]; Firefighting [61651 INR]; TATA Projects Ltd-25 | 61,651 |
| CB-B02-RB2-WMI-220 |  | Integration with fire alarm system | 20d | 2028-06-10 | 2028-07-04 | CB-B02-RB2-WMI-215 | CSD-LKO Calender (6 day + Holiday)-25 | Physical Progress [3100 h]; Firefighting [308255 INR]; TATA Projects Ltd-25 | 308,255 |

| ID | WBS | Activity | Duration | Start | Finish | Predecessors | Calendar | Resources | Cost |
| --- | --- | --- | --- | --- | --- | --- | --- | --- | --- |
|  | 5 | **ELV** |  | 2027-06-25 | 2028-06-28 |  |  |  |  |
|  | 1 | **1st Fix** |  | 2027-06-25 | 2027-09-03 |  |  |  |  |
| CB-B02-RB2-WMI-390 |  | Slab Conduiting | 25d | 2027-06-25 | 2027-07-24 | CB-B02-RB2-WMI-10 | CSD-LKO Calender (6 day + Holiday)-25 | Physical Progress [3870 h]; ELV [726016 INR]; TATA Projects Ltd-25 | 726,016 |
| CB-B02-RB2-WMI-225 |  | Wall Conduiting | 30d | 2027-07-24 | 2027-08-28 | CB-B02-RB2-WMI-15 | CSD-LKO Calender (6 day + Holiday)-25 | Physical Progress [1550 h]; ELV [311150 INR]; TATA Projects Ltd-25 | 311,150 |
| CB-B02-RB2-WMI-245 |  | Installing back boxes for switches, sockets | 5d | 2027-08-28 | 2027-09-03 | CB-B02-RB2-WMI-225, CB-B02-RB2-WMI-390 | CSD-LKO Calender (6 day + Holiday)-25 | Physical Progress [780 h]; ELV [518583 INR]; TATA Projects Ltd-25 | 518,583 |
|  | 2 | **2nd Fix** |  | 2027-10-12 | 2028-02-10 |  |  |  |  |
| CB-B02-RB2-WMI-230 |  | Cable tray installation | 15d | 2027-10-12 | 2027-10-30 | CB-B02-RB2-WMI-25, CB-B02-RB2-WMI-275 | CSD-LKO Calender (6 day + Holiday)-25 | Physical Progress [3870 h]; ELV [518583 INR]; TATA Projects Ltd-25 | 518,583 |
| CB-B02-RB2-WMI-235 |  | Cabeling of ELV cable - IT/Fire Alarm/Public Address | 30d | 2027-10-30 | 2027-12-04 | CB-B02-RB2-WMI-230 | CSD-LKO Calender (6 day + Holiday)-25 | Physical Progress [6970 h]; ELV [1244599 INR]; TATA Projects Ltd-25 | 1,244,599 |
| CB-B02-RB2-WMI-320 |  | ELV Rack Installation | 15d | 2027-12-04 | 2027-12-22 | CB-B02-RB2-WMI-235 | CSD-LKO Calender (6 day + Holiday)-25 | Physical Progress [1550 h]; ELV [518583 INR]; TATA Projects Ltd-25 | 518,583 |
| CB-B02-RB2-WMI-240 |  | Termination of cables at junction boxes, patch panels, and control panels | 15d | 2027-12-22 | 2028-01-11 | CB-B02-RB2-WMI-320 | CSD-LKO Calender (6 day + Holiday)-25 | Physical Progress [4650 h]; ELV [518583 INR]; TATA Projects Ltd-25 | 518,583 |
| CB-B02-RB2-WMI-255 |  | Fixing devices like CCTV camera bases, card reader bases, smoke detector bases, PA Bases, Wifi Bases | 25d | 2028-01-11 | 2028-02-10 | CB-B02-RB2-WMI-240 | CSD-LKO Calender (6 day + Holiday)-25 | Physical Progress [620 h]; ELV [1037166 INR]; TATA Projects Ltd-25 | 1,037,166 |
|  | 3 | **3rd Fix** |  | 2028-05-06 | 2028-06-28 |  |  |  |  |
| CB-B02-RB2-WMI-250 |  | Installation of data and Voice Faceplate | 25d | 2028-05-06 | 2028-06-05 | CB-B02-RB2-WMI-280 | CSD-LKO Calender (6 day + Holiday)-25 | Physical Progress [2320 h]; ELV [518583 INR]; TATA Projects Ltd-25 | 518,583 |
| CB-B02-RB2-WMI-260 |  | Installation of Camera & Wifi | 30d | 2028-05-06 | 2028-06-10 | CB-B02-RB2-WMI-280 | CSD-LKO Calender (6 day + Holiday)-25 | Physical Progress [2320 h]; ELV [518583 INR]; TATA Projects Ltd-25 | 518,583 |
| CB-B02-RB2-WMI-265 |  | Installation of fire alarm devices + Public Address | 15d | 2028-05-06 | 2028-05-24 | CB-B02-RB2-WMI-280 | CSD-LKO Calender (6 day + Holiday)-25 | Physical Progress [2320 h]; ELV [622299 INR]; TATA Projects Ltd-25 | 622,299 |
| CB-B02-RB2-WMI-325 |  | Installation of Active System | 15d | 2028-05-24 | 2028-06-10 | CB-B02-RB2-WMI-265 | CSD-LKO Calender (6 day + Holiday)-25 | Physical Progress [2320 h]; ELV [1037166 INR]; TATA Projects Ltd-25 | 1,037,166 |
| CB-B02-RB2-WMI-335 |  | Fire Panel Intallation & Integration | 25d | 2028-05-24 | 2028-06-22 | CB-B02-RB2-WMI-265 | CSD-LKO Calender (6 day + Holiday)-25 | Physical Progress [3870 h]; ELV [518583 INR]; TATA Projects Ltd-25 | 518,583 |
| CB-B02-RB2-WMI-340 |  | Installation & Integration of Audio Visual System | 25d | 2028-05-24 | 2028-06-22 | CB-B02-RB2-WMI-265 | CSD-LKO Calender (6 day + Holiday)-25 | Physical Progress [3870 h]; ELV [518583 INR]; TATA Projects Ltd-25 | 518,583 |
| CB-B02-RB2-WMI-345 |  | Installation & Integration of Access Control | 25d | 2028-05-24 | 2028-06-22 | CB-B02-RB2-WMI-265 | CSD-LKO Calender (6 day + Holiday)-25 | Physical Progress [3870 h]; ELV [518583 INR]; TATA Projects Ltd-25 | 518,583 |
| CB-B02-RB2-WMI-330 |  | Integration of Active components | 15d | 2028-06-10 | 2028-06-28 | CB-B02-RB2-WMI-325 | CSD-LKO Calender (6 day + Holiday)-25 | Physical Progress [2320 h]; ELV [207433 INR]; TATA Projects Ltd-25 | 207,433 |
|  | 2 | **Dry Finishes** |  | 2027-07-24 | 2028-07-22 |  |  |  |  |
| CB-B02-RB2-WMI-275 |  | Painting on Ceiling (Ceiling Finish) | 15d | 2027-07-24 | 2027-08-11 | CB-B02-RB2-WMI-15 | CSD-LKO Calender (6 day + Holiday)-25 | Painting [6966 Sq m]; Painter [6980 h]; Helper [6980 h]; Physical Progress [2320 h]; TATA Projects Ltd-25 | 1,592,566.92 |
| CB-B02-RB2-WMI-270 |  | Installation of Gypsum Board | 10d | 2028-04-10 | 2028-04-22 | CB-B02-RB2-WMI-20 | CSD-LKO Calender (6 day + Holiday)-25 | ID Work [663140 INR]; Physical Progress [1550 h]; TATA Projects Ltd-25 | 663,140 |
| CB-B02-RB2-WMI-400 |  | Civil Misc Works | 30d | 2028-04-10 | 2028-05-18 | CB-B02-RB2-WMI-20 | CSD-LKO Calender (6 day + Holiday)-25 | Civil Misc Works [1689710 INR]; Physical Progress [4650 h]; TATA Projects Ltd-25 | 1,689,710 |
| CB-B02-RB2-WMI-280 |  | Wall Painting first coat including putty | 10d | 2028-04-22 | 2028-05-06 | CB-B02-RB2-WMI-270 | CSD-LKO Calender (6 day + Holiday)-25 | Painting [6966 Sq m]; Painter [6970 h]; Helper [6970 h]; Physical Progress [1550 h]; TATA Projects Ltd-25 | 1,592,566.92 |
| CB-B02-RB2-WMI-295 |  | Wheel stoppers | 8d | 2028-05-06 | 2028-05-16 | CB-B02-RB2-WMI-280 | CSD-LKO Calender (6 day + Holiday)-25 | Wheel Stopper [8624 INR]; Physical Progress [1240 h]; TATA Projects Ltd-25 | 8,624 |
| CB-B02-RB2-WMI-350 |  | Door & Window | 10d | 2028-05-06 | 2028-05-18 | CB-B02-RB2-WMI-280 | CSD-LKO Calender (6 day + Holiday)-25 | ID Work [663140 INR]; Physical Progress [1550 h]; TATA Projects Ltd-25 | 663,140 |
| CB-B02-RB2-WMI-290 |  | Line marking for parking bays, arrows, pedestrian paths | 8d | 2028-05-16 | 2028-05-25 | CB-B02-RB2-WMI-295 | CSD-LKO Calender (6 day + Holiday)-25 | Line / Arrow Marking [569181 INR]; Physical Progress [1240 h]; TATA Projects Ltd-25 | 569,181 |
| CB-B02-RB2-WMI-285 |  | Wall painting final coat | 6d | 2028-07-15 | 2028-07-22 | CB-B02-RB2-WMI-290, CB-B02-RB2-WMI-250, CB-B02-RB2-WMI-260, CB-B02-RB2-WMI-220, CB-B02-RB2-WMI-205, CB-B02-RB2-WMI-210, CB-B02-RB2-WMI-215, CB-B02-RB2-WMI-165, CB-B02-RB2-WMI-45, CB-B02-RB2-WMI-100, CB-B02-RB2-WMI-335, CB-B02-RB2-WMI-350, CB-B02-RB2-WMI-380, CB-B02-RB2-WMI-340, CB-B02-RB2-WMI-345, CB-B02-RB2-WMI-330, CB-B02-RB2-WMI-400, CB-B02-HS-MEP10, CB-B02-HS-MEP15, CB-B02-HS-MEP25, CB-B02-HS-MEP30 | CSD-LKO Calender (6 day + Holiday)-25 | Painting [6966 Sq m]; Painter [6970 h]; Helper [6970 h]; Physical Progress [930 h]; TATA Projects Ltd-25 | 1,592,566.92 |

| ID | WBS | Activity | Duration | Start | Finish | Predecessors | Calendar | Resources | Cost |
| --- | --- | --- | --- | --- | --- | --- | --- | --- | --- |
|  | 5 | **Retail Block 1** |  | 2027-07-02 | 2028-08-31 |  |  |  |  |
|  | 1 | **Wet Finishes** |  | 2027-07-02 | 2028-04-25 |  |  |  |  |
| CB-B02-RB1-WMI-10 |  | Deshuttering | 7d | 2027-07-02 | 2027-07-09 | RB1-SS-GF.625, RB1-SS-B02.610, RB1-SS-B02.645, RB1-SS-B02.665 | CSD-LKO Calender (6 day + Holiday)-25 | Physical Progress [1080 h]; TATA Projects Ltd-25 |  |
| CB-B02-RB1-WMI-15 |  | Brickwork/Blockwork | 25d | 2027-07-10 | 2027-08-07 | CB-B02-RB1-WMI-10 | CSD-LKO Calender (6 day + Holiday)-25 | Masonry [366 CuM]; Mason [2440 h]; Helper [1220 h]; Physical Progress [6970 h]; TATA Projects Ltd-25 | 3,489,941.76 |
| CB-B02-RB1-WMI-380 |  | Structural Misc Works | 50d | 2027-07-10 | 2027-09-07 | CB-B02-RB1-WMI-10 | CSD-LKO Calender (6 day + Holiday)-25 | Structural Misc Works [818513 INR]; Physical Progress [7750 h]; TATA Projects Ltd-25 | 818,513 |
| CB-B02-RB1-WMI-25 |  | Plaster | 30d | 2027-09-20 | 2027-10-26 | CB-B02-RB1-WMI-30, CB-B02-RB1-WMI-60, CB-B02-RB1-WMI-245, CB-B02-RB1-WMI-380 | CSD-LKO Calender (6 day + Holiday)-25 | Plaster [11985 Sqr Mtr]; Mason [7990 h]; Helper [4000 h]; Physical Progress [4650 h]; TATA Projects Ltd-25 | 6,638,611.35 |
| CB-B02-RB1-WMI-20 |  | Flooring | 25d | 2028-03-27 | 2028-04-25 | CB-B02-RB1-WMI-15, CB-B02-RB1-WMI-380, CB-B02-RB1-WMI-80, CB-B02-RB1-WMI-85, CB-B02-RB1-WMI-90, CB-B02-RB1-WMI-300, CB-B02-RB1-WMI-95, CB-B02-RB1-WMI-35, CB-B02-RB1-WMI-40, CB-B02-RB1-WMI-50, CB-B02-RB1-WMI-310, CB-B02-RB1-WMI-390, CB-B02-RB1-WMI-315, CB-B02-RB1-WMI-150, CB-B02-RB1-WMI-130, CB-B02-RB1-WMI-145, CB-B02-RB1-WMI-135, CB-B02-RB1-WMI-360, CB-B02-RB1-WMI-185, CB-B02-RB1-WMI-195, CB-B02-RB1-WMI-200, CB-B02-RB1-WMI-190, CB-B02-RB1-WMI-230, CB-B02-RB1-WMI-235, CB-B02-RB1-WMI-320, CB-B02-RB1-WMI-240, CB-B02-RB1-WMI-255 | CSD-LKO Calender (6 day + Holiday)-25 | Flooring [17548054 INR]; Flooring Mason [8800 h]; Helper [8800 h]; Physical Progress [7750 h]; TATA Projects Ltd-25 | 17,548,054 |
|  | 5 | **Low Side MEP** |  | 2027-07-10 | 2028-08-24 |  |  |  |  |
|  | 2 | **HVAC** |  | 2027-08-09 | 2028-07-29 |  |  |  |  |
|  | 1 | **1st Fix** |  | 2027-08-09 | 2027-12-01 |  |  |  |  |
| CB-B02-RB1-WMI-305 |  | Duct Support Fabrication | 35d | 2027-08-09 | 2027-09-18 | CB-B02-RB1-WMI-15 | CSD-LKO Calender (6 day + Holiday)-25 | Physical Progress [2320 h]; HVAC [210890 INR]; TATA Projects Ltd-25 | 210,890 |
| CB-B02-RB1-WMI-65 |  | Installing duct hangers and supports | 30d | 2027-09-20 | 2027-10-26 | CB-B02-RB1-WMI-275, CB-B02-RB1-WMI-305 | CSD-LKO Calender (6 day + Holiday)-25 | Physical Progress [1550 h]; HVAC [421779 INR]; TATA Projects Ltd-25 | 421,779 |
| CB-B02-RB1-WMI-70 |  | Laying concealed/exposed refrigerant piping | 30d | 2027-10-27 | 2027-12-01 | CB-B02-RB1-WMI-65 | CSD-LKO Calender (6 day + Holiday)-25 | Physical Progress [2320 h]; HVAC [105445 INR]; TATA Projects Ltd-25 | 105,445 |
| CB-B02-RB1-WMI-75 |  | Laying concealed/exposed drain piping | 30d | 2027-10-27 | 2027-12-01 | CB-B02-RB1-WMI-65 | CSD-LKO Calender (6 day + Holiday)-25 | Physical Progress [1550 h]; HVAC [632669 INR]; TATA Projects Ltd-25 | 632,669 |
|  | 2 | **2nd Fix** |  | 2027-10-27 | 2028-03-14 |  |  |  |  |
| CB-B02-RB1-WMI-80 |  | Duct installation | 20d | 2027-10-27 | 2027-11-19 | CB-B02-RB1-WMI-65 | CSD-LKO Calender (6 day + Holiday)-25 | Physical Progress [2320 h]; HVAC [1581672 INR]; TATA Projects Ltd-25 | 1,581,672 |
| CB-B02-RB1-WMI-85 |  | Insulation of ducts (thermal/acoustic) | 15d | 2027-11-20 | 2027-12-07 | CB-B02-RB1-WMI-80 | CSD-LKO Calender (6 day + Holiday)-25 | Physical Progress [930 h]; HVAC [949003 INR]; TATA Projects Ltd-25 | 949,003 |
| CB-B02-RB1-WMI-90 |  | Installation of chilled water piping / VRF piping | 15d | 2027-12-08 | 2027-12-24 | CB-B02-RB1-WMI-85 | CSD-LKO Calender (6 day + Holiday)-25 | Physical Progress [930 h]; HVAC [2108896 INR]; TATA Projects Ltd-25 | 2,108,896 |
| CB-B02-RB1-WMI-300 |  | Installation of indoor units including AHU, FCU | 45d | 2027-12-27 | 2028-02-18 | CB-B02-RB1-WMI-90, CB-B02-RB1-WMI-70, CB-B02-RB1-WMI-75 | CSD-LKO Calender (6 day + Holiday)-25 | Physical Progress [6970 h]; HVAC [1898006 INR]; TATA Projects Ltd-25 | 1,898,006 |
| CB-B02-RB1-WMI-95 |  | Connecting refrigerant and drain piping to indoor units | 20d | 2028-02-19 | 2028-03-14 | CB-B02-RB1-WMI-300 | CSD-LKO Calender (6 day + Holiday)-25 | Physical Progress [930 h]; HVAC [527224 INR]; TATA Projects Ltd-25 | 527,224 |
|  | 3 | **Final Fix** |  | 2028-05-22 | 2028-07-29 |  |  |  |  |
| CB-B02-RB1-WMI-105 |  | Installing grills, diffusers, dampers | 30d | 2028-05-22 | 2028-06-24 | CB-B02-RB1-WMI-280 | CSD-LKO Calender (6 day + Holiday)-25 | Physical Progress [930 h]; HVAC [1054448 INR]; TATA Projects Ltd-25 | 1,054,448 |
| CB-B02-RB1-WMI-100 |  | Installation of thermostats and control panels | 30d | 2028-06-26 | 2028-07-29 | CB-B02-RB1-WMI-105 | CSD-LKO Calender (6 day + Holiday)-25 | Physical Progress [930 h]; HVAC [527224 INR]; TATA Projects Ltd-25 | 527,224 |
|  | 1 | **Electrical** |  | 2027-07-10 | 2028-07-06 |  |  |  |  |
|  | 1 | **1st Fix** |  | 2027-07-10 | 2027-09-18 |  |  |  |  |
| CB-B02-RB1-WMI-370 |  | Slab Conduiting | 25d | 2027-07-10 | 2027-08-07 | CB-B02-RB1-WMI-10 | CSD-LKO Calender (6 day + Holiday)-25 | Physical Progress [3870 h]; Electrical [926153 INR]; TATA Projects Ltd-25 | 926,153 |
| CB-B02-RB1-WMI-30 |  | Wall Conduiting | 30d | 2027-08-09 | 2027-09-13 | CB-B02-RB1-WMI-15 | CSD-LKO Calender (6 day + Holiday)-25 | Physical Progress [1550 h]; Electrical [463076 INR]; TATA Projects Ltd-25 | 463,076 |
| CB-B02-RB1-WMI-60 |  | Installing back boxes for switches, sockets | 5d | 2027-09-14 | 2027-09-18 | CB-B02-RB1-WMI-30, CB-B02-RB1-WMI-370 | CSD-LKO Calender (6 day + Holiday)-25 | Physical Progress [780 h]; Electrical [277846 INR]; TATA Projects Ltd-25 | 277,846 |

| ID | WBS | Activity | Duration | Start | Finish | Predecessors | Calendar | Resources | Cost |
| --- | --- | --- | --- | --- | --- | --- | --- | --- | --- |
|  | 2 | **2nd Fix** |  | 2027-10-27 | 2028-03-25 |  |  |  |  |
| CB-B02-RB1-WMI-35 |  | Cable tray laying | 15d | 2027-10-27 | 2027-11-13 | CB-B02-RB1-WMI-25, CB-B02-RB1-WMI-275 | CSD-LKO Calender (6 day + Holiday)-25 | Physical Progress [3870 h]; Electrical [370461 INR]; TATA Projects Ltd-25 | 370,461 |
| CB-B02-RB1-WMI-40 |  | Cabling & Wire Pulling | 45d | 2027-11-15 | 2028-01-07 | CB-B02-RB1-WMI-35 | CSD-LKO Calender (6 day + Holiday)-25 | Physical Progress [6970 h]; Electrical [1852305 INR]; TATA Projects Ltd-25 | 1,852,305 |
| CB-B02-RB1-WMI-50 |  | DB fixing and connecting | 20d | 2028-01-08 | 2028-02-01 | CB-B02-RB1-WMI-40 | CSD-LKO Calender (6 day + Holiday)-25 | Physical Progress [2320 h]; Electrical [277846 INR]; TATA Projects Ltd-25 | 277,846 |
| CB-B02-RB1-WMI-310 |  | Floor/Distribution Panel Installation | 15d | 2028-02-02 | 2028-02-18 | CB-B02-RB1-WMI-50 | CSD-LKO Calender (6 day + Holiday)-25 | Physical Progress [780 h]; Electrical [740922 INR]; TATA Projects Ltd-25 | 740,922 |
| CB-B02-RB1-WMI-390 |  | Floor Rising Main Installation | 15d | 2028-02-19 | 2028-03-07 | CB-B02-RB1-WMI-310 | CSD-LKO Calender (6 day + Holiday)-25 | Physical Progress [1550 h]; Electrical [1296614 INR]; TATA Projects Ltd-25 | 1,296,614 |
| CB-B02-RB1-WMI-315 |  | Equipment Earthing | 15d | 2028-03-08 | 2028-03-25 | CB-B02-RB1-WMI-310, CB-B02-RB1-WMI-390 | CSD-LKO Calender (6 day + Holiday)-25 | Physical Progress [1550 h]; Electrical [277846 INR]; TATA Projects Ltd-25 | 277,846 |
|  | 3 | **Final Fix** |  | 2028-05-22 | 2028-07-06 |  |  |  |  |
| CB-B02-RB1-WMI-55 |  | Switches & Socket | 20d | 2028-05-22 | 2028-06-13 | CB-B02-RB1-WMI-280 | CSD-LKO Calender (6 day + Holiday)-25 | Physical Progress [3100 h]; Electrical [926153 INR]; TATA Projects Ltd-25 | 926,153 |
| CB-B02-RB1-WMI-45 |  | Light Fixtures | 20d | 2028-06-14 | 2028-07-06 | CB-B02-RB1-WMI-55, CB-B02-RB1-WMI-315 | CSD-LKO Calender (6 day + Holiday)-25 | Physical Progress [2320 h]; Electrical [1389229 INR]; TATA Projects Ltd-25 | 1,389,229 |
|  | 3 | **Plumbing** |  | 2027-08-09 | 2028-07-12 |  |  |  |  |
|  | 1 | **1st Fix** |  | 2027-08-09 | 2028-01-13 |  |  |  |  |
| CB-B02-RB1-WMI-120 |  | Fixing pipe supports and clamps | 35d | 2027-08-09 | 2027-09-18 | CB-B02-RB1-WMI-15 | CSD-LKO Calender (6 day + Holiday)-25 | Physical Progress [1550 h]; Plumbing [521800 INR]; TATA Projects Ltd-25 | 521,800 |
| CB-B02-RB1-WMI-110 |  | Laying water supply pipes (hot & cold) | 35d | 2027-09-20 | 2027-11-02 | CB-B02-RB1-WMI-120 | CSD-LKO Calender (6 day + Holiday)-25 | Physical Progress [2320 h]; Plumbing [1043599 INR]; TATA Projects Ltd-25 | 1,043,599 |
| CB-B02-RB1-WMI-115 |  | Laying drainage pipes (soil, waste, vent) | 35d | 2027-09-20 | 2027-11-02 | CB-B02-RB1-WMI-120 | CSD-LKO Calender (6 day + Holiday)-25 | Physical Progress [2320 h]; Plumbing [1043599 INR]; TATA Projects Ltd-25 | 1,043,599 |
| CB-B02-RB1-WMI-140 |  | Installation of plumbing fixture base supports (WC frames, sink brackets) | 30d | 2027-11-03 | 2027-12-07 | CB-B02-RB1-WMI-115 | CSD-LKO Calender (6 day + Holiday)-25 | Physical Progress [930 h]; Plumbing [521800 INR]; TATA Projects Ltd-25 | 521,800 |
| CB-B02-RB1-WMI-125 |  | Pressure testing of water supply lines | 25d | 2027-12-08 | 2028-01-07 | CB-B02-RB1-WMI-110, CB-B02-RB1-WMI-115, CB-B02-RB1-WMI-140 | CSD-LKO Calender (6 day + Holiday)-25 | Physical Progress [1080 h]; Plumbing [104360 INR]; TATA Projects Ltd-25 | 104,360 |
| CB-B02-RB1-WMI-355 |  | Installation of concealed parts of toilet fixtures | 30d | 2027-12-08 | 2028-01-13 | CB-B02-RB1-WMI-140 | CSD-LKO Calender (6 day + Holiday)-25 | Physical Progress [1550 h]; Plumbing [521800 INR]; TATA Projects Ltd-25 | 521,800 |
|  | 2 | **2nd FIx** |  | 2028-01-08 | 2028-03-20 |  |  |  |  |
| CB-B02-RB1-WMI-150 |  | Insulation of hot water pipes (if applicable) | 15d | 2028-01-08 | 2028-01-25 | CB-B02-RB1-WMI-125 | CSD-LKO Calender (6 day + Holiday)-25 | Physical Progress [930 h]; Plumbing [521800 INR]; TATA Projects Ltd-25 | 521,800 |
| CB-B02-RB1-WMI-130 |  | Installation of vertical risers and main distribution lines | 35d | 2028-01-14 | 2028-02-24 | CB-B02-RB1-WMI-25, CB-B02-RB1-WMI-275, CB-B02-RB1-WMI-125, CB-B02-RB1-WMI-355 | CSD-LKO Calender (6 day + Holiday)-25 | Physical Progress [3100 h]; Plumbing [1043599 INR]; TATA Projects Ltd-25 | 1,043,599 |
| CB-B02-RB1-WMI-145 |  | Testing drainage lines for leakage/blockage | 15d | 2028-01-27 | 2028-02-12 | CB-B02-RB1-WMI-140, CB-B02-RB1-WMI-150 | CSD-LKO Calender (6 day + Holiday)-25 | Physical Progress [930 h]; Plumbing [104360 INR]; TATA Projects Ltd-25 | 104,360 |
| CB-B02-RB1-WMI-360 |  | Laying of ACO Drains | 20d | 2028-02-14 | 2028-03-07 | CB-B02-RB1-WMI-145 | CSD-LKO Calender (6 day + Holiday)-25 | ACO Drain [4080997 INR]; Physical Progress [3100 h]; TATA Projects Ltd-25 | 4,080,997 |
| CB-B02-RB1-WMI-135 |  | Fixing floor traps and gully traps | 20d | 2028-02-25 | 2028-03-20 | CB-B02-RB1-WMI-130 | CSD-LKO Calender (6 day + Holiday)-25 | Physical Progress [930 h]; Plumbing [313080 INR]; TATA Projects Ltd-25 | 313,080 |

| ID | WBS | Activity | Duration | Start | Finish | Predecessors | Calendar | Resources | Cost |
| --- | --- | --- | --- | --- | --- | --- | --- | --- | --- |
|  | 3 | **Final FIx** |  | 2028-03-08 | 2028-07-12 |  |  |  |  |
| CB-B02-RB1-WMI-365 |  | Installation of ACO Drain Grating | 7d | 2028-03-08 | 2028-03-16 | CB-B02-RB1-WMI-360 | CSD-LKO Calender (6 day + Holiday)-25 | Grating of Drain [2489760 INR]; Physical Progress [1080 h]; TATA Projects Ltd-25 | 2,489,760 |
| CB-B02-RB1-WMI-155 |  | Installation of sanitary fixtures (WC, washbasins, urinals, sinks) | 10d | 2028-05-22 | 2028-06-01 | CB-B02-RB1-WMI-280, CB-B02-RB1-WMI-135 | CSD-LKO Calender (6 day + Holiday)-25 | Physical Progress [1550 h]; Plumbing [2087198 INR]; TATA Projects Ltd-25 | 2,087,198 |
| CB-B02-RB1-WMI-160 |  | Installation of CP fittings (taps, mixers, showers, health faucets) | 10d | 2028-06-02 | 2028-06-13 | CB-B02-RB1-WMI-155, CB-B02-RB1-WMI-280 | CSD-LKO Calender (6 day + Holiday)-25 | Physical Progress [1550 h]; Plumbing [1043599 INR]; TATA Projects Ltd-25 | 1,043,599 |
| CB-B02-RB1-WMI-165 |  | Connection of appliances | 25d | 2028-06-14 | 2028-07-12 | CB-B02-RB1-WMI-160 | CSD-LKO Calender (6 day + Holiday)-25 | Physical Progress [1080 h]; Plumbing [521800 INR]; TATA Projects Ltd-25 | 521,800 |
|  | 4 | **Firefighting** |  | 2027-08-09 | 2028-08-24 |  |  |  |  |
|  | 1 | **1st Fix** |  | 2027-08-09 | 2027-12-07 |  |  |  |  |
| CB-B02-RB1-WMI-175 |  | Fixing pipe supports and hangers | 35d | 2027-08-09 | 2027-09-18 | CB-B02-RB1-WMI-15 | CSD-LKO Calender (6 day + Holiday)-25 | Physical Progress [1550 h]; Firefighting [431557 INR]; TATA Projects Ltd-25 | 431,557 |
| CB-B02-RB1-WMI-170 |  | Laying branch piping | 35d | 2027-09-20 | 2027-11-02 | CB-B02-RB1-WMI-175 | CSD-LKO Calender (6 day + Holiday)-25 | Physical Progress [2320 h]; Firefighting [924764 INR]; TATA Projects Ltd-25 | 924,764 |
| CB-B02-RB1-WMI-180 |  | Hydrostatic pressure testing of piping | 30d | 2027-11-03 | 2027-12-07 | CB-B02-RB1-WMI-170 | CSD-LKO Calender (6 day + Holiday)-25 | Physical Progress [930 h]; Firefighting [123302 INR]; TATA Projects Ltd-25 | 123,302 |
|  | 2 | **2nd Fix** |  | 2027-12-08 | 2028-03-01 |  |  |  |  |
| CB-B02-RB1-WMI-185 |  | Installation of vertical risers and distribution piping in shafts | 35d | 2027-12-08 | 2028-01-19 | CB-B02-RB1-WMI-25, CB-B02-RB1-WMI-180 | CSD-LKO Calender (6 day + Holiday)-25 | Physical Progress [3870 h]; Firefighting [1233019 INR]; TATA Projects Ltd-25 | 1,233,019 |
| CB-B02-RB1-WMI-195 |  | Painting/insulation of exposed fire pipes | 30d | 2027-12-08 | 2028-01-13 | CB-B02-RB1-WMI-180 | CSD-LKO Calender (6 day + Holiday)-25 | Physical Progress [1550 h]; Firefighting [61651 INR]; TATA Projects Ltd-25 | 61,651 |
| CB-B02-RB1-WMI-200 |  | Testing risers and branch lines for leakage | 30d | 2028-01-14 | 2028-02-18 | CB-B02-RB1-WMI-195 | CSD-LKO Calender (6 day + Holiday)-25 | Physical Progress [930 h]; Firefighting [123302 INR]; TATA Projects Ltd-25 | 123,302 |
| CB-B02-RB1-WMI-190 |  | Installation of sprinkler branch lines in ceilings | 35d | 2028-01-20 | 2028-03-01 | CB-B02-RB1-WMI-185, CB-B02-RB1-WMI-275 | CSD-LKO Calender (6 day + Holiday)-25 | Physical Progress [3870 h]; Firefighting [924764 INR]; TATA Projects Ltd-25 | 924,764 |
|  | 3 | **Final FIx** |  | 2028-05-22 | 2028-08-24 |  |  |  |  |
| CB-B02-RB1-WMI-210 |  | Installation of hydrant accessories (valves, hose reels, cabinets) | 25d | 2028-05-22 | 2028-06-19 | CB-B02-RB1-WMI-280 | CSD-LKO Calender (6 day + Holiday)-25 | Physical Progress [1550 h]; Firefighting [616510 INR]; TATA Projects Ltd-25 | 616,510 |
| CB-B02-RB1-WMI-215 |  | Installation of portable fire extinguishers | 30d | 2028-05-22 | 2028-06-24 | CB-B02-RB1-WMI-280 | CSD-LKO Calender (6 day + Holiday)-25 | Physical Progress [930 h]; Firefighting [61651 INR]; TATA Projects Ltd-25 | 61,651 |
| CB-B02-RB1-WMI-220 |  | Integration with fire alarm system | 20d | 2028-06-26 | 2028-07-18 | CB-B02-RB1-WMI-215 | CSD-LKO Calender (6 day + Holiday)-25 | Physical Progress [3100 h]; Firefighting [308255 INR]; TATA Projects Ltd-25 | 308,255 |
| CB-B02-RB1-WMI-205 |  | Installation of sprinkler heads, nozzles, and final alignment | 35d | 2028-07-13 | 2028-08-24 | CB-B02-RB1-WMI-280, CB-B02-RB1-WMI-190, CB-B02-RB1-WMI-365, CB-B02-RB1-WMI-340, CB-B02-RB1-WMI-345, CB-B02-RB1-WMI-330 | CSD-LKO Calender (6 day + Holiday)-25 | Physical Progress [6970 h]; Firefighting [924764 INR]; TATA Projects Ltd-25 | 924,764 |
|  | 5 | **ELV** |  | 2027-07-10 | 2028-07-12 |  |  |  |  |
|  | 1 | **1st Fix** |  | 2027-07-10 | 2027-09-18 |  |  |  |  |
| CB-B02-RB1-WMI-375 |  | Slab Conduiting | 25d | 2027-07-10 | 2027-08-07 | CB-B02-RB1-WMI-10 | CSD-LKO Calender (6 day + Holiday)-25 | Physical Progress [3870 h]; ELV [726016 INR]; TATA Projects Ltd-25 | 726,016 |
| CB-B02-RB1-WMI-225 |  | Wall Conduiting | 30d | 2027-08-09 | 2027-09-13 | CB-B02-RB1-WMI-15 | CSD-LKO Calender (6 day + Holiday)-25 | Physical Progress [1550 h]; ELV [311150 INR]; TATA Projects Ltd-25 | 311,150 |
| CB-B02-RB1-WMI-245 |  | Installing back boxes for switches, sockets | 5d | 2027-09-14 | 2027-09-18 | CB-B02-RB1-WMI-225, CB-B02-RB1-WMI-375 | CSD-LKO Calender (6 day + Holiday)-25 | Physical Progress [780 h]; ELV [518583 INR]; TATA Projects Ltd-25 | 518,583 |

| ID | WBS | Activity | Duration | Start | Finish | Predecessors | Calendar | Resources | Cost |
| --- | --- | --- | --- | --- | --- | --- | --- | --- | --- |
|  | 2 | **2nd Fix** |  | 2027-10-27 | 2028-02-24 |  |  |  |  |
| CB-B02-RB1-WMI-230 |  | Cable tray installation | 15d | 2027-10-27 | 2027-11-13 | CB-B02-RB1-WMI-25, CB-B02-RB1-WMI-275 | CSD-LKO Calender (6 day + Holiday)-25 | Physical Progress [3870 h]; ELV [518583 INR]; TATA Projects Ltd-25 | 518,583 |
| CB-B02-RB1-WMI-235 |  | Cabeling of ELV cable - IT/Fire Alarm/Public Address | 30d | 2027-11-15 | 2027-12-18 | CB-B02-RB1-WMI-230 | CSD-LKO Calender (6 day + Holiday)-25 | Physical Progress [6970 h]; ELV [1244599 INR]; TATA Projects Ltd-25 | 1,244,599 |
| CB-B02-RB1-WMI-320 |  | ELV Rack Installation | 15d | 2027-12-20 | 2028-01-07 | CB-B02-RB1-WMI-235 | CSD-LKO Calender (6 day + Holiday)-25 | Physical Progress [1550 h]; ELV [518583 INR]; TATA Projects Ltd-25 | 518,583 |
| CB-B02-RB1-WMI-240 |  | Termination of cables at junction boxes, patch panels, and control panels | 15d | 2028-01-08 | 2028-01-25 | CB-B02-RB1-WMI-320 | CSD-LKO Calender (6 day + Holiday)-25 | Physical Progress [4650 h]; ELV [518583 INR]; TATA Projects Ltd-25 | 518,583 |
| CB-B02-RB1-WMI-255 |  | Fixing devices like CCTV camera bases, card reader bases, smoke detector bases, PA Bases, Wifi Bases | 25d | 2028-01-27 | 2028-02-24 | CB-B02-RB1-WMI-240 | CSD-LKO Calender (6 day + Holiday)-25 | Physical Progress [620 h]; ELV [1037166 INR]; TATA Projects Ltd-25 | 1,037,166 |
|  | 3 | **3rd Fix** |  | 2028-05-22 | 2028-07-12 |  |  |  |  |
| CB-B02-RB1-WMI-250 |  | Installation of data and Voice Faceplate | 25d | 2028-05-22 | 2028-06-19 | CB-B02-RB1-WMI-280 | CSD-LKO Calender (6 day + Holiday)-25 | Physical Progress [2320 h]; ELV [518583 INR]; TATA Projects Ltd-25 | 518,583 |
| CB-B02-RB1-WMI-260 |  | Installation of Camera & Wifi | 30d | 2028-05-22 | 2028-06-24 | CB-B02-RB1-WMI-280 | CSD-LKO Calender (6 day + Holiday)-25 | Physical Progress [2320 h]; ELV [518583 INR]; TATA Projects Ltd-25 | 518,583 |
| CB-B02-RB1-WMI-265 |  | Installation of fire alarm devices + Public Address | 15d | 2028-05-22 | 2028-06-07 | CB-B02-RB1-WMI-280 | CSD-LKO Calender (6 day + Holiday)-25 | Physical Progress [2320 h]; ELV [622299 INR]; TATA Projects Ltd-25 | 622,299 |
| CB-B02-RB1-WMI-325 |  | Installation of Active System | 15d | 2028-06-08 | 2028-06-24 | CB-B02-RB1-WMI-265 | CSD-LKO Calender (6 day + Holiday)-25 | Physical Progress [2320 h]; ELV [1037166 INR]; TATA Projects Ltd-25 | 1,037,166 |
| CB-B02-RB1-WMI-335 |  | Fire Panel Intallation & Integration | 25d | 2028-06-08 | 2028-07-06 | CB-B02-RB1-WMI-265 | CSD-LKO Calender (6 day + Holiday)-25 | Physical Progress [3870 h]; ELV [518583 INR]; TATA Projects Ltd-25 | 518,583 |
| CB-B02-RB1-WMI-340 |  | Installation & Integration of Audio Visual System | 25d | 2028-06-08 | 2028-07-06 | CB-B02-RB1-WMI-265 | CSD-LKO Calender (6 day + Holiday)-25 | Physical Progress [3870 h]; ELV [518583 INR]; TATA Projects Ltd-25 | 518,583 |
| CB-B02-RB1-WMI-345 |  | Installation & Integration of Access Control | 25d | 2028-06-08 | 2028-07-06 | CB-B02-RB1-WMI-265 | CSD-LKO Calender (6 day + Holiday)-25 | Physical Progress [3870 h]; ELV [518583 INR]; TATA Projects Ltd-25 | 518,583 |
| CB-B02-RB1-WMI-330 |  | Integration of Active components | 15d | 2028-06-26 | 2028-07-12 | CB-B02-RB1-WMI-325 | CSD-LKO Calender (6 day + Holiday)-25 | Physical Progress [2320 h]; ELV [207433 INR]; TATA Projects Ltd-25 | 207,433 |
|  | 2 | **Dry Finishes** |  | 2027-08-09 | 2028-08-31 |  |  |  |  |
| CB-B02-RB1-WMI-275 |  | Painting on Ceiling (Ceiling Finish) | 15d | 2027-08-09 | 2027-08-25 | CB-B02-RB1-WMI-15 | CSD-LKO Calender (6 day + Holiday)-25 | Painting [6966 Sq m]; Painter [6980 h]; Helper [6980 h]; Physical Progress [2320 h]; TATA Projects Ltd-25 | 1,592,566.92 |
| CB-B02-RB1-WMI-270 |  | Installation of Gypsum Board | 10d | 2028-04-26 | 2028-05-09 | CB-B02-RB1-WMI-20 | CSD-LKO Calender (6 day + Holiday)-25 | ID Work [663140 INR]; Physical Progress [1550 h]; TATA Projects Ltd-25 | 663,140 |
| CB-B02-RB1-WMI-385 |  | Civil Misc Works | 30d | 2028-04-26 | 2028-06-01 | CB-B02-RB1-WMI-20 | CSD-LKO Calender (6 day + Holiday)-25 | Civil Misc Works [1689710 INR]; Physical Progress [4650 h]; TATA Projects Ltd-25 | 1,689,710 |
| CB-B02-RB1-WMI-280 |  | Wall Painting first coat including putty | 10d | 2028-05-10 | 2028-05-20 | CB-B02-RB1-WMI-270 | CSD-LKO Calender (6 day + Holiday)-25 | Painting [6966 Sq m]; Painter [6970 h]; Helper [6970 h]; Physical Progress [1550 h]; TATA Projects Ltd-25 | 1,592,566.92 |
| CB-B02-RB1-WMI-295 |  | Wheel stoppers | 8d | 2028-05-22 | 2028-05-30 | CB-B02-RB1-WMI-280 | CSD-LKO Calender (6 day + Holiday)-25 | Wheel Stopper [8624 INR]; Physical Progress [1240 h]; TATA Projects Ltd-25 | 8,624 |
| CB-B02-RB1-WMI-350 |  | Door & Window | 10d | 2028-05-22 | 2028-06-01 | CB-B02-RB1-WMI-280 | CSD-LKO Calender (6 day + Holiday)-25 | ID Work [663140 INR]; Physical Progress [1550 h]; TATA Projects Ltd-25 | 663,140 |
| CB-B02-RB1-WMI-290 |  | Line marking for parking bays, arrows, pedestrian paths | 8d | 2028-05-31 | 2028-06-08 | CB-B02-RB1-WMI-295 | CSD-LKO Calender (6 day + Holiday)-25 | Line / Arrow Marking [569181 INR]; Physical Progress [1240 h]; TATA Projects Ltd-25 | 569,181 |
| CB-B02-RB1-WMI-285 |  | Wall painting final coat | 6d | 2028-08-25 | 2028-08-31 | CB-B02-RB1-WMI-290, CB-B02-RB1-WMI-250, CB-B02-RB1-WMI-260, CB-B02-RB1-WMI-220, CB-B02-RB1-WMI-205, CB-B02-RB1-WMI-210, CB-B02-RB1-WMI-215, CB-B02-RB1-WMI-165, CB-B02-RB1-WMI-45, CB-B02-RB1-WMI-100, CB-B02-RB1-WMI-335, CB-B02-RB1-WMI-350, CB-B02-RB1-WMI-385, CB-B02-HS-MEP10, CB-B02-HS-MEP15, CB-B02-HS-MEP25, CB-B02-HS-MEP30 | CSD-LKO Calender (6 day + Holiday)-25 | Painting [6966 Sq m]; Painter [6970 h]; Helper [6970 h]; Physical Progress [930 h]; TATA Projects Ltd-25 | 1,592,566.92 |

| ID | WBS | Activity | Duration | Start | Finish | Predecessors | Calendar | Resources | Cost |
| --- | --- | --- | --- | --- | --- | --- | --- | --- | --- |
|  | 6 | **Convention Center** |  | 2027-05-22 | 2028-06-27 |  |  |  |  |
|  | 1 | **Wet Finishes** |  | 2027-05-22 | 2028-03-15 |  |  |  |  |
| CB-B02-CC-WMI-10 |  | Deshuttering | 7d | 2027-05-22 | 2027-05-31 | CC-SS-GF425, CC-SS-B02.665, CC-SS-B02.660 | CSD-LKO Calender (6 day + Holiday)-25 | Physical Progress [1080 h]; TATA Projects Ltd-25 |  |
| CB-B02-CC-WMI-15 |  | Brickwork/Blockwork | 25d | 2027-05-31 | 2027-06-29 | CB-B02-CC-WMI-10 | CSD-LKO Calender (6 day + Holiday)-25 | Masonry [366 CuM]; Mason [2440 h]; Helper [1220 h]; Physical Progress [6970 h]; TATA Projects Ltd-25 | 3,489,941.76 |
| CB-B02-CC-WMI-395 |  | Structural Misc Works | 50d | 2027-05-31 | 2027-07-28 | CB-B02-CC-WMI-10 | CSD-LKO Calender (6 day + Holiday)-25 | Structural Misc Works [818513 INR]; Physical Progress [7750 h]; TATA Projects Ltd-25 | 818,513 |
| CB-B02-CC-WMI-25 |  | Plaster | 30d | 2027-08-09 | 2027-09-14 | CB-B02-CC-WMI-30, CB-B02-CC-WMI-60, CB-B02-CC-WMI-245, CB-B02-CC-WMI-395 | CSD-LKO Calender (6 day + Holiday)-25 | Plaster [11985 Sqr Mtr]; Mason [7990 h]; Helper [4000 h]; Physical Progress [4650 h]; TATA Projects Ltd-25 | 6,638,611.35 |
| CB-B02-CC-WMI-20 |  | Flooring | 25d | 2028-02-14 | 2028-03-15 | CB-B02-CC-WMI-15, CB-B02-CC-WMI-395, CB-B02-CC-WMI-80, CB-B02-CC-WMI-85, CB-B02-CC-WMI-90, CB-B02-CC-WMI-300, CB-B02-CC-WMI-95, CB-B02-CC-WMI-35, CB-B02-CC-WMI-40, CB-B02-CC-WMI-50, CB-B02-CC-WMI-310, CB-B02-CC-WMI-405, CB-B02-CC-WMI-315, CB-B02-CC-WMI-150, CB-B02-CC-WMI-130, CB-B02-CC-WMI-145, CB-B02-CC-WMI-135, CB-B02-CC-WMI-375, CB-B02-CC-WMI-185, CB-B02-CC-WMI-195, CB-B02-CC-WMI-200, CB-B02-CC-WMI-190, CB-B02-CC-WMI-230, CB-B02-CC-WMI-235, CB-B02-CC-WMI-320, CB-B02-CC-WMI-240, CB-B02-CC-WMI-255 | CSD-LKO Calender (6 day + Holiday)-25 | Flooring [17548054 INR]; Flooring Mason [8800 h]; Helper [8800 h]; Physical Progress [7750 h]; TATA Projects Ltd-25 | 17,548,054 |
|  | 3 | **Water Tanks** |  | 2027-05-31 | 2027-08-14 |  |  |  |  |
| CB-B02-CC-WMI-365 |  | Installation of Rungs | 10d | 2027-05-31 | 2027-06-11 | CB-B02-CC-WMI-10 | CSD-LKO Calender (6 day + Holiday)-25 | Rungs [364811 INR]; Physical Progress [1550 h]; TATA Projects Ltd-25 | 364,811 |
| CB-B02-CC-WMI-355 |  | Waterproofing | 30d | 2027-06-11 | 2027-07-16 | CB-B02-CC-WMI-365 | CSD-LKO Calender (6 day + Holiday)-25 | Waterproofing [8564838 INR]; Waterprrofing Mason [8160 h]; Helper [4080 h]; Physical Progress [4650 h]; TATA Projects Ltd-25 | 8,564,838 |
| CB-B02-CC-WMI-360 |  | Flooring | 25d | 2027-07-16 | 2027-08-14 | CB-B02-CC-WMI-355 | CSD-LKO Calender (6 day + Holiday)-25 | Flooring [10967534 INR]; Flooring Mason [5490 h]; Helper [5490 h]; Physical Progress [4650 h]; TATA Projects Ltd-25 | 10,967,534 |
|  | 5 | **Low Side MEP** |  | 2027-05-31 | 2028-06-20 |  |  |  |  |
|  | 2 | **HVAC** |  | 2027-06-29 | 2028-06-20 |  |  |  |  |
|  | 1 | **1st Fix** |  | 2027-06-29 | 2027-10-21 |  |  |  |  |
| CB-B02-CC-WMI-305 |  | Duct Support Fabrication | 35d | 2027-06-29 | 2027-08-09 | CB-B02-CC-WMI-15 | CSD-LKO Calender (6 day + Holiday)-25 | Physical Progress [2320 h]; HVAC [210890 INR]; TATA Projects Ltd-25 | 210,890 |
| CB-B02-CC-WMI-65 |  | Installing duct hangers and supports | 30d | 2027-08-09 | 2027-09-14 | CB-B02-CC-WMI-275, CB-B02-CC-WMI-305 | CSD-LKO Calender (6 day + Holiday)-25 | Physical Progress [1550 h]; HVAC [421779 INR]; TATA Projects Ltd-25 | 421,779 |
| CB-B02-CC-WMI-70 |  | Laying concealed/exposed refrigerant piping | 30d | 2027-09-14 | 2027-10-21 | CB-B02-CC-WMI-65 | CSD-LKO Calender (6 day + Holiday)-25 | Physical Progress [2320 h]; HVAC [105445 INR]; TATA Projects Ltd-25 | 105,445 |
| CB-B02-CC-WMI-75 |  | Laying concealed/exposed drain piping | 30d | 2027-09-14 | 2027-10-21 | CB-B02-CC-WMI-65 | CSD-LKO Calender (6 day + Holiday)-25 | Physical Progress [1550 h]; HVAC [632669 INR]; TATA Projects Ltd-25 | 632,669 |
|  | 2 | **2nd Fix** |  | 2027-09-14 | 2028-02-02 |  |  |  |  |
| CB-B02-CC-WMI-80 |  | Duct installation | 20d | 2027-09-14 | 2027-10-08 | CB-B02-CC-WMI-65 | CSD-LKO Calender (6 day + Holiday)-25 | Physical Progress [2320 h]; HVAC [1581672 INR]; TATA Projects Ltd-25 | 1,581,672 |
| CB-B02-CC-WMI-85 |  | Insulation of ducts (thermal/acoustic) | 15d | 2027-10-08 | 2027-10-27 | CB-B02-CC-WMI-80 | CSD-LKO Calender (6 day + Holiday)-25 | Physical Progress [930 h]; HVAC [949003 INR]; TATA Projects Ltd-25 | 949,003 |
| CB-B02-CC-WMI-90 |  | Installation of chilled water piping / VRF piping | 15d | 2027-10-27 | 2027-11-15 | CB-B02-CC-WMI-85 | CSD-LKO Calender (6 day + Holiday)-25 | Physical Progress [930 h]; HVAC [2108896 INR]; TATA Projects Ltd-25 | 2,108,896 |
| CB-B02-CC-WMI-300 |  | Installation of indoor units including AHU, FCU | 45d | 2027-11-15 | 2028-01-08 | CB-B02-CC-WMI-90, CB-B02-CC-WMI-70, CB-B02-CC-WMI-75 | CSD-LKO Calender (6 day + Holiday)-25 | Physical Progress [6970 h]; HVAC [1898006 INR]; TATA Projects Ltd-25 | 1,898,006 |
| CB-B02-CC-WMI-95 |  | Connecting refrigerant and drain piping to indoor units | 20d | 2028-01-08 | 2028-02-02 | CB-B02-CC-WMI-300 | CSD-LKO Calender (6 day + Holiday)-25 | Physical Progress [930 h]; HVAC [527224 INR]; TATA Projects Ltd-25 | 527,224 |

| ID | WBS | Activity | Duration | Start | Finish | Predecessors | Calendar | Resources | Cost |
| --- | --- | --- | --- | --- | --- | --- | --- | --- | --- |
|  | 3 | **Final Fix** |  | 2028-04-07 | 2028-06-20 |  |  |  |  |
| CB-B02-CC-WMI-105 |  | Installing grills, diffusers, dampers | 30d | 2028-04-07 | 2028-05-16 | CB-B02-CC-WMI-280 | CSD-LKO Calender (6 day + Holiday)-25 | Physical Progress [930 h]; HVAC [1054448 INR]; TATA Projects Ltd-25 | 1,054,448 |
| CB-B02-CC-WMI-100 |  | Installation of thermostats and control panels | 30d | 2028-05-16 | 2028-06-20 | CB-B02-CC-WMI-105 | CSD-LKO Calender (6 day + Holiday)-25 | Physical Progress [930 h]; HVAC [527224 INR]; TATA Projects Ltd-25 | 527,224 |
|  | 1 | **Electrical** |  | 2027-05-31 | 2028-05-27 |  |  |  |  |
|  | 1 | **1st Fix** |  | 2027-05-31 | 2027-08-09 |  |  |  |  |
| CB-B02-CC-WMI-385 |  | Slab Conduiting | 25d | 2027-05-31 | 2027-06-29 | CB-B02-CC-WMI-10 | CSD-LKO Calender (6 day + Holiday)-25 | Physical Progress [3870 h]; Electrical [926153 INR]; TATA Projects Ltd-25 | 926,153 |
| CB-B02-CC-WMI-30 |  | Wall Conduiting | 30d | 2027-06-29 | 2027-08-03 | CB-B02-CC-WMI-15 | CSD-LKO Calender (6 day + Holiday)-25 | Physical Progress [1550 h]; Electrical [463076 INR]; TATA Projects Ltd-25 | 463,076 |
| CB-B02-CC-WMI-60 |  | Installing back boxes for switches, sockets | 5d | 2027-08-03 | 2027-08-09 | CB-B02-CC-WMI-30, CB-B02-CC-WMI-385 | CSD-LKO Calender (6 day + Holiday)-25 | Physical Progress [780 h]; Electrical [277846 INR]; TATA Projects Ltd-25 | 277,846 |
|  | 2 | **2nd Fix** |  | 2027-09-14 | 2028-02-14 |  |  |  |  |
| CB-B02-CC-WMI-35 |  | Cable tray laying | 15d | 2027-09-14 | 2027-10-01 | CB-B02-CC-WMI-25, CB-B02-CC-WMI-275 | CSD-LKO Calender (6 day + Holiday)-25 | Physical Progress [3870 h]; Electrical [370461 INR]; TATA Projects Ltd-25 | 370,461 |
| CB-B02-CC-WMI-40 |  | Cabling & Wire Pulling | 45d | 2027-10-01 | 2027-11-26 | CB-B02-CC-WMI-35 | CSD-LKO Calender (6 day + Holiday)-25 | Physical Progress [6970 h]; Electrical [1852305 INR]; TATA Projects Ltd-25 | 1,852,305 |
| CB-B02-CC-WMI-50 |  | DB fixing and connecting | 20d | 2027-11-26 | 2027-12-20 | CB-B02-CC-WMI-40 | CSD-LKO Calender (6 day + Holiday)-25 | Physical Progress [2320 h]; Electrical [277846 INR]; TATA Projects Ltd-25 | 277,846 |
| CB-B02-CC-WMI-310 |  | Floor/Distribution Panel Installation | 15d | 2027-12-20 | 2028-01-08 | CB-B02-CC-WMI-50 | CSD-LKO Calender (6 day + Holiday)-25 | Physical Progress [780 h]; Electrical [740922 INR]; TATA Projects Ltd-25 | 740,922 |
| CB-B02-CC-WMI-405 |  | Floor Rising Main Installation | 15d | 2028-01-08 | 2028-01-27 | CB-B02-CC-WMI-310 | CSD-LKO Calender (6 day + Holiday)-25 | Physical Progress [1550 h]; Electrical [1296614 INR]; TATA Projects Ltd-25 | 1,296,614 |
| CB-B02-CC-WMI-315 |  | Equipment Earthing | 15d | 2028-01-27 | 2028-02-14 | CB-B02-CC-WMI-310, CB-B02-CC-WMI-405 | CSD-LKO Calender (6 day + Holiday)-25 | Physical Progress [1550 h]; Electrical [277846 INR]; TATA Projects Ltd-25 | 277,846 |
|  | 3 | **Final Fix** |  | 2028-04-07 | 2028-05-27 |  |  |  |  |
| CB-B02-CC-WMI-55 |  | Switches & Socket | 20d | 2028-04-07 | 2028-05-03 | CB-B02-CC-WMI-280 | CSD-LKO Calender (6 day + Holiday)-25 | Physical Progress [3100 h]; Electrical [926153 INR]; TATA Projects Ltd-25 | 926,153 |
| CB-B02-CC-WMI-45 |  | Light Fixtures | 20d | 2028-05-03 | 2028-05-27 | CB-B02-CC-WMI-55, CB-B02-CC-WMI-315 | CSD-LKO Calender (6 day + Holiday)-25 | Physical Progress [2320 h]; Electrical [1389229 INR]; TATA Projects Ltd-25 | 1,389,229 |
|  | 3 | **Plumbing** |  | 2027-06-29 | 2028-06-02 |  |  |  |  |
|  | 1 | **1st Fix** |  | 2027-06-29 | 2027-12-02 |  |  |  |  |
| CB-B02-CC-WMI-120 |  | Fixing pipe supports and clamps | 35d | 2027-06-29 | 2027-08-09 | CB-B02-CC-WMI-15 | CSD-LKO Calender (6 day + Holiday)-25 | Physical Progress [1550 h]; Plumbing [521800 INR]; TATA Projects Ltd-25 | 521,800 |
| CB-B02-CC-WMI-110 |  | Laying water supply pipes (hot & cold) | 35d | 2027-08-09 | 2027-09-20 | CB-B02-CC-WMI-120 | CSD-LKO Calender (6 day + Holiday)-25 | Physical Progress [2320 h]; Plumbing [1043599 INR]; TATA Projects Ltd-25 | 1,043,599 |
| CB-B02-CC-WMI-115 |  | Laying drainage pipes (soil, waste, vent) | 35d | 2027-08-09 | 2027-09-20 | CB-B02-CC-WMI-120 | CSD-LKO Calender (6 day + Holiday)-25 | Physical Progress [2320 h]; Plumbing [1043599 INR]; TATA Projects Ltd-25 | 1,043,599 |
| CB-B02-CC-WMI-140 |  | Installation of plumbing fixture base supports (WC frames, sink brackets) | 30d | 2027-09-20 | 2027-10-27 | CB-B02-CC-WMI-115 | CSD-LKO Calender (6 day + Holiday)-25 | Physical Progress [930 h]; Plumbing [521800 INR]; TATA Projects Ltd-25 | 521,800 |
| CB-B02-CC-WMI-125 |  | Pressure testing of water supply lines | 25d | 2027-10-27 | 2027-11-26 | CB-B02-CC-WMI-110, CB-B02-CC-WMI-115, CB-B02-CC-WMI-140 | CSD-LKO Calender (6 day + Holiday)-25 | Physical Progress [1080 h]; Plumbing [104360 INR]; TATA Projects Ltd-25 | 104,360 |
| CB-B02-CC-WMI-370 |  | Installation of concealed parts of toilet fixtures | 30d | 2027-10-27 | 2027-12-02 | CB-B02-CC-WMI-140 | CSD-LKO Calender (6 day + Holiday)-25 | Physical Progress [1550 h]; Plumbing [521800 INR]; TATA Projects Ltd-25 | 521,800 |

| ID | WBS | Activity | Duration | Start | Finish | Predecessors | Calendar | Resources | Cost |
| --- | --- | --- | --- | --- | --- | --- | --- | --- | --- |
|  | 2 | **2nd FIx** |  | 2027-11-26 | 2028-02-08 |  |  |  |  |
| CB-B02-CC-WMI-150 |  | Insulation of hot water pipes (if applicable) | 15d | 2027-11-26 | 2027-12-14 | CB-B02-CC-WMI-125 | CSD-LKO Calender (6 day + Holiday)-25 | Physical Progress [930 h]; Plumbing [521800 INR]; TATA Projects Ltd-25 | 521,800 |
| CB-B02-CC-WMI-130 |  | Installation of vertical risers and main distribution lines | 35d | 2027-12-02 | 2028-01-14 | CB-B02-CC-WMI-25, CB-B02-CC-WMI-275, CB-B02-CC-WMI-125, CB-B02-CC-WMI-370 | CSD-LKO Calender (6 day + Holiday)-25 | Physical Progress [3100 h]; Plumbing [1043599 INR]; TATA Projects Ltd-25 | 1,043,599 |
| CB-B02-CC-WMI-145 |  | Testing drainage lines for leakage/blockage | 15d | 2027-12-14 | 2028-01-03 | CB-B02-CC-WMI-140, CB-B02-CC-WMI-150 | CSD-LKO Calender (6 day + Holiday)-25 | Physical Progress [930 h]; Plumbing [104360 INR]; TATA Projects Ltd-25 | 104,360 |
| CB-B02-CC-WMI-375 |  | Laying of ACO Drains | 20d | 2028-01-03 | 2028-01-27 | CB-B02-CC-WMI-145 | CSD-LKO Calender (6 day + Holiday)-25 | ACO Drain [4080997 INR]; Physical Progress [3100 h]; TATA Projects Ltd-25 | 4,080,997 |
| CB-B02-CC-WMI-135 |  | Fixing floor traps and gully traps | 20d | 2028-01-14 | 2028-02-08 | CB-B02-CC-WMI-130 | CSD-LKO Calender (6 day + Holiday)-25 | Physical Progress [930 h]; Plumbing [313080 INR]; TATA Projects Ltd-25 | 313,080 |
|  | 3 | **Final FIx** |  | 2028-01-27 | 2028-06-02 |  |  |  |  |
| CB-B02-CC-WMI-380 |  | Installation of ACO Drain Grating | 7d | 2028-01-27 | 2028-02-04 | CB-B02-CC-WMI-375 | CSD-LKO Calender (6 day + Holiday)-25 | Grating of Drain [2489760 INR]; Physical Progress [1080 h]; TATA Projects Ltd-25 | 2,489,760 |
| CB-B02-CC-WMI-155 |  | Installation of sanitary fixtures (WC, washbasins, urinals, sinks) | 10d | 2028-04-07 | 2028-04-20 | CB-B02-CC-WMI-280, CB-B02-CC-WMI-135 | CSD-LKO Calender (6 day + Holiday)-25 | Physical Progress [1550 h]; Plumbing [2087198 INR]; TATA Projects Ltd-25 | 2,087,198 |
| CB-B02-CC-WMI-160 |  | Installation of CP fittings (taps, mixers, showers, health faucets) | 10d | 2028-04-20 | 2028-05-03 | CB-B02-CC-WMI-155, CB-B02-CC-WMI-280 | CSD-LKO Calender (6 day + Holiday)-25 | Physical Progress [1550 h]; Plumbing [1043599 INR]; TATA Projects Ltd-25 | 1,043,599 |
| CB-B02-CC-WMI-165 |  | Connection of appliances | 25d | 2028-05-03 | 2028-06-02 | CB-B02-CC-WMI-160 | CSD-LKO Calender (6 day + Holiday)-25 | Physical Progress [1080 h]; Plumbing [521800 INR]; TATA Projects Ltd-25 | 521,800 |
|  | 4 | **Firefighting** |  | 2027-06-29 | 2028-06-08 |  |  |  |  |
|  | 1 | **1st Fix** |  | 2027-06-29 | 2027-10-27 |  |  |  |  |
| CB-B02-CC-WMI-175 |  | Fixing pipe supports and hangers | 35d | 2027-06-29 | 2027-08-09 | CB-B02-CC-WMI-15 | CSD-LKO Calender (6 day + Holiday)-25 | Physical Progress [1550 h]; Firefighting [431557 INR]; TATA Projects Ltd-25 | 431,557 |
| CB-B02-CC-WMI-170 |  | Laying branch piping | 35d | 2027-08-09 | 2027-09-20 | CB-B02-CC-WMI-175 | CSD-LKO Calender (6 day + Holiday)-25 | Physical Progress [2320 h]; Firefighting [924764 INR]; TATA Projects Ltd-25 | 924,764 |
| CB-B02-CC-WMI-180 |  | Hydrostatic pressure testing of piping | 30d | 2027-09-20 | 2027-10-27 | CB-B02-CC-WMI-170 | CSD-LKO Calender (6 day + Holiday)-25 | Physical Progress [930 h]; Firefighting [123302 INR]; TATA Projects Ltd-25 | 123,302 |
|  | 2 | **2nd Fix** |  | 2027-10-27 | 2028-01-20 |  |  |  |  |
| CB-B02-CC-WMI-185 |  | Installation of vertical risers and distribution piping in shafts | 35d | 2027-10-27 | 2027-12-08 | CB-B02-CC-WMI-25, CB-B02-CC-WMI-180 | CSD-LKO Calender (6 day + Holiday)-25 | Physical Progress [3870 h]; Firefighting [1233019 INR]; TATA Projects Ltd-25 | 1,233,019 |
| CB-B02-CC-WMI-195 |  | Painting/insulation of exposed fire pipes | 30d | 2027-10-27 | 2027-12-02 | CB-B02-CC-WMI-180 | CSD-LKO Calender (6 day + Holiday)-25 | Physical Progress [1550 h]; Firefighting [61651 INR]; TATA Projects Ltd-25 | 61,651 |
| CB-B02-CC-WMI-200 |  | Testing risers and branch lines for leakage | 30d | 2027-12-02 | 2028-01-08 | CB-B02-CC-WMI-195 | CSD-LKO Calender (6 day + Holiday)-25 | Physical Progress [930 h]; Firefighting [123302 INR]; TATA Projects Ltd-25 | 123,302 |
| CB-B02-CC-WMI-190 |  | Installation of sprinkler branch lines in ceilings | 35d | 2027-12-08 | 2028-01-20 | CB-B02-CC-WMI-185, CB-B02-CC-WMI-275 | CSD-LKO Calender (6 day + Holiday)-25 | Physical Progress [3870 h]; Firefighting [924764 INR]; TATA Projects Ltd-25 | 924,764 |
|  | 3 | **Final FIx** |  | 2028-04-07 | 2028-06-08 |  |  |  |  |
| CB-B02-CC-WMI-205 |  | Installation of sprinkler heads, nozzles, and final alignment | 35d | 2028-04-07 | 2028-05-22 | CB-B02-CC-WMI-280, CB-B02-CC-WMI-190 | CSD-LKO Calender (6 day + Holiday)-25 | Physical Progress [6970 h]; Firefighting [924764 INR]; TATA Projects Ltd-25 | 924,764 |
| CB-B02-CC-WMI-210 |  | Installation of hydrant accessories (valves, hose reels, cabinets) | 25d | 2028-04-07 | 2028-05-10 | CB-B02-CC-WMI-280 | CSD-LKO Calender (6 day + Holiday)-25 | Physical Progress [1550 h]; Firefighting [616510 INR]; TATA Projects Ltd-25 | 616,510 |
| CB-B02-CC-WMI-215 |  | Installation of portable fire extinguishers | 30d | 2028-04-07 | 2028-05-16 | CB-B02-CC-WMI-280 | CSD-LKO Calender (6 day + Holiday)-25 | Physical Progress [930 h]; Firefighting [61651 INR]; TATA Projects Ltd-25 | 61,651 |
| CB-B02-CC-WMI-220 |  | Integration with fire alarm system | 20d | 2028-05-16 | 2028-06-08 | CB-B02-CC-WMI-215 | CSD-LKO Calender (6 day + Holiday)-25 | Physical Progress [3100 h]; Firefighting [308255 INR]; TATA Projects Ltd-25 | 308,255 |

| ID | WBS | Activity | Duration | Start | Finish | Predecessors | Calendar | Resources | Cost |
| --- | --- | --- | --- | --- | --- | --- | --- | --- | --- |
|  | 5 | **ELV** |  | 2027-05-31 | 2028-06-02 |  |  |  |  |
|  | 1 | **1st Fix** |  | 2027-05-31 | 2027-08-09 |  |  |  |  |
| CB-B02-CC-WMI-390 |  | Slab Conduiting | 25d | 2027-05-31 | 2027-06-29 | CB-B02-CC-WMI-10 | CSD-LKO Calender (6 day + Holiday)-25 | Physical Progress [3870 h]; ELV [726016 INR]; TATA Projects Ltd-25 | 726,016 |
| CB-B02-CC-WMI-225 |  | Wall Conduiting | 30d | 2027-06-29 | 2027-08-03 | CB-B02-CC-WMI-15 | CSD-LKO Calender (6 day + Holiday)-25 | Physical Progress [1550 h]; ELV [311150 INR]; TATA Projects Ltd-25 | 311,150 |
| CB-B02-CC-WMI-245 |  | Installing back boxes for switches, sockets | 5d | 2027-08-03 | 2027-08-09 | CB-B02-CC-WMI-225, CB-B02-CC-WMI-390 | CSD-LKO Calender (6 day + Holiday)-25 | Physical Progress [780 h]; ELV [518583 INR]; TATA Projects Ltd-25 | 518,583 |
|  | 2 | **2nd Fix** |  | 2027-09-14 | 2028-01-14 |  |  |  |  |
| CB-B02-CC-WMI-230 |  | Cable tray installation | 15d | 2027-09-14 | 2027-10-01 | CB-B02-CC-WMI-25, CB-B02-CC-WMI-275 | CSD-LKO Calender (6 day + Holiday)-25 | Physical Progress [3870 h]; ELV [518583 INR]; TATA Projects Ltd-25 | 518,583 |
| CB-B02-CC-WMI-235 |  | Cabeling of ELV cable - IT/Fire Alarm/Public Address | 30d | 2027-10-01 | 2027-11-09 | CB-B02-CC-WMI-230 | CSD-LKO Calender (6 day + Holiday)-25 | Physical Progress [6970 h]; ELV [1244599 INR]; TATA Projects Ltd-25 | 1,244,599 |
| CB-B02-CC-WMI-320 |  | ELV Rack Installation | 15d | 2027-11-09 | 2027-11-26 | CB-B02-CC-WMI-235 | CSD-LKO Calender (6 day + Holiday)-25 | Physical Progress [1550 h]; ELV [518583 INR]; TATA Projects Ltd-25 | 518,583 |
| CB-B02-CC-WMI-240 |  | Termination of cables at junction boxes, patch panels, and control panels | 15d | 2027-11-26 | 2027-12-14 | CB-B02-CC-WMI-320 | CSD-LKO Calender (6 day + Holiday)-25 | Physical Progress [4650 h]; ELV [518583 INR]; TATA Projects Ltd-25 | 518,583 |
| CB-B02-CC-WMI-255 |  | Fixing devices like CCTV camera bases, card reader bases, smoke detector bases, PA Bases, Wifi Bases | 25d | 2027-12-14 | 2028-01-14 | CB-B02-CC-WMI-240 | CSD-LKO Calender (6 day + Holiday)-25 | Physical Progress [620 h]; ELV [1037166 INR]; TATA Projects Ltd-25 | 1,037,166 |
|  | 3 | **3rd Fix** |  | 2028-04-07 | 2028-06-02 |  |  |  |  |
| CB-B02-CC-WMI-250 |  | Installation of data and Voice Faceplate | 25d | 2028-04-07 | 2028-05-10 | CB-B02-CC-WMI-280 | CSD-LKO Calender (6 day + Holiday)-25 | Physical Progress [2320 h]; ELV [518583 INR]; TATA Projects Ltd-25 | 518,583 |
| CB-B02-CC-WMI-260 |  | Installation of Camera & Wifi | 30d | 2028-04-07 | 2028-05-16 | CB-B02-CC-WMI-280 | CSD-LKO Calender (6 day + Holiday)-25 | Physical Progress [2320 h]; ELV [518583 INR]; TATA Projects Ltd-25 | 518,583 |
| CB-B02-CC-WMI-265 |  | Installation of fire alarm devices + Public Address | 15d | 2028-04-07 | 2028-04-26 | CB-B02-CC-WMI-280 | CSD-LKO Calender (6 day + Holiday)-25 | Physical Progress [2320 h]; ELV [622299 INR]; TATA Projects Ltd-25 | 622,299 |
| CB-B02-CC-WMI-325 |  | Installation of Active System | 15d | 2028-04-26 | 2028-05-16 | CB-B02-CC-WMI-265 | CSD-LKO Calender (6 day + Holiday)-25 | Physical Progress [2320 h]; ELV [1037166 INR]; TATA Projects Ltd-25 | 1,037,166 |
| CB-B02-CC-WMI-335 |  | Fire Panel Intallation & Integration | 25d | 2028-04-26 | 2028-05-27 | CB-B02-CC-WMI-265 | CSD-LKO Calender (6 day + Holiday)-25 | Physical Progress [3870 h]; ELV [518583 INR]; TATA Projects Ltd-25 | 518,583 |
| CB-B02-CC-WMI-340 |  | Installation & Integration of Audio Visual System | 25d | 2028-04-26 | 2028-05-27 | CB-B02-CC-WMI-265 | CSD-LKO Calender (6 day + Holiday)-25 | Physical Progress [3870 h]; ELV [518583 INR]; TATA Projects Ltd-25 | 518,583 |
| CB-B02-CC-WMI-345 |  | Installation & Integration of Access Control | 25d | 2028-04-26 | 2028-05-27 | CB-B02-CC-WMI-265 | CSD-LKO Calender (6 day + Holiday)-25 | Physical Progress [3870 h]; ELV [518583 INR]; TATA Projects Ltd-25 | 518,583 |
| CB-B02-CC-WMI-330 |  | Integration of Active components | 15d | 2028-05-16 | 2028-06-02 | CB-B02-CC-WMI-325 | CSD-LKO Calender (6 day + Holiday)-25 | Physical Progress [2320 h]; ELV [207433 INR]; TATA Projects Ltd-25 | 207,433 |
|  | 2 | **Dry Finishes** |  | 2027-06-29 | 2028-06-27 |  |  |  |  |
| CB-B02-CC-WMI-275 |  | Painting on Ceiling (Ceiling Finish) | 15d | 2027-06-29 | 2027-07-16 | CB-B02-CC-WMI-15 | CSD-LKO Calender (6 day + Holiday)-25 | Painting [6966 Sq m]; Painter [6980 h]; Helper [6980 h]; Physical Progress [2320 h]; TATA Projects Ltd-25 | 1,592,566.92 |
| CB-B02-CC-WMI-270 |  | Installation of Gypsum Board | 10d | 2028-03-15 | 2028-03-27 | CB-B02-CC-WMI-20 | CSD-LKO Calender (6 day + Holiday)-25 | ID Work [663140 INR]; Physical Progress [1550 h]; TATA Projects Ltd-25 | 663,140 |
| CB-B02-CC-WMI-400 |  | Civil Misc Works | 30d | 2028-03-15 | 2028-04-20 | CB-B02-CC-WMI-20 | CSD-LKO Calender (6 day + Holiday)-25 | Civil Misc Works [1689710 INR]; Physical Progress [4650 h]; TATA Projects Ltd-25 | 1,689,710 |
| CB-B02-CC-WMI-280 |  | Wall Painting first coat including putty | 10d | 2028-03-27 | 2028-04-07 | CB-B02-CC-WMI-270 | CSD-LKO Calender (6 day + Holiday)-25 | Painting [6966 Sq m]; Painter [6970 h]; Helper [6970 h]; Physical Progress [1550 h]; TATA Projects Ltd-25 | 1,592,566.92 |
| CB-B02-CC-WMI-295 |  | Wheel stoppers | 8d | 2028-04-07 | 2028-04-18 | CB-B02-CC-WMI-280 | CSD-LKO Calender (6 day + Holiday)-25 | Wheel Stopper [8624 INR]; Physical Progress [1240 h]; TATA Projects Ltd-25 | 8,624 |
| CB-B02-CC-WMI-350 |  | Door & Window | 10d | 2028-04-07 | 2028-04-20 | CB-B02-CC-WMI-280 | CSD-LKO Calender (6 day + Holiday)-25 | ID Work [663140 INR]; Physical Progress [1550 h]; TATA Projects Ltd-25 | 663,140 |
| CB-B02-CC-WMI-290 |  | Line marking for parking bays, arrows, pedestrian paths | 8d | 2028-04-18 | 2028-04-27 | CB-B02-CC-WMI-295 | CSD-LKO Calender (6 day + Holiday)-25 | Line / Arrow Marking [569181 INR]; Physical Progress [1240 h]; TATA Projects Ltd-25 | 569,181 |
| CB-B02-CC-WMI-285 |  | Wall painting final coat | 6d | 2028-06-20 | 2028-06-27 | CB-B02-CC-WMI-290, CB-B02-CC-WMI-250, CB-B02-CC-WMI-260, CB-B02-CC-WMI-220, CB-B02-CC-WMI-205, CB-B02-CC-WMI-210, CB-B02-CC-WMI-215, CB-B02-CC-WMI-165, CB-B02-CC-WMI-45, CB-B02-CC-WMI-100, CB-B02-CC-WMI-335, CB-B02-CC-WMI-350, CB-B02-CC-WMI-380, CB-B02-CC-WMI-340, CB-B02-CC-WMI-345, CB-B02-CC-WMI-330, CB-B02-CC-WMI-400, CB-B02-HS-MEP10, CB-B02-HS-MEP15, CB-B02-HS-MEP25, CB-B02-HS-MEP30 | CSD-LKO Calender (6 day + Holiday)-25 | Painting [6966 Sq m]; Painter [6970 h]; Helper [6970 h]; Physical Progress [930 h]; TATA Projects Ltd-25 | 1,592,566.92 |

| ID | WBS | Activity | Duration | Start | Finish | Predecessors | Calendar | Resources | Cost |
| --- | --- | --- | --- | --- | --- | --- | --- | --- | --- |
|  | 3 | **High Side MEP** |  | 2027-09-14 | 2028-05-26 |  |  |  |  |
|  | 1 | **Civil Work** |  | 2027-09-14 | 2027-10-21 |  |  |  |  |
| CB-B02-HS-MEP20 |  | Construction of pedestals for the Equipments | 30d | 2027-09-14 | 2027-10-21 | CB-B02-CC-WMI-25 | CSD-LKO Calender (6 day + Holiday)-25 | Physical Progress [4650 h]; TATA Projects Ltd-25 |  |
|  | 2 | **Plumbing** |  | 2028-03-15 | 2028-05-26 |  |  |  |  |
| CB-B02-HS-MEP10 |  | Pump installation | 7d | 2028-03-15 | 2028-03-23 | CB-B02-HS-MEP20, CB-B02-CC-WMI-20, CB-B02-CC-WMI-360, CB-B02-RB2-WMI-360 | CSD-LKO Calender (6 day + Holiday)-25 | Physical Progress [1080 h]; Plumbing [8590608 INR]; TATA Projects Ltd-25 | 8,590,608 |
| CB-B02-HS-MEP15 |  | Hydro-pneumatic system installation | 20d | 2028-03-23 | 2028-04-17 | CB-B02-HS-MEP20, CB-B02-HS-MEP10 | CSD-LKO Calender (6 day + Holiday)-25 | Physical Progress [3100 h]; Plumbing [11454144 INR]; TATA Projects Ltd-25 | 11,454,144 |
| CB-B02-HS-MEP25 |  | Connection of Pumps and water tanks | 45d | 2028-03-23 | 2028-05-18 | CB-B02-HS-MEP10 | CSD-LKO Calender (6 day + Holiday)-25 | Physical Progress [6970 h]; Plumbing [5727072 INR]; TATA Projects Ltd-25 | 5,727,072 |
| CB-B02-HS-MEP30 |  | Testing of Pumps, Connections | 7d | 2028-05-18 | 2028-05-26 | CB-B02-HS-MEP15, CB-B02-HS-MEP25 | CSD-LKO Calender (6 day + Holiday)-25 | Physical Progress [1080 h]; Plumbing [2863536 INR]; TATA Projects Ltd-25 | 2,863,536 |
|  | 2 | **Basement 01** |  | 2027-04-23 | 2028-10-12 |  |  |  |  |
|  | 4 | **Hotel 4 Star** |  | 2027-04-23 | 2028-09-22 |  |  |  |  |
|  | 1 | **Wet Finishes** |  | 2027-04-23 | 2028-02-15 |  |  |  |  |
| CB-B01-4S-WMI-50 |  | Deshuttering | 7d | 2027-04-23 | 2027-05-03 | 4S-SS-1st.F.700, 4S-SS-B-01.710 | CSD-LKO Calender (6 day + Holiday)-25 | Physical Progress [2080 h]; TATA Projects Ltd-25 |  |
| CB-B01-4S-WMI-35 |  | Structural Misc Works | 50d | 2027-05-03 | 2027-06-30 | CB-B01-4S-WMI-50 | CSD-LKO Calender (6 day + Holiday)-25 | Structural Misc Works [818513 INR]; Physical Progress [14830 h]; TATA Projects Ltd-25 | 818,513 |
| CB-B01-4S-WMI-55 |  | Brickwork/Blockwork | 25d | 2027-05-03 | 2027-06-01 | E-GFC-AR-CB-95, CB-B01-4S-WMI-50 | CSD-LKO Calender (6 day + Holiday)-25 | Masonry [1098 CuM]; Mason [7320 h]; Helper [3660 h]; Physical Progress [13350 h]; TATA Projects Ltd-25 | 10,469,825.28 |
| CB-B01-4S-WMI-65 |  | Plaster | 30d | 2027-07-12 | 2027-08-16 | CB-B01-4S-WMI-35, CB-B01-4S-WMI-70, CB-B01-4S-WMI-100, CB-B01-4S-WMI-285 | CSD-LKO Calender (6 day + Holiday)-25 | Plaster [11968 Sqr Mtr]; Mason [7980 h]; Helper [3990 h]; Physical Progress [8900 h]; TATA Projects Ltd-25 | 6,629,194.88 |
| CB-B01-4S-WMI-60 |  | Flooring | 25d | 2028-01-15 | 2028-02-15 | CB-B01-4S-WMI-35, CB-B01-4S-WMI-120, CB-B01-4S-WMI-125, CB-B01-4S-WMI-130, CB-B01-4S-WMI-340, CB-B01-4S-WMI-135, CB-B01-4S-WMI-75, CB-B01-4S-WMI-80, CB-B01-4S-WMI-90, CB-B01-4S-WMI-350, CB-B01-4S-WMI-45, CB-B01-4S-WMI-355, CB-B01-4S-WMI-190, CB-B01-4S-WMI-170, CB-B01-4S-WMI-185, CB-B01-4S-WMI-175, CB-B01-4S-WMI-15, CB-B01-4S-WMI-225, CB-B01-4S-WMI-235, CB-B01-4S-WMI-240, CB-B01-4S-WMI-230, CB-B01-4S-WMI-270, CB-B01-4S-WMI-275, CB-B01-4S-WMI-360, CB-B01-4S-WMI-280, CB-B01-4S-WMI-295, CB-B01-4S-WMI-55, CB-B01-HS-MEP135 | CSD-LKO Calender (6 day + Holiday)-25 | Flooring [13971434 INR]; Flooring Mason [7000 h]; Helper [7000 h]; Physical Progress [14830 h]; TATA Projects Ltd-25 | 13,971,434 |
|  | 5 | **Low Side MEP** |  | 2027-05-03 | 2028-05-23 |  |  |  |  |
|  | 2 | **HVAC** |  | 2027-06-01 | 2028-05-23 |  |  |  |  |
|  | 1 | **1st Fix** |  | 2027-06-01 | 2027-09-21 |  |  |  |  |
| CB-B01-4S-WMI-345 |  | Duct Support Fabrication | 35d | 2027-06-01 | 2027-07-12 | CB-B01-4S-WMI-55 | CSD-LKO Calender (6 day + Holiday)-25 | Physical Progress [4450 h]; HVAC [210890 INR]; TATA Projects Ltd-25 | 210,890 |
| CB-B01-4S-WMI-105 |  | Installing duct hangers and supports | 30d | 2027-07-12 | 2027-08-16 | CB-B01-4S-WMI-315, CB-B01-4S-WMI-345 | CSD-LKO Calender (6 day + Holiday)-25 | Physical Progress [2970 h]; HVAC [421779 INR]; TATA Projects Ltd-25 | 421,779 |
| CB-B01-4S-WMI-110 |  | Laying concealed/exposed refrigerant piping | 30d | 2027-08-16 | 2027-09-21 | CB-B01-4S-WMI-105 | CSD-LKO Calender (6 day + Holiday)-25 | Physical Progress [4450 h]; HVAC [105445 INR]; TATA Projects Ltd-25 | 105,445 |
| CB-B01-4S-WMI-115 |  | Laying concealed/exposed drain piping | 30d | 2027-08-16 | 2027-09-21 | CB-B01-4S-WMI-105 | CSD-LKO Calender (6 day + Holiday)-25 | Physical Progress [2970 h]; HVAC [632669 INR]; TATA Projects Ltd-25 | 632,669 |
|  | 2 | **2nd Fix** |  | 2027-08-16 | 2028-01-04 |  |  |  |  |
| CB-B01-4S-WMI-120 |  | Duct installation | 20d | 2027-08-16 | 2027-09-09 | CB-B01-4S-WMI-105 | CSD-LKO Calender (6 day + Holiday)-25 | Physical Progress [4450 h]; HVAC [1581672 INR]; TATA Projects Ltd-25 | 1,581,672 |
| CB-B01-4S-WMI-125 |  | Insulation of ducts (thermal/acoustic) | 15d | 2027-09-09 | 2027-09-27 | CB-B01-4S-WMI-120 | CSD-LKO Calender (6 day + Holiday)-25 | Physical Progress [1780 h]; HVAC [949003 INR]; TATA Projects Ltd-25 | 949,003 |
| CB-B01-4S-WMI-130 |  | Installation of chilled water piping / VRF piping | 15d | 2027-09-27 | 2027-10-16 | CB-B01-4S-WMI-125 | CSD-LKO Calender (6 day + Holiday)-25 | Physical Progress [1780 h]; HVAC [2108896 INR]; TATA Projects Ltd-25 | 2,108,896 |
| CB-B01-4S-WMI-340 |  | Installation of indoor units including AHU, FCU | 45d | 2027-10-16 | 2027-12-09 | CB-B01-4S-WMI-130, CB-B01-4S-WMI-110, CB-B01-4S-WMI-115 | CSD-LKO Calender (6 day + Holiday)-25 | Physical Progress [13350 h]; HVAC [1898006 INR]; TATA Projects Ltd-25 | 1,898,006 |
| CB-B01-4S-WMI-135 |  | Connecting refrigerant and drain piping to indoor units | 20d | 2027-12-09 | 2028-01-04 | CB-B01-4S-WMI-340 | CSD-LKO Calender (6 day + Holiday)-25 | Physical Progress [1780 h]; HVAC [527224 INR]; TATA Projects Ltd-25 | 527,224 |

| ID | WBS | Activity | Duration | Start | Finish | Predecessors | Calendar | Resources | Cost |
| --- | --- | --- | --- | --- | --- | --- | --- | --- | --- |
|  | 3 | **Final Fix** |  | 2028-03-09 | 2028-05-23 |  |  |  |  |
| CB-B01-4S-WMI-145 |  | Installing grills, diffusers, dampers | 30d | 2028-03-09 | 2028-04-15 | CB-B01-4S-WMI-320 | CSD-LKO Calender (6 day + Holiday)-25 | Physical Progress [1780 h]; HVAC [1054448 INR]; TATA Projects Ltd-25 | 1,054,448 |
| CB-B01-4S-WMI-140 |  | Installation of thermostats and control panels | 30d | 2028-04-15 | 2028-05-23 | CB-B01-4S-WMI-145 | CSD-LKO Calender (6 day + Holiday)-25 | Physical Progress [1780 h]; HVAC [527224 INR]; TATA Projects Ltd-25 | 527,224 |
|  | 1 | **Electrical** |  | 2027-05-03 | 2028-04-27 |  |  |  |  |
|  | 1 | **1st Fix** |  | 2027-05-03 | 2027-07-12 |  |  |  |  |
| CB-B01-4S-WMI-25 |  | Slab Conduiting | 25d | 2027-05-03 | 2027-06-01 | CB-B01-4S-WMI-50 | CSD-LKO Calender (6 day + Holiday)-25 | Physical Progress [7410 h]; Electrical [926153 INR]; TATA Projects Ltd-25 | 926,153 |
| CB-B01-4S-WMI-70 |  | Wall Conduiting | 30d | 2027-06-01 | 2027-07-06 | CB-B01-4S-WMI-55 | CSD-LKO Calender (6 day + Holiday)-25 | Physical Progress [2970 h]; Electrical [463076 INR]; TATA Projects Ltd-25 | 463,076 |
| CB-B01-4S-WMI-100 |  | Installing back boxes for switches, sockets | 5d | 2027-07-06 | 2027-07-12 | CB-B01-4S-WMI-25, CB-B01-4S-WMI-70 | CSD-LKO Calender (6 day + Holiday)-25 | Physical Progress [1480 h]; Electrical [277846 INR]; TATA Projects Ltd-25 | 277,846 |
|  | 2 | **2nd Fix** |  | 2027-08-16 | 2028-01-15 |  |  |  |  |
| CB-B01-4S-WMI-75 |  | Cable tray laying | 15d | 2027-08-16 | 2027-09-02 | CB-B01-4S-WMI-65, CB-B01-4S-WMI-315 | CSD-LKO Calender (6 day + Holiday)-25 | Physical Progress [7410 h]; Electrical [370461 INR]; TATA Projects Ltd-25 | 370,461 |
| CB-B01-4S-WMI-80 |  | Cabling & Wire Pulling | 45d | 2027-09-02 | 2027-10-28 | CB-B01-4S-WMI-75 | CSD-LKO Calender (6 day + Holiday)-25 | Physical Progress [13350 h]; Electrical [1852305 INR]; TATA Projects Ltd-25 | 1,852,305 |
| CB-B01-4S-WMI-90 |  | DB fixing and connecting | 20d | 2027-10-28 | 2027-11-22 | CB-B01-4S-WMI-80 | CSD-LKO Calender (6 day + Holiday)-25 | Physical Progress [4450 h]; Electrical [277846 INR]; TATA Projects Ltd-25 | 277,846 |
| CB-B01-4S-WMI-350 |  | Floor/Distribution Panel Installation | 15d | 2027-11-22 | 2027-12-09 | CB-B01-4S-WMI-90 | CSD-LKO Calender (6 day + Holiday)-25 | Physical Progress [1480 h]; Electrical [740922 INR]; TATA Projects Ltd-25 | 740,922 |
| CB-B01-4S-WMI-45 |  | Floor Rising Main Installation | 15d | 2027-12-09 | 2027-12-28 | CB-B01-4S-WMI-350 | CSD-LKO Calender (6 day + Holiday)-25 | Physical Progress [2970 h]; Electrical [1296614 INR]; TATA Projects Ltd-25 | 1,296,614 |
| CB-B01-4S-WMI-355 |  | Equipment Earthing | 15d | 2027-12-28 | 2028-01-15 | CB-B01-4S-WMI-45, CB-B01-4S-WMI-350 | CSD-LKO Calender (6 day + Holiday)-25 | Physical Progress [2970 h]; Electrical [277846 INR]; TATA Projects Ltd-25 | 277,846 |
|  | 3 | **Final Fix** |  | 2028-03-09 | 2028-04-27 |  |  |  |  |
| CB-B01-4S-WMI-95 |  | Switches & Socket | 20d | 2028-03-09 | 2028-04-03 | CB-B01-4S-WMI-320 | CSD-LKO Calender (6 day + Holiday)-25 | Physical Progress [5930 h]; Electrical [926153 INR]; TATA Projects Ltd-25 | 926,153 |
| CB-B01-4S-WMI-85 |  | Light Fixtures | 20d | 2028-04-03 | 2028-04-27 | CB-B01-4S-WMI-355, CB-B01-4S-WMI-95 | CSD-LKO Calender (6 day + Holiday)-25 | Physical Progress [4450 h]; Electrical [1389229 INR]; TATA Projects Ltd-25 | 1,389,229 |
|  | 3 | **Plumbing** |  | 2027-06-01 | 2028-05-05 |  |  |  |  |
|  | 1 | **1st Fix** |  | 2027-06-01 | 2027-11-04 |  |  |  |  |
| CB-B01-4S-WMI-160 |  | Fixing pipe supports and clamps | 35d | 2027-06-01 | 2027-07-12 | CB-B01-4S-WMI-55 | CSD-LKO Calender (6 day + Holiday)-25 | Physical Progress [2970 h]; Plumbing [521800 INR]; TATA Projects Ltd-25 | 521,800 |
| CB-B01-4S-WMI-150 |  | Laying water supply pipes (hot & cold) | 35d | 2027-07-12 | 2027-08-21 | CB-B01-4S-WMI-160 | CSD-LKO Calender (6 day + Holiday)-25 | Physical Progress [4450 h]; Plumbing [1043599 INR]; TATA Projects Ltd-25 | 1,043,599 |
| CB-B01-4S-WMI-155 |  | Laying drainage pipes (soil, waste, vent) | 35d | 2027-07-12 | 2027-08-21 | CB-B01-4S-WMI-160 | CSD-LKO Calender (6 day + Holiday)-25 | Physical Progress [4450 h]; Plumbing [1043599 INR]; TATA Projects Ltd-25 | 1,043,599 |
| CB-B01-4S-WMI-180 |  | Installation of plumbing fixture base supports (WC frames, sink brackets) | 30d | 2027-08-21 | 2027-09-27 | CB-B01-4S-WMI-155 | CSD-LKO Calender (6 day + Holiday)-25 | Physical Progress [1780 h]; Plumbing [521800 INR]; TATA Projects Ltd-25 | 521,800 |
| CB-B01-4S-WMI-10 |  | Installation of concealed parts of toilet fixtures | 30d | 2027-09-27 | 2027-11-04 | CB-B01-4S-WMI-180 | CSD-LKO Calender (6 day + Holiday)-25 | Physical Progress [2970 h]; Plumbing [521800 INR]; TATA Projects Ltd-25 | 521,800 |
| CB-B01-4S-WMI-165 |  | Pressure testing of water supply lines | 25d | 2027-09-27 | 2027-10-28 | CB-B01-4S-WMI-150, CB-B01-4S-WMI-155, CB-B01-4S-WMI-180 | CSD-LKO Calender (6 day + Holiday)-25 | Physical Progress [2080 h]; Plumbing [104360 INR]; TATA Projects Ltd-25 | 104,360 |

| ID | WBS | Activity | Duration | Start | Finish | Predecessors | Calendar | Resources | Cost |
| --- | --- | --- | --- | --- | --- | --- | --- | --- | --- |
|  | 2 | **2nd FIx** |  | 2027-10-28 | 2028-01-10 |  |  |  |  |
| CB-B01-4S-WMI-190 |  | Insulation of hot water pipes (if applicable) | 15d | 2027-10-28 | 2027-11-16 | CB-B01-4S-WMI-165 | CSD-LKO Calender (6 day + Holiday)-25 | Physical Progress [1780 h]; Plumbing [521800 INR]; TATA Projects Ltd-25 | 521,800 |
| CB-B01-4S-WMI-170 |  | Installation of vertical risers and main distribution lines | 35d | 2027-11-04 | 2027-12-15 | CB-B01-4S-WMI-10, CB-B01-4S-WMI-65, CB-B01-4S-WMI-315, CB-B01-4S-WMI-165 | CSD-LKO Calender (6 day + Holiday)-25 | Physical Progress [5930 h]; Plumbing [1043599 INR]; TATA Projects Ltd-25 | 1,043,599 |
| CB-B01-4S-WMI-185 |  | Testing drainage lines for leakage/blockage | 15d | 2027-11-16 | 2027-12-03 | CB-B01-4S-WMI-180, CB-B01-4S-WMI-190 | CSD-LKO Calender (6 day + Holiday)-25 | Physical Progress [1780 h]; Plumbing [104360 INR]; TATA Projects Ltd-25 | 104,360 |
| CB-B01-4S-WMI-15 |  | Laying of ACO Drains | 20d | 2027-12-03 | 2027-12-28 | CB-B01-4S-WMI-185 | CSD-LKO Calender (6 day + Holiday)-25 | ACO Drain [4080997 INR]; Physical Progress [5930 h]; TATA Projects Ltd-25 | 4,080,997 |
| CB-B01-4S-WMI-175 |  | Fixing floor traps and gully traps | 20d | 2027-12-15 | 2028-01-10 | CB-B01-4S-WMI-170 | CSD-LKO Calender (6 day + Holiday)-25 | Physical Progress [1780 h]; Plumbing [313080 INR]; TATA Projects Ltd-25 | 313,080 |
|  | 3 | **Final FIx** |  | 2027-12-28 | 2028-05-05 |  |  |  |  |
| CB-B01-4S-WMI-20 |  | Installation of ACO Drain Grating | 7d | 2027-12-28 | 2028-01-06 | CB-B01-4S-WMI-15 | CSD-LKO Calender (6 day + Holiday)-25 | Grating of Drain [2489760 INR]; Physical Progress [2080 h]; TATA Projects Ltd-25 | 2,489,760 |
| CB-B01-4S-WMI-195 |  | Installation of sanitary fixtures (WC, washbasins, urinals, sinks) | 10d | 2028-03-09 | 2028-03-22 | CB-B01-4S-WMI-175, CB-B01-4S-WMI-320 | CSD-LKO Calender (6 day + Holiday)-25 | Physical Progress [2970 h]; Plumbing [2087198 INR]; TATA Projects Ltd-25 | 2,087,198 |
| CB-B01-4S-WMI-200 |  | Installation of CP fittings (taps, mixers, showers, health faucets) | 10d | 2028-03-22 | 2028-04-03 | CB-B01-4S-WMI-195, CB-B01-4S-WMI-320 | CSD-LKO Calender (6 day + Holiday)-25 | Physical Progress [2970 h]; Plumbing [1043599 INR]; TATA Projects Ltd-25 | 1,043,599 |
| CB-B01-4S-WMI-205 |  | Connection of appliances | 25d | 2028-04-03 | 2028-05-05 | CB-B01-4S-WMI-200 | CSD-LKO Calender (6 day + Holiday)-25 | Physical Progress [2080 h]; Plumbing [521800 INR]; TATA Projects Ltd-25 | 521,800 |
|  | 4 | **Firefighting** |  | 2027-06-01 | 2028-05-11 |  |  |  |  |
|  | 1 | **1st Fix** |  | 2027-06-01 | 2027-09-27 |  |  |  |  |
| CB-B01-4S-WMI-215 |  | Fixing pipe supports and hangers | 35d | 2027-06-01 | 2027-07-12 | CB-B01-4S-WMI-55 | CSD-LKO Calender (6 day + Holiday)-25 | Physical Progress [2970 h]; Firefighting [431557 INR]; TATA Projects Ltd-25 | 431,557 |
| CB-B01-4S-WMI-210 |  | Laying branch piping | 35d | 2027-07-12 | 2027-08-21 | CB-B01-4S-WMI-215 | CSD-LKO Calender (6 day + Holiday)-25 | Physical Progress [4450 h]; Firefighting [924764 INR]; TATA Projects Ltd-25 | 924,764 |
| CB-B01-4S-WMI-220 |  | Hydrostatic pressure testing of piping | 30d | 2027-08-21 | 2027-09-27 | CB-B01-4S-WMI-210 | CSD-LKO Calender (6 day + Holiday)-25 | Physical Progress [1780 h]; Firefighting [123302 INR]; TATA Projects Ltd-25 | 123,302 |
|  | 2 | **2nd Fix** |  | 2027-09-27 | 2027-12-21 |  |  |  |  |
| CB-B01-4S-WMI-225 |  | Installation of vertical risers and distribution piping in shafts | 35d | 2027-09-27 | 2027-11-10 | CB-B01-4S-WMI-65, CB-B01-4S-WMI-220 | CSD-LKO Calender (6 day + Holiday)-25 | Physical Progress [7410 h]; Firefighting [1233019 INR]; TATA Projects Ltd-25 | 1,233,019 |
| CB-B01-4S-WMI-235 |  | Painting/insulation of exposed fire pipes | 30d | 2027-09-27 | 2027-11-04 | CB-B01-4S-WMI-220 | CSD-LKO Calender (6 day + Holiday)-25 | Physical Progress [2970 h]; Firefighting [61651 INR]; TATA Projects Ltd-25 | 61,651 |
| CB-B01-4S-WMI-240 |  | Testing risers and branch lines for leakage | 30d | 2027-11-04 | 2027-12-09 | CB-B01-4S-WMI-235 | CSD-LKO Calender (6 day + Holiday)-25 | Physical Progress [1780 h]; Firefighting [123302 INR]; TATA Projects Ltd-25 | 123,302 |
| CB-B01-4S-WMI-230 |  | Installation of sprinkler branch lines in ceilings | 35d | 2027-11-10 | 2027-12-21 | CB-B01-4S-WMI-225, CB-B01-4S-WMI-315 | CSD-LKO Calender (6 day + Holiday)-25 | Physical Progress [7410 h]; Firefighting [924764 INR]; TATA Projects Ltd-25 | 924,764 |
|  | 3 | **Final FIx** |  | 2028-03-09 | 2028-05-11 |  |  |  |  |
| CB-B01-4S-WMI-245 |  | Installation of sprinkler heads, nozzles, and final alignment | 35d | 2028-03-09 | 2028-04-21 | CB-B01-4S-WMI-230, CB-B01-4S-WMI-320 | CSD-LKO Calender (6 day + Holiday)-25 | Physical Progress [13350 h]; Firefighting [924764 INR]; TATA Projects Ltd-25 | 924,764 |
| CB-B01-4S-WMI-250 |  | Installation of hydrant accessories (valves, hose reels, cabinets) | 25d | 2028-03-09 | 2028-04-08 | CB-B01-4S-WMI-320 | CSD-LKO Calender (6 day + Holiday)-25 | Physical Progress [2970 h]; Firefighting [616510 INR]; TATA Projects Ltd-25 | 616,510 |
| CB-B01-4S-WMI-255 |  | Installation of portable fire extinguishers | 30d | 2028-03-09 | 2028-04-15 | CB-B01-4S-WMI-320 | CSD-LKO Calender (6 day + Holiday)-25 | Physical Progress [1780 h]; Firefighting [61651 INR]; TATA Projects Ltd-25 | 61,651 |
| CB-B01-4S-WMI-260 |  | Integration with fire alarm system | 20d | 2028-04-15 | 2028-05-11 | CB-B01-4S-WMI-255 | CSD-LKO Calender (6 day + Holiday)-25 | Physical Progress [5930 h]; Firefighting [308255 INR]; TATA Projects Ltd-25 | 308,255 |

| ID | WBS | Activity | Duration | Start | Finish | Predecessors | Calendar | Resources | Cost |
| --- | --- | --- | --- | --- | --- | --- | --- | --- | --- |
|  | 5 | **ELV** |  | 2027-05-03 | 2028-05-05 |  |  |  |  |
|  | 1 | **1st Fix** |  | 2027-05-03 | 2027-07-12 |  |  |  |  |
| CB-B01-4S-WMI-30 |  | Slab Conduiting | 25d | 2027-05-03 | 2027-06-01 | CB-B01-4S-WMI-50 | CSD-LKO Calender (6 day + Holiday)-25 | Physical Progress [7410 h]; ELV [726016 INR]; TATA Projects Ltd-25 | 726,016 |
| CB-B01-4S-WMI-265 |  | Wall Conduiting | 30d | 2027-06-01 | 2027-07-06 | CB-B01-4S-WMI-55 | CSD-LKO Calender (6 day + Holiday)-25 | Physical Progress [2970 h]; ELV [311150 INR]; TATA Projects Ltd-25 | 311,150 |
| CB-B01-4S-WMI-285 |  | Installing back boxes for switches, sockets | 5d | 2027-07-06 | 2027-07-12 | CB-B01-4S-WMI-30, CB-B01-4S-WMI-265 | CSD-LKO Calender (6 day + Holiday)-25 | Physical Progress [1480 h]; ELV [518583 INR]; TATA Projects Ltd-25 | 518,583 |
|  | 2 | **2nd Fix** |  | 2027-08-16 | 2027-12-15 |  |  |  |  |
| CB-B01-4S-WMI-270 |  | Cable tray installation | 15d | 2027-08-16 | 2027-09-02 | CB-B01-4S-WMI-65, CB-B01-4S-WMI-315 | CSD-LKO Calender (6 day + Holiday)-25 | Physical Progress [7410 h]; ELV [518583 INR]; TATA Projects Ltd-25 | 518,583 |
| CB-B01-4S-WMI-275 |  | Cabeling of ELV cable - IT/Fire Alarm/Public Address | 30d | 2027-09-02 | 2027-10-11 | CB-B01-4S-WMI-270 | CSD-LKO Calender (6 day + Holiday)-25 | Physical Progress [13350 h]; ELV [1244599 INR]; TATA Projects Ltd-25 | 1,244,599 |
| CB-B01-4S-WMI-360 |  | ELV Rack Installation | 15d | 2027-10-11 | 2027-10-28 | CB-B01-4S-WMI-275 | CSD-LKO Calender (6 day + Holiday)-25 | Physical Progress [2970 h]; ELV [518583 INR]; TATA Projects Ltd-25 | 518,583 |
| CB-B01-4S-WMI-280 |  | Termination of cables at junction boxes, patch panels, and control panels | 15d | 2027-10-28 | 2027-11-16 | CB-B01-4S-WMI-360 | CSD-LKO Calender (6 day + Holiday)-25 | Physical Progress [8900 h]; ELV [518583 INR]; TATA Projects Ltd-25 | 518,583 |
| CB-B01-4S-WMI-295 |  | Fixing devices like CCTV camera bases, card reader bases, smoke detector bases, PA Bases, Wifi Bases | 25d | 2027-11-16 | 2027-12-15 | CB-B01-4S-WMI-280 | CSD-LKO Calender (6 day + Holiday)-25 | Physical Progress [1190 h]; ELV [1037166 INR]; TATA Projects Ltd-25 | 1,037,166 |
|  | 3 | **3rd Fix** |  | 2028-03-09 | 2028-05-05 |  |  |  |  |
| CB-B01-4S-WMI-290 |  | Installation of data and Voice Faceplate | 25d | 2028-03-09 | 2028-04-08 | CB-B01-4S-WMI-320 | CSD-LKO Calender (6 day + Holiday)-25 | Physical Progress [4450 h]; ELV [518583 INR]; TATA Projects Ltd-25 | 518,583 |
| CB-B01-4S-WMI-300 |  | Installation of Camera & Wifi | 30d | 2028-03-09 | 2028-04-15 | CB-B01-4S-WMI-320 | CSD-LKO Calender (6 day + Holiday)-25 | Physical Progress [4450 h]; ELV [518583 INR]; TATA Projects Ltd-25 | 518,583 |
| CB-B01-4S-WMI-305 |  | Installation of fire alarm devices + Public Address | 15d | 2028-03-09 | 2028-03-28 | CB-B01-4S-WMI-320 | CSD-LKO Calender (6 day + Holiday)-25 | Physical Progress [4450 h]; ELV [622299 INR]; TATA Projects Ltd-25 | 622,299 |
| CB-B01-4S-WMI-365 |  | Installation of Active System | 15d | 2028-03-28 | 2028-04-15 | CB-B01-4S-WMI-305 | CSD-LKO Calender (6 day + Holiday)-25 | Physical Progress [4450 h]; ELV [1037166 INR]; TATA Projects Ltd-25 | 1,037,166 |
| CB-B01-4S-WMI-375 |  | Fire Panel Intallation & Integration | 25d | 2028-03-28 | 2028-04-27 | CB-B01-4S-WMI-305 | CSD-LKO Calender (6 day + Holiday)-25 | Physical Progress [7410 h]; ELV [518583 INR]; TATA Projects Ltd-25 | 518,583 |
| CB-B01-4S-WMI-380 |  | Installation & Integration of Audio Visual System | 25d | 2028-03-28 | 2028-04-27 | CB-B01-4S-WMI-305 | CSD-LKO Calender (6 day + Holiday)-25 | Physical Progress [7410 h]; ELV [518583 INR]; TATA Projects Ltd-25 | 518,583 |
| CB-B01-4S-WMI-385 |  | Installation & Integration of Access Control | 25d | 2028-03-28 | 2028-04-27 | CB-B01-4S-WMI-305 | CSD-LKO Calender (6 day + Holiday)-25 | Physical Progress [7410 h]; ELV [518583 INR]; TATA Projects Ltd-25 | 518,583 |
| CB-B01-4S-WMI-370 |  | Integration of Active components | 15d | 2028-04-15 | 2028-05-05 | CB-B01-4S-WMI-365 | CSD-LKO Calender (6 day + Holiday)-25 | Physical Progress [4450 h]; ELV [207433 INR]; TATA Projects Ltd-25 | 207,433 |
|  | 2 | **Dry Finishes** |  | 2027-06-01 | 2028-09-22 |  |  |  |  |
| CB-B01-4S-WMI-315 |  | Painting on Ceiling (Ceiling Finish) | 15d | 2027-06-01 | 2027-06-18 | CB-B01-4S-WMI-55 | CSD-LKO Calender (6 day + Holiday)-25 | Painting [6027 Sq m]; Painter [6030 h]; Helper [6030 h]; Physical Progress [4450 h]; TATA Projects Ltd-25 | 1,377,892.74 |
| CB-B01-4S-WMI-310 |  | Installation of Gypsum Board | 10d | 2028-02-15 | 2028-02-26 | CB-B01-4S-WMI-60 | CSD-LKO Calender (6 day + Holiday)-25 | ID Work [1105233 INR]; Physical Progress [2970 h]; TATA Projects Ltd-25 | 1,105,233 |
| CB-B01-4S-WMI-40 |  | Civil Misc Works | 30d | 2028-02-15 | 2028-03-22 | CB-B01-4S-WMI-60 | CSD-LKO Calender (6 day + Holiday)-25 | Civil Misc Works [1689710 INR]; Physical Progress [8900 h]; TATA Projects Ltd-25 | 1,689,710 |
| CB-B01-4S-WMI-320 |  | Wall Painting first coat including putty | 10d | 2028-02-26 | 2028-03-09 | CB-B01-4S-WMI-310 | CSD-LKO Calender (6 day + Holiday)-25 | Painting [6027 Sq m]; Painter [6030 h]; Helper [6030 h]; Physical Progress [2970 h]; TATA Projects Ltd-25 | 1,377,892.74 |
| CB-B01-4S-WMI-335 |  | Wheel stoppers | 8d | 2028-03-09 | 2028-03-20 | CB-B01-4S-WMI-320 | CSD-LKO Calender (6 day + Holiday)-25 | Wheel Stopper [11088 INR]; Physical Progress [2370 h]; TATA Projects Ltd-25 | 11,088 |
| CB-B01-4S-WMI-390 |  | Door & Window | 10d | 2028-03-09 | 2028-03-22 | CB-B01-4S-WMI-320 | CSD-LKO Calender (6 day + Holiday)-25 | ID Work [1105233 INR]; Physical Progress [2970 h]; TATA Projects Ltd-25 | 1,105,233 |
| CB-B01-4S-WMI-330 |  | Line marking for parking bays, arrows, pedestrian paths | 8d | 2028-03-20 | 2028-03-29 | CB-B01-4S-WMI-335 | CSD-LKO Calender (6 day + Holiday)-25 | Line / Arrow Marking [414734 INR]; Physical Progress [2370 h]; TATA Projects Ltd-25 | 414,734 |
| CB-B01-4S-WMI-325 |  | Wall painting final coat | 15d | 2028-09-05 | 2028-09-22 | CB-B01-4S-WMI-20, CB-B01-4S-WMI-380, CB-B01-4S-WMI-385, CB-B01-4S-WMI-370, CB-B01-4S-WMI-40, CB-B01-HS-MEP45, CB-B01-HS-MEP90, CB-B01-HS-MEP40, CB-B01-HS-MEP35, CB-B01-HS-MEP120, CB-B01-HS-MEP50, CB-B01-HS-MEP125, CB-B01-HS-MEP130, CB-B01-HS-MEP70, CB-B01-HS-MEP75, CB-B01-HS-MEP25, CB-B01-HS-MEP30, CB-B01-HS-MEP55, CB-B01-HS-MEP60, CB-B01-HS-MEP65, CB-B01-HS-MEP80, CB-B01-HS-MEP85, CB-B01-HS-MEP95, CB-B01-HS-MEP20, CB-B01-HS-MEP10, CB-B01-HS-MEP15, CB-B01-HS-MEP100, CB-B01-HS-MEP105, CB-B01-HS-MEP110, CB-B01-HS-MEP115, CB-B01-4S-WMI-330, CB-B01-4S-WMI-290, CB-B01-4S-WMI-300, CB-B01-4S-WMI-260, CB-B01-4S-WMI-245, CB-B01-4S-WMI-250, CB-B01-4S-WMI-255, CB-B01-4S-WMI-205, CB-B01-4S-WMI-85, CB-B01-4S-WMI-140, CB-B01-4S-WMI-375, CB-B01-4S-WMI-390 | CSD-LKO Calender (6 day + Holiday)-25 | Painting [6027 Sq m]; Painter [6030 h]; Helper [6030 h]; Physical Progress [1780 h]; TATA Projects Ltd-25 | 1,377,892.74 |

| ID | WBS | Activity | Duration | Start | Finish | Predecessors | Calendar | Resources | Cost |
| --- | --- | --- | --- | --- | --- | --- | --- | --- | --- |
|  | 1 | **Hotel 3 Star** |  | 2027-05-06 | 2028-09-22 |  |  |  |  |
|  | 1 | **Wet Finishes** |  | 2027-05-06 | 2028-02-26 |  |  |  |  |
| CB-B01-3S-WMI-10 |  | Deshuttering | 7d | 2027-05-06 | 2027-05-14 | 3S-SS-1st.530 | CSD-LKO Calender (6 day + Holiday)-25 | Physical Progress [2080 h]; TATA Projects Ltd-25 |  |
| CB-B01-3S-WMI-15 |  | Brickwork/Blockwork | 25d | 2027-05-14 | 2027-06-12 | CB-B01-3S-WMI-10 | CSD-LKO Calender (6 day + Holiday)-25 | Masonry [1098 CuM]; Mason [7320 h]; Helper [3660 h]; Physical Progress [13350 h]; TATA Projects Ltd-25 | 10,469,825.28 |
| CB-B01-3S-WMI-380 |  | Structural Misc Works | 50d | 2027-05-14 | 2027-07-12 | CB-B01-3S-WMI-10 | CSD-LKO Calender (6 day + Holiday)-25 | Structural Misc Works [818513 INR]; Physical Progress [14830 h]; TATA Projects Ltd-25 | 818,513 |
| CB-B01-3S-WMI-25 |  | Plaster | 30d | 2027-07-23 | 2027-08-27 | CB-B01-3S-WMI-30, CB-B01-3S-WMI-60, CB-B01-3S-WMI-245 | CSD-LKO Calender (6 day + Holiday)-25 | Plaster [11968 Sqr Mtr]; Mason [7980 h]; Helper [3990 h]; Physical Progress [8900 h]; TATA Projects Ltd-25 | 6,629,194.88 |
| CB-B01-3S-WMI-20 |  | Flooring | 25d | 2028-01-28 | 2028-02-26 | CB-B01-3S-WMI-15, CB-B01-3S-WMI-380, CB-B01-3S-WMI-80, CB-B01-3S-WMI-85, CB-B01-3S-WMI-90, CB-B01-3S-WMI-300, CB-B01-3S-WMI-95, CB-B01-3S-WMI-35, CB-B01-3S-WMI-40, CB-B01-3S-WMI-50, CB-B01-3S-WMI-310, CB-B01-3S-WMI-390, CB-B01-3S-WMI-315, CB-B01-3S-WMI-150, CB-B01-3S-WMI-130, CB-B01-3S-WMI-145, CB-B01-3S-WMI-135, CB-B01-3S-WMI-360, CB-B01-3S-WMI-185, CB-B01-3S-WMI-195, CB-B01-3S-WMI-200, CB-B01-3S-WMI-190, CB-B01-3S-WMI-230, CB-B01-3S-WMI-235, CB-B01-3S-WMI-320, CB-B01-3S-WMI-240, CB-B01-3S-WMI-255 | CSD-LKO Calender (6 day + Holiday)-25 | Flooring [13971434 INR]; Flooring Mason [7000 h]; Helper [7000 h]; Physical Progress [14830 h]; TATA Projects Ltd-25 | 13,971,434 |
|  | 5 | **Low Side MEP** |  | 2027-05-14 | 2028-06-03 |  |  |  |  |
|  | 2 | **HVAC** |  | 2027-06-12 | 2028-06-03 |  |  |  |  |
|  | 1 | **1st Fix** |  | 2027-06-12 | 2027-10-04 |  |  |  |  |
| CB-B01-3S-WMI-305 |  | Duct Support Fabrication | 35d | 2027-06-12 | 2027-07-23 | CB-B01-3S-WMI-15 | CSD-LKO Calender (6 day + Holiday)-25 | Physical Progress [4450 h]; HVAC [210890 INR]; TATA Projects Ltd-25 | 210,890 |
| CB-B01-3S-WMI-65 |  | Installing duct hangers and supports | 30d | 2027-07-23 | 2027-08-27 | CB-B01-3S-WMI-275, CB-B01-3S-WMI-305 | CSD-LKO Calender (6 day + Holiday)-25 | Physical Progress [2970 h]; HVAC [421779 INR]; TATA Projects Ltd-25 | 421,779 |
| CB-B01-3S-WMI-70 |  | Laying concealed/exposed refrigerant piping | 30d | 2027-08-27 | 2027-10-04 | CB-B01-3S-WMI-65 | CSD-LKO Calender (6 day + Holiday)-25 | Physical Progress [4450 h]; HVAC [105445 INR]; TATA Projects Ltd-25 | 105,445 |
| CB-B01-3S-WMI-75 |  | Laying concealed/exposed drain piping | 30d | 2027-08-27 | 2027-10-04 | CB-B01-3S-WMI-65 | CSD-LKO Calender (6 day + Holiday)-25 | Physical Progress [2970 h]; HVAC [632669 INR]; TATA Projects Ltd-25 | 632,669 |
|  | 2 | **2nd Fix** |  | 2027-08-27 | 2028-01-15 |  |  |  |  |
| CB-B01-3S-WMI-80 |  | Duct installation | 20d | 2027-08-27 | 2027-09-21 | CB-B01-3S-WMI-65 | CSD-LKO Calender (6 day + Holiday)-25 | Physical Progress [4450 h]; HVAC [1581672 INR]; TATA Projects Ltd-25 | 1,581,672 |
| CB-B01-3S-WMI-85 |  | Insulation of ducts (thermal/acoustic) | 15d | 2027-09-21 | 2027-10-11 | CB-B01-3S-WMI-80 | CSD-LKO Calender (6 day + Holiday)-25 | Physical Progress [1780 h]; HVAC [949003 INR]; TATA Projects Ltd-25 | 949,003 |
| CB-B01-3S-WMI-90 |  | Installation of chilled water piping / VRF piping | 15d | 2027-10-11 | 2027-10-28 | CB-B01-3S-WMI-85 | CSD-LKO Calender (6 day + Holiday)-25 | Physical Progress [1780 h]; HVAC [2108896 INR]; TATA Projects Ltd-25 | 2,108,896 |
| CB-B01-3S-WMI-300 |  | Installation of indoor units including AHU, FCU | 45d | 2027-10-28 | 2027-12-21 | CB-B01-3S-WMI-90, CB-B01-3S-WMI-70, CB-B01-3S-WMI-75 | CSD-LKO Calender (6 day + Holiday)-25 | Physical Progress [13350 h]; HVAC [1898006 INR]; TATA Projects Ltd-25 | 1,898,006 |
| CB-B01-3S-WMI-95 |  | Connecting refrigerant and drain piping to indoor units | 20d | 2027-12-21 | 2028-01-15 | CB-B01-3S-WMI-300 | CSD-LKO Calender (6 day + Holiday)-25 | Physical Progress [1780 h]; HVAC [527224 INR]; TATA Projects Ltd-25 | 527,224 |
|  | 3 | **Final Fix** |  | 2028-03-22 | 2028-06-03 |  |  |  |  |
| CB-B01-3S-WMI-105 |  | Installing grills, diffusers, dampers | 30d | 2028-03-22 | 2028-04-27 | CB-B01-3S-WMI-280 | CSD-LKO Calender (6 day + Holiday)-25 | Physical Progress [1780 h]; HVAC [1054448 INR]; TATA Projects Ltd-25 | 1,054,448 |
| CB-B01-3S-WMI-100 |  | Installation of thermostats and control panels | 30d | 2028-04-27 | 2028-06-03 | CB-B01-3S-WMI-105 | CSD-LKO Calender (6 day + Holiday)-25 | Physical Progress [1780 h]; HVAC [527224 INR]; TATA Projects Ltd-25 | 527,224 |
|  | 1 | **Electrical** |  | 2027-05-14 | 2028-05-11 |  |  |  |  |
|  | 1 | **1st Fix** |  | 2027-05-14 | 2027-07-23 |  |  |  |  |
| CB-B01-3S-WMI-370 |  | Slab Conduiting | 25d | 2027-05-14 | 2027-06-12 | CB-B01-3S-WMI-10 | CSD-LKO Calender (6 day + Holiday)-25 | Physical Progress [7410 h]; Electrical [926153 INR]; TATA Projects Ltd-25 | 926,153 |
| CB-B01-3S-WMI-30 |  | Wall Conduiting | 30d | 2027-06-12 | 2027-07-17 | CB-B01-3S-WMI-15 | CSD-LKO Calender (6 day + Holiday)-25 | Physical Progress [2970 h]; Electrical [463076 INR]; TATA Projects Ltd-25 | 463,076 |
| CB-B01-3S-WMI-60 |  | Installing back boxes for switches, sockets | 5d | 2027-07-17 | 2027-07-23 | CB-B01-3S-WMI-30, CB-B01-3S-WMI-370 | CSD-LKO Calender (6 day + Holiday)-25 | Physical Progress [1480 h]; Electrical [277846 INR]; TATA Projects Ltd-25 | 277,846 |

| ID | WBS | Activity | Duration | Start | Finish | Predecessors | Calendar | Resources | Cost |
| --- | --- | --- | --- | --- | --- | --- | --- | --- | --- |
|  | 2 | **2nd Fix** |  | 2027-08-27 | 2028-01-28 |  |  |  |  |
| CB-B01-3S-WMI-35 |  | Cable tray laying | 15d | 2027-08-27 | 2027-09-15 | CB-B01-3S-WMI-25, CB-B01-3S-WMI-275 | CSD-LKO Calender (6 day + Holiday)-25 | Physical Progress [7410 h]; Electrical [370461 INR]; TATA Projects Ltd-25 | 370,461 |
| CB-B01-3S-WMI-40 |  | Cabling & Wire Pulling | 45d | 2027-09-15 | 2027-11-10 | CB-B01-3S-WMI-35 | CSD-LKO Calender (6 day + Holiday)-25 | Physical Progress [13350 h]; Electrical [1852305 INR]; TATA Projects Ltd-25 | 1,852,305 |
| CB-B01-3S-WMI-50 |  | DB fixing and connecting | 20d | 2027-11-10 | 2027-12-03 | CB-B01-3S-WMI-40 | CSD-LKO Calender (6 day + Holiday)-25 | Physical Progress [4450 h]; Electrical [277846 INR]; TATA Projects Ltd-25 | 277,846 |
| CB-B01-3S-WMI-310 |  | Floor/Distribution Panel Installation | 15d | 2027-12-03 | 2027-12-21 | CB-B01-3S-WMI-50 | CSD-LKO Calender (6 day + Holiday)-25 | Physical Progress [1480 h]; Electrical [740922 INR]; TATA Projects Ltd-25 | 740,922 |
| CB-B01-3S-WMI-390 |  | Floor Rising Main Installation | 15d | 2027-12-21 | 2028-01-10 | CB-B01-3S-WMI-310 | CSD-LKO Calender (6 day + Holiday)-25 | Physical Progress [2970 h]; Electrical [1296614 INR]; TATA Projects Ltd-25 | 1,296,614 |
| CB-B01-3S-WMI-315 |  | Equipment Earthing | 15d | 2028-01-10 | 2028-01-28 | CB-B01-3S-WMI-310, CB-B01-3S-WMI-390 | CSD-LKO Calender (6 day + Holiday)-25 | Physical Progress [2970 h]; Electrical [277846 INR]; TATA Projects Ltd-25 | 277,846 |
|  | 3 | **Final Fix** |  | 2028-03-22 | 2028-05-11 |  |  |  |  |
| CB-B01-3S-WMI-55 |  | Switches & Socket | 20d | 2028-03-22 | 2028-04-15 | CB-B01-3S-WMI-280 | CSD-LKO Calender (6 day + Holiday)-25 | Physical Progress [5930 h]; Electrical [926153 INR]; TATA Projects Ltd-25 | 926,153 |
| CB-B01-3S-WMI-45 |  | Light Fixtures | 20d | 2028-04-15 | 2028-05-11 | CB-B01-3S-WMI-55, CB-B01-3S-WMI-315 | CSD-LKO Calender (6 day + Holiday)-25 | Physical Progress [4450 h]; Electrical [1389229 INR]; TATA Projects Ltd-25 | 1,389,229 |
|  | 3 | **Plumbing** |  | 2027-06-12 | 2028-05-17 |  |  |  |  |
|  | 1 | **1st Fix** |  | 2027-06-12 | 2027-11-16 |  |  |  |  |
| CB-B01-3S-WMI-120 |  | Fixing pipe supports and clamps | 35d | 2027-06-12 | 2027-07-23 | CB-B01-3S-WMI-15 | CSD-LKO Calender (6 day + Holiday)-25 | Physical Progress [2970 h]; Plumbing [521800 INR]; TATA Projects Ltd-25 | 521,800 |
| CB-B01-3S-WMI-110 |  | Laying water supply pipes (hot & cold) | 35d | 2027-07-23 | 2027-09-02 | CB-B01-3S-WMI-120 | CSD-LKO Calender (6 day + Holiday)-25 | Physical Progress [4450 h]; Plumbing [1043599 INR]; TATA Projects Ltd-25 | 1,043,599 |
| CB-B01-3S-WMI-115 |  | Laying drainage pipes (soil, waste, vent) | 35d | 2027-07-23 | 2027-09-02 | CB-B01-3S-WMI-120 | CSD-LKO Calender (6 day + Holiday)-25 | Physical Progress [4450 h]; Plumbing [1043599 INR]; TATA Projects Ltd-25 | 1,043,599 |
| CB-B01-3S-WMI-140 |  | Installation of plumbing fixture base supports (WC frames, sink brackets) | 30d | 2027-09-02 | 2027-10-11 | CB-B01-3S-WMI-115 | CSD-LKO Calender (6 day + Holiday)-25 | Physical Progress [1780 h]; Plumbing [521800 INR]; TATA Projects Ltd-25 | 521,800 |
| CB-B01-3S-WMI-125 |  | Pressure testing of water supply lines | 25d | 2027-10-11 | 2027-11-10 | CB-B01-3S-WMI-110, CB-B01-3S-WMI-115, CB-B01-3S-WMI-140 | CSD-LKO Calender (6 day + Holiday)-25 | Physical Progress [2080 h]; Plumbing [104360 INR]; TATA Projects Ltd-25 | 104,360 |
| CB-B01-3S-WMI-355 |  | Installation of concealed parts of toilet fixtures | 30d | 2027-10-11 | 2027-11-16 | CB-B01-3S-WMI-140 | CSD-LKO Calender (6 day + Holiday)-25 | Physical Progress [2970 h]; Plumbing [521800 INR]; TATA Projects Ltd-25 | 521,800 |
|  | 2 | **2nd FIx** |  | 2027-11-10 | 2028-01-21 |  |  |  |  |
| CB-B01-3S-WMI-150 |  | Insulation of hot water pipes (if applicable) | 15d | 2027-11-10 | 2027-11-27 | CB-B01-3S-WMI-125 | CSD-LKO Calender (6 day + Holiday)-25 | Physical Progress [1780 h]; Plumbing [521800 INR]; TATA Projects Ltd-25 | 521,800 |
| CB-B01-3S-WMI-130 |  | Installation of vertical risers and main distribution lines | 35d | 2027-11-16 | 2027-12-28 | CB-B01-3S-WMI-25, CB-B01-3S-WMI-275, CB-B01-3S-WMI-125, CB-B01-3S-WMI-355 | CSD-LKO Calender (6 day + Holiday)-25 | Physical Progress [5930 h]; Plumbing [1043599 INR]; TATA Projects Ltd-25 | 1,043,599 |
| CB-B01-3S-WMI-145 |  | Testing drainage lines for leakage/blockage | 15d | 2027-11-27 | 2027-12-15 | CB-B01-3S-WMI-140, CB-B01-3S-WMI-150 | CSD-LKO Calender (6 day + Holiday)-25 | Physical Progress [1780 h]; Plumbing [104360 INR]; TATA Projects Ltd-25 | 104,360 |
| CB-B01-3S-WMI-360 |  | Laying of ACO Drains | 20d | 2027-12-15 | 2028-01-10 | CB-B01-3S-WMI-145 | CSD-LKO Calender (6 day + Holiday)-25 | ACO Drain [4080997 INR]; Physical Progress [5930 h]; TATA Projects Ltd-25 | 4,080,997 |
| CB-B01-3S-WMI-135 |  | Fixing floor traps and gully traps | 20d | 2027-12-28 | 2028-01-21 | CB-B01-3S-WMI-130 | CSD-LKO Calender (6 day + Holiday)-25 | Physical Progress [1780 h]; Plumbing [313080 INR]; TATA Projects Ltd-25 | 313,080 |

| ID | WBS | Activity | Duration | Start | Finish | Predecessors | Calendar | Resources | Cost |
| --- | --- | --- | --- | --- | --- | --- | --- | --- | --- |
|  | 3 | **Final FIx** |  | 2028-01-10 | 2028-05-17 |  |  |  |  |
| CB-B01-3S-WMI-365 |  | Installation of ACO Drain Grating | 7d | 2028-01-10 | 2028-01-18 | CB-B01-3S-WMI-360 | CSD-LKO Calender (6 day + Holiday)-25 | Grating of Drain [2489760 INR]; Physical Progress [2080 h]; TATA Projects Ltd-25 | 2,489,760 |
| CB-B01-3S-WMI-155 |  | Installation of sanitary fixtures (WC, washbasins, urinals, sinks) | 10d | 2028-03-22 | 2028-04-03 | CB-B01-3S-WMI-280, CB-B01-3S-WMI-135 | CSD-LKO Calender (6 day + Holiday)-25 | Physical Progress [2970 h]; Plumbing [2087198 INR]; TATA Projects Ltd-25 | 2,087,198 |
| CB-B01-3S-WMI-160 |  | Installation of CP fittings (taps, mixers, showers, health faucets) | 10d | 2028-04-03 | 2028-04-15 | CB-B01-3S-WMI-155, CB-B01-3S-WMI-280 | CSD-LKO Calender (6 day + Holiday)-25 | Physical Progress [2970 h]; Plumbing [1043599 INR]; TATA Projects Ltd-25 | 1,043,599 |
| CB-B01-3S-WMI-165 |  | Connection of appliances | 25d | 2028-04-15 | 2028-05-17 | CB-B01-3S-WMI-160 | CSD-LKO Calender (6 day + Holiday)-25 | Physical Progress [2080 h]; Plumbing [521800 INR]; TATA Projects Ltd-25 | 521,800 |
|  | 4 | **Firefighting** |  | 2027-06-12 | 2028-05-23 |  |  |  |  |
|  | 1 | **1st Fix** |  | 2027-06-12 | 2027-10-11 |  |  |  |  |
| CB-B01-3S-WMI-175 |  | Fixing pipe supports and hangers | 35d | 2027-06-12 | 2027-07-23 | CB-B01-3S-WMI-15 | CSD-LKO Calender (6 day + Holiday)-25 | Physical Progress [2970 h]; Firefighting [431557 INR]; TATA Projects Ltd-25 | 431,557 |
| CB-B01-3S-WMI-170 |  | Laying branch piping | 35d | 2027-07-23 | 2027-09-02 | CB-B01-3S-WMI-175 | CSD-LKO Calender (6 day + Holiday)-25 | Physical Progress [4450 h]; Firefighting [924764 INR]; TATA Projects Ltd-25 | 924,764 |
| CB-B01-3S-WMI-180 |  | Hydrostatic pressure testing of piping | 30d | 2027-09-02 | 2027-10-11 | CB-B01-3S-WMI-170 | CSD-LKO Calender (6 day + Holiday)-25 | Physical Progress [1780 h]; Firefighting [123302 INR]; TATA Projects Ltd-25 | 123,302 |
|  | 2 | **2nd Fix** |  | 2027-10-11 | 2028-01-04 |  |  |  |  |
| CB-B01-3S-WMI-185 |  | Installation of vertical risers and distribution piping in shafts | 35d | 2027-10-11 | 2027-11-22 | CB-B01-3S-WMI-25, CB-B01-3S-WMI-180 | CSD-LKO Calender (6 day + Holiday)-25 | Physical Progress [7410 h]; Firefighting [1233019 INR]; TATA Projects Ltd-25 | 1,233,019 |
| CB-B01-3S-WMI-195 |  | Painting/insulation of exposed fire pipes | 30d | 2027-10-11 | 2027-11-16 | CB-B01-3S-WMI-180 | CSD-LKO Calender (6 day + Holiday)-25 | Physical Progress [2970 h]; Firefighting [61651 INR]; TATA Projects Ltd-25 | 61,651 |
| CB-B01-3S-WMI-200 |  | Testing risers and branch lines for leakage | 30d | 2027-11-16 | 2027-12-21 | CB-B01-3S-WMI-195 | CSD-LKO Calender (6 day + Holiday)-25 | Physical Progress [1780 h]; Firefighting [123302 INR]; TATA Projects Ltd-25 | 123,302 |
| CB-B01-3S-WMI-190 |  | Installation of sprinkler branch lines in ceilings | 35d | 2027-11-22 | 2028-01-04 | CB-B01-3S-WMI-185, CB-B01-3S-WMI-275 | CSD-LKO Calender (6 day + Holiday)-25 | Physical Progress [7410 h]; Firefighting [924764 INR]; TATA Projects Ltd-25 | 924,764 |
|  | 3 | **Final FIx** |  | 2028-03-22 | 2028-05-23 |  |  |  |  |
| CB-B01-3S-WMI-205 |  | Installation of sprinkler heads, nozzles, and final alignment | 35d | 2028-03-22 | 2028-05-05 | CB-B01-3S-WMI-280, CB-B01-3S-WMI-190 | CSD-LKO Calender (6 day + Holiday)-25 | Physical Progress [13350 h]; Firefighting [924764 INR]; TATA Projects Ltd-25 | 924,764 |
| CB-B01-3S-WMI-210 |  | Installation of hydrant accessories (valves, hose reels, cabinets) | 25d | 2028-03-22 | 2028-04-21 | CB-B01-3S-WMI-280 | CSD-LKO Calender (6 day + Holiday)-25 | Physical Progress [2970 h]; Firefighting [616510 INR]; TATA Projects Ltd-25 | 616,510 |
| CB-B01-3S-WMI-215 |  | Installation of portable fire extinguishers | 30d | 2028-03-22 | 2028-04-27 | CB-B01-3S-WMI-280 | CSD-LKO Calender (6 day + Holiday)-25 | Physical Progress [1780 h]; Firefighting [61651 INR]; TATA Projects Ltd-25 | 61,651 |
| CB-B01-3S-WMI-220 |  | Integration with fire alarm system | 20d | 2028-04-27 | 2028-05-23 | CB-B01-3S-WMI-215 | CSD-LKO Calender (6 day + Holiday)-25 | Physical Progress [5930 h]; Firefighting [308255 INR]; TATA Projects Ltd-25 | 308,255 |
|  | 5 | **ELV** |  | 2027-05-14 | 2028-05-17 |  |  |  |  |
|  | 1 | **1st Fix** |  | 2027-05-14 | 2027-07-23 |  |  |  |  |
| CB-B01-3S-WMI-375 |  | Slab Conduiting | 25d | 2027-05-14 | 2027-06-12 | CB-B01-3S-WMI-10 | CSD-LKO Calender (6 day + Holiday)-25 | Physical Progress [7410 h]; ELV [726016 INR]; TATA Projects Ltd-25 | 726,016 |
| CB-B01-3S-WMI-225 |  | Wall Conduiting | 30d | 2027-06-12 | 2027-07-17 | CB-B01-3S-WMI-15 | CSD-LKO Calender (6 day + Holiday)-25 | Physical Progress [2970 h]; ELV [311150 INR]; TATA Projects Ltd-25 | 311,150 |
| CB-B01-3S-WMI-245 |  | Installing back boxes for switches, sockets | 5d | 2027-07-17 | 2027-07-23 | CB-B01-3S-WMI-225, CB-B01-3S-WMI-375 | CSD-LKO Calender (6 day + Holiday)-25 | Physical Progress [1480 h]; ELV [518583 INR]; TATA Projects Ltd-25 | 518,583 |

| ID | WBS | Activity | Duration | Start | Finish | Predecessors | Calendar | Resources | Cost |
| --- | --- | --- | --- | --- | --- | --- | --- | --- | --- |
|  | 2 | **2nd Fix** |  | 2027-08-27 | 2027-12-28 |  |  |  |  |
| CB-B01-3S-WMI-230 |  | Cable tray installation | 15d | 2027-08-27 | 2027-09-15 | CB-B01-3S-WMI-25, CB-B01-3S-WMI-275 | CSD-LKO Calender (6 day + Holiday)-25 | Physical Progress [7410 h]; ELV [518583 INR]; TATA Projects Ltd-25 | 518,583 |
| CB-B01-3S-WMI-235 |  | Cabeling of ELV cable - IT/Fire Alarm/Public Address | 30d | 2027-09-15 | 2027-10-22 | CB-B01-3S-WMI-230 | CSD-LKO Calender (6 day + Holiday)-25 | Physical Progress [13350 h]; ELV [1244599 INR]; TATA Projects Ltd-25 | 1,244,599 |
| CB-B01-3S-WMI-320 |  | ELV Rack Installation | 15d | 2027-10-22 | 2027-11-10 | CB-B01-3S-WMI-235 | CSD-LKO Calender (6 day + Holiday)-25 | Physical Progress [2970 h]; ELV [518583 INR]; TATA Projects Ltd-25 | 518,583 |
| CB-B01-3S-WMI-240 |  | Termination of cables at junction boxes, patch panels, and control panels | 15d | 2027-11-10 | 2027-11-27 | CB-B01-3S-WMI-320 | CSD-LKO Calender (6 day + Holiday)-25 | Physical Progress [8900 h]; ELV [518583 INR]; TATA Projects Ltd-25 | 518,583 |
| CB-B01-3S-WMI-255 |  | Fixing devices like CCTV camera bases, card reader bases, smoke detector bases, PA Bases, Wifi Bases | 25d | 2027-11-27 | 2027-12-28 | CB-B01-3S-WMI-240 | CSD-LKO Calender (6 day + Holiday)-25 | Physical Progress [1190 h]; ELV [1037166 INR]; TATA Projects Ltd-25 | 1,037,166 |
|  | 3 | **3rd Fix** |  | 2028-03-22 | 2028-05-17 |  |  |  |  |
| CB-B01-3S-WMI-250 |  | Installation of data and Voice Faceplate | 25d | 2028-03-22 | 2028-04-21 | CB-B01-3S-WMI-280 | CSD-LKO Calender (6 day + Holiday)-25 | Physical Progress [4450 h]; ELV [518583 INR]; TATA Projects Ltd-25 | 518,583 |
| CB-B01-3S-WMI-260 |  | Installation of Camera & Wifi | 30d | 2028-03-22 | 2028-04-27 | CB-B01-3S-WMI-280 | CSD-LKO Calender (6 day + Holiday)-25 | Physical Progress [4450 h]; ELV [518583 INR]; TATA Projects Ltd-25 | 518,583 |
| CB-B01-3S-WMI-265 |  | Installation of fire alarm devices + Public Address | 15d | 2028-03-22 | 2028-04-08 | CB-B01-3S-WMI-280 | CSD-LKO Calender (6 day + Holiday)-25 | Physical Progress [4450 h]; ELV [622299 INR]; TATA Projects Ltd-25 | 622,299 |
| CB-B01-3S-WMI-325 |  | Installation of Active System | 15d | 2028-04-08 | 2028-04-27 | CB-B01-3S-WMI-265 | CSD-LKO Calender (6 day + Holiday)-25 | Physical Progress [4450 h]; ELV [1037166 INR]; TATA Projects Ltd-25 | 1,037,166 |
| CB-B01-3S-WMI-335 |  | Fire Panel Intallation & Integration | 25d | 2028-04-08 | 2028-05-11 | CB-B01-3S-WMI-265 | CSD-LKO Calender (6 day + Holiday)-25 | Physical Progress [7410 h]; ELV [518583 INR]; TATA Projects Ltd-25 | 518,583 |
| CB-B01-3S-WMI-340 |  | Installation & Integration of Audio Visual System | 25d | 2028-04-08 | 2028-05-11 | CB-B01-3S-WMI-265 | CSD-LKO Calender (6 day + Holiday)-25 | Physical Progress [7410 h]; ELV [518583 INR]; TATA Projects Ltd-25 | 518,583 |
| CB-B01-3S-WMI-345 |  | Installation & Integration of Access Control | 25d | 2028-04-08 | 2028-05-11 | CB-B01-3S-WMI-265 | CSD-LKO Calender (6 day + Holiday)-25 | Physical Progress [7410 h]; ELV [518583 INR]; TATA Projects Ltd-25 | 518,583 |
| CB-B01-3S-WMI-330 |  | Integration of Active components | 15d | 2028-04-27 | 2028-05-17 | CB-B01-3S-WMI-325 | CSD-LKO Calender (6 day + Holiday)-25 | Physical Progress [4450 h]; ELV [207433 INR]; TATA Projects Ltd-25 | 207,433 |
|  | 2 | **Dry Finishes** |  | 2027-06-12 | 2028-09-22 |  |  |  |  |
| CB-B01-3S-WMI-275 |  | Painting on Ceiling (Ceiling Finish) | 15d | 2027-06-12 | 2027-06-30 | CB-B01-3S-WMI-15 | CSD-LKO Calender (6 day + Holiday)-25 | Painting [6027 Sq m]; Painter [6030 h]; Helper [6030 h]; Physical Progress [4450 h]; TATA Projects Ltd-25 | 1,377,892.74 |
| CB-B01-3S-WMI-270 |  | Installation of Gypsum Board | 10d | 2028-02-26 | 2028-03-09 | CB-B01-3S-WMI-20 | CSD-LKO Calender (6 day + Holiday)-25 | ID Work [1105233 INR]; Physical Progress [2970 h]; TATA Projects Ltd-25 | 1,105,233 |
| CB-B01-3S-WMI-385 |  | Civil Misc Works | 30d | 2028-02-26 | 2028-04-03 | CB-B01-3S-WMI-20 | CSD-LKO Calender (6 day + Holiday)-25 | Civil Misc Works [1689710 INR]; Physical Progress [8900 h]; TATA Projects Ltd-25 | 1,689,710 |
| CB-B01-3S-WMI-280 |  | Wall Painting first coat including putty | 10d | 2028-03-09 | 2028-03-22 | CB-B01-3S-WMI-270 | CSD-LKO Calender (6 day + Holiday)-25 | Painting [6027 Sq m]; Painter [6030 h]; Helper [6030 h]; Physical Progress [2970 h]; TATA Projects Ltd-25 | 1,377,892.74 |
| CB-B01-3S-WMI-295 |  | Wheel stoppers | 8d | 2028-03-22 | 2028-03-31 | CB-B01-3S-WMI-280 | CSD-LKO Calender (6 day + Holiday)-25 | Wheel Stopper [11088 INR]; Physical Progress [2370 h]; TATA Projects Ltd-25 | 11,088 |
| CB-B01-3S-WMI-350 |  | Door & Window | 10d | 2028-03-22 | 2028-04-03 | CB-B01-3S-WMI-280 | CSD-LKO Calender (6 day + Holiday)-25 | ID Work [1105233 INR]; Physical Progress [2970 h]; TATA Projects Ltd-25 | 1,105,233 |
| CB-B01-3S-WMI-290 |  | Line marking for parking bays, arrows, pedestrian paths | 8d | 2028-03-31 | 2028-04-10 | CB-B01-3S-WMI-295 | CSD-LKO Calender (6 day + Holiday)-25 | Line / Arrow Marking [414734 INR]; Physical Progress [2370 h]; TATA Projects Ltd-25 | 414,734 |
| CB-B01-3S-WMI-285 |  | Wall painting final coat | 15d | 2028-09-05 | 2028-09-22 | CB-B01-3S-WMI-290, CB-B01-3S-WMI-250, CB-B01-3S-WMI-260, CB-B01-3S-WMI-220, CB-B01-3S-WMI-205, CB-B01-3S-WMI-210, CB-B01-3S-WMI-215, CB-B01-3S-WMI-165, CB-B01-3S-WMI-45, CB-B01-3S-WMI-100, CB-B01-3S-WMI-335, CB-B01-3S-WMI-350, CB-B01-3S-WMI-365, CB-B01-3S-WMI-340, CB-B01-3S-WMI-345, CB-B01-3S-WMI-330, CB-B01-3S-WMI-385, CB-B01-HS-MEP45, CB-B01-HS-MEP90, CB-B01-HS-MEP40, CB-B01-HS-MEP35, CB-B01-HS-MEP120, CB-B01-HS-MEP50, CB-B01-HS-MEP125, CB-B01-HS-MEP130, CB-B01-HS-MEP70, CB-B01-HS-MEP75, CB-B01-HS-MEP25, CB-B01-HS-MEP30, CB-B01-HS-MEP55, CB-B01-HS-MEP60, CB-B01-HS-MEP65, CB-B01-HS-MEP80, CB-B01-HS-MEP85, CB-B01-HS-MEP95, CB-B01-HS-MEP20, CB-B01-HS-MEP10, CB-B01-HS-MEP15, CB-B01-HS-MEP100, CB-B01-HS-MEP105, CB-B01-HS-MEP110, CB-B01-HS-MEP115 | CSD-LKO Calender (6 day + Holiday)-25 | Painting [6027 Sq m]; Painter [6030 h]; Helper [6030 h]; Physical Progress [1780 h]; TATA Projects Ltd-25 | 1,377,892.74 |

| ID | WBS | Activity | Duration | Start | Finish | Predecessors | Calendar | Resources | Cost |
| --- | --- | --- | --- | --- | --- | --- | --- | --- | --- |
|  | 2 | **Retail Block 2** |  | 2027-07-28 | 2028-09-22 |  |  |  |  |
|  | 1 | **Wet Finishes** |  | 2027-07-28 | 2028-05-24 |  |  |  |  |
| CB-B01-RB2-WMI-10 |  | Deshuttering | 7d | 2027-07-28 | 2027-08-05 | RB2-SS-1st.520, RB2-SS-B-01.1005 | CSD-LKO Calender (6 day + Holiday)-25 | Physical Progress [2080 h]; TATA Projects Ltd-25 |  |
| CB-B01-RB2-WMI-15 |  | Brickwork/Blockwork | 25d | 2027-08-05 | 2027-09-03 | CB-B01-RB2-WMI-10 | CSD-LKO Calender (6 day + Holiday)-25 | Masonry [1098 CuM]; Mason [7320 h]; Helper [3660 h]; Physical Progress [13350 h]; TATA Projects Ltd-25 | 10,469,825.28 |
| CB-B01-RB2-WMI-395 |  | Structural Misc Works | 50d | 2027-08-05 | 2027-10-05 | CB-B01-RB2-WMI-10 | CSD-LKO Calender (6 day + Holiday)-25 | Structural Misc Works [818513 INR]; Physical Progress [14830 h]; TATA Projects Ltd-25 | 818,513 |
| CB-B01-RB2-WMI-25 |  | Plaster | 30d | 2027-10-18 | 2027-11-23 | CB-B01-RB2-WMI-30, CB-B01-RB2-WMI-60, CB-B01-RB2-WMI-245, CB-B01-RB2-WMI-395 | CSD-LKO Calender (6 day + Holiday)-25 | Plaster [11968 Sqr Mtr]; Mason [7980 h]; Helper [3990 h]; Physical Progress [8900 h]; TATA Projects Ltd-25 | 6,629,194.88 |
| CB-B01-RB2-WMI-20 |  | Flooring | 25d | 2028-04-22 | 2028-05-24 | CB-B01-RB2-WMI-15, CB-B01-RB2-WMI-395, CB-B01-RB2-WMI-80, CB-B01-RB2-WMI-85, CB-B01-RB2-WMI-90, CB-B01-RB2-WMI-300, CB-B01-RB2-WMI-95, CB-B01-RB2-WMI-35, CB-B01-RB2-WMI-40, CB-B01-RB2-WMI-50, CB-B01-RB2-WMI-310, CB-B01-RB2-WMI-405, CB-B01-RB2-WMI-315, CB-B01-RB2-WMI-150, CB-B01-RB2-WMI-130, CB-B01-RB2-WMI-145, CB-B01-RB2-WMI-135, CB-B01-RB2-WMI-375, CB-B01-RB2-WMI-185, CB-B01-RB2-WMI-195, CB-B01-RB2-WMI-200, CB-B01-RB2-WMI-190, CB-B01-RB2-WMI-230, CB-B01-RB2-WMI-235, CB-B01-RB2-WMI-320, CB-B01-RB2-WMI-240, CB-B01-RB2-WMI-255 | CSD-LKO Calender (6 day + Holiday)-25 | Flooring [13971434 INR]; Flooring Mason [7000 h]; Helper [7000 h]; Physical Progress [14830 h]; TATA Projects Ltd-25 | 13,971,434 |
|  | 3 | **Water Tanks** |  | 2027-08-05 | 2027-10-23 |  |  |  |  |
| CB-B01-RB2-WMI-365 |  | Installation of Rungs | 10d | 2027-08-05 | 2027-08-17 | CB-B01-RB2-WMI-10 | CSD-LKO Calender (6 day + Holiday)-25 | Rungs [364811 INR]; Physical Progress [2970 h]; TATA Projects Ltd-25 | 364,811 |
| CB-B01-RB2-WMI-355 |  | Waterproofing | 30d | 2027-08-17 | 2027-09-22 | CB-B01-RB2-WMI-365 | CSD-LKO Calender (6 day + Holiday)-25 | Waterproofing [8564838 INR]; Waterprrofing Mason [8160 h]; Helper [4080 h]; Physical Progress [8900 h]; TATA Projects Ltd-25 | 8,564,838 |
| CB-B01-RB2-WMI-360 |  | Flooring | 25d | 2027-09-22 | 2027-10-23 | CB-B01-RB2-WMI-355 | CSD-LKO Calender (6 day + Holiday)-25 | Flooring [8732146 INR]; Flooring Mason [4380 h]; Helper [4380 h]; Physical Progress [8900 h]; TATA Projects Ltd-25 | 8,732,146 |
|  | 5 | **Low Side MEP** |  | 2027-08-05 | 2028-08-28 |  |  |  |  |
|  | 2 | **HVAC** |  | 2027-09-03 | 2028-08-28 |  |  |  |  |
|  | 1 | **1st Fix** |  | 2027-09-03 | 2027-12-29 |  |  |  |  |
| CB-B01-RB2-WMI-305 |  | Duct Support Fabrication | 35d | 2027-09-03 | 2027-10-18 | CB-B01-RB2-WMI-15 | CSD-LKO Calender (6 day + Holiday)-25 | Physical Progress [4450 h]; HVAC [210890 INR]; TATA Projects Ltd-25 | 210,890 |
| CB-B01-RB2-WMI-65 |  | Installing duct hangers and supports | 30d | 2027-10-18 | 2027-11-23 | CB-B01-RB2-WMI-275, CB-B01-RB2-WMI-305 | CSD-LKO Calender (6 day + Holiday)-25 | Physical Progress [2970 h]; HVAC [421779 INR]; TATA Projects Ltd-25 | 421,779 |
| CB-B01-RB2-WMI-70 |  | Laying concealed/exposed refrigerant piping | 30d | 2027-11-23 | 2027-12-29 | CB-B01-RB2-WMI-65 | CSD-LKO Calender (6 day + Holiday)-25 | Physical Progress [4450 h]; HVAC [105445 INR]; TATA Projects Ltd-25 | 105,445 |
| CB-B01-RB2-WMI-75 |  | Laying concealed/exposed drain piping | 30d | 2027-11-23 | 2027-12-29 | CB-B01-RB2-WMI-65 | CSD-LKO Calender (6 day + Holiday)-25 | Physical Progress [2970 h]; HVAC [632669 INR]; TATA Projects Ltd-25 | 632,669 |
|  | 2 | **2nd Fix** |  | 2027-11-23 | 2028-04-10 |  |  |  |  |
| CB-B01-RB2-WMI-80 |  | Duct installation | 20d | 2027-11-23 | 2027-12-16 | CB-B01-RB2-WMI-65 | CSD-LKO Calender (6 day + Holiday)-25 | Physical Progress [4450 h]; HVAC [1581672 INR]; TATA Projects Ltd-25 | 1,581,672 |
| CB-B01-RB2-WMI-85 |  | Insulation of ducts (thermal/acoustic) | 15d | 2027-12-16 | 2028-01-05 | CB-B01-RB2-WMI-80 | CSD-LKO Calender (6 day + Holiday)-25 | Physical Progress [1780 h]; HVAC [949003 INR]; TATA Projects Ltd-25 | 949,003 |
| CB-B01-RB2-WMI-90 |  | Installation of chilled water piping / VRF piping | 15d | 2028-01-05 | 2028-01-22 | CB-B01-RB2-WMI-85 | CSD-LKO Calender (6 day + Holiday)-25 | Physical Progress [1780 h]; HVAC [2108896 INR]; TATA Projects Ltd-25 | 2,108,896 |
| CB-B01-RB2-WMI-300 |  | Installation of indoor units including AHU, FCU | 45d | 2028-01-22 | 2028-03-17 | CB-B01-RB2-WMI-90, CB-B01-RB2-WMI-70, CB-B01-RB2-WMI-75 | CSD-LKO Calender (6 day + Holiday)-25 | Physical Progress [13350 h]; HVAC [1898006 INR]; TATA Projects Ltd-25 | 1,898,006 |
| CB-B01-RB2-WMI-95 |  | Connecting refrigerant and drain piping to indoor units | 20d | 2028-03-17 | 2028-04-10 | CB-B01-RB2-WMI-300 | CSD-LKO Calender (6 day + Holiday)-25 | Physical Progress [1780 h]; HVAC [527224 INR]; TATA Projects Ltd-25 | 527,224 |

| ID | WBS | Activity | Duration | Start | Finish | Predecessors | Calendar | Resources | Cost |
| --- | --- | --- | --- | --- | --- | --- | --- | --- | --- |
|  | 3 | **Final Fix** |  | 2028-06-16 | 2028-08-28 |  |  |  |  |
| CB-B01-RB2-WMI-105 |  | Installing grills, diffusers, dampers | 30d | 2028-06-16 | 2028-07-21 | CB-B01-RB2-WMI-280 | CSD-LKO Calender (6 day + Holiday)-25 | Physical Progress [1780 h]; HVAC [1054448 INR]; TATA Projects Ltd-25 | 1,054,448 |
| CB-B01-RB2-WMI-100 |  | Installation of thermostats and control panels | 30d | 2028-07-21 | 2028-08-28 | CB-B01-RB2-WMI-105 | CSD-LKO Calender (6 day + Holiday)-25 | Physical Progress [1780 h]; HVAC [527224 INR]; TATA Projects Ltd-25 | 527,224 |
|  | 1 | **Electrical** |  | 2027-08-05 | 2028-08-02 |  |  |  |  |
|  | 1 | **1st Fix** |  | 2027-08-05 | 2027-10-18 |  |  |  |  |
| CB-B01-RB2-WMI-385 |  | Slab Conduiting | 25d | 2027-08-05 | 2027-09-03 | CB-B01-RB2-WMI-10 | CSD-LKO Calender (6 day + Holiday)-25 | Physical Progress [7410 h]; Electrical [926153 INR]; TATA Projects Ltd-25 | 926,153 |
| CB-B01-RB2-WMI-30 |  | Wall Conduiting | 30d | 2027-09-03 | 2027-10-12 | CB-B01-RB2-WMI-15 | CSD-LKO Calender (6 day + Holiday)-25 | Physical Progress [2970 h]; Electrical [463076 INR]; TATA Projects Ltd-25 | 463,076 |
| CB-B01-RB2-WMI-60 |  | Installing back boxes for switches, sockets | 5d | 2027-10-12 | 2027-10-18 | CB-B01-RB2-WMI-30, CB-B01-RB2-WMI-385 | CSD-LKO Calender (6 day + Holiday)-25 | Physical Progress [1480 h]; Electrical [277846 INR]; TATA Projects Ltd-25 | 277,846 |
|  | 2 | **2nd Fix** |  | 2027-11-23 | 2028-04-22 |  |  |  |  |
| CB-B01-RB2-WMI-35 |  | Cable tray laying | 15d | 2027-11-23 | 2027-12-10 | CB-B01-RB2-WMI-25, CB-B01-RB2-WMI-275 | CSD-LKO Calender (6 day + Holiday)-25 | Physical Progress [7410 h]; Electrical [370461 INR]; TATA Projects Ltd-25 | 370,461 |
| CB-B01-RB2-WMI-40 |  | Cabling & Wire Pulling | 45d | 2027-12-10 | 2028-02-04 | CB-B01-RB2-WMI-35 | CSD-LKO Calender (6 day + Holiday)-25 | Physical Progress [13350 h]; Electrical [1852305 INR]; TATA Projects Ltd-25 | 1,852,305 |
| CB-B01-RB2-WMI-50 |  | DB fixing and connecting | 20d | 2028-02-04 | 2028-02-28 | CB-B01-RB2-WMI-40 | CSD-LKO Calender (6 day + Holiday)-25 | Physical Progress [4450 h]; Electrical [277846 INR]; TATA Projects Ltd-25 | 277,846 |
| CB-B01-RB2-WMI-310 |  | Floor/Distribution Panel Installation | 15d | 2028-02-28 | 2028-03-17 | CB-B01-RB2-WMI-50 | CSD-LKO Calender (6 day + Holiday)-25 | Physical Progress [1480 h]; Electrical [740922 INR]; TATA Projects Ltd-25 | 740,922 |
| CB-B01-RB2-WMI-405 |  | Floor Rising Main Installation | 15d | 2028-03-17 | 2028-04-04 | CB-B01-RB2-WMI-310 | CSD-LKO Calender (6 day + Holiday)-25 | Physical Progress [2970 h]; Electrical [1296614 INR]; TATA Projects Ltd-25 | 1,296,614 |
| CB-B01-RB2-WMI-315 |  | Equipment Earthing | 15d | 2028-04-04 | 2028-04-22 | CB-B01-RB2-WMI-310, CB-B01-RB2-WMI-405 | CSD-LKO Calender (6 day + Holiday)-25 | Physical Progress [2970 h]; Electrical [277846 INR]; TATA Projects Ltd-25 | 277,846 |
|  | 3 | **Final Fix** |  | 2028-06-16 | 2028-08-02 |  |  |  |  |
| CB-B01-RB2-WMI-55 |  | Switches & Socket | 20d | 2028-06-16 | 2028-07-10 | CB-B01-RB2-WMI-280 | CSD-LKO Calender (6 day + Holiday)-25 | Physical Progress [5930 h]; Electrical [926153 INR]; TATA Projects Ltd-25 | 926,153 |
| CB-B01-RB2-WMI-45 |  | Light Fixtures | 20d | 2028-07-10 | 2028-08-02 | CB-B01-RB2-WMI-55, CB-B01-RB2-WMI-315 | CSD-LKO Calender (6 day + Holiday)-25 | Physical Progress [4450 h]; Electrical [1389229 INR]; TATA Projects Ltd-25 | 1,389,229 |
|  | 3 | **Plumbing** |  | 2027-09-03 | 2028-08-08 |  |  |  |  |
|  | 1 | **1st Fix** |  | 2027-09-03 | 2028-02-10 |  |  |  |  |
| CB-B01-RB2-WMI-120 |  | Fixing pipe supports and clamps | 35d | 2027-09-03 | 2027-10-18 | CB-B01-RB2-WMI-15 | CSD-LKO Calender (6 day + Holiday)-25 | Physical Progress [2970 h]; Plumbing [521800 INR]; TATA Projects Ltd-25 | 521,800 |
| CB-B01-RB2-WMI-110 |  | Laying water supply pipes (hot & cold) | 35d | 2027-10-18 | 2027-11-29 | CB-B01-RB2-WMI-120 | CSD-LKO Calender (6 day + Holiday)-25 | Physical Progress [4450 h]; Plumbing [1043599 INR]; TATA Projects Ltd-25 | 1,043,599 |
| CB-B01-RB2-WMI-115 |  | Laying drainage pipes (soil, waste, vent) | 35d | 2027-10-18 | 2027-11-29 | CB-B01-RB2-WMI-120 | CSD-LKO Calender (6 day + Holiday)-25 | Physical Progress [4450 h]; Plumbing [1043599 INR]; TATA Projects Ltd-25 | 1,043,599 |
| CB-B01-RB2-WMI-140 |  | Installation of plumbing fixture base supports (WC frames, sink brackets) | 30d | 2027-11-29 | 2028-01-05 | CB-B01-RB2-WMI-115 | CSD-LKO Calender (6 day + Holiday)-25 | Physical Progress [1780 h]; Plumbing [521800 INR]; TATA Projects Ltd-25 | 521,800 |
| CB-B01-RB2-WMI-125 |  | Pressure testing of water supply lines | 25d | 2028-01-05 | 2028-02-04 | CB-B01-RB2-WMI-110, CB-B01-RB2-WMI-115, CB-B01-RB2-WMI-140 | CSD-LKO Calender (6 day + Holiday)-25 | Physical Progress [2080 h]; Plumbing [104360 INR]; TATA Projects Ltd-25 | 104,360 |
| CB-B01-RB2-WMI-370 |  | Installation of concealed parts of toilet fixtures | 30d | 2028-01-05 | 2028-02-10 | CB-B01-RB2-WMI-140 | CSD-LKO Calender (6 day + Holiday)-25 | Physical Progress [2970 h]; Plumbing [521800 INR]; TATA Projects Ltd-25 | 521,800 |

| ID | WBS | Activity | Duration | Start | Finish | Predecessors | Calendar | Resources | Cost |
| --- | --- | --- | --- | --- | --- | --- | --- | --- | --- |
|  | 2 | **2nd FIx** |  | 2028-02-04 | 2028-04-17 |  |  |  |  |
| CB-B01-RB2-WMI-150 |  | Insulation of hot water pipes (if applicable) | 15d | 2028-02-04 | 2028-02-22 | CB-B01-RB2-WMI-125 | CSD-LKO Calender (6 day + Holiday)-25 | Physical Progress [1780 h]; Plumbing [521800 INR]; TATA Projects Ltd-25 | 521,800 |
| CB-B01-RB2-WMI-130 |  | Installation of vertical risers and main distribution lines | 35d | 2028-02-10 | 2028-03-23 | CB-B01-RB2-WMI-25, CB-B01-RB2-WMI-275, CB-B01-RB2-WMI-125, CB-B01-RB2-WMI-370 | CSD-LKO Calender (6 day + Holiday)-25 | Physical Progress [5930 h]; Plumbing [1043599 INR]; TATA Projects Ltd-25 | 1,043,599 |
| CB-B01-RB2-WMI-145 |  | Testing drainage lines for leakage/blockage | 15d | 2028-02-22 | 2028-03-10 | CB-B01-RB2-WMI-140, CB-B01-RB2-WMI-150 | CSD-LKO Calender (6 day + Holiday)-25 | Physical Progress [1780 h]; Plumbing [104360 INR]; TATA Projects Ltd-25 | 104,360 |
| CB-B01-RB2-WMI-375 |  | Laying of ACO Drains | 20d | 2028-03-10 | 2028-04-04 | CB-B01-RB2-WMI-145 | CSD-LKO Calender (6 day + Holiday)-25 | ACO Drain [4080997 INR]; Physical Progress [5930 h]; TATA Projects Ltd-25 | 4,080,997 |
| CB-B01-RB2-WMI-135 |  | Fixing floor traps and gully traps | 20d | 2028-03-23 | 2028-04-17 | CB-B01-RB2-WMI-130 | CSD-LKO Calender (6 day + Holiday)-25 | Physical Progress [1780 h]; Plumbing [313080 INR]; TATA Projects Ltd-25 | 313,080 |
|  | 3 | **Final FIx** |  | 2028-04-04 | 2028-08-08 |  |  |  |  |
| CB-B01-RB2-WMI-380 |  | Installation of ACO Drain Grating | 7d | 2028-04-04 | 2028-04-12 | CB-B01-RB2-WMI-375 | CSD-LKO Calender (6 day + Holiday)-25 | Grating of Drain [2489760 INR]; Physical Progress [2080 h]; TATA Projects Ltd-25 | 2,489,760 |
| CB-B01-RB2-WMI-155 |  | Installation of sanitary fixtures (WC, washbasins, urinals, sinks) | 10d | 2028-06-16 | 2028-06-28 | CB-B01-RB2-WMI-280, CB-B01-RB2-WMI-135 | CSD-LKO Calender (6 day + Holiday)-25 | Physical Progress [2970 h]; Plumbing [2087198 INR]; TATA Projects Ltd-25 | 2,087,198 |
| CB-B01-RB2-WMI-160 |  | Installation of CP fittings (taps, mixers, showers, health faucets) | 10d | 2028-06-28 | 2028-07-10 | CB-B01-RB2-WMI-155, CB-B01-RB2-WMI-280 | CSD-LKO Calender (6 day + Holiday)-25 | Physical Progress [2970 h]; Plumbing [1043599 INR]; TATA Projects Ltd-25 | 1,043,599 |
| CB-B01-RB2-WMI-165 |  | Connection of appliances | 25d | 2028-07-10 | 2028-08-08 | CB-B01-RB2-WMI-160 | CSD-LKO Calender (6 day + Holiday)-25 | Physical Progress [2080 h]; Plumbing [521800 INR]; TATA Projects Ltd-25 | 521,800 |
|  | 4 | **Firefighting** |  | 2027-09-03 | 2028-08-14 |  |  |  |  |
|  | 1 | **1st Fix** |  | 2027-09-03 | 2028-01-05 |  |  |  |  |
| CB-B01-RB2-WMI-175 |  | Fixing pipe supports and hangers | 35d | 2027-09-03 | 2027-10-18 | CB-B01-RB2-WMI-15 | CSD-LKO Calender (6 day + Holiday)-25 | Physical Progress [2970 h]; Firefighting [431557 INR]; TATA Projects Ltd-25 | 431,557 |
| CB-B01-RB2-WMI-170 |  | Laying branch piping | 35d | 2027-10-18 | 2027-11-29 | CB-B01-RB2-WMI-175 | CSD-LKO Calender (6 day + Holiday)-25 | Physical Progress [4450 h]; Firefighting [924764 INR]; TATA Projects Ltd-25 | 924,764 |
| CB-B01-RB2-WMI-180 |  | Hydrostatic pressure testing of piping | 30d | 2027-11-29 | 2028-01-05 | CB-B01-RB2-WMI-170 | CSD-LKO Calender (6 day + Holiday)-25 | Physical Progress [1780 h]; Firefighting [123302 INR]; TATA Projects Ltd-25 | 123,302 |
|  | 2 | **2nd Fix** |  | 2028-01-05 | 2028-03-29 |  |  |  |  |
| CB-B01-RB2-WMI-185 |  | Installation of vertical risers and distribution piping in shafts | 35d | 2028-01-05 | 2028-02-16 | CB-B01-RB2-WMI-25, CB-B01-RB2-WMI-180 | CSD-LKO Calender (6 day + Holiday)-25 | Physical Progress [7410 h]; Firefighting [1233019 INR]; TATA Projects Ltd-25 | 1,233,019 |
| CB-B01-RB2-WMI-195 |  | Painting/insulation of exposed fire pipes | 30d | 2028-01-05 | 2028-02-10 | CB-B01-RB2-WMI-180 | CSD-LKO Calender (6 day + Holiday)-25 | Physical Progress [2970 h]; Firefighting [61651 INR]; TATA Projects Ltd-25 | 61,651 |
| CB-B01-RB2-WMI-200 |  | Testing risers and branch lines for leakage | 30d | 2028-02-10 | 2028-03-17 | CB-B01-RB2-WMI-195 | CSD-LKO Calender (6 day + Holiday)-25 | Physical Progress [1780 h]; Firefighting [123302 INR]; TATA Projects Ltd-25 | 123,302 |
| CB-B01-RB2-WMI-190 |  | Installation of sprinkler branch lines in ceilings | 35d | 2028-02-16 | 2028-03-29 | CB-B01-RB2-WMI-185, CB-B01-RB2-WMI-275 | CSD-LKO Calender (6 day + Holiday)-25 | Physical Progress [7410 h]; Firefighting [924764 INR]; TATA Projects Ltd-25 | 924,764 |
|  | 3 | **Final FIx** |  | 2028-06-16 | 2028-08-14 |  |  |  |  |
| CB-B01-RB2-WMI-205 |  | Installation of sprinkler heads, nozzles, and final alignment | 35d | 2028-06-16 | 2028-07-27 | CB-B01-RB2-WMI-280, CB-B01-RB2-WMI-190 | CSD-LKO Calender (6 day + Holiday)-25 | Physical Progress [13350 h]; Firefighting [924764 INR]; TATA Projects Ltd-25 | 924,764 |
| CB-B01-RB2-WMI-210 |  | Installation of hydrant accessories (valves, hose reels, cabinets) | 25d | 2028-06-16 | 2028-07-15 | CB-B01-RB2-WMI-280 | CSD-LKO Calender (6 day + Holiday)-25 | Physical Progress [2970 h]; Firefighting [616510 INR]; TATA Projects Ltd-25 | 616,510 |
| CB-B01-RB2-WMI-215 |  | Installation of portable fire extinguishers | 30d | 2028-06-16 | 2028-07-21 | CB-B01-RB2-WMI-280 | CSD-LKO Calender (6 day + Holiday)-25 | Physical Progress [1780 h]; Firefighting [61651 INR]; TATA Projects Ltd-25 | 61,651 |
| CB-B01-RB2-WMI-220 |  | Integration with fire alarm system | 20d | 2028-07-21 | 2028-08-14 | CB-B01-RB2-WMI-215 | CSD-LKO Calender (6 day + Holiday)-25 | Physical Progress [5930 h]; Firefighting [308255 INR]; TATA Projects Ltd-25 | 308,255 |

| ID | WBS | Activity | Duration | Start | Finish | Predecessors | Calendar | Resources | Cost |
| --- | --- | --- | --- | --- | --- | --- | --- | --- | --- |
|  | 5 | **ELV** |  | 2027-08-05 | 2028-08-08 |  |  |  |  |
|  | 1 | **1st Fix** |  | 2027-08-05 | 2027-10-18 |  |  |  |  |
| CB-B01-RB2-WMI-390 |  | Slab Conduiting | 25d | 2027-08-05 | 2027-09-03 | CB-B01-RB2-WMI-10 | CSD-LKO Calender (6 day + Holiday)-25 | Physical Progress [7410 h]; ELV [726016 INR]; TATA Projects Ltd-25 | 726,016 |
| CB-B01-RB2-WMI-225 |  | Wall Conduiting | 30d | 2027-09-03 | 2027-10-12 | CB-B01-RB2-WMI-15 | CSD-LKO Calender (6 day + Holiday)-25 | Physical Progress [2970 h]; ELV [311150 INR]; TATA Projects Ltd-25 | 311,150 |
| CB-B01-RB2-WMI-245 |  | Installing back boxes for switches, sockets | 5d | 2027-10-12 | 2027-10-18 | CB-B01-RB2-WMI-225, CB-B01-RB2-WMI-390 | CSD-LKO Calender (6 day + Holiday)-25 | Physical Progress [1480 h]; ELV [518583 INR]; TATA Projects Ltd-25 | 518,583 |
|  | 2 | **2nd Fix** |  | 2027-11-23 | 2028-03-23 |  |  |  |  |
| CB-B01-RB2-WMI-230 |  | Cable tray installation | 15d | 2027-11-23 | 2027-12-10 | CB-B01-RB2-WMI-25, CB-B01-RB2-WMI-275 | CSD-LKO Calender (6 day + Holiday)-25 | Physical Progress [7410 h]; ELV [518583 INR]; TATA Projects Ltd-25 | 518,583 |
| CB-B01-RB2-WMI-235 |  | Cabeling of ELV cable - IT/Fire Alarm/Public Address | 30d | 2027-12-10 | 2028-01-17 | CB-B01-RB2-WMI-230 | CSD-LKO Calender (6 day + Holiday)-25 | Physical Progress [13350 h]; ELV [1244599 INR]; TATA Projects Ltd-25 | 1,244,599 |
| CB-B01-RB2-WMI-320 |  | ELV Rack Installation | 15d | 2028-01-17 | 2028-02-04 | CB-B01-RB2-WMI-235 | CSD-LKO Calender (6 day + Holiday)-25 | Physical Progress [2970 h]; ELV [518583 INR]; TATA Projects Ltd-25 | 518,583 |
| CB-B01-RB2-WMI-240 |  | Termination of cables at junction boxes, patch panels, and control panels | 15d | 2028-02-04 | 2028-02-22 | CB-B01-RB2-WMI-320 | CSD-LKO Calender (6 day + Holiday)-25 | Physical Progress [8900 h]; ELV [518583 INR]; TATA Projects Ltd-25 | 518,583 |
| CB-B01-RB2-WMI-255 |  | Fixing devices like CCTV camera bases, card reader bases, smoke detector bases, PA Bases, Wifi Bases | 25d | 2028-02-22 | 2028-03-23 | CB-B01-RB2-WMI-240 | CSD-LKO Calender (6 day + Holiday)-25 | Physical Progress [1190 h]; ELV [1037166 INR]; TATA Projects Ltd-25 | 1,037,166 |
|  | 3 | **3rd Fix** |  | 2028-06-16 | 2028-08-08 |  |  |  |  |
| CB-B01-RB2-WMI-250 |  | Installation of data and Voice Faceplate | 25d | 2028-06-16 | 2028-07-15 | CB-B01-RB2-WMI-280 | CSD-LKO Calender (6 day + Holiday)-25 | Physical Progress [4450 h]; ELV [518583 INR]; TATA Projects Ltd-25 | 518,583 |
| CB-B01-RB2-WMI-260 |  | Installation of Camera & Wifi | 30d | 2028-06-16 | 2028-07-21 | CB-B01-RB2-WMI-280 | CSD-LKO Calender (6 day + Holiday)-25 | Physical Progress [4450 h]; ELV [518583 INR]; TATA Projects Ltd-25 | 518,583 |
| CB-B01-RB2-WMI-265 |  | Installation of fire alarm devices + Public Address | 15d | 2028-06-16 | 2028-07-04 | CB-B01-RB2-WMI-280 | CSD-LKO Calender (6 day + Holiday)-25 | Physical Progress [4450 h]; ELV [622299 INR]; TATA Projects Ltd-25 | 622,299 |
| CB-B01-RB2-WMI-325 |  | Installation of Active System | 15d | 2028-07-04 | 2028-07-21 | CB-B01-RB2-WMI-265 | CSD-LKO Calender (6 day + Holiday)-25 | Physical Progress [4450 h]; ELV [1037166 INR]; TATA Projects Ltd-25 | 1,037,166 |
| CB-B01-RB2-WMI-335 |  | Fire Panel Intallation & Integration | 25d | 2028-07-04 | 2028-08-02 | CB-B01-RB2-WMI-265 | CSD-LKO Calender (6 day + Holiday)-25 | Physical Progress [7410 h]; ELV [518583 INR]; TATA Projects Ltd-25 | 518,583 |
| CB-B01-RB2-WMI-340 |  | Installation & Integration of Audio Visual System | 25d | 2028-07-04 | 2028-08-02 | CB-B01-RB2-WMI-265 | CSD-LKO Calender (6 day + Holiday)-25 | Physical Progress [7410 h]; ELV [518583 INR]; TATA Projects Ltd-25 | 518,583 |
| CB-B01-RB2-WMI-345 |  | Installation & Integration of Access Control | 25d | 2028-07-04 | 2028-08-02 | CB-B01-RB2-WMI-265 | CSD-LKO Calender (6 day + Holiday)-25 | Physical Progress [7410 h]; ELV [518583 INR]; TATA Projects Ltd-25 | 518,583 |
| CB-B01-RB2-WMI-330 |  | Integration of Active components | 15d | 2028-07-21 | 2028-08-08 | CB-B01-RB2-WMI-325 | CSD-LKO Calender (6 day + Holiday)-25 | Physical Progress [4450 h]; ELV [207433 INR]; TATA Projects Ltd-25 | 207,433 |
|  | 2 | **Dry Finishes** |  | 2027-09-03 | 2028-09-22 |  |  |  |  |
| CB-B01-RB2-WMI-275 |  | Painting on Ceiling (Ceiling Finish) | 15d | 2027-09-03 | 2027-09-22 | CB-B01-RB2-WMI-15 | CSD-LKO Calender (6 day + Holiday)-25 | Painting [6027 Sq m]; Painter [6030 h]; Helper [6030 h]; Physical Progress [4450 h]; TATA Projects Ltd-25 | 1,377,892.74 |
| CB-B01-RB2-WMI-270 |  | Installation of Gypsum Board | 10d | 2028-05-24 | 2028-06-05 | CB-B01-RB2-WMI-20 | CSD-LKO Calender (6 day + Holiday)-25 | ID Work [1105233 INR]; Physical Progress [2970 h]; TATA Projects Ltd-25 | 1,105,233 |
| CB-B01-RB2-WMI-400 |  | Civil Misc Works | 30d | 2028-05-24 | 2028-06-28 | CB-B01-RB2-WMI-20 | CSD-LKO Calender (6 day + Holiday)-25 | Civil Misc Works [1689710 INR]; Physical Progress [8900 h]; TATA Projects Ltd-25 | 1,689,710 |
| CB-B01-RB2-WMI-280 |  | Wall Painting first coat including putty | 10d | 2028-06-05 | 2028-06-16 | CB-B01-RB2-WMI-270 | CSD-LKO Calender (6 day + Holiday)-25 | Painting [6027 Sq m]; Painter [6030 h]; Helper [6030 h]; Physical Progress [2970 h]; TATA Projects Ltd-25 | 1,377,892.74 |
| CB-B01-RB2-WMI-295 |  | Wheel stoppers | 8d | 2028-06-16 | 2028-06-26 | CB-B01-RB2-WMI-280 | CSD-LKO Calender (6 day + Holiday)-25 | Wheel Stopper [11088 INR]; Physical Progress [2370 h]; TATA Projects Ltd-25 | 11,088 |
| CB-B01-RB2-WMI-350 |  | Door & Window | 10d | 2028-06-16 | 2028-06-28 | CB-B01-RB2-WMI-280 | CSD-LKO Calender (6 day + Holiday)-25 | ID Work [1105233 INR]; Physical Progress [2970 h]; TATA Projects Ltd-25 | 1,105,233 |
| CB-B01-RB2-WMI-290 |  | Line marking for parking bays, arrows, pedestrian paths | 8d | 2028-06-26 | 2028-07-05 | CB-B01-RB2-WMI-295 | CSD-LKO Calender (6 day + Holiday)-25 | Line / Arrow Marking [414734 INR]; Physical Progress [2370 h]; TATA Projects Ltd-25 | 414,734 |
| CB-B01-RB2-WMI-285 |  | Wall painting final coat | 15d | 2028-09-05 | 2028-09-22 | CB-B01-RB2-WMI-290, CB-B01-RB2-WMI-250, CB-B01-RB2-WMI-260, CB-B01-RB2-WMI-220, CB-B01-RB2-WMI-205, CB-B01-RB2-WMI-210, CB-B01-RB2-WMI-215, CB-B01-RB2-WMI-165, CB-B01-RB2-WMI-45, CB-B01-RB2-WMI-100, CB-B01-RB2-WMI-335, CB-B01-RB2-WMI-350, CB-B01-RB2-WMI-380, CB-B01-RB2-WMI-340, CB-B01-RB2-WMI-345, CB-B01-RB2-WMI-330, CB-B01-RB2-WMI-400, CB-B01-HS-MEP45, CB-B01-HS-MEP90, CB-B01-HS-MEP40, CB-B01-HS-MEP35, CB-B01-HS-MEP120, CB-B01-HS-MEP50, CB-B01-HS-MEP125, CB-B01-HS-MEP130, CB-B01-HS-MEP70, CB-B01-HS-MEP75, CB-B01-HS-MEP25, CB-B01-HS-MEP30, CB-B01-HS-MEP55, CB-B01-HS-MEP60, CB-B01-HS-MEP65, CB-B01-HS-MEP80, CB-B01-HS-MEP85, CB-B01-HS-MEP95, CB-B01-HS-MEP20, CB-B01-HS-MEP10, CB-B01-HS-MEP15, CB-B01-HS-MEP100, CB-B01-HS-MEP105, CB-B01-HS-MEP110, CB-B01-HS-MEP115 | CSD-LKO Calender (6 day + Holiday)-25 | Painting [6027 Sq m]; Painter [6030 h]; Helper [6030 h]; Physical Progress [1780 h]; TATA Projects Ltd-25 | 1,377,892.74 |

| ID | WBS | Activity | Duration | Start | Finish | Predecessors | Calendar | Resources | Cost |
| --- | --- | --- | --- | --- | --- | --- | --- | --- | --- |
|  | 5 | **Retail Block 1** |  | 2027-08-24 | 2028-10-12 |  |  |  |  |
|  | 1 | **Wet Finishes** |  | 2027-08-24 | 2028-06-19 |  |  |  |  |
| CB-B01-RB1-WMI-10 |  | Deshuttering | 7d | 2027-08-24 | 2027-08-31 | RB1-SS-1st.625, RB1-SS-B01.1030, RB1-SS-B01.1065, RB1-SS-B01.1085 | CSD-LKO Calender (6 day + Holiday)-25 | Physical Progress [2080 h]; TATA Projects Ltd-25 |  |
| CB-B01-RB1-WMI-15 |  | Brickwork/Blockwork | 25d | 2027-09-01 | 2027-09-30 | CB-B01-RB1-WMI-10 | CSD-LKO Calender (6 day + Holiday)-25 | Masonry [1098 CuM]; Mason [7320 h]; Helper [3660 h]; Physical Progress [13350 h]; TATA Projects Ltd-25 | 10,469,825.28 |
| CB-B01-RB1-WMI-380 |  | Structural Misc Works | 50d | 2027-09-01 | 2027-11-02 | CB-B01-RB1-WMI-10 | CSD-LKO Calender (6 day + Holiday)-25 | Structural Misc Works [818513 INR]; Physical Progress [14830 h]; TATA Projects Ltd-25 | 818,513 |
| CB-B01-RB1-WMI-25 |  | Plaster | 30d | 2027-11-15 | 2027-12-18 | CB-B01-RB1-WMI-30, CB-B01-RB1-WMI-60, CB-B01-RB1-WMI-245, CB-B01-RB1-WMI-380 | CSD-LKO Calender (6 day + Holiday)-25 | Plaster [11968 Sqr Mtr]; Mason [7980 h]; Helper [3990 h]; Physical Progress [8900 h]; TATA Projects Ltd-25 | 6,629,194.88 |
| CB-B01-RB1-WMI-20 |  | Flooring | 25d | 2028-05-22 | 2028-06-19 | CB-B01-RB1-WMI-15, CB-B01-RB1-WMI-380, CB-B01-RB1-WMI-80, CB-B01-RB1-WMI-85, CB-B01-RB1-WMI-90, CB-B01-RB1-WMI-300, CB-B01-RB1-WMI-95, CB-B01-RB1-WMI-35, CB-B01-RB1-WMI-40, CB-B01-RB1-WMI-50, CB-B01-RB1-WMI-310, CB-B01-RB1-WMI-390, CB-B01-RB1-WMI-315, CB-B01-RB1-WMI-150, CB-B01-RB1-WMI-130, CB-B01-RB1-WMI-145, CB-B01-RB1-WMI-135, CB-B01-RB1-WMI-360, CB-B01-RB1-WMI-185, CB-B01-RB1-WMI-195, CB-B01-RB1-WMI-200, CB-B01-RB1-WMI-190, CB-B01-RB1-WMI-230, CB-B01-RB1-WMI-235, CB-B01-RB1-WMI-320, CB-B01-RB1-WMI-240, CB-B01-RB1-WMI-255 | CSD-LKO Calender (6 day + Holiday)-25 | Flooring [13971434 INR]; Flooring Mason [7000 h]; Helper [7000 h]; Physical Progress [14830 h]; TATA Projects Ltd-25 | 13,971,434 |
|  | 5 | **Low Side MEP** |  | 2027-09-01 | 2028-09-22 |  |  |  |  |
|  | 2 | **HVAC** |  | 2027-10-01 | 2028-09-22 |  |  |  |  |
|  | 1 | **1st Fix** |  | 2027-10-01 | 2028-01-25 |  |  |  |  |
| CB-B01-RB1-WMI-305 |  | Duct Support Fabrication | 35d | 2027-10-01 | 2027-11-13 | CB-B01-RB1-WMI-15 | CSD-LKO Calender (6 day + Holiday)-25 | Physical Progress [4450 h]; HVAC [210890 INR]; TATA Projects Ltd-25 | 210,890 |
| CB-B01-RB1-WMI-65 |  | Installing duct hangers and supports | 30d | 2027-11-15 | 2027-12-18 | CB-B01-RB1-WMI-275, CB-B01-RB1-WMI-305 | CSD-LKO Calender (6 day + Holiday)-25 | Physical Progress [2970 h]; HVAC [421779 INR]; TATA Projects Ltd-25 | 421,779 |
| CB-B01-RB1-WMI-70 |  | Laying concealed/exposed refrigerant piping | 30d | 2027-12-20 | 2028-01-25 | CB-B01-RB1-WMI-65 | CSD-LKO Calender (6 day + Holiday)-25 | Physical Progress [4450 h]; HVAC [105445 INR]; TATA Projects Ltd-25 | 105,445 |
| CB-B01-RB1-WMI-75 |  | Laying concealed/exposed drain piping | 30d | 2027-12-20 | 2028-01-25 | CB-B01-RB1-WMI-65 | CSD-LKO Calender (6 day + Holiday)-25 | Physical Progress [2970 h]; HVAC [632669 INR]; TATA Projects Ltd-25 | 632,669 |
|  | 2 | **2nd Fix** |  | 2027-12-20 | 2028-05-09 |  |  |  |  |
| CB-B01-RB1-WMI-80 |  | Duct installation | 20d | 2027-12-20 | 2028-01-13 | CB-B01-RB1-WMI-65 | CSD-LKO Calender (6 day + Holiday)-25 | Physical Progress [4450 h]; HVAC [1581672 INR]; TATA Projects Ltd-25 | 1,581,672 |
| CB-B01-RB1-WMI-85 |  | Insulation of ducts (thermal/acoustic) | 15d | 2028-01-14 | 2028-02-01 | CB-B01-RB1-WMI-80 | CSD-LKO Calender (6 day + Holiday)-25 | Physical Progress [1780 h]; HVAC [949003 INR]; TATA Projects Ltd-25 | 949,003 |
| CB-B01-RB1-WMI-90 |  | Installation of chilled water piping / VRF piping | 15d | 2028-02-02 | 2028-02-18 | CB-B01-RB1-WMI-85 | CSD-LKO Calender (6 day + Holiday)-25 | Physical Progress [1780 h]; HVAC [2108896 INR]; TATA Projects Ltd-25 | 2,108,896 |
| CB-B01-RB1-WMI-300 |  | Installation of indoor units including AHU, FCU | 45d | 2028-02-19 | 2028-04-12 | CB-B01-RB1-WMI-90, CB-B01-RB1-WMI-70, CB-B01-RB1-WMI-75 | CSD-LKO Calender (6 day + Holiday)-25 | Physical Progress [13350 h]; HVAC [1898006 INR]; TATA Projects Ltd-25 | 1,898,006 |
| CB-B01-RB1-WMI-95 |  | Connecting refrigerant and drain piping to indoor units | 20d | 2028-04-13 | 2028-05-09 | CB-B01-RB1-WMI-300 | CSD-LKO Calender (6 day + Holiday)-25 | Physical Progress [1780 h]; HVAC [527224 INR]; TATA Projects Ltd-25 | 527,224 |
|  | 3 | **Final Fix** |  | 2028-07-13 | 2028-09-22 |  |  |  |  |
| CB-B01-RB1-WMI-105 |  | Installing grills, diffusers, dampers | 30d | 2028-07-13 | 2028-08-17 | CB-B01-RB1-WMI-280 | CSD-LKO Calender (6 day + Holiday)-25 | Physical Progress [1780 h]; HVAC [1054448 INR]; TATA Projects Ltd-25 | 1,054,448 |
| CB-B01-RB1-WMI-100 |  | Installation of thermostats and control panels | 30d | 2028-08-18 | 2028-09-22 | CB-B01-RB1-WMI-105 | CSD-LKO Calender (6 day + Holiday)-25 | Physical Progress [1780 h]; HVAC [527224 INR]; TATA Projects Ltd-25 | 527,224 |
|  | 1 | **Electrical** |  | 2027-09-01 | 2028-08-30 |  |  |  |  |
|  | 1 | **1st Fix** |  | 2027-09-01 | 2027-11-13 |  |  |  |  |
| CB-B01-RB1-WMI-370 |  | Slab Conduiting | 25d | 2027-09-01 | 2027-09-30 | CB-B01-RB1-WMI-10 | CSD-LKO Calender (6 day + Holiday)-25 | Physical Progress [7410 h]; Electrical [926153 INR]; TATA Projects Ltd-25 | 926,153 |
| CB-B01-RB1-WMI-30 |  | Wall Conduiting | 30d | 2027-10-01 | 2027-11-08 | CB-B01-RB1-WMI-15 | CSD-LKO Calender (6 day + Holiday)-25 | Physical Progress [2970 h]; Electrical [463076 INR]; TATA Projects Ltd-25 | 463,076 |
| CB-B01-RB1-WMI-60 |  | Installing back boxes for switches, sockets | 5d | 2027-11-09 | 2027-11-13 | CB-B01-RB1-WMI-30, CB-B01-RB1-WMI-370 | CSD-LKO Calender (6 day + Holiday)-25 | Physical Progress [1480 h]; Electrical [277846 INR]; TATA Projects Ltd-25 | 277,846 |

| ID | WBS | Activity | Duration | Start | Finish | Predecessors | Calendar | Resources | Cost |
| --- | --- | --- | --- | --- | --- | --- | --- | --- | --- |
|  | 2 | **2nd Fix** |  | 2027-12-20 | 2028-05-20 |  |  |  |  |
| CB-B01-RB1-WMI-35 |  | Cable tray laying | 15d | 2027-12-20 | 2028-01-07 | CB-B01-RB1-WMI-25, CB-B01-RB1-WMI-275 | CSD-LKO Calender (6 day + Holiday)-25 | Physical Progress [7410 h]; Electrical [370461 INR]; TATA Projects Ltd-25 | 370,461 |
| CB-B01-RB1-WMI-40 |  | Cabling & Wire Pulling | 45d | 2028-01-08 | 2028-03-01 | CB-B01-RB1-WMI-35 | CSD-LKO Calender (6 day + Holiday)-25 | Physical Progress [13350 h]; Electrical [1852305 INR]; TATA Projects Ltd-25 | 1,852,305 |
| CB-B01-RB1-WMI-50 |  | DB fixing and connecting | 20d | 2028-03-02 | 2028-03-25 | CB-B01-RB1-WMI-40 | CSD-LKO Calender (6 day + Holiday)-25 | Physical Progress [4450 h]; Electrical [277846 INR]; TATA Projects Ltd-25 | 277,846 |
| CB-B01-RB1-WMI-310 |  | Floor/Distribution Panel Installation | 15d | 2028-03-27 | 2028-04-12 | CB-B01-RB1-WMI-50 | CSD-LKO Calender (6 day + Holiday)-25 | Physical Progress [1480 h]; Electrical [740922 INR]; TATA Projects Ltd-25 | 740,922 |
| CB-B01-RB1-WMI-390 |  | Floor Rising Main Installation | 15d | 2028-04-13 | 2028-05-02 | CB-B01-RB1-WMI-310 | CSD-LKO Calender (6 day + Holiday)-25 | Physical Progress [2970 h]; Electrical [1296614 INR]; TATA Projects Ltd-25 | 1,296,614 |
| CB-B01-RB1-WMI-315 |  | Equipment Earthing | 15d | 2028-05-03 | 2028-05-20 | CB-B01-RB1-WMI-310, CB-B01-RB1-WMI-390 | CSD-LKO Calender (6 day + Holiday)-25 | Physical Progress [2970 h]; Electrical [277846 INR]; TATA Projects Ltd-25 | 277,846 |
|  | 3 | **Final Fix** |  | 2028-07-13 | 2028-08-30 |  |  |  |  |
| CB-B01-RB1-WMI-55 |  | Switches & Socket | 20d | 2028-07-13 | 2028-08-04 | CB-B01-RB1-WMI-280 | CSD-LKO Calender (6 day + Holiday)-25 | Physical Progress [5930 h]; Electrical [926153 INR]; TATA Projects Ltd-25 | 926,153 |
| CB-B01-RB1-WMI-45 |  | Light Fixtures | 20d | 2028-08-05 | 2028-08-30 | CB-B01-RB1-WMI-55, CB-B01-RB1-WMI-315 | CSD-LKO Calender (6 day + Holiday)-25 | Physical Progress [4450 h]; Electrical [1389229 INR]; TATA Projects Ltd-25 | 1,389,229 |
|  | 3 | **Plumbing** |  | 2027-10-01 | 2028-09-05 |  |  |  |  |
|  | 1 | **1st Fix** |  | 2027-10-01 | 2028-03-07 |  |  |  |  |
| CB-B01-RB1-WMI-120 |  | Fixing pipe supports and clamps | 35d | 2027-10-01 | 2027-11-13 | CB-B01-RB1-WMI-15 | CSD-LKO Calender (6 day + Holiday)-25 | Physical Progress [2970 h]; Plumbing [521800 INR]; TATA Projects Ltd-25 | 521,800 |
| CB-B01-RB1-WMI-110 |  | Laying water supply pipes (hot & cold) | 35d | 2027-11-15 | 2027-12-24 | CB-B01-RB1-WMI-120 | CSD-LKO Calender (6 day + Holiday)-25 | Physical Progress [4450 h]; Plumbing [1043599 INR]; TATA Projects Ltd-25 | 1,043,599 |
| CB-B01-RB1-WMI-115 |  | Laying drainage pipes (soil, waste, vent) | 35d | 2027-11-15 | 2027-12-24 | CB-B01-RB1-WMI-120 | CSD-LKO Calender (6 day + Holiday)-25 | Physical Progress [4450 h]; Plumbing [1043599 INR]; TATA Projects Ltd-25 | 1,043,599 |
| CB-B01-RB1-WMI-140 |  | Installation of plumbing fixture base supports (WC frames, sink brackets) | 30d | 2027-12-27 | 2028-02-01 | CB-B01-RB1-WMI-115 | CSD-LKO Calender (6 day + Holiday)-25 | Physical Progress [1780 h]; Plumbing [521800 INR]; TATA Projects Ltd-25 | 521,800 |
| CB-B01-RB1-WMI-125 |  | Pressure testing of water supply lines | 25d | 2028-02-02 | 2028-03-01 | CB-B01-RB1-WMI-110, CB-B01-RB1-WMI-115, CB-B01-RB1-WMI-140 | CSD-LKO Calender (6 day + Holiday)-25 | Physical Progress [2080 h]; Plumbing [104360 INR]; TATA Projects Ltd-25 | 104,360 |
| CB-B01-RB1-WMI-355 |  | Installation of concealed parts of toilet fixtures | 30d | 2028-02-02 | 2028-03-07 | CB-B01-RB1-WMI-140 | CSD-LKO Calender (6 day + Holiday)-25 | Physical Progress [2970 h]; Plumbing [521800 INR]; TATA Projects Ltd-25 | 521,800 |
|  | 2 | **2nd FIx** |  | 2028-03-02 | 2028-05-15 |  |  |  |  |
| CB-B01-RB1-WMI-150 |  | Insulation of hot water pipes (if applicable) | 15d | 2028-03-02 | 2028-03-20 | CB-B01-RB1-WMI-125 | CSD-LKO Calender (6 day + Holiday)-25 | Physical Progress [1780 h]; Plumbing [521800 INR]; TATA Projects Ltd-25 | 521,800 |
| CB-B01-RB1-WMI-130 |  | Installation of vertical risers and main distribution lines | 35d | 2028-03-08 | 2028-04-19 | CB-B01-RB1-WMI-25, CB-B01-RB1-WMI-275, CB-B01-RB1-WMI-125, CB-B01-RB1-WMI-355 | CSD-LKO Calender (6 day + Holiday)-25 | Physical Progress [5930 h]; Plumbing [1043599 INR]; TATA Projects Ltd-25 | 1,043,599 |
| CB-B01-RB1-WMI-145 |  | Testing drainage lines for leakage/blockage | 15d | 2028-03-21 | 2028-04-06 | CB-B01-RB1-WMI-140, CB-B01-RB1-WMI-150 | CSD-LKO Calender (6 day + Holiday)-25 | Physical Progress [1780 h]; Plumbing [104360 INR]; TATA Projects Ltd-25 | 104,360 |
| CB-B01-RB1-WMI-360 |  | Laying of ACO Drains | 20d | 2028-04-07 | 2028-05-02 | CB-B01-RB1-WMI-145 | CSD-LKO Calender (6 day + Holiday)-25 | ACO Drain [4080997 INR]; Physical Progress [5930 h]; TATA Projects Ltd-25 | 4,080,997 |
| CB-B01-RB1-WMI-135 |  | Fixing floor traps and gully traps | 20d | 2028-04-20 | 2028-05-15 | CB-B01-RB1-WMI-130 | CSD-LKO Calender (6 day + Holiday)-25 | Physical Progress [1780 h]; Plumbing [313080 INR]; TATA Projects Ltd-25 | 313,080 |

| ID | WBS | Activity | Duration | Start | Finish | Predecessors | Calendar | Resources | Cost |
| --- | --- | --- | --- | --- | --- | --- | --- | --- | --- |
|  | 3 | **Final FIx** |  | 2028-05-03 | 2028-09-05 |  |  |  |  |
| CB-B01-RB1-WMI-365 |  | Installation of ACO Drain Grating | 7d | 2028-05-03 | 2028-05-11 | CB-B01-RB1-WMI-360 | CSD-LKO Calender (6 day + Holiday)-25 | Grating of Drain [2489760 INR]; Physical Progress [2080 h]; TATA Projects Ltd-25 | 2,489,760 |
| CB-B01-RB1-WMI-155 |  | Installation of sanitary fixtures (WC, washbasins, urinals, sinks) | 10d | 2028-07-13 | 2028-07-24 | CB-B01-RB1-WMI-280, CB-B01-RB1-WMI-135 | CSD-LKO Calender (6 day + Holiday)-25 | Physical Progress [2970 h]; Plumbing [2087198 INR]; TATA Projects Ltd-25 | 2,087,198 |
| CB-B01-RB1-WMI-160 |  | Installation of CP fittings (taps, mixers, showers, health faucets) | 10d | 2028-07-25 | 2028-08-04 | CB-B01-RB1-WMI-155, CB-B01-RB1-WMI-280 | CSD-LKO Calender (6 day + Holiday)-25 | Physical Progress [2970 h]; Plumbing [1043599 INR]; TATA Projects Ltd-25 | 1,043,599 |
| CB-B01-RB1-WMI-165 |  | Connection of appliances | 25d | 2028-08-05 | 2028-09-05 | CB-B01-RB1-WMI-160 | CSD-LKO Calender (6 day + Holiday)-25 | Physical Progress [2080 h]; Plumbing [521800 INR]; TATA Projects Ltd-25 | 521,800 |
|  | 4 | **Firefighting** |  | 2027-10-01 | 2028-09-11 |  |  |  |  |
|  | 1 | **1st Fix** |  | 2027-10-01 | 2028-02-01 |  |  |  |  |
| CB-B01-RB1-WMI-175 |  | Fixing pipe supports and hangers | 35d | 2027-10-01 | 2027-11-13 | CB-B01-RB1-WMI-15 | CSD-LKO Calender (6 day + Holiday)-25 | Physical Progress [2970 h]; Firefighting [431557 INR]; TATA Projects Ltd-25 | 431,557 |
| CB-B01-RB1-WMI-170 |  | Laying branch piping | 35d | 2027-11-15 | 2027-12-24 | CB-B01-RB1-WMI-175 | CSD-LKO Calender (6 day + Holiday)-25 | Physical Progress [4450 h]; Firefighting [924764 INR]; TATA Projects Ltd-25 | 924,764 |
| CB-B01-RB1-WMI-180 |  | Hydrostatic pressure testing of piping | 30d | 2027-12-27 | 2028-02-01 | CB-B01-RB1-WMI-170 | CSD-LKO Calender (6 day + Holiday)-25 | Physical Progress [1780 h]; Firefighting [123302 INR]; TATA Projects Ltd-25 | 123,302 |
|  | 2 | **2nd Fix** |  | 2028-02-02 | 2028-04-25 |  |  |  |  |
| CB-B01-RB1-WMI-185 |  | Installation of vertical risers and distribution piping in shafts | 35d | 2028-02-02 | 2028-03-14 | CB-B01-RB1-WMI-25, CB-B01-RB1-WMI-180 | CSD-LKO Calender (6 day + Holiday)-25 | Physical Progress [7410 h]; Firefighting [1233019 INR]; TATA Projects Ltd-25 | 1,233,019 |
| CB-B01-RB1-WMI-195 |  | Painting/insulation of exposed fire pipes | 30d | 2028-02-02 | 2028-03-07 | CB-B01-RB1-WMI-180 | CSD-LKO Calender (6 day + Holiday)-25 | Physical Progress [2970 h]; Firefighting [61651 INR]; TATA Projects Ltd-25 | 61,651 |
| CB-B01-RB1-WMI-200 |  | Testing risers and branch lines for leakage | 30d | 2028-03-08 | 2028-04-12 | CB-B01-RB1-WMI-195 | CSD-LKO Calender (6 day + Holiday)-25 | Physical Progress [1780 h]; Firefighting [123302 INR]; TATA Projects Ltd-25 | 123,302 |
| CB-B01-RB1-WMI-190 |  | Installation of sprinkler branch lines in ceilings | 35d | 2028-03-15 | 2028-04-25 | CB-B01-RB1-WMI-185, CB-B01-RB1-WMI-275 | CSD-LKO Calender (6 day + Holiday)-25 | Physical Progress [7410 h]; Firefighting [924764 INR]; TATA Projects Ltd-25 | 924,764 |
|  | 3 | **Final FIx** |  | 2028-07-13 | 2028-09-11 |  |  |  |  |
| CB-B01-RB1-WMI-205 |  | Installation of sprinkler heads, nozzles, and final alignment | 35d | 2028-07-13 | 2028-08-24 | CB-B01-RB1-WMI-280, CB-B01-RB1-WMI-190 | CSD-LKO Calender (6 day + Holiday)-25 | Physical Progress [13350 h]; Firefighting [924764 INR]; TATA Projects Ltd-25 | 924,764 |
| CB-B01-RB1-WMI-210 |  | Installation of hydrant accessories (valves, hose reels, cabinets) | 25d | 2028-07-13 | 2028-08-10 | CB-B01-RB1-WMI-280 | CSD-LKO Calender (6 day + Holiday)-25 | Physical Progress [2970 h]; Firefighting [616510 INR]; TATA Projects Ltd-25 | 616,510 |
| CB-B01-RB1-WMI-215 |  | Installation of portable fire extinguishers | 30d | 2028-07-13 | 2028-08-17 | CB-B01-RB1-WMI-280 | CSD-LKO Calender (6 day + Holiday)-25 | Physical Progress [1780 h]; Firefighting [61651 INR]; TATA Projects Ltd-25 | 61,651 |
| CB-B01-RB1-WMI-220 |  | Integration with fire alarm system | 20d | 2028-08-18 | 2028-09-11 | CB-B01-RB1-WMI-215 | CSD-LKO Calender (6 day + Holiday)-25 | Physical Progress [5930 h]; Firefighting [308255 INR]; TATA Projects Ltd-25 | 308,255 |
|  | 5 | **ELV** |  | 2027-09-01 | 2028-09-05 |  |  |  |  |
|  | 1 | **1st Fix** |  | 2027-09-01 | 2027-11-13 |  |  |  |  |
| CB-B01-RB1-WMI-375 |  | Slab Conduiting | 25d | 2027-09-01 | 2027-09-30 | CB-B01-RB1-WMI-10 | CSD-LKO Calender (6 day + Holiday)-25 | Physical Progress [7410 h]; ELV [726016 INR]; TATA Projects Ltd-25 | 726,016 |
| CB-B01-RB1-WMI-225 |  | Wall Conduiting | 30d | 2027-10-01 | 2027-11-08 | CB-B01-RB1-WMI-15 | CSD-LKO Calender (6 day + Holiday)-25 | Physical Progress [2970 h]; ELV [311150 INR]; TATA Projects Ltd-25 | 311,150 |
| CB-B01-RB1-WMI-245 |  | Installing back boxes for switches, sockets | 5d | 2027-11-09 | 2027-11-13 | CB-B01-RB1-WMI-225, CB-B01-RB1-WMI-375 | CSD-LKO Calender (6 day + Holiday)-25 | Physical Progress [1480 h]; ELV [518583 INR]; TATA Projects Ltd-25 | 518,583 |

| ID | WBS | Activity | Duration | Start | Finish | Predecessors | Calendar | Resources | Cost |
| --- | --- | --- | --- | --- | --- | --- | --- | --- | --- |
|  | 2 | **2nd Fix** |  | 2027-12-20 | 2028-04-19 |  |  |  |  |
| CB-B01-RB1-WMI-230 |  | Cable tray installation | 15d | 2027-12-20 | 2028-01-07 | CB-B01-RB1-WMI-25, CB-B01-RB1-WMI-275 | CSD-LKO Calender (6 day + Holiday)-25 | Physical Progress [7410 h]; ELV [518583 INR]; TATA Projects Ltd-25 | 518,583 |
| CB-B01-RB1-WMI-235 |  | Cabeling of ELV cable - IT/Fire Alarm/Public Address | 30d | 2028-01-08 | 2028-02-12 | CB-B01-RB1-WMI-230 | CSD-LKO Calender (6 day + Holiday)-25 | Physical Progress [13350 h]; ELV [1244599 INR]; TATA Projects Ltd-25 | 1,244,599 |
| CB-B01-RB1-WMI-320 |  | ELV Rack Installation | 15d | 2028-02-14 | 2028-03-01 | CB-B01-RB1-WMI-235 | CSD-LKO Calender (6 day + Holiday)-25 | Physical Progress [2970 h]; ELV [518583 INR]; TATA Projects Ltd-25 | 518,583 |
| CB-B01-RB1-WMI-240 |  | Termination of cables at junction boxes, patch panels, and control panels | 15d | 2028-03-02 | 2028-03-20 | CB-B01-RB1-WMI-320 | CSD-LKO Calender (6 day + Holiday)-25 | Physical Progress [8900 h]; ELV [518583 INR]; TATA Projects Ltd-25 | 518,583 |
| CB-B01-RB1-WMI-255 |  | Fixing devices like CCTV camera bases, card reader bases, smoke detector bases, PA Bases, Wifi Bases | 25d | 2028-03-21 | 2028-04-19 | CB-B01-RB1-WMI-240 | CSD-LKO Calender (6 day + Holiday)-25 | Physical Progress [1190 h]; ELV [1037166 INR]; TATA Projects Ltd-25 | 1,037,166 |
|  | 3 | **3rd Fix** |  | 2028-07-13 | 2028-09-05 |  |  |  |  |
| CB-B01-RB1-WMI-250 |  | Installation of data and Voice Faceplate | 25d | 2028-07-13 | 2028-08-10 | CB-B01-RB1-WMI-280 | CSD-LKO Calender (6 day + Holiday)-25 | Physical Progress [4450 h]; ELV [518583 INR]; TATA Projects Ltd-25 | 518,583 |
| CB-B01-RB1-WMI-260 |  | Installation of Camera & Wifi | 30d | 2028-07-13 | 2028-08-17 | CB-B01-RB1-WMI-280 | CSD-LKO Calender (6 day + Holiday)-25 | Physical Progress [4450 h]; ELV [518583 INR]; TATA Projects Ltd-25 | 518,583 |
| CB-B01-RB1-WMI-265 |  | Installation of fire alarm devices + Public Address | 15d | 2028-07-13 | 2028-07-29 | CB-B01-RB1-WMI-280 | CSD-LKO Calender (6 day + Holiday)-25 | Physical Progress [4450 h]; ELV [622299 INR]; TATA Projects Ltd-25 | 622,299 |
| CB-B01-RB1-WMI-325 |  | Installation of Active System | 15d | 2028-07-31 | 2028-08-17 | CB-B01-RB1-WMI-265 | CSD-LKO Calender (6 day + Holiday)-25 | Physical Progress [4450 h]; ELV [1037166 INR]; TATA Projects Ltd-25 | 1,037,166 |
| CB-B01-RB1-WMI-335 |  | Fire Panel Intallation & Integration | 25d | 2028-07-31 | 2028-08-30 | CB-B01-RB1-WMI-265 | CSD-LKO Calender (6 day + Holiday)-25 | Physical Progress [7410 h]; ELV [518583 INR]; TATA Projects Ltd-25 | 518,583 |
| CB-B01-RB1-WMI-340 |  | Installation & Integration of Audio Visual System | 25d | 2028-07-31 | 2028-08-30 | CB-B01-RB1-WMI-265 | CSD-LKO Calender (6 day + Holiday)-25 | Physical Progress [7410 h]; ELV [518583 INR]; TATA Projects Ltd-25 | 518,583 |
| CB-B01-RB1-WMI-345 |  | Installation & Integration of Access Control | 25d | 2028-07-31 | 2028-08-30 | CB-B01-RB1-WMI-265 | CSD-LKO Calender (6 day + Holiday)-25 | Physical Progress [7410 h]; ELV [518583 INR]; TATA Projects Ltd-25 | 518,583 |
| CB-B01-RB1-WMI-330 |  | Integration of Active components | 15d | 2028-08-18 | 2028-09-05 | CB-B01-RB1-WMI-325 | CSD-LKO Calender (6 day + Holiday)-25 | Physical Progress [4450 h]; ELV [207433 INR]; TATA Projects Ltd-25 | 207,433 |
|  | 2 | **Dry Finishes** |  | 2027-10-01 | 2028-10-12 |  |  |  |  |
| CB-B01-RB1-WMI-275 |  | Painting on Ceiling (Ceiling Finish) | 15d | 2027-10-01 | 2027-10-20 | CB-B01-RB1-WMI-15 | CSD-LKO Calender (6 day + Holiday)-25 | Painting [6027 Sq m]; Painter [6030 h]; Helper [6030 h]; Physical Progress [4450 h]; TATA Projects Ltd-25 | 1,377,892.74 |
| CB-B01-RB1-WMI-270 |  | Installation of Gypsum Board | 10d | 2028-06-20 | 2028-06-30 | CB-B01-RB1-WMI-20 | CSD-LKO Calender (6 day + Holiday)-25 | ID Work [1105233 INR]; Physical Progress [2970 h]; TATA Projects Ltd-25 | 1,105,233 |
| CB-B01-RB1-WMI-385 |  | Civil Misc Works | 30d | 2028-06-20 | 2028-07-24 | CB-B01-RB1-WMI-20 | CSD-LKO Calender (6 day + Holiday)-25 | Civil Misc Works [1689710 INR]; Physical Progress [8900 h]; TATA Projects Ltd-25 | 1,689,710 |
| CB-B01-RB1-WMI-280 |  | Wall Painting first coat including putty | 10d | 2028-07-01 | 2028-07-12 | CB-B01-RB1-WMI-270 | CSD-LKO Calender (6 day + Holiday)-25 | Painting [6027 Sq m]; Painter [6030 h]; Helper [6030 h]; Physical Progress [2970 h]; TATA Projects Ltd-25 | 1,377,892.74 |
| CB-B01-RB1-WMI-295 |  | Wheel stoppers | 8d | 2028-07-13 | 2028-07-21 | CB-B01-RB1-WMI-280 | CSD-LKO Calender (6 day + Holiday)-25 | Wheel Stopper [11088 INR]; Physical Progress [2370 h]; TATA Projects Ltd-25 | 11,088 |
| CB-B01-RB1-WMI-350 |  | Door & Window | 10d | 2028-07-13 | 2028-07-24 | CB-B01-RB1-WMI-280 | CSD-LKO Calender (6 day + Holiday)-25 | ID Work [1105233 INR]; Physical Progress [2970 h]; TATA Projects Ltd-25 | 1,105,233 |
| CB-B01-RB1-WMI-290 |  | Line marking for parking bays, arrows, pedestrian paths | 8d | 2028-07-22 | 2028-07-31 | CB-B01-RB1-WMI-295 | CSD-LKO Calender (6 day + Holiday)-25 | Line / Arrow Marking [414734 INR]; Physical Progress [2370 h]; TATA Projects Ltd-25 | 414,734 |
| CB-B01-RB1-WMI-285 |  | Wall painting final coat | 15d | 2028-09-23 | 2028-10-12 | CB-B01-RB1-WMI-290, CB-B01-RB1-WMI-250, CB-B01-RB1-WMI-260, CB-B01-RB1-WMI-220, CB-B01-RB1-WMI-205, CB-B01-RB1-WMI-210, CB-B01-RB1-WMI-215, CB-B01-RB1-WMI-165, CB-B01-RB1-WMI-45, CB-B01-RB1-WMI-100, CB-B01-RB1-WMI-335, CB-B01-RB1-WMI-350, CB-B01-RB1-WMI-365, CB-B01-RB1-WMI-340, CB-B01-RB1-WMI-345, CB-B01-RB1-WMI-330, CB-B01-RB1-WMI-385, CB-B01-HS-MEP45, CB-B01-HS-MEP90, CB-B01-HS-MEP40, CB-B01-HS-MEP35, CB-B01-HS-MEP120, CB-B01-HS-MEP50, CB-B01-HS-MEP125, CB-B01-HS-MEP130, CB-B01-HS-MEP70, CB-B01-HS-MEP75, CB-B01-HS-MEP25, CB-B01-HS-MEP30, CB-B01-HS-MEP55, CB-B01-HS-MEP60, CB-B01-HS-MEP65, CB-B01-HS-MEP80, CB-B01-HS-MEP85, CB-B01-HS-MEP95, CB-B01-HS-MEP20, CB-B01-HS-MEP10, CB-B01-HS-MEP15, CB-B01-HS-MEP100, CB-B01-HS-MEP105, CB-B01-HS-MEP110, CB-B01-HS-MEP115 | CSD-LKO Calender (6 day + Holiday)-25 | Painting [6027 Sq m]; Painter [6030 h]; Helper [6030 h]; Physical Progress [1780 h]; TATA Projects Ltd-25 | 1,377,892.74 |

| ID | WBS | Activity | Duration | Start | Finish | Predecessors | Calendar | Resources | Cost |
| --- | --- | --- | --- | --- | --- | --- | --- | --- | --- |
|  | 6 | **Convention Center** |  | 2027-06-17 | 2028-09-22 |  |  |  |  |
|  | 1 | **Wet Finishes** |  | 2027-06-17 | 2028-04-10 |  |  |  |  |
| CB-B01-CC-WMI-10 |  | Deshuttering | 7d | 2027-06-17 | 2027-06-25 | CC-SS-1stM.420, CC-SS-B01.1085, CC-SS-B01.1080 | CSD-LKO Calender (6 day + Holiday)-25 | Physical Progress [2080 h]; TATA Projects Ltd-25 |  |
| CB-B01-CC-WMI-15 |  | Brickwork/Blockwork | 25d | 2027-06-25 | 2027-07-24 | CB-B01-CC-WMI-10 | CSD-LKO Calender (6 day + Holiday)-25 | Masonry [1098 CuM]; Mason [7320 h]; Helper [3660 h]; Physical Progress [13350 h]; TATA Projects Ltd-25 | 10,469,825.28 |
| CB-B01-CC-WMI-395 |  | Structural Misc Works | 50d | 2027-06-25 | 2027-08-23 | CB-B01-CC-WMI-10 | CSD-LKO Calender (6 day + Holiday)-25 | Structural Misc Works [818513 INR]; Physical Progress [14830 h]; TATA Projects Ltd-25 | 818,513 |
| CB-B01-CC-WMI-25 |  | Plaster | 30d | 2027-09-03 | 2027-10-12 | CB-B01-CC-WMI-30, CB-B01-CC-WMI-60, CB-B01-CC-WMI-245, CB-B01-CC-WMI-395 | CSD-LKO Calender (6 day + Holiday)-25 | Plaster [11968 Sqr Mtr]; Mason [7980 h]; Helper [3990 h]; Physical Progress [8900 h]; TATA Projects Ltd-25 | 6,629,194.88 |
| CB-B01-CC-WMI-20 |  | Flooring | 25d | 2028-03-10 | 2028-04-10 | CB-B01-CC-WMI-15, CB-B01-CC-WMI-395, CB-B01-CC-WMI-80, CB-B01-CC-WMI-85, CB-B01-CC-WMI-90, CB-B01-CC-WMI-300, CB-B01-CC-WMI-95, CB-B01-CC-WMI-35, CB-B01-CC-WMI-40, CB-B01-CC-WMI-50, CB-B01-CC-WMI-310, CB-B01-CC-WMI-405, CB-B01-CC-WMI-315, CB-B01-CC-WMI-150, CB-B01-CC-WMI-130, CB-B01-CC-WMI-145, CB-B01-CC-WMI-135, CB-B01-CC-WMI-375, CB-B01-CC-WMI-185, CB-B01-CC-WMI-195, CB-B01-CC-WMI-200, CB-B01-CC-WMI-190, CB-B01-CC-WMI-230, CB-B01-CC-WMI-235, CB-B01-CC-WMI-320, CB-B01-CC-WMI-240, CB-B01-CC-WMI-255 | CSD-LKO Calender (6 day + Holiday)-25 | Flooring [13971434 INR]; Flooring Mason [7000 h]; Helper [7000 h]; Physical Progress [14830 h]; TATA Projects Ltd-25 | 13,971,434 |
|  | 3 | **Water Tanks** |  | 2027-06-25 | 2027-09-10 |  |  |  |  |
| CB-B01-CC-WMI-365 |  | Installation of Rungs | 10d | 2027-06-25 | 2027-07-07 | CB-B01-CC-WMI-10 | CSD-LKO Calender (6 day + Holiday)-25 | Rungs [364811 INR]; Physical Progress [2970 h]; TATA Projects Ltd-25 | 364,811 |
| CB-B01-CC-WMI-355 |  | Waterproofing | 30d | 2027-07-07 | 2027-08-11 | CB-B01-CC-WMI-365 | CSD-LKO Calender (6 day + Holiday)-25 | Waterproofing [8564838 INR]; Waterprrofing Mason [8160 h]; Helper [4080 h]; Physical Progress [8900 h]; TATA Projects Ltd-25 | 8,564,838 |
| CB-B01-CC-WMI-360 |  | Flooring | 25d | 2027-08-11 | 2027-09-10 | CB-B01-CC-WMI-355 | CSD-LKO Calender (6 day + Holiday)-25 | Flooring [8732146 INR]; Flooring Mason [4380 h]; Helper [4380 h]; Physical Progress [8900 h]; TATA Projects Ltd-25 | 8,732,146 |
|  | 5 | **Low Side MEP** |  | 2027-06-25 | 2028-07-15 |  |  |  |  |
|  | 2 | **HVAC** |  | 2027-07-24 | 2028-07-15 |  |  |  |  |
|  | 1 | **1st Fix** |  | 2027-07-24 | 2027-11-17 |  |  |  |  |
| CB-B01-CC-WMI-305 |  | Duct Support Fabrication | 35d | 2027-07-24 | 2027-09-03 | CB-B01-CC-WMI-15 | CSD-LKO Calender (6 day + Holiday)-25 | Physical Progress [4450 h]; HVAC [210890 INR]; TATA Projects Ltd-25 | 210,890 |
| CB-B01-CC-WMI-65 |  | Installing duct hangers and supports | 30d | 2027-09-03 | 2027-10-12 | CB-B01-CC-WMI-275, CB-B01-CC-WMI-305 | CSD-LKO Calender (6 day + Holiday)-25 | Physical Progress [2970 h]; HVAC [421779 INR]; TATA Projects Ltd-25 | 421,779 |
| CB-B01-CC-WMI-70 |  | Laying concealed/exposed refrigerant piping | 30d | 2027-10-12 | 2027-11-17 | CB-B01-CC-WMI-65 | CSD-LKO Calender (6 day + Holiday)-25 | Physical Progress [4450 h]; HVAC [105445 INR]; TATA Projects Ltd-25 | 105,445 |
| CB-B01-CC-WMI-75 |  | Laying concealed/exposed drain piping | 30d | 2027-10-12 | 2027-11-17 | CB-B01-CC-WMI-65 | CSD-LKO Calender (6 day + Holiday)-25 | Physical Progress [2970 h]; HVAC [632669 INR]; TATA Projects Ltd-25 | 632,669 |
|  | 2 | **2nd Fix** |  | 2027-10-12 | 2028-02-28 |  |  |  |  |
| CB-B01-CC-WMI-80 |  | Duct installation | 20d | 2027-10-12 | 2027-11-05 | CB-B01-CC-WMI-65 | CSD-LKO Calender (6 day + Holiday)-25 | Physical Progress [4450 h]; HVAC [1581672 INR]; TATA Projects Ltd-25 | 1,581,672 |
| CB-B01-CC-WMI-85 |  | Insulation of ducts (thermal/acoustic) | 15d | 2027-11-05 | 2027-11-23 | CB-B01-CC-WMI-80 | CSD-LKO Calender (6 day + Holiday)-25 | Physical Progress [1780 h]; HVAC [949003 INR]; TATA Projects Ltd-25 | 949,003 |
| CB-B01-CC-WMI-90 |  | Installation of chilled water piping / VRF piping | 15d | 2027-11-23 | 2027-12-10 | CB-B01-CC-WMI-85 | CSD-LKO Calender (6 day + Holiday)-25 | Physical Progress [1780 h]; HVAC [2108896 INR]; TATA Projects Ltd-25 | 2,108,896 |
| CB-B01-CC-WMI-300 |  | Installation of indoor units including AHU, FCU | 45d | 2027-12-10 | 2028-02-04 | CB-B01-CC-WMI-90, CB-B01-CC-WMI-70, CB-B01-CC-WMI-75 | CSD-LKO Calender (6 day + Holiday)-25 | Physical Progress [13350 h]; HVAC [1898006 INR]; TATA Projects Ltd-25 | 1,898,006 |
| CB-B01-CC-WMI-95 |  | Connecting refrigerant and drain piping to indoor units | 20d | 2028-02-04 | 2028-02-28 | CB-B01-CC-WMI-300 | CSD-LKO Calender (6 day + Holiday)-25 | Physical Progress [1780 h]; HVAC [527224 INR]; TATA Projects Ltd-25 | 527,224 |

| ID | WBS | Activity | Duration | Start | Finish | Predecessors | Calendar | Resources | Cost |
| --- | --- | --- | --- | --- | --- | --- | --- | --- | --- |
|  | 3 | **Final Fix** |  | 2028-05-06 | 2028-07-15 |  |  |  |  |
| CB-B01-CC-WMI-105 |  | Installing grills, diffusers, dampers | 30d | 2028-05-06 | 2028-06-10 | CB-B01-CC-WMI-280 | CSD-LKO Calender (6 day + Holiday)-25 | Physical Progress [1780 h]; HVAC [1054448 INR]; TATA Projects Ltd-25 | 1,054,448 |
| CB-B01-CC-WMI-100 |  | Installation of thermostats and control panels | 30d | 2028-06-10 | 2028-07-15 | CB-B01-CC-WMI-105 | CSD-LKO Calender (6 day + Holiday)-25 | Physical Progress [1780 h]; HVAC [527224 INR]; TATA Projects Ltd-25 | 527,224 |
|  | 1 | **Electrical** |  | 2027-06-25 | 2028-06-22 |  |  |  |  |
|  | 1 | **1st Fix** |  | 2027-06-25 | 2027-09-03 |  |  |  |  |
| CB-B01-CC-WMI-385 |  | Slab Conduiting | 25d | 2027-06-25 | 2027-07-24 | CB-B01-CC-WMI-10 | CSD-LKO Calender (6 day + Holiday)-25 | Physical Progress [7410 h]; Electrical [926153 INR]; TATA Projects Ltd-25 | 926,153 |
| CB-B01-CC-WMI-30 |  | Wall Conduiting | 30d | 2027-07-24 | 2027-08-28 | CB-B01-CC-WMI-15 | CSD-LKO Calender (6 day + Holiday)-25 | Physical Progress [2970 h]; Electrical [463076 INR]; TATA Projects Ltd-25 | 463,076 |
| CB-B01-CC-WMI-60 |  | Installing back boxes for switches, sockets | 5d | 2027-08-28 | 2027-09-03 | CB-B01-CC-WMI-30, CB-B01-CC-WMI-385 | CSD-LKO Calender (6 day + Holiday)-25 | Physical Progress [1480 h]; Electrical [277846 INR]; TATA Projects Ltd-25 | 277,846 |
|  | 2 | **2nd Fix** |  | 2027-10-12 | 2028-03-10 |  |  |  |  |
| CB-B01-CC-WMI-35 |  | Cable tray laying | 15d | 2027-10-12 | 2027-10-30 | CB-B01-CC-WMI-25, CB-B01-CC-WMI-275 | CSD-LKO Calender (6 day + Holiday)-25 | Physical Progress [7410 h]; Electrical [370461 INR]; TATA Projects Ltd-25 | 370,461 |
| CB-B01-CC-WMI-40 |  | Cabling & Wire Pulling | 45d | 2027-10-30 | 2027-12-22 | CB-B01-CC-WMI-35 | CSD-LKO Calender (6 day + Holiday)-25 | Physical Progress [13350 h]; Electrical [1852305 INR]; TATA Projects Ltd-25 | 1,852,305 |
| CB-B01-CC-WMI-50 |  | DB fixing and connecting | 20d | 2027-12-22 | 2028-01-17 | CB-B01-CC-WMI-40 | CSD-LKO Calender (6 day + Holiday)-25 | Physical Progress [4450 h]; Electrical [277846 INR]; TATA Projects Ltd-25 | 277,846 |
| CB-B01-CC-WMI-310 |  | Floor/Distribution Panel Installation | 15d | 2028-01-17 | 2028-02-04 | CB-B01-CC-WMI-50 | CSD-LKO Calender (6 day + Holiday)-25 | Physical Progress [1480 h]; Electrical [740922 INR]; TATA Projects Ltd-25 | 740,922 |
| CB-B01-CC-WMI-405 |  | Floor Rising Main Installation | 15d | 2028-02-04 | 2028-02-22 | CB-B01-CC-WMI-310 | CSD-LKO Calender (6 day + Holiday)-25 | Physical Progress [2970 h]; Electrical [1296614 INR]; TATA Projects Ltd-25 | 1,296,614 |
| CB-B01-CC-WMI-315 |  | Equipment Earthing | 15d | 2028-02-22 | 2028-03-10 | CB-B01-CC-WMI-310, CB-B01-CC-WMI-405 | CSD-LKO Calender (6 day + Holiday)-25 | Physical Progress [2970 h]; Electrical [277846 INR]; TATA Projects Ltd-25 | 277,846 |
|  | 3 | **Final Fix** |  | 2028-05-06 | 2028-06-22 |  |  |  |  |
| CB-B01-CC-WMI-55 |  | Switches & Socket | 20d | 2028-05-06 | 2028-05-30 | CB-B01-CC-WMI-280 | CSD-LKO Calender (6 day + Holiday)-25 | Physical Progress [5930 h]; Electrical [926153 INR]; TATA Projects Ltd-25 | 926,153 |
| CB-B01-CC-WMI-45 |  | Light Fixtures | 20d | 2028-05-30 | 2028-06-22 | CB-B01-CC-WMI-55, CB-B01-CC-WMI-315 | CSD-LKO Calender (6 day + Holiday)-25 | Physical Progress [4450 h]; Electrical [1389229 INR]; TATA Projects Ltd-25 | 1,389,229 |
|  | 3 | **Plumbing** |  | 2027-07-24 | 2028-06-28 |  |  |  |  |
|  | 1 | **1st Fix** |  | 2027-07-24 | 2027-12-29 |  |  |  |  |
| CB-B01-CC-WMI-120 |  | Fixing pipe supports and clamps | 35d | 2027-07-24 | 2027-09-03 | CB-B01-CC-WMI-15 | CSD-LKO Calender (6 day + Holiday)-25 | Physical Progress [2970 h]; Plumbing [521800 INR]; TATA Projects Ltd-25 | 521,800 |
| CB-B01-CC-WMI-110 |  | Laying water supply pipes (hot & cold) | 35d | 2027-09-03 | 2027-10-18 | CB-B01-CC-WMI-120 | CSD-LKO Calender (6 day + Holiday)-25 | Physical Progress [4450 h]; Plumbing [1043599 INR]; TATA Projects Ltd-25 | 1,043,599 |
| CB-B01-CC-WMI-115 |  | Laying drainage pipes (soil, waste, vent) | 35d | 2027-09-03 | 2027-10-18 | CB-B01-CC-WMI-120 | CSD-LKO Calender (6 day + Holiday)-25 | Physical Progress [4450 h]; Plumbing [1043599 INR]; TATA Projects Ltd-25 | 1,043,599 |
| CB-B01-CC-WMI-140 |  | Installation of plumbing fixture base supports (WC frames, sink brackets) | 30d | 2027-10-18 | 2027-11-23 | CB-B01-CC-WMI-115 | CSD-LKO Calender (6 day + Holiday)-25 | Physical Progress [1780 h]; Plumbing [521800 INR]; TATA Projects Ltd-25 | 521,800 |
| CB-B01-CC-WMI-125 |  | Pressure testing of water supply lines | 25d | 2027-11-23 | 2027-12-22 | CB-B01-CC-WMI-110, CB-B01-CC-WMI-115, CB-B01-CC-WMI-140 | CSD-LKO Calender (6 day + Holiday)-25 | Physical Progress [2080 h]; Plumbing [104360 INR]; TATA Projects Ltd-25 | 104,360 |
| CB-B01-CC-WMI-370 |  | Installation of concealed parts of toilet fixtures | 30d | 2027-11-23 | 2027-12-29 | CB-B01-CC-WMI-140 | CSD-LKO Calender (6 day + Holiday)-25 | Physical Progress [2970 h]; Plumbing [521800 INR]; TATA Projects Ltd-25 | 521,800 |

| ID | WBS | Activity | Duration | Start | Finish | Predecessors | Calendar | Resources | Cost |
| --- | --- | --- | --- | --- | --- | --- | --- | --- | --- |
|  | 2 | **2nd FIx** |  | 2027-12-22 | 2028-03-04 |  |  |  |  |
| CB-B01-CC-WMI-150 |  | Insulation of hot water pipes (if applicable) | 15d | 2027-12-22 | 2028-01-11 | CB-B01-CC-WMI-125 | CSD-LKO Calender (6 day + Holiday)-25 | Physical Progress [1780 h]; Plumbing [521800 INR]; TATA Projects Ltd-25 | 521,800 |
| CB-B01-CC-WMI-130 |  | Installation of vertical risers and main distribution lines | 35d | 2027-12-29 | 2028-02-10 | CB-B01-CC-WMI-25, CB-B01-CC-WMI-275, CB-B01-CC-WMI-125, CB-B01-CC-WMI-370 | CSD-LKO Calender (6 day + Holiday)-25 | Physical Progress [5930 h]; Plumbing [1043599 INR]; TATA Projects Ltd-25 | 1,043,599 |
| CB-B01-CC-WMI-145 |  | Testing drainage lines for leakage/blockage | 15d | 2028-01-11 | 2028-01-29 | CB-B01-CC-WMI-140, CB-B01-CC-WMI-150 | CSD-LKO Calender (6 day + Holiday)-25 | Physical Progress [1780 h]; Plumbing [104360 INR]; TATA Projects Ltd-25 | 104,360 |
| CB-B01-CC-WMI-375 |  | Laying of ACO Drains | 20d | 2028-01-29 | 2028-02-22 | CB-B01-CC-WMI-145 | CSD-LKO Calender (6 day + Holiday)-25 | ACO Drain [4080997 INR]; Physical Progress [5930 h]; TATA Projects Ltd-25 | 4,080,997 |
| CB-B01-CC-WMI-135 |  | Fixing floor traps and gully traps | 20d | 2028-02-10 | 2028-03-04 | CB-B01-CC-WMI-130 | CSD-LKO Calender (6 day + Holiday)-25 | Physical Progress [1780 h]; Plumbing [313080 INR]; TATA Projects Ltd-25 | 313,080 |
|  | 3 | **Final FIx** |  | 2028-02-22 | 2028-06-28 |  |  |  |  |
| CB-B01-CC-WMI-380 |  | Installation of ACO Drain Grating | 7d | 2028-02-22 | 2028-03-01 | CB-B01-CC-WMI-375 | CSD-LKO Calender (6 day + Holiday)-25 | Grating of Drain [2489760 INR]; Physical Progress [2080 h]; TATA Projects Ltd-25 | 2,489,760 |
| CB-B01-CC-WMI-155 |  | Installation of sanitary fixtures (WC, washbasins, urinals, sinks) | 10d | 2028-05-06 | 2028-05-18 | CB-B01-CC-WMI-280, CB-B01-CC-WMI-135 | CSD-LKO Calender (6 day + Holiday)-25 | Physical Progress [2970 h]; Plumbing [2087198 INR]; TATA Projects Ltd-25 | 2,087,198 |
| CB-B01-CC-WMI-160 |  | Installation of CP fittings (taps, mixers, showers, health faucets) | 10d | 2028-05-18 | 2028-05-30 | CB-B01-CC-WMI-155, CB-B01-CC-WMI-280 | CSD-LKO Calender (6 day + Holiday)-25 | Physical Progress [2970 h]; Plumbing [1043599 INR]; TATA Projects Ltd-25 | 1,043,599 |
| CB-B01-CC-WMI-165 |  | Connection of appliances | 25d | 2028-05-30 | 2028-06-28 | CB-B01-CC-WMI-160 | CSD-LKO Calender (6 day + Holiday)-25 | Physical Progress [2080 h]; Plumbing [521800 INR]; TATA Projects Ltd-25 | 521,800 |
|  | 4 | **Firefighting** |  | 2027-07-24 | 2028-07-04 |  |  |  |  |
|  | 1 | **1st Fix** |  | 2027-07-24 | 2027-11-23 |  |  |  |  |
| CB-B01-CC-WMI-175 |  | Fixing pipe supports and hangers | 35d | 2027-07-24 | 2027-09-03 | CB-B01-CC-WMI-15 | CSD-LKO Calender (6 day + Holiday)-25 | Physical Progress [2970 h]; Firefighting [431557 INR]; TATA Projects Ltd-25 | 431,557 |
| CB-B01-CC-WMI-170 |  | Laying branch piping | 35d | 2027-09-03 | 2027-10-18 | CB-B01-CC-WMI-175 | CSD-LKO Calender (6 day + Holiday)-25 | Physical Progress [4450 h]; Firefighting [924764 INR]; TATA Projects Ltd-25 | 924,764 |
| CB-B01-CC-WMI-180 |  | Hydrostatic pressure testing of piping | 30d | 2027-10-18 | 2027-11-23 | CB-B01-CC-WMI-170 | CSD-LKO Calender (6 day + Holiday)-25 | Physical Progress [1780 h]; Firefighting [123302 INR]; TATA Projects Ltd-25 | 123,302 |
|  | 2 | **2nd Fix** |  | 2027-11-23 | 2028-02-16 |  |  |  |  |
| CB-B01-CC-WMI-185 |  | Installation of vertical risers and distribution piping in shafts | 35d | 2027-11-23 | 2028-01-05 | CB-B01-CC-WMI-25, CB-B01-CC-WMI-180 | CSD-LKO Calender (6 day + Holiday)-25 | Physical Progress [7410 h]; Firefighting [1233019 INR]; TATA Projects Ltd-25 | 1,233,019 |
| CB-B01-CC-WMI-195 |  | Painting/insulation of exposed fire pipes | 30d | 2027-11-23 | 2027-12-29 | CB-B01-CC-WMI-180 | CSD-LKO Calender (6 day + Holiday)-25 | Physical Progress [2970 h]; Firefighting [61651 INR]; TATA Projects Ltd-25 | 61,651 |
| CB-B01-CC-WMI-200 |  | Testing risers and branch lines for leakage | 30d | 2027-12-29 | 2028-02-04 | CB-B01-CC-WMI-195 | CSD-LKO Calender (6 day + Holiday)-25 | Physical Progress [1780 h]; Firefighting [123302 INR]; TATA Projects Ltd-25 | 123,302 |
| CB-B01-CC-WMI-190 |  | Installation of sprinkler branch lines in ceilings | 35d | 2028-01-05 | 2028-02-16 | CB-B01-CC-WMI-185, CB-B01-CC-WMI-275 | CSD-LKO Calender (6 day + Holiday)-25 | Physical Progress [7410 h]; Firefighting [924764 INR]; TATA Projects Ltd-25 | 924,764 |
|  | 3 | **Final FIx** |  | 2028-05-06 | 2028-07-04 |  |  |  |  |
| CB-B01-CC-WMI-205 |  | Installation of sprinkler heads, nozzles, and final alignment | 35d | 2028-05-06 | 2028-06-16 | CB-B01-CC-WMI-280, CB-B01-CC-WMI-190 | CSD-LKO Calender (6 day + Holiday)-25 | Physical Progress [13350 h]; Firefighting [924764 INR]; TATA Projects Ltd-25 | 924,764 |
| CB-B01-CC-WMI-210 |  | Installation of hydrant accessories (valves, hose reels, cabinets) | 25d | 2028-05-06 | 2028-06-05 | CB-B01-CC-WMI-280 | CSD-LKO Calender (6 day + Holiday)-25 | Physical Progress [2970 h]; Firefighting [616510 INR]; TATA Projects Ltd-25 | 616,510 |
| CB-B01-CC-WMI-215 |  | Installation of portable fire extinguishers | 30d | 2028-05-06 | 2028-06-10 | CB-B01-CC-WMI-280 | CSD-LKO Calender (6 day + Holiday)-25 | Physical Progress [1780 h]; Firefighting [61651 INR]; TATA Projects Ltd-25 | 61,651 |
| CB-B01-CC-WMI-220 |  | Integration with fire alarm system | 20d | 2028-06-10 | 2028-07-04 | CB-B01-CC-WMI-215 | CSD-LKO Calender (6 day + Holiday)-25 | Physical Progress [5930 h]; Firefighting [308255 INR]; TATA Projects Ltd-25 | 308,255 |

| ID | WBS | Activity | Duration | Start | Finish | Predecessors | Calendar | Resources | Cost |
| --- | --- | --- | --- | --- | --- | --- | --- | --- | --- |
|  | 5 | **ELV** |  | 2027-06-25 | 2028-06-28 |  |  |  |  |
|  | 1 | **1st Fix** |  | 2027-06-25 | 2027-09-03 |  |  |  |  |
| CB-B01-CC-WMI-390 |  | Slab Conduiting | 25d | 2027-06-25 | 2027-07-24 | CB-B01-CC-WMI-10 | CSD-LKO Calender (6 day + Holiday)-25 | Physical Progress [7410 h]; ELV [726016 INR]; TATA Projects Ltd-25 | 726,016 |
| CB-B01-CC-WMI-225 |  | Wall Conduiting | 30d | 2027-07-24 | 2027-08-28 | CB-B01-CC-WMI-15 | CSD-LKO Calender (6 day + Holiday)-25 | Physical Progress [2970 h]; ELV [311150 INR]; TATA Projects Ltd-25 | 311,150 |
| CB-B01-CC-WMI-245 |  | Installing back boxes for switches, sockets | 5d | 2027-08-28 | 2027-09-03 | CB-B01-CC-WMI-225, CB-B01-CC-WMI-390 | CSD-LKO Calender (6 day + Holiday)-25 | Physical Progress [1480 h]; ELV [518583 INR]; TATA Projects Ltd-25 | 518,583 |
|  | 2 | **2nd Fix** |  | 2027-10-12 | 2028-02-10 |  |  |  |  |
| CB-B01-CC-WMI-230 |  | Cable tray installation | 15d | 2027-10-12 | 2027-10-30 | CB-B01-CC-WMI-25, CB-B01-CC-WMI-275 | CSD-LKO Calender (6 day + Holiday)-25 | Physical Progress [7410 h]; ELV [518583 INR]; TATA Projects Ltd-25 | 518,583 |
| CB-B01-CC-WMI-235 |  | Cabeling of ELV cable - IT/Fire Alarm/Public Address | 30d | 2027-10-30 | 2027-12-04 | CB-B01-CC-WMI-230 | CSD-LKO Calender (6 day + Holiday)-25 | Physical Progress [13350 h]; ELV [1244599 INR]; TATA Projects Ltd-25 | 1,244,599 |
| CB-B01-CC-WMI-320 |  | ELV Rack Installation | 15d | 2027-12-04 | 2027-12-22 | CB-B01-CC-WMI-235 | CSD-LKO Calender (6 day + Holiday)-25 | Physical Progress [2970 h]; ELV [518583 INR]; TATA Projects Ltd-25 | 518,583 |
| CB-B01-CC-WMI-240 |  | Termination of cables at junction boxes, patch panels, and control panels | 15d | 2027-12-22 | 2028-01-11 | CB-B01-CC-WMI-320 | CSD-LKO Calender (6 day + Holiday)-25 | Physical Progress [8900 h]; ELV [518583 INR]; TATA Projects Ltd-25 | 518,583 |
| CB-B01-CC-WMI-255 |  | Fixing devices like CCTV camera bases, card reader bases, smoke detector bases, PA Bases, Wifi Bases | 25d | 2028-01-11 | 2028-02-10 | CB-B01-CC-WMI-240 | CSD-LKO Calender (6 day + Holiday)-25 | Physical Progress [1190 h]; ELV [1037166 INR]; TATA Projects Ltd-25 | 1,037,166 |
|  | 3 | **3rd Fix** |  | 2028-05-06 | 2028-06-28 |  |  |  |  |
| CB-B01-CC-WMI-250 |  | Installation of data and Voice Faceplate | 25d | 2028-05-06 | 2028-06-05 | CB-B01-CC-WMI-280 | CSD-LKO Calender (6 day + Holiday)-25 | Physical Progress [4450 h]; ELV [518583 INR]; TATA Projects Ltd-25 | 518,583 |
| CB-B01-CC-WMI-260 |  | Installation of Camera & Wifi | 30d | 2028-05-06 | 2028-06-10 | CB-B01-CC-WMI-280 | CSD-LKO Calender (6 day + Holiday)-25 | Physical Progress [4450 h]; ELV [518583 INR]; TATA Projects Ltd-25 | 518,583 |
| CB-B01-CC-WMI-265 |  | Installation of fire alarm devices + Public Address | 15d | 2028-05-06 | 2028-05-24 | CB-B01-CC-WMI-280 | CSD-LKO Calender (6 day + Holiday)-25 | Physical Progress [4450 h]; ELV [622299 INR]; TATA Projects Ltd-25 | 622,299 |
| CB-B01-CC-WMI-325 |  | Installation of Active System | 15d | 2028-05-24 | 2028-06-10 | CB-B01-CC-WMI-265 | CSD-LKO Calender (6 day + Holiday)-25 | Physical Progress [4450 h]; ELV [1037166 INR]; TATA Projects Ltd-25 | 1,037,166 |
| CB-B01-CC-WMI-335 |  | Fire Panel Intallation & Integration | 25d | 2028-05-24 | 2028-06-22 | CB-B01-CC-WMI-265 | CSD-LKO Calender (6 day + Holiday)-25 | Physical Progress [7410 h]; ELV [518583 INR]; TATA Projects Ltd-25 | 518,583 |
| CB-B01-CC-WMI-340 |  | Installation & Integration of Audio Visual System | 25d | 2028-05-24 | 2028-06-22 | CB-B01-CC-WMI-265 | CSD-LKO Calender (6 day + Holiday)-25 | Physical Progress [7410 h]; ELV [518583 INR]; TATA Projects Ltd-25 | 518,583 |
| CB-B01-CC-WMI-345 |  | Installation & Integration of Access Control | 25d | 2028-05-24 | 2028-06-22 | CB-B01-CC-WMI-265 | CSD-LKO Calender (6 day + Holiday)-25 | Physical Progress [7410 h]; ELV [518583 INR]; TATA Projects Ltd-25 | 518,583 |
| CB-B01-CC-WMI-330 |  | Integration of Active components | 15d | 2028-06-10 | 2028-06-28 | CB-B01-CC-WMI-325 | CSD-LKO Calender (6 day + Holiday)-25 | Physical Progress [4450 h]; ELV [207433 INR]; TATA Projects Ltd-25 | 207,433 |
|  | 2 | **Dry Finishes** |  | 2027-07-24 | 2028-09-22 |  |  |  |  |
| CB-B01-CC-WMI-275 |  | Painting on Ceiling (Ceiling Finish) | 15d | 2027-07-24 | 2027-08-11 | CB-B01-CC-WMI-15 | CSD-LKO Calender (6 day + Holiday)-25 | Painting [6027 Sq m]; Painter [6030 h]; Helper [6030 h]; Physical Progress [4450 h]; TATA Projects Ltd-25 | 1,377,892.74 |
| CB-B01-CC-WMI-270 |  | Installation of Gypsum Board | 10d | 2028-04-10 | 2028-04-22 | CB-B01-CC-WMI-20 | CSD-LKO Calender (6 day + Holiday)-25 | ID Work [1105233 INR]; Physical Progress [2970 h]; TATA Projects Ltd-25 | 1,105,233 |
| CB-B01-CC-WMI-400 |  | Civil Misc Works | 30d | 2028-04-10 | 2028-05-18 | CB-B01-CC-WMI-20 | CSD-LKO Calender (6 day + Holiday)-25 | Civil Misc Works [1689710 INR]; Physical Progress [8900 h]; TATA Projects Ltd-25 | 1,689,710 |
| CB-B01-CC-WMI-280 |  | Wall Painting first coat including putty | 10d | 2028-04-22 | 2028-05-06 | CB-B01-CC-WMI-270 | CSD-LKO Calender (6 day + Holiday)-25 | Painting [6027 Sq m]; Painter [6030 h]; Helper [6030 h]; Physical Progress [2970 h]; TATA Projects Ltd-25 | 1,377,892.74 |
| CB-B01-CC-WMI-295 |  | Wheel stoppers | 8d | 2028-05-06 | 2028-05-16 | CB-B01-CC-WMI-280 | CSD-LKO Calender (6 day + Holiday)-25 | Wheel Stopper [11088 INR]; Physical Progress [2370 h]; TATA Projects Ltd-25 | 11,088 |
| CB-B01-CC-WMI-350 |  | Door & Window | 10d | 2028-05-06 | 2028-05-18 | CB-B01-CC-WMI-280 | CSD-LKO Calender (6 day + Holiday)-25 | ID Work [1105233 INR]; Physical Progress [2970 h]; TATA Projects Ltd-25 | 1,105,233 |
| CB-B01-CC-WMI-290 |  | Line marking for parking bays, arrows, pedestrian paths | 8d | 2028-05-16 | 2028-05-25 | CB-B01-CC-WMI-295 | CSD-LKO Calender (6 day + Holiday)-25 | Line / Arrow Marking [414734 INR]; Physical Progress [2370 h]; TATA Projects Ltd-25 | 414,734 |
| CB-B01-CC-WMI-285 |  | Wall painting final coat | 15d | 2028-09-05 | 2028-09-22 | CB-B01-CC-WMI-290, CB-B01-CC-WMI-250, CB-B01-CC-WMI-260, CB-B01-CC-WMI-220, CB-B01-CC-WMI-205, CB-B01-CC-WMI-210, CB-B01-CC-WMI-215, CB-B01-CC-WMI-165, CB-B01-CC-WMI-45, CB-B01-CC-WMI-100, CB-B01-CC-WMI-335, CB-B01-CC-WMI-350, CB-B01-CC-WMI-380, CB-B01-CC-WMI-340, CB-B01-CC-WMI-345, CB-B01-CC-WMI-330, CB-B01-CC-WMI-400, CB-B01-HS-MEP45, CB-B01-HS-MEP90, CB-B01-HS-MEP40, CB-B01-HS-MEP35, CB-B01-HS-MEP120, CB-B01-HS-MEP50, CB-B01-HS-MEP125, CB-B01-HS-MEP130, CB-B01-HS-MEP70, CB-B01-HS-MEP75, CB-B01-HS-MEP25, CB-B01-HS-MEP30, CB-B01-HS-MEP55, CB-B01-HS-MEP60, CB-B01-HS-MEP65, CB-B01-HS-MEP80, CB-B01-HS-MEP85, CB-B01-HS-MEP95, CB-B01-HS-MEP20, CB-B01-HS-MEP10, CB-B01-HS-MEP15, CB-B01-HS-MEP100, CB-B01-HS-MEP105, CB-B01-HS-MEP110, CB-B01-HS-MEP115 | CSD-LKO Calender (6 day + Holiday)-25 | Painting [6027 Sq m]; Painter [6030 h]; Helper [6030 h]; Physical Progress [1780 h]; TATA Projects Ltd-25 | 1,377,892.74 |

| ID | WBS | Activity | Duration | Start | Finish | Predecessors | Calendar | Resources | Cost |
| --- | --- | --- | --- | --- | --- | --- | --- | --- | --- |
|  | 3 | **High Side MEP** |  | 2027-07-24 | 2028-09-05 |  |  |  |  |
|  | 6 | **Civil Work** |  | 2027-07-24 | 2027-09-16 |  |  |  |  |
| CB-B01-HS-MEP135 |  | Construction of pedestals for the Equipments | 45d | 2027-07-24 | 2027-09-16 | CB-B01-CC-WMI-15 | CSD-LKO Calender (6 day + Holiday)-25 | Physical Progress [13350 h]; TATA Projects Ltd-25 |  |
|  | 1 | **Electrical** |  | 2028-02-15 | 2028-05-29 |  |  |  |  |
| CB-B01-HS-MEP45 |  | UPS installation and battery bank setup | 10d | 2028-02-15 | 2028-02-26 | P-MEP-UPS-20, CB-B01-4S-WMI-60 | CSD-LKO Calender (6 day + Holiday)-25 | Physical Progress [2970 h]; Electrical [36230721 INR]; TATA Projects Ltd-25 | 36,230,721 |
| CB-B01-HS-MEP90 |  | HT/LT Cables | 10d | 2028-02-26 | 2028-03-09 | P-MEP-HT/LT Cables - 20, CB-B01-HS-MEP45 | CSD-LKO Calender (6 day + Holiday)-25 | Physical Progress [2970 h]; Electrical [36230721 INR]; TATA Projects Ltd-25 | 36,230,721 |
| CB-B01-HS-MEP120 |  | Readiness of Electrical Panel Room | 10d | 2028-03-09 | 2028-03-22 | CB-B01-HS-MEP90 | CSD-LKO Calender (6 day + Holiday)-25 | Physical Progress [2970 h]; Electrical [10869216 INR]; TATA Projects Ltd-25 | 10,869,216 |
| CB-B01-HS-MEP35 |  | Installation of main HT/LT panels and switchgear | 10d | 2028-03-09 | 2028-03-22 | P-MEP-HT/LT Panel-20, CB-B01-HS-MEP90 | CSD-LKO Calender (6 day + Holiday)-25 | Physical Progress [2970 h]; Electrical [72461441 INR]; TATA Projects Ltd-25 | 72,461,441 |
| CB-B01-HS-MEP40 |  | Transformer installation and testing | 5d | 2028-03-09 | 2028-03-16 | P-MEP-Transformer-20, CB-B01-HS-MEP90 | CSD-LKO Calender (6 day + Holiday)-25 | Physical Progress [1480 h]; Electrical [54346081 INR]; TATA Projects Ltd-25 | 54,346,081 |
| CB-B01-HS-MEP50 |  | Installation of Busbar Trunking System (BBT)/ Rising Main | 25d | 2028-03-22 | 2028-04-21 | P-MEP-Bus Duct -20, CB-B01-HS-MEP35, CB-B01-HS-MEP40 | CSD-LKO Calender (6 day + Holiday)-25 | Physical Progress [7410 h]; Electrical [36230721 INR]; TATA Projects Ltd-25 | 36,230,721 |
| CB-B01-HS-MEP125 |  | Substation Earthing | 20d | 2028-04-21 | 2028-05-17 | CB-B01-HS-MEP50 | CSD-LKO Calender (6 day + Holiday)-25 | Physical Progress [5930 h]; Electrical [10869216 INR]; TATA Projects Ltd-25 | 10,869,216 |
| CB-B01-HS-MEP130 |  | HT/LT termination | 10d | 2028-05-17 | 2028-05-29 | CB-B01-HS-MEP125 | CSD-LKO Calender (6 day + Holiday)-25 | Physical Progress [2970 h]; Electrical [14492288 INR]; TATA Projects Ltd-25 | 14,492,288 |
|  | 2 | **Plumbing** |  | 2028-04-10 | 2028-07-14 |  |  |  |  |
| CB-B01-HS-MEP70 |  | Pump installation | 7d | 2028-04-10 | 2028-04-19 | CB-B01-CC-WMI-360, CB-B01-CC-WMI-20, P-MEP-Pump-20 | CSD-LKO Calender (6 day + Holiday)-25 | Physical Progress [2080 h]; Plumbing [8590608 INR]; TATA Projects Ltd-25 | 8,590,608 |
| CB-B01-HS-MEP75 |  | Hydro-pneumatic system installation | 20d | 2028-04-19 | 2028-05-15 | CB-B01-HS-MEP70 | CSD-LKO Calender (6 day + Holiday)-25 | Physical Progress [5930 h]; Plumbing [11454144 INR]; TATA Projects Ltd-25 | 11,454,144 |
| CB-B01-HS-MEP25 |  | Connection of Pumps and water tanks | 45d | 2028-05-15 | 2028-07-06 | CB-B01-HS-MEP75 | CSD-LKO Calender (6 day + Holiday)-25 | Physical Progress [13350 h]; Plumbing [5727072 INR]; TATA Projects Ltd-25 | 5,727,072 |
| CB-B01-HS-MEP30 |  | Testing of Pumps, Connections | 7d | 2028-07-06 | 2028-07-14 | CB-B01-HS-MEP25 | CSD-LKO Calender (6 day + Holiday)-25 | Physical Progress [2080 h]; Plumbing [2863536 INR]; TATA Projects Ltd-25 | 2,863,536 |
|  | 3 | **Firefighting** |  | 2028-03-15 | 2028-06-05 |  |  |  |  |
| CB-B01-HS-MEP55 |  | Fire pump installation | 7d | 2028-03-15 | 2028-03-23 | CB-B02-CC-WMI-360, CB-B02-CC-WMI-20 | CSD-LKO Calender (6 day + Holiday)-25 | Physical Progress [2080 h]; Firefighting [35963063 INR]; TATA Projects Ltd-25 | 35,963,063 |
| CB-B01-HS-MEP60 |  | Pump room piping and valves | 45d | 2028-03-23 | 2028-05-18 | CB-B01-HS-MEP55 | CSD-LKO Calender (6 day + Holiday)-25 | Physical Progress [13350 h]; Firefighting [35963063 INR]; TATA Projects Ltd-25 | 35,963,063 |
| CB-B01-HS-MEP65 |  | Fire control panels installation and integration | 15d | 2028-05-18 | 2028-06-05 | CB-B01-HS-MEP60 | CSD-LKO Calender (6 day + Holiday)-25 | Physical Progress [4450 h]; Firefighting [20550322 INR]; TATA Projects Ltd-25 | 20,550,322 |
|  | 4 | **HVAC** |  | 2028-05-24 | 2028-09-05 |  |  |  |  |
| CB-B01-HS-MEP80 |  | Chiller installation | 2d | 2028-05-24 | 2028-05-26 | CB-B01-RB2-WMI-360, CB-B01-RB2-WMI-20, P-MEP-Chiller-20, CB-B01-CC-WMI-80, CB-B01-CC-WMI-85, CB-B01-CC-WMI-90, CB-B01-CC-WMI-95, CB-B01-RB2-WMI-80, CB-B01-RB2-WMI-95, CB-B01-RB2-WMI-90, CB-B01-RB2-WMI-85 | CSD-LKO Calender (6 day + Holiday)-25 | Physical Progress [590 h]; HVAC [127034133 INR]; TATA Projects Ltd-25 | 127,034,133 |
| CB-B01-HS-MEP20 |  | AHU | 10d | 2028-05-26 | 2028-06-07 | CB-B01-HS-MEP80, P-MEP-AHU-20, CB-B01-CC-WMI-80, CB-B01-CC-WMI-85, CB-B01-CC-WMI-90, CB-B01-CC-WMI-95, CB-B01-RB2-WMI-80, CB-B01-RB2-WMI-95, CB-B01-RB2-WMI-90, CB-B01-RB2-WMI-85, CB-B01-HS-MEP135, CB-B01-RB2-WMI-20 | CSD-LKO Calender (6 day + Holiday)-25 | Physical Progress [2970 h]; HVAC [50813653 INR]; TATA Projects Ltd-25 | 50,813,653 |
| CB-B01-HS-MEP85 |  | Pump installation | 2d | 2028-05-26 | 2028-05-29 | CB-B01-HS-MEP80 | CSD-LKO Calender (6 day + Holiday)-25 | Physical Progress [590 h]; HVAC [50813653 INR]; TATA Projects Ltd-25 | 50,813,653 |
| CB-B01-HS-MEP95 |  | Cooling tower | 5d | 2028-05-29 | 2028-06-03 | P-MEP-Cooling Tower-20, P-MEP-Cooling Tower-20 FF, P-MEP-Cooling Tower-20 SS, CB-B01-HS-MEP85 | CSD-LKO Calender (6 day + Holiday)-25 | Physical Progress [1480 h]; HVAC [50813653 INR]; TATA Projects Ltd-25 | 50,813,653 |
| CB-B01-HS-MEP10 |  | Heat Pump | 7d | 2028-06-03 | 2028-06-12 | CB-B01-HS-MEP95 | CSD-LKO Calender (6 day + Holiday)-25 | Physical Progress [2080 h]; HVAC [25406827 INR]; TATA Projects Ltd-25 | 25,406,827 |
| CB-B01-HS-MEP100 |  | MS Piping | 40d | 2028-06-07 | 2028-07-24 | CB-B01-HS-MEP20, CB-B01-HS-MEP95 | CSD-LKO Calender (6 day + Holiday)-25 | Physical Progress [11860 h]; HVAC [25406827 INR]; TATA Projects Ltd-25 | 25,406,827 |
| CB-B01-HS-MEP15 |  | Ventilation Fan | 7d | 2028-06-12 | 2028-06-20 | CB-B01-HS-MEP10 | CSD-LKO Calender (6 day + Holiday)-25 | Physical Progress [2080 h]; HVAC [25406827 INR]; TATA Projects Ltd-25 | 25,406,827 |
| CB-B01-HS-MEP105 |  | Valves & Fitting instllation | 15d | 2028-07-24 | 2028-08-10 | CB-B01-HS-MEP100 | CSD-LKO Calender (6 day + Holiday)-25 | Physical Progress [4450 h]; HVAC [50813653 INR]; TATA Projects Ltd-25 | 50,813,653 |
| CB-B01-HS-MEP110 |  | Insulation & Cladding/Painting | 10d | 2028-08-10 | 2028-08-24 | CB-B01-HS-MEP105 | CSD-LKO Calender (6 day + Holiday)-25 | Physical Progress [2970 h]; HVAC [25406827 INR]; TATA Projects Ltd-25 | 25,406,827 |
| CB-B01-HS-MEP115 |  | Electrical Works - Controlled cabeling, Power cabelling, MCC Panel, Earthing | 10d | 2028-08-24 | 2028-09-05 | CB-B01-HS-MEP15, CB-B01-HS-MEP110 | CSD-LKO Calender (6 day + Holiday)-25 | Physical Progress [2970 h]; HVAC [50813653 INR]; TATA Projects Ltd-25 | 50,813,653 |

| ID | WBS | Activity | Duration | Start | Finish | Predecessors | Calendar | Resources | Cost |
| --- | --- | --- | --- | --- | --- | --- | --- | --- | --- |
|  | 7 | **Testing, Commissioning, HO** |  | 2028-09-05 | 2028-12-11 |  |  |  |  |
| CB-T&C10 |  | Testing & Commissioning | 45d | 2028-09-05 | 2028-11-04 | CB-B01-HS-MEP115, CB-B01-HS-MEP65, CB-B01-HS-MEP75, CB-B01-HS-MEP130, CB-B01-HS-MEP30 FF |  | Physical Progress [412090 h]; Testing & Commissioing [98557929 INR]; TATA Projects Ltd-25 | 98,557,929 |
| CB-T&C20 |  | Snagging, Desnagging | 30d | 2028-11-04 | 2028-12-09 | CB-T&C10, CB-B03-4S-WMI-345, CB-B03-3S-WMI-285, CB-B03-RB2-WMI-285, CB-B03-RB1-WMI-285, CB-B03-CC-WMI-285, CB-B02-4S-WMI-285, CB-B02-3S-WMI-285, CB-B02-RB2-WMI-285, CB-B02-RB1-WMI-285, CB-B02-CC-WMI-285, CB-B01-4S-WMI-325, CB-B01-3S-WMI-285, CB-B01-RB2-WMI-285, CB-B01-RB1-WMI-285, CB-B01-CC-WMI-285 |  | Physical Progress [82420 h]; TATA Projects Ltd-25 |  |
| CB-T&C15 |  | Handing Over | 1d | 2028-12-09 | 2028-12-11 | CB-T&C20, CB-B03-HS-MEP15, CB-B02-HS-MEP30 |  | Physical Progress [5500 h]; TATA Projects Ltd-25 |  |
|  | 12 | **Structural Steel Fabrication** |  | 2027-04-19 | 2028-02-02 |  |  |  |  |
| SSF10 |  | Fabrication of structural steel- Truss and Column | 80d | 2027-04-19 | 2027-07-31 | P-Civil-SS-15, P-Delivery-SS10 |  | Physical Progress [105260 h]; TATA Projects Ltd-25 |  |
| SSF15 |  | Fabrication of Structure steel for Glass Facade Support | 115d | 2027-06-04 | 2027-11-15 | P-Delivery-SS20 | CSD-LKO Calender ( 6Day + Holyday + Monsoon) | Physical Progress [157900 h]; TATA Projects Ltd-25 |  |
| SSF20 |  | Fabrication of Structure steel for FRP Facade Support | 180d | 2027-06-04 | 2028-02-02 | P-Delivery-SS15 | CSD-LKO Calender ( 6Day + Holyday + Monsoon) | Physical Progress [236840 h]; TATA Projects Ltd-25 |  |
|  | 4 | **Infra Works** |  | 2029-01-27 | 2029-04-10 |  |  |  |  |
| IW10 |  | Swerage System | 60d | 2029-01-27 | 2029-04-10 | 4S-F-GF55, 4S-F-GF60, 3S-F-GF55, 3S-F-GF60, RB2-F-Terrace70 |  | Physical Progress [103450 h]; TATA Projects Ltd-25 |  |
| IW15 |  | Storm Water System | 60d | 2029-01-27 | 2029-04-10 | 4S-F-GF55, 4S-F-GF60, 3S-F-GF55, 3S-F-GF60, RB2-F-Terrace70 |  | Physical Progress [103450 h]; TATA Projects Ltd-25 |  |
| IW20 |  | Irrigation System | 60d | 2029-01-27 | 2029-04-10 | 4S-F-GF55, 4S-F-GF60, 3S-F-GF55, 3S-F-GF60, RB2-F-Terrace70 |  | Physical Progress [103450 h]; TATA Projects Ltd-25 |  |
| IW25 |  | Domestic Water System | 60d | 2029-01-27 | 2029-04-10 | 4S-F-GF55, 4S-F-GF60, 3S-F-GF55, 3S-F-GF60, RB2-F-Terrace70 |  | Physical Progress [103450 h]; TATA Projects Ltd-25 |  |
| IW30 |  | Flushing Water System | 60d | 2029-01-27 | 2029-04-10 | 4S-F-GF55, 4S-F-GF60, 3S-F-GF55, 3S-F-GF60, RB2-F-Terrace70 |  | Physical Progress [103450 h]; TATA Projects Ltd-25 |  |
| IW35 |  | Fire Hydrants Network | 60d | 2029-01-27 | 2029-04-10 | 4S-F-GF55, 4S-F-GF60, 3S-F-GF55, 3S-F-GF60, RB2-F-Terrace70 |  | Physical Progress [103450 h]; TATA Projects Ltd-25 |  |
| IW40 |  | HT/LT Cables | 40d | 2029-01-27 | 2029-03-16 | 4S-F-GF55, 4S-F-GF60, 3S-F-GF55, 3S-F-GF60, RB2-F-Terrace70 |  | Physical Progress [68950 h]; TATA Projects Ltd-25 |  |
| IW45 |  | ELV infra Netwrok | 60d | 2029-01-27 | 2029-04-10 | 4S-F-GF55, 4S-F-GF60, 3S-F-GF55, 3S-F-GF60, RB2-F-Terrace70 |  | Physical Progress [103450 h]; TATA Projects Ltd-25 |  |
| IW50 |  | Street Lighting Network | 60d | 2029-01-27 | 2029-04-10 | 4S-F-GF55, 4S-F-GF60, 3S-F-GF55, 3S-F-GF60, RB2-F-Terrace70 |  | Physical Progress [103450 h]; TATA Projects Ltd-25 |  |
| IW55 |  | Solid Waste Management (if applicable) | 60d | 2029-01-27 | 2029-04-10 | 4S-F-GF55, 4S-F-GF60, 3S-F-GF55, 3S-F-GF60, RB2-F-Terrace70 |  | Physical Progress [103450 h]; TATA Projects Ltd-25 |  |
|  | 5 | **External Development/Landscape** |  | 2028-02-15 | 2029-05-14 |  |  |  |  |
|  | 1 | **Roads** |  | 2029-01-09 | 2029-04-16 |  |  |  |  |
| ED-R10 |  | GSB | 40d | 2029-01-09 | 2029-02-26 | E-DD-Misc-TR-30, 3S-F-GF65, 4S-F-GF65, RB2-F-Terrace85 FF+10d, RB1-F-Terrace85 FF+10d, CC-F-(3rdM-Terrace)60 FF+10d, E-DD-Misc-TR-35 |  | Physical Progress [102570 h]; Hardscape [2679433 INR]; TATA Projects Ltd-25 | 2,679,433 |
| ED-R15 |  | DLC | 40d | 2029-01-20 | 2029-03-10 | ED-R10 FF+10d |  | Physical Progress [102570 h]; Hardscape [2679433 INR]; TATA Projects Ltd-25 | 2,679,433 |
| ED-R25 |  | PQC | 40d | 2029-02-02 | 2029-03-22 | ED-R15 FF+10d |  | Physical Progress [102560 h]; Hardscape [3349291 INR]; TATA Projects Ltd-25 | 3,349,291 |
| ED-R35 |  | Saucer Drain works | 25d | 2029-02-27 | 2029-03-28 | ED-R25 FF+5d |  | Physical Progress [64100 h]; Hardscape [1674646 INR]; TATA Projects Ltd-25 | 1,674,646 |
| ED-R20 |  | Kerb Stone | 25d | 2029-03-12 | 2029-04-10 | ED-R35 FF+10d |  | Physical Progress [64100 h]; Hardscape [1674646 INR]; TATA Projects Ltd-25 | 1,674,646 |
| ED-R30 |  | Bituminous Concrete | 25d | 2029-03-17 | 2029-04-16 | ED-R20 FF+5d |  | Physical Progress [64100 h]; Hardscape [3349291 INR]; TATA Projects Ltd-25 | 3,349,291 |

| ID | WBS | Activity | Duration | Start | Finish | Predecessors | Calendar | Resources | Cost |
| --- | --- | --- | --- | --- | --- | --- | --- | --- | --- |
|  | 5 | **External MEP** |  | 2028-02-15 | 2028-11-11 |  |  |  |  |
| ED-E.MEP-30 |  | DG (Diesel Generator) set installation, exhaust, and fuel system connections | 15d | 2028-02-15 | 2028-03-03 | P-MEP-DG-20, CB-B01-4S-WMI-60 | CSD-LKO Calender (6 day + Holiday)-25 | Physical Progress [11120 h]; Electrical [72461441 INR]; TATA Projects Ltd-25 | 72,461,441 |
|  | 10 | **DG/STP Stack Erection** |  | 2028-03-29 | 2028-11-11 |  |  |  |  |
| ED-E.MEP-10 |  | Fabrication of Structural Steel | 35d | 2028-03-29 | 2028-05-12 | ED-E.MEP-30, CB-B03-HS-MEP40, CB-B03-HS-MEP25, P-MEP-Stack-20 |  | Physical Progress [66670 h]; TATA Projects Ltd-25 |  |
| ED-E.MEP-15 |  | Erection of Structural Steel | 35d | 2028-05-12 | 2028-06-22 | ED-E.MEP-10 |  | Physical Progress [44440 h]; TATA Projects Ltd-25 |  |
| ED-E.MEP-20 |  | MS Pipe Chimani | 35d | 2028-06-22 | 2028-08-09 | ED-E.MEP-15 |  | Physical Progress [33330 h]; TATA Projects Ltd-25 |  |
| ED-E.MEP-25 |  | Lightening | 35d | 2028-08-09 | 2028-09-29 | ED-E.MEP-20 |  | Physical Progress [22220 h]; TATA Projects Ltd-25 |  |
| ED-E.MEP-40 |  | Testing & Commissiong | 35d | 2028-09-29 | 2028-11-11 | ED-E.MEP-25 |  | Physical Progress [22220 h]; TATA Projects Ltd-25 |  |
|  | 2 | **Landscape** |  | 2029-02-27 | 2029-05-02 |  |  |  |  |
| ED-LS10 |  | Hardscape | 25d | 2029-02-27 | 2029-03-28 | ED-R10, P-Misc-LS-20 |  | Physical Progress [819680 h]; Hardscape [16746455 INR]; TATA Projects Ltd-25 | 16,746,455 |
| ED-LS15 |  | Softscape including Horticulture, Drip Irrigation | 12d | 2029-04-17 | 2029-05-02 | ED-LS10, ED-R30, IW10, IW15, IW20, IW25, IW30, IW35, IW40, IW45, IW50, IW55 |  | Physical Progress [393440 h]; Softscape [23869683 INR]; TATA Projects Ltd-25 | 23,869,683 |
| ED-LS20 |  | Signage | 12d | 2029-04-17 | 2029-05-02 | ED-LS10, ED-R30, IW10, IW15, IW20, IW25, IW30, IW35, IW40, IW45, IW50, IW55, E-GFC-Misc-Signage-35 |  | Physical Progress [393440 h]; Softscape [9547873 INR]; TATA Projects Ltd-25 | 9,547,873 |
| ED-LS25 |  | Lighting | 12d | 2029-04-17 | 2029-05-02 | ED-LS10, ED-R30, IW10, IW15, IW20, IW25, IW30, IW35, IW40, IW45, IW50, IW55, P-Misc-Lightining-20, E-GFC-Misc-Lighting-35 |  | Physical Progress [393440 h]; Softscape [14321810 INR]; TATA Projects Ltd-25 | 14,321,810 |
|  | 4 | **Water Body** |  | 2028-05-29 | 2029-05-10 |  |  |  |  |
| ED-WB25 |  | Pump Room | 30d | 2028-05-29 | 2028-07-03 | CB-B01-HS-MEP85 |  | Physical Progress [31920 h]; Water Body [535887 INR]; TATA Projects Ltd-25 | 535,887 |
| ED-WB30 |  | Balancing Tank | 30d | 2028-07-03 | 2028-08-14 | ED-WB25 |  | Physical Progress [31920 h]; Water Body [401915 INR]; TATA Projects Ltd-25 | 401,915 |
| ED-WB10 |  | Waterproofing | 25d | 2028-08-14 | 2028-09-19 | ED-WB30 |  | Waterproofing [8564838 INR]; Waterprrofing Mason [8160 h]; Helper [4080 h]; Physical Progress [10620 h]; TATA Projects Ltd-25 | 8,564,838 |
| ED-WB20 |  | Fixing of Plumbing Connenctions | 45d | 2028-09-19 | 2028-11-16 | ED-WB10, ED-WB30 |  | Physical Progress [7450 h]; Water Body [200957 INR]; TATA Projects Ltd-25 | 200,957 |
| ED-WB15 |  | Tiling | 24d | 2029-03-29 | 2029-04-27 | ED-WB20, ED-LS10 |  | Physical Progress [7450 h]; Water Body [133972 INR]; TATA Projects Ltd-25 | 133,972 |
| ED-WB35 |  | Testing, Commissioning & HO | 10d | 2029-04-28 | 2029-05-10 | ED-WB20, ED-WB15 |  | Physical Progress [10640 h]; Water Body [66986 INR]; TATA Projects Ltd-25 | 66,986 |
|  | 3 | **Handing Over** |  | 2029-05-03 | 2029-05-14 |  |  |  |  |
| ED-HO10 |  | Snagging, Desnagging & HO | 10d | 2029-05-03 | 2029-05-14 | ED-LS15, ED-LS20, ED-LS25, ED-WB35 FF, ED-E.MEP-40 |  | Physical Progress [200000 h]; TATA Projects Ltd-25 |  |
|  | 11 | **Misc** |  | 2028-10-24 | 2029-05-16 |  |  |  |  |
| MISC10 |  | Expansion Joint | 120d | 2028-10-24 | 2029-03-17 | P-Civil-EP-20, 4S-WMI-2nd620 |  | Expansion Joint [16535708 INR]; Physical Progress [166670 h]; TATA Projects Ltd-25 | 16,535,708 |
| MISC20 |  | Fire Seal Work | 90d | 2028-10-24 | 2029-02-08 | MISC10 SS |  | Fire Seal Works [24902942 INR]; Physical Progress [166670 h]; TATA Projects Ltd-25 | 24,902,942 |
| MISC15 |  | Accoustic/AV | 70d | 2029-02-20 | 2029-05-16 | P-Misc-Accoustic/AV-20, 4S-WMI-GF250 |  | Physical Progress [166670 h]; TATA Projects Ltd-25 |  |

| ID | WBS | Activity | Duration | Start | Finish | Predecessors | Resources |
| --- | --- | --- | --- | --- | --- | --- | --- |
|  | 2 | **Project Closure** |  | 2028-03-03 | 2029-06-07 |  |  |
|  | 1 | **Statutory Approvals** |  | 2028-03-03 | 2029-05-19 |  |  |
|  | 1 | **Sanction of Power connection** |  | 2029-03-17 | 2029-05-17 |  |  |
| PC10 |  | Filling of application and fees payment | 10d | 2029-03-17 | 2029-03-28 | IW40 | Physical Progress [44440 h]; TATA Projects Ltd-25 |
| PC65 |  | Inspection from authority (Fesibility report) | 10d | 2029-03-29 | 2029-04-10 | PC10 | Physical Progress [44440 h]; TATA Projects Ltd-25 |
| PC100 |  | Pole Structure work | 10d | 2029-04-11 | 2029-04-21 | PC65 | Physical Progress [44440 h]; TATA Projects Ltd-25 |
| PC105 |  | Submission of Technical document for Load sanction | 10d | 2029-04-23 | 2029-05-05 | PC100 | Physical Progress [44440 h]; TATA Projects Ltd-25 |
| PC110 |  | Avail letter from UPPCL for Load sanction | 10d | 2029-05-07 | 2029-05-17 | PC105 | Physical Progress [44440 h]; TATA Projects Ltd-25 |
|  | 2 | **CEIG (Electrical Inspection) & Power connection** |  | 2029-03-17 | 2029-05-19 |  |  |
| PC115 |  | Initial Drawing submission for CEIG | 10d | 2029-03-17 | 2029-03-28 | IW40, CB-B01-HS-MEP40 | Physical Progress [44440 h]; TATA Projects Ltd-25 |
| PC120 |  | Getting Drawing approval | 15d | 2029-03-29 | 2029-04-16 | PC115 | Physical Progress [66670 h]; TATA Projects Ltd-25 |
| PC125 |  | Inspection from authority (CEIG Inspection) | 10d | 2029-04-17 | 2029-04-28 | PC120 | Physical Progress [44440 h]; TATA Projects Ltd-25 |
| PC130 |  | Certification from CEIG authority | 10d | 2029-04-30 | 2029-05-11 | PC125 | Physical Progress [44440 h]; TATA Projects Ltd-25 |
| PC135 |  | Load realese/connection (Minimum charges would start from here) | 7d | 2029-05-12 | 2029-05-19 | PC130 | Physical Progress [31110 h]; TATA Projects Ltd-25 |
|  | 3 | **Water Connection** |  | 2029-04-11 | 2029-05-11 |  |  |
| PC140 |  | Filling of application and fees payment | 5d | 2029-04-11 | 2029-04-16 | IW25 | Physical Progress [22220 h]; TATA Projects Ltd-25 |
| PC145 |  | Inspection from authority | 10d | 2029-04-17 | 2029-04-28 | PC140 | Physical Progress [44440 h]; TATA Projects Ltd-25 |
| PC150 |  | Certification & Water supply | 10d | 2029-04-30 | 2029-05-11 | PC145 | Physical Progress [44440 h]; TATA Projects Ltd-25 |
|  | 4 | **FNOC (Fire NOC)** |  | 2029-04-11 | 2029-05-11 |  |  |
| PC155 |  | Filling of application and fees payment | 5d | 2029-04-11 | 2029-04-16 | IW35, MISC20 | Physical Progress [22220 h]; TATA Projects Ltd-25 |
| PC160 |  | Inspection from authority | 10d | 2029-04-17 | 2029-04-28 | PC155 | Physical Progress [44440 h]; TATA Projects Ltd-25 |
| PC165 |  | Certification | 10d | 2029-04-30 | 2029-05-11 | PC160 | Physical Progress [44440 h]; TATA Projects Ltd-25 |
|  | 5 | **Sewage connection** |  | 2029-04-11 | 2029-05-15 |  |  |
| PC170 |  | Filling of application and fees payment | 10d | 2029-04-11 | 2029-04-21 | IW10 | Physical Progress [44440 h]; TATA Projects Ltd-25 |
| PC175 |  | Inspection | 10d | 2029-04-23 | 2029-05-05 | PC170 | Physical Progress [44440 h]; TATA Projects Ltd-25 |
| PC15 |  | Connection to drain | 8d | 2029-05-07 | 2029-05-15 | PC175 | Physical Progress [35560 h]; TATA Projects Ltd-25 |

| ID | WBS | Activity | Type | Duration | Start | Finish | Predecessors | Resources |
| --- | --- | --- | --- | --- | --- | --- | --- | --- |
|  | 9 | **Green Building Certification** |  |  | 2028-11-08 | 2028-12-13 |  |  |
| PC85 |  | Filling of application and fees payment |  | 10d | 2028-11-08 | 2028-11-20 | CC-F-Terrace20, E-DD-GB-20 | Physical Progress [44440 h]; TATA Projects Ltd-25 |
| PC95 |  | Inspection from authority |  | 20d | 2028-11-20 | 2028-12-13 | PC85 | Physical Progress [88890 h]; TATA Projects Ltd-25 |
| PC90 |  | Certification |  | 0d | 2028-12-13 | 2028-12-13 | PC95 | Design Consultnacy Charges; Physical Progress; TATA Projects Ltd-25 |
|  | 6 | **CCOE, CTO (DG)** |  |  | 2028-03-03 | 2028-06-09 |  |  |
| PC20 |  | Filling of application and fees payment |  | 20d | 2028-03-03 | 2028-03-28 | ED-E.MEP-30 | Physical Progress [88890 h]; TATA Projects Ltd-25 |
| PC25 |  | Inspection from authority |  | 20d | 2028-03-28 | 2028-04-21 | PC20 | Physical Progress [88890 h]; TATA Projects Ltd-25 |
| PC30 |  | Certification to storage and operation |  | 40d | 2028-04-21 | 2028-06-09 | PC25 | Physical Progress [177780 h]; TATA Projects Ltd-25 |
|  | 7 | **Lift Licence to operate** |  |  | 2028-09-06 | 2028-12-16 |  |  |
| PC35 |  | Filling of application and fees payment |  | 20d | 2028-09-06 | 2028-10-06 | CC-VT20, RB1-VT30, RB2-VT30, 3S-VT30, 4S-VT30 | Physical Progress [88890 h]; TATA Projects Ltd-25 |
| PC40 |  | Inspection |  | 20d | 2028-10-06 | 2028-10-31 | PC35 | Physical Progress [88890 h]; TATA Projects Ltd-25 |
| PC45 |  | Certification |  | 40d | 2028-10-31 | 2028-12-16 | PC40 | Physical Progress [177780 h]; TATA Projects Ltd-25 |
|  | 8 | **CTO (STP)** |  |  | 2028-03-29 | 2028-07-04 |  |  |
| PC50 |  | Filling of application and fees payment |  | 20d | 2028-03-29 | 2028-04-22 | CB-B03-HS-MEP25, CB-B03-HS-MEP40 | Physical Progress [88890 h]; TATA Projects Ltd-25 |
| PC55 |  | Inspection from authority |  | 20d | 2028-04-22 | 2028-05-18 | PC50 | Physical Progress [88890 h]; TATA Projects Ltd-25 |
| PC60 |  | Certification |  | 40d | 2028-05-18 | 2028-07-04 | PC55 | Physical Progress [177780 h]; TATA Projects Ltd-25 |
|  | 2 | **Contractual Documents** |  |  | 2029-06-07 | 2029-06-07 |  |  |
| PC70 |  | OEM Details | milestone | 0d | 2029-06-07 | 2029-06-07 | Milestones-470 FF, Milestones-485 FF, Milestones-480 FF, Milestones-505 FF, Milestones-500 FF |  |
| PC75 |  | List of Equipments | milestone | 0d | 2029-06-07 | 2029-06-07 | Milestones-470 FF, Milestones-485 FF, Milestones-480 FF, Milestones-505 FF, Milestones-500 FF |  |
| PC80 |  | Relevant Warranties, Guarantees | milestone | 0d | 2029-06-07 | 2029-06-07 | Milestones-470 FF, Milestones-485 FF, Milestones-480 FF, Milestones-505 FF, Milestones-500 FF |  |
